# 33AL-Wajha 8Vill*1Group

Schedule from Primavera P6, 2024-01-01 to 2025-12-27, data date 2023-10-13, costs in USD.

## Calendars

- Corporate - Standard Full Time: Mon-Thu 07:00-17:00; Fri off; Sat-Sun 07:00-17:00.

## Resources

| Resource | Group | Unit | Rate |
| --- | --- | --- | --- |
| PC Carpentry | material |  | 559.32 |
| PC Concrete | material |  | 4178.14 |
| RC 18 MPA | material | M3 |  |
| RC Foundation Carpentry | material |  | 2237.29 |
| RC Foundation Steel | material |  | 6152.54 |
| RC Foundation Concrete | material |  | 16779.7 |
| RC Grade Beam Carpentry & Steel | material |  | 5593.22 |
| RC Grade Beam Concrete | material |  | 9642.71 |
| Bitumen Coating Foundations & Grade Beams | material |  | 2796.61 |
| Backfilling 1st Layer | material |  | 699.15 |
| Backfilling 2ed Layer | material |  | 699.15 |
| Mech Establishment Under Ground Slap | material |  | 1677.97 |
| Anti Termite Treatment nder Ground Slap | material |  | 279.66 |
| Steel & Carpentry For Ground Slap | material |  | 1280.85 |
| Concrete For Ground Slap | material |  | 7271.19 |
| Precast Walls GF | material |  | 27966.1 |
| Hollow Core Slap GF | material |  | 27966.1 |
| Precast Stairs & staircase House | material |  | 27966.1 |
| Concrete structure joints | material |  | 16779.7 |
| Thermal insollation Outside Walls | material |  | 32619.7 |
| Precast Walls FF | material |  | 27966.1 |
| Hollow Core Slap FF | material |  | 27966.1 |
| HL Drainage | material |  | 9508.47 |
| L.L Drainage | material |  | 1677.97 |
| Elec Establishment GF | material |  | 3355.93 |
| Block GF | material |  | 1705.93 |
| Screed 1st Floor | material |  | 8389.83 |
| Screed Roof Floor | material |  | 8389.83 |
| Leveling Screed 1st Floor | material |  | 8389.83 |
| Leveling Screed Roof Floor | material |  | 8389.83 |
| Roof Insulation | material |  | 4066.27 |
| Roof Tiles | material |  | 5593.22 |
| Roof Tiles Joints | material |  | 945.25 |
| Re_Test Roof Insulation | material |  | 1359.15 |
| Block FF | material |  | 2567.29 |
| Water Line Network | material |  | 5033.9 |
| Elec Establishment FF | material |  | 3355.93 |
| Plastering GF | material |  | 1851.36 |
| Plastering FF | material |  | 3076.27 |
| Establishing a plastering GF | material |  | 615.25 |
| Establishing a plastering FF | material |  | 615.25 |
| Marbale Stairs | material |  | 4435.42 |
| Stairs Handrails SS | material |  | 7002.7 |
| Bathrooms InsulationGF & FF | material |  | 16.78 |
| Ceramic Walls Kitchen | material |  | 570.51 |
| Ceramic Walls Bathrooms GF | material |  | 2091.86 |
| Ceramic Walls Bathrooms FF | material |  | 2091.86 |
| Ceramic Tiles Bathrooms GF | material |  | 1627.63 |
| Ceramic Tiles Kitchen GF | material |  | 570.51 |
| Ceramic Tiles Store GF | material |  | 570.51 |
| Ceramic Tiles Bathrooms GF | material |  | 1627.63 |
| Shower Glass | material |  | 2796.61 |
| Putty Filler 2ed Layer Roof & WAlls GF | material |  | 3881.69 |
| Putty Filler 2ed Layer Roof & WAlls FF | material |  | 3887.28 |
| Structure For Gypsum GF Rooms | material |  | 1398.3 |
| Structure For Gypsum FF Rooms | material |  | 1398.3 |
| Structure For Gypsum Bathrooms & Kitchen | material |  | 1398.3 |
| Aluminum Windows | material |  | 10600 |
| Exterior Wooden Doors | material |  | 7108.98 |
| Wooden Doors Kitchen & Bathroom without Accessories | material |  | 4474.58 |
| Wooden Doors Accessories all Villa | material |  | 6180.51 |
| Mech Fixtures & Accessories | material |  | 12305.1 |
| Elec Fixtures & Accessories Villa & Yard | material |  | 3915.25 |
| Elec Cables GF & FF & Earthing | material |  | 2796.61 |
| Installation Of Parquet | material |  | 6622.37 |
| Elec Wires GF | material |  | 5033.9 |
| Elec Wires FF | material |  | 5033.9 |
| Gypsum Board For GF Room | material |  | 2237.29 |
| Gypsum Board For FF Room | material |  | 2237.29 |
| Gypsum Board For Bathrooms & Kitchen | material |  | 1381.53 |
| Putty Filler 1st Layer Roof all Rooms | material |  | 3048.31 |
| Putty Filler 1st Layer Roof all Bathrooms & Kitchen | material |  | 838.98 |
| Putty Filler1st Layer walls | material |  | 3887.28 |
| Excavation Fence Foundations | material |  | 564.91 |
| Fence Fondations-Eastern side | material |  | 559.32 |
| Fence Fondations-Westren side | material |  | 559.32 |
| Fence Fondations-Back side | material |  | 559.32 |
| Fence Columns-Eastern side | material |  | 402.71 |
| Fence Columns-Westren side | material |  | 402.71 |
| Fence Columns-Back side | material |  | 402.71 |
| Hollow Core Walls | material |  | 8949.15 |
| Front Fence Fondations | material |  | 1113.05 |
| Front Fence Walls | material |  | 2237.29 |
| Fence Columns - C Chanel | material |  | 413.9 |
| Backfilling the Yard | material |  | 1320 |
| Outdoor Water Line | material |  | 838.98 |
| Outdoor Drainage | material |  | 838.98 |
| Elec Establishment Fence & Yard | material |  | 2237.29 |
| Elec Work Testing | material |  | 2852.48 |
| Bardoura Works For Yard | material |  | 1801.02 |
| Antitermite Treatment For Yard | material |  |  |
| Interlock Works For The Yard | material |  | 4598.19 |
| External Grading Works For The Villa | material |  | 402.71 |
| Granite Surronds Around The Villa | material |  | 3227.29 |
| Exterior Painting Of The Villa | material |  | 12025.4 |
| Exterior Painting Staircase House | material |  | 1185.76 |
| Painting Final Face Of The Fence | material |  | 4698.31 |
| Installation The Exterior Garage Door | material |  | 3501.36 |
| Installation The Exterior Door | material |  | 1498.98 |
| Elec feeding panels GF & FF | material |  | 2796.61 |
| Floor Drain & Clean Out | material |  | 1677.97 |
| Connection Drain To The Piblic Network | material |  | 838.98 |
| Connection Water To The Piblic Network | material |  | 838.98 |
| Water Tank & booster Pump | material |  | 6152.54 |
| Lower Pump | material |  | 2237.29 |
| Heater | material |  | 7830.51 |
| Mech Work Testing & Handover | material |  | 1789.83 |
| Elec Work Handover | material |  | 2975.59 |
| Arch Snaglist & Handover | material |  | 9665.08 |
| Clearing & Groubbing | material |  |  |
| Excavation & Leveling | material |  | 5788.98 |
| Stone Layer | material |  | 1113.05 |
| A3 Layer | material |  | 3372.71 |
| A1-a 2ed Layer | material |  | 5084.24 |
| A1-a 1st Layer | material |  | 5084.24 |
| Final Face Paint Villa | material |  | 3887.29 |

## Schedule

| ID | WBS | Activity | Duration | Start | Finish | Predecessors | Total float | Free float | Resources | Cost | Department-1 |
| --- | --- | --- | --- | --- | --- | --- | --- | --- | --- | --- | --- |
|  | 1 | **Contruction Works** |  | 2024-01-01 | 2025-02-13 |  |  |  |  |  |  |
|  | 7 | **B01-V01~V08** |  | 2024-01-01 | 2024-06-05 |  |  |  |  |  |  |
|  | 2 | **Under Grond Slap Works** |  | 2024-01-01 | 2024-01-30 |  |  |  |  |  |  |
| B01-V01~V08-1000 |  | Excavation&Compaction of Fondation | 4d | 2024-01-01 | 2024-01-04 |  | 0d |  | Clearing & Groubbing [8]; Excavation & Leveling [8]; Stone Layer [8]; A3 Layer [8]; A1-a 2ed Layer [8]; A1-a 1st Layer [8] | 163,545.76 | Civil |
| B01-V01~V08-1010 |  | Pouring Concrete For Bedding | 2d | 2024-01-06 | 2024-01-07 | B01-V01~V08-1000 | 0d |  | PC Carpentry [8]; PC Concrete [8]; RC 18 MPA [9 M3] | 37,899.68 | Civil |
| B01-V01~V08-1020 |  | Reinforcement Concrete For Foundation | 4d | 2024-01-08 | 2024-01-11 | B01-V01~V08-1010 | 0d |  | RC Foundation Carpentry [8]; RC Foundation Steel [8]; RC Foundation Concrete [8] | 201,355.92 | Civil |
| B01-V01~V08-1030 |  | Steel Fixing& Carpenter work for Beams | 4d | 2024-01-13 | 2024-01-16 | B01-V01~V08-1020 | 0d |  | RC Grade Beam Carpentry & Steel [8] | 44,745.76 | Civil |
| B01-V01~V08-1040 |  | Mech&Elec Establishment for Beams | 3d | 2024-01-17 | 2024-01-20 | B01-V01~V08-1030 | 0d |  |  |  | Mech |
| B01-V01~V08-1050 |  | Pouring Concrete For Beams | 1d | 2024-01-21 | 2024-01-21 | B01-V01~V08-1040 | 0d |  | RC Grade Beam Concrete [8] | 77,141.68 | Civil |
| B01-V01~V08-1060 |  | Bitmen Coating For Fondation&Beams | 1d | 2024-01-22 | 2024-01-22 | B01-V01~V08-1050 | 0d |  | Bitumen Coating Foundations & Grade Beams [8] | 22,372.88 | Civil |
| B01-V01~V08-1070 |  | Backfilling Inside Fondations | 2d | 2024-01-23 | 2024-01-24 | B01-V01~V08-1060 | 0d |  | Backfilling 1st Layer [8]; Backfilling 2ed Layer [8] | 11,186.4 | Civil |
| B01-V01~V08-1080 |  | Mech Works Under Grond Slap | 2d | 2024-01-25 | 2024-01-27 | B01-V01~V08-1070 | 0d |  | Mech Establishment Under Ground Slap [8] | 13,423.76 | Mech |
| B01-V01~V08-1090 |  | Steel Fixing& Carpenter work for Ground Slap | 2d | 2024-01-28 | 2024-01-29 | B01-V01~V08-1080 | 0d |  | Steel & Carpentry For Ground Slap [8] | 10,246.8 | Civil |
| B01-V01~V08-1100 |  | Anti Termite Treatment For Ground Slap | 1d | 2024-01-30 | 2024-01-30 | B01-V01~V08-1090 | 0d |  | Anti Termite Treatment nder Ground Slap [8] | 2,237.28 | Civil |
| B01-V01~V08-1110 |  | Pouring Concrete For Ground Slap | 1d | 2024-01-30 | 2024-01-30 | B01-V01~V08-1100 FF, B01-V01~V08-1090 | 0d |  | Concrete For Ground Slap [8] | 58,169.52 | Civil |
|  | 4 | **Precast Works** |  | 2024-01-31 | 2024-02-07 |  |  |  |  |  |  |
| B01-V01~V08-1120 |  | Precast Constrction | 7d | 2024-01-31 | 2024-02-07 | B01-V01~V08-1110 | 0d |  | Precast Walls GF [8]; Hollow Core Slap GF [8]; Precast Stairs & staircase House [8]; Concrete structure joints [8]; Thermal insollation Outside Walls [8]; Precast Walls FF [8]; Hollow Core Slap FF [8] | 1,513,838.56 | Civil |
|  | 1 | **Works Inside The Villa** |  | 2024-02-08 | 2024-05-23 |  |  |  |  |  |  |
| B01-V01~V08-1130 |  | Block Work For GF & Estabishment 1F | 6d | 2024-02-08 | 2024-02-14 | B01-V01~V08-1120 | 13d | 0d | Block GF [8] | 13,647.44 | Arc |
| B01-V01~V08-1140 |  | L.L & H.L Drainage | 6d | 2024-02-15 | 2024-02-21 | B01-V01~V08-1130 | 13d | 0d | HL Drainage [8]; L.L Drainage [8] | 89,491.52 | Mech |
| B01-V01~V08-1150 |  | Elec Establishment For GF & 1F | 3d | 2024-02-15 | 2024-02-18 | B01-V01~V08-1130 | 16d | 3d | Elec Establishment GF [8] | 26,847.44 | Elec |
| B01-V01~V08-1160 |  | Screed Work For 1F & Roof | 6d | 2024-02-22 | 2024-02-28 | B01-V01~V08-1140, B01-V01~V08-1150 | 13d | 0d | Screed 1st Floor [8]; Screed Roof Floor [8]; Leveling Screed 1st Floor [8]; Leveling Screed Roof Floor [8] | 268,474.56 | Civil |
| B01-V01~V08-1170 |  | Water Tank & Heater Foundations | 4d | 2024-02-29 | 2024-03-04 | B01-V01~V08-1160 | 17d | 0d |  |  | Civil |
| B01-V01~V08-1180 |  | Block Works For 1F | 3d | 2024-02-29 | 2024-03-03 | B01-V01~V08-1160 | 13d | 0d | Block FF [8] | 20,538.32 | Arc |
| B01-V01~V08-1190 |  | Water Line Network | 6d | 2024-03-04 | 2024-03-10 | B01-V01~V08-1180 | 13d | 0d | Water Line Network [8] | 40,261.13 | Mech |
| B01-V01~V08-1200 |  | Continue Elec Establishment For GF & 1F | 3d | 2024-03-04 | 2024-03-06 | B01-V01~V08-1180 | 16d | 3d | Elec Establishment FF [8] | 26,840.73 | Elec |
| B01-V01~V08-1210 |  | Thermal Insulation For Roof | 5d | 2024-03-05 | 2024-03-10 | B01-V01~V08-1170 | 17d | 0d | Roof Insulation [8] | 32,530.16 | Arc |
| B01-V01~V08-1220 |  | Roof Floor Tiles | 6d | 2024-03-11 | 2024-03-17 | B01-V01~V08-1210 | 17d | 1d | Roof Tiles [8]; Roof Tiles Joints [8]; Re_Test Roof Insulation [8] | 63,180.96 | Arc |
| B01-V01~V08-1230 |  | Plaster Work For Villa | 6d | 2024-03-11 | 2024-03-17 | B01-V01~V08-1190, B01-V01~V08-1200 | 13d | 0d | Plastering GF [8]; Plastering FF [8]; Establishing a plastering GF [8]; Establishing a plastering FF [8] | 49,265.04 |  |
| B01-V01~V08-1240 |  | Marbale Stairs & Handrails | 6d | 2024-03-18 | 2024-03-24 | B01-V01~V08-1230 | 35d | 1d | Marbale Stairs [8]; Stairs Handrails SS [8] | 91,494.69 |  |
| B01-V01~V08-1250 |  | Water Proofing Of Bathrooms | 4d | 2024-03-18 | 2024-03-21 | B01-V01~V08-1230 | 13d | 0d | Bathrooms InsulationGF & FF [8] | 134.24 |  |
| B01-V01~V08-1260 |  | Pulling The Elec Wires | 4d | 2024-03-18 | 2024-03-21 | B01-V01~V08-1230 | 23d | 3d | Elec Wires GF [8]; Elec Wires FF [8] | 80,542.4 |  |
| B01-V01~V08-1270 |  | Bathroom Tiles | 4d | 2024-03-23 | 2024-03-26 | B01-V01~V08-1250, B01-V01~V08-1220 | 13d | 0d | Ceramic Walls Kitchen [8]; Ceramic Walls Bathrooms GF [8]; Ceramic Walls Bathrooms FF [8]; Ceramic Tiles Bathrooms GF [8]; Ceramic Tiles Kitchen GF [8]; Ceramic Tiles Store GF [8] | 73,204.08 |  |
| B01-V01~V08-1280 |  | Structure For Gypsum | 6d | 2024-03-27 | 2024-04-02 | B01-V01~V08-1270 | 13d | 0d | Structure For Gypsum GF Rooms [8]; Structure For Gypsum FF Rooms [8]; Structure For Gypsum Bathrooms & Kitchen [8] | 33,559.2 |  |
| B01-V01~V08-1290 |  | Gypsum Board For Room | 4d | 2024-04-03 | 2024-04-07 | B01-V01~V08-1280, B01-V01~V08-1260 | 13d | 0d | Gypsum Board For GF Room [8]; Gypsum Board For FF Room [8] | 35,796.64 |  |
| B01-V01~V08-1300 |  | Installation Of Gypsum Board For Bathroom & Kitchen | 4d | 2024-04-08 | 2024-04-11 | B01-V01~V08-1290 | 13d | 0d | Gypsum Board For Bathrooms & Kitchen [8] | 11,052.24 |  |
| B01-V01~V08-1310 |  | Putty Filler For Gypsm Board Ceiling | 6d | 2024-04-13 | 2024-04-18 | B01-V01~V08-1300 | 13d | 0d | Putty Filler 1st Layer Roof all Rooms [8]; Putty Filler 1st Layer Roof all Bathrooms & Kitchen [8]; Putty Filler1st Layer walls [8] | 62,188.79 |  |
| B01-V01~V08-1320 |  | Fixing Shower Glass | 4d | 2024-04-20 | 2024-04-23 | B01-V01~V08-1310 | 21d | 0d | Shower Glass [8] | 22,372.88 |  |
| B01-V01~V08-1330 |  | Interior Wall Putty Filler | 6d | 2024-04-20 | 2024-04-25 | B01-V01~V08-1310, B01-V01~V08-1240 | 13d | 0d | Putty Filler 2ed Layer Roof & WAlls GF [8]; Putty Filler 2ed Layer Roof & WAlls FF [8] | 62,151.76 |  |
| B01-V01~V08-1340 |  | Installation Of Sanitry Fixture | 7d | 2024-04-24 | 2024-05-01 | B01-V01~V08-1320 | 21d | 0d | Mech Fixtures & Accessories [8] | 98,440.56 |  |
| B01-V01~V08-1350 |  | 1st Face Paint | 6d | 2024-04-27 | 2024-05-02 | B01-V01~V08-1330 | 13d | 0d |  |  |  |
| B01-V01~V08-1360 |  | Installation Of Aluminum Windows | 7d | 2024-04-27 | 2024-05-04 | B01-V01~V08-1330 | 23d | 0d | Aluminum Windows [8] | 84,795.68 |  |
| B01-V01~V08-1370 |  | Installation Of Elec Fixture & Accessories | 7d | 2024-04-27 | 2024-05-04 | B01-V01~V08-1310, B01-V01~V08-1330, B01-V01~V08-1260 | 37d | 0d | Elec Fixtures & Accessories Villa & Yard [8]; Elec Cables GF & FF & Earthing [8] | 53,694.88 |  |
| B01-V01~V08-1380 |  | Installation Of Water Tank-Heater & Pumps | 7d | 2024-05-02 | 2024-05-09 | B01-V01~V08-1340, B01-V01~V08-1220 | 21d | 0d | Water Tank & booster Pump [8]; Lower Pump [8]; Heater [8] | 129,762.72 |  |
| B01-V01~V08-1390 |  | Installation Of Parquet | 4d | 2024-05-04 | 2024-05-07 | B01-V01~V08-1350 | 13d | 0d | Installation Of Parquet [8] | 52,978.96 |  |
| B01-V01~V08-1400 |  | Installation Of Wooden Doors | 7d | 2024-05-08 | 2024-05-15 | B01-V01~V08-1390 | 13d | 0d | Exterior Wooden Doors [8]; Wooden Doors Kitchen & Bathroom without Accessories [8]; Wooden Doors Accessories all Villa [8] | 142,112.56 |  |
| B01-V01~V08-1410 |  | Final Face Paint | 7d | 2024-05-16 | 2024-05-23 | B01-V01~V08-1360, B01-V01~V08-1400 | 13d | 0d | Final Face Paint Villa [8] | 31,096.77 |  |

| ID | WBS | Activity | Duration | Start | Finish | Predecessors | Total float | Free float | Resources | Cost |
| --- | --- | --- | --- | --- | --- | --- | --- | --- | --- | --- |
|  | 3 | **Fence & Courtyard Works** |  | 2024-02-08 | 2024-05-13 |  |  |  |  |  |
| B01-V01~V08-1420 |  | Pouring Bedding Concrete For Fence Fondations | 2d | 2024-02-08 | 2024-02-10 | B01-V01~V08-1120 | 9d | 0d | Excavation Fence Foundations [8] | 4,519.28 |
| B01-V01~V08-1430 |  | RC Concrete For Fence Fondations | 6d | 2024-02-11 | 2024-02-17 | B01-V01~V08-1420 | 9d | 0d | Fence Fondations-Eastern side [8]; Fence Fondations-Westren side [8]; Fence Fondations-Back side [8] | 13,423.68 |
| B01-V01~V08-1440 |  | Steel Fixing & Carpentry For Fence Columns | 6d | 2024-02-18 | 2024-02-24 | B01-V01~V08-1430 | 9d | 0d |  |  |
| B01-V01~V08-1450 |  | Establishing Elec For Fence Columns | 4d | 2024-02-25 | 2024-02-28 | B01-V01~V08-1440 | 9d | 0d |  |  |
| B01-V01~V08-1460 |  | Pouring Concrete For Fence Columns | 1d | 2024-02-29 | 2024-02-29 | B01-V01~V08-1450 | 9d | 0d | Fence Columns-Eastern side [8]; Fence Columns-Westren side [8]; Fence Columns-Back side [8] | 9,665.04 |
| B01-V01~V08-1470 |  | Installation Precast Panel For Fence | 5d | 2024-03-02 | 2024-03-06 | B01-V01~V08-1460 | 9d | 0d | Hollow Core Walls [8] | 71,593.2 |
| B01-V01~V08-1480 |  | Bitumen Coating For Fence Fondations | 4d | 2024-03-07 | 2024-03-11 | B01-V01~V08-1470 | 9d | 0d |  |  |
| B01-V01~V08-1490 |  | Pouring Bedding Concrete For "Front" Fence Fondations | 1d | 2024-03-07 | 2024-03-07 | B01-V01~V08-1470 | 21d | 0d |  |  |
| B01-V01~V08-1500 |  | RC Concrete For "Front" Fence Fondations | 4d | 2024-03-09 | 2024-03-12 | B01-V01~V08-1490 | 21d | 0d | Front Fence Fondations [8] | 8,904.4 |
| B01-V01~V08-1510 |  | Outdoor Drainage & Water Line | 5d | 2024-03-12 | 2024-03-17 | B01-V01~V08-1480, B01-V01~V08-1140 | 9d | 0d | Outdoor Water Line [8]; Outdoor Drainage [8] | 13,423.68 |
| B01-V01~V08-1520 |  | Steel Fixing & Carpentry For "Front" Fence Columns | 4d | 2024-03-13 | 2024-03-17 | B01-V01~V08-1500 | 21d | 0d |  |  |
| B01-V01~V08-1530 |  | Establishing Elec For "Front" Fence Columns | 4d | 2024-03-18 | 2024-03-21 | B01-V01~V08-1520 | 21d | 0d |  |  |
| B01-V01~V08-1540 |  | Establishing Elec For Fence & Yard | 2d | 2024-03-18 | 2024-03-19 | B01-V01~V08-1510 | 9d | 0d | Elec Establishment Fence & Yard [8] | 17,898.32 |
| B01-V01~V08-1550 |  | Backfilling the Yard | 4d | 2024-03-20 | 2024-03-24 | B01-V01~V08-1540 | 9d | 0d | Backfilling the Yard [8] | 10,560 |
| B01-V01~V08-1560 |  | Pouring Concrete Wall Of "Front" Fence Columns | 2d | 2024-03-23 | 2024-03-24 | B01-V01~V08-1530 | 21d | 0d | Front Fence Walls [8] | 17,898.32 |
| B01-V01~V08-1570 |  | Pouring Concrete Crown Of "Front" Fence Columns | 3d | 2024-03-25 | 2024-03-27 | B01-V01~V08-1560 | 21d | 0d | Fence Columns - C Chanel [8] | 3,311.2 |
| B01-V01~V08-1580 |  | Bardoura Works For Yard | 5d | 2024-03-25 | 2024-03-30 | B01-V01~V08-1550 | 9d | 0d | Bardoura Works For Yard [8] | 14,408.16 |
| B01-V01~V08-1590 |  | Pouring Concrete Flower Basin Of "Front" Fence Columns | 4d | 2024-03-28 | 2024-04-01 | B01-V01~V08-1570 | 21d | 0d |  |  |
| B01-V01~V08-1600 |  | Antitermite Treatment For Yard | 1d | 2024-03-31 | 2024-03-31 | B01-V01~V08-1580 | 9d | 0d | Antitermite Treatment For Yard [8] |  |
| B01-V01~V08-1610 |  | Pouring Concrete For Yard | 1d | 2024-04-01 | 2024-04-01 | B01-V01~V08-1600 | 9d | 0d |  |  |
| B01-V01~V08-1620 |  | Block Work For Flower Basin | 5d | 2024-04-02 | 2024-04-07 | B01-V01~V08-1610 | 9d | 0d |  |  |
| B01-V01~V08-1630 |  | Plastering Work For Flower Basin | 4d | 2024-04-08 | 2024-04-11 | B01-V01~V08-1620 | 9d | 0d |  |  |
| B01-V01~V08-1640 |  | Interlock Works For The Yard | 6d | 2024-04-13 | 2024-04-18 | B01-V01~V08-1630 | 9d | 0d | Interlock Works For The Yard [8] | 36,776.32 |
| B01-V01~V08-1650 |  | External Grading Works For The Villa | 4d | 2024-04-20 | 2024-04-23 | B01-V01~V08-1640 | 11d | 0d | External Grading Works For The Villa [8] | 3,221.68 |
| B01-V01~V08-1660 |  | Installation The Exterior Door & Garage Door | 5d | 2024-04-20 | 2024-04-24 | B01-V01~V08-1640 | 14d | 2d | Installation The Exterior Garage Door [8]; Installation The Exterior Door [8] | 40,002.72 |
| B01-V01~V08-1670 |  | Fixing Floor Drain For The Yard | 2d | 2024-04-20 | 2024-04-21 | B01-V01~V08-1640 | 17d | 5d | Floor Drain & Clean Out [8] | 13,423.76 |
| B01-V01~V08-1680 |  | Granite Surronds Around The Villa | 4d | 2024-04-24 | 2024-04-28 | B01-V01~V08-1650 | 11d | 2d | Granite Surronds Around The Villa [8] | 25,818.32 |
| B01-V01~V08-1690 |  | Painting The Base Surface Of The Fence | 2d | 2024-04-24 | 2024-04-25 | B01-V01~V08-1750 | 9d | 0d |  |  |
| B01-V01~V08-1700 |  | Painting The Final Face Of The Fence | 4d | 2024-04-27 | 2024-04-30 | B01-V01~V08-1690 | 9d | 0d | Painting Final Face Of The Fence [8] | 37,586.48 |
| B01-V01~V08-1710 |  | Exterior Painting Of The Villa | 7d | 2024-05-01 | 2024-05-08 | B01-V01~V08-1680, B01-V01~V08-1700, B01-V01~V08-1660, B01-V01~V08-1670 | 9d | 0d | Exterior Painting Of The Villa [8]; Exterior Painting Staircase House [8] | 105,684.16 |
| B01-V01~V08-1720 |  | Installation Elec Fixtures & Accessories For The Yard | 4d | 2024-05-09 | 2024-05-13 | B01-V01~V08-1700, B01-V01~V08-1710 | 84d | 0d | Elec feeding panels GF & FF [8] | 22,372.88 |

| ID | WBS | Activity | Duration | Start | Finish | Predecessors | Total float | Free float | Resources | Cost | Department-1 |
| --- | --- | --- | --- | --- | --- | --- | --- | --- | --- | --- | --- |
|  | 5 | **External Sidewalk Works** |  | 2024-04-02 | 2024-05-18 |  |  |  |  |  |  |
| B01-V01~V08-1730 |  | Connection The Drain To The Piblic Network | 3d | 2024-04-02 | 2024-04-04 | B01-V01~V08-1510, B01-V01~V08-1590 | 21d | 4d | Connection Drain To The Piblic Network [8]; Connection Water To The Piblic Network [8] | 13,423.68 |  |
| B01-V01~V08-1740 |  | Pardora Works For The External Sidewalk | 2d | 2024-04-20 | 2024-04-21 | B01-V01~V08-1640, B01-V01~V08-1730 | 9d | 0d |  |  |  |
| B01-V01~V08-1750 |  | Interlock Works For The Exerrnal Sidewalk | 2d | 2024-04-22 | 2024-04-23 | B01-V01~V08-1740 | 9d | 0d |  |  |  |
| B01-V01~V08-1760 |  | Pulling The Villa's Main Elec Cable | 4d | 2024-05-14 | 2024-05-18 | B01-V01~V08-1750, B01-V01~V08-1720 | 84d | 0d | Elec Work Testing [8] | 22,819.84 |  |
|  | 6 | **Final Testing & Handover** |  | 2024-05-11 | 2024-06-05 |  |  |  |  |  |  |
| B01-V01~V08-1770 |  | Mech Work Testing & Handover | 5d | 2024-05-11 | 2024-05-15 | B01-V01~V08-1730, B01-V01~V08-1340, B01-V01~V08-1380 | 91d | 2d | Mech Work Testing & Handover [8] | 14,318.64 |  |
| B01-V01~V08-1780 |  | Arch Snaglist & Handover | 5d | 2024-05-16 | 2024-05-21 | B01-V01~V08-1750, B01-V01~V08-1710, B01-V01~V08-1400 | 86d | 2d | Arch Snaglist & Handover [8] | 77,320.64 |  |
| B01-V01~V08-1790 |  | ElecWork Testing & Handover | 5d | 2024-05-19 | 2024-05-23 | B01-V01~V08-1760, B01-V01~V08-1370 | 84d | 0d | Elec Work Handover [8] | 23,804.72 |  |
| B01-V01~V08-1800 |  | Final Handover Of The Villa To The Consltant | 5d | 2024-05-25 | 2024-05-29 | B01-V01~V08-1780, B01-V01~V08-1790, B01-V01~V08-1770, B01-V01~V08-1410 | 84d | 0d |  |  |  |
| B01-V01~V08-1810 |  | Customer Delivery | 6d | 2024-05-30 | 2024-06-05 | B01-V01~V08-1800 | 84d | 1d |  |  |  |
|  | 1 | **B01-V09~V16** |  | 2024-01-06 | 2024-06-13 |  |  |  |  |  |  |
|  | 2 | **Under Grond Slap Works** |  | 2024-01-06 | 2024-02-06 |  |  |  |  |  |  |
| B01-V09~V16-1000 |  | Excavation&Compaction of Fondation | 4d | 2024-01-06 | 2024-01-09 | B01-V01~V08-1000 | 1d | 0d | Clearing & Groubbing [8]; Excavation & Leveling [8]; Stone Layer [8]; A3 Layer [8]; A1-a 1st Layer [8]; A1-a 2ed Layer [8] | 163,545.76 | Civil |
| B01-V09~V16-1010 |  | Pouring Concrete For Bedding | 2d | 2024-01-10 | 2024-01-11 | B01-V09~V16-1000, B01-V01~V08-1010 | 1d | 0d | PC Concrete [8]; PC Carpentry [8]; RC 18 MPA [18 M3] | 37,899.68 | Civil |
| B01-V09~V16-1020 |  | Reinforcement Concrete For Foundation | 4d | 2024-01-13 | 2024-01-16 | B01-V09~V16-1010, B01-V01~V08-1020 | 1d | 0d | RC Foundation Carpentry [8]; RC Foundation Steel [8]; RC Foundation Concrete [8] | 201,355.92 | Civil |
| B01-V09~V16-1030 |  | Steel Fixing& Carpenter work for Beams | 4d | 2024-01-17 | 2024-01-21 | B01-V09~V16-1020, B01-V01~V08-1030 | 1d | 0d | RC Grade Beam Carpentry & Steel [8] | 44,745.76 | Civil |
| B01-V09~V16-1040 |  | Mech&Elec Establishment for Beams | 3d | 2024-01-22 | 2024-01-24 | B01-V09~V16-1030, B01-V01~V08-1040 | 1d | 0d |  |  | Mech |
| B01-V09~V16-1050 |  | Pouring Concrete For Beams | 1d | 2024-01-25 | 2024-01-25 | B01-V09~V16-1040, B01-V01~V08-1050 | 1d | 0d | RC Grade Beam Concrete [8] | 77,141.68 | Civil |
| B01-V09~V16-1060 |  | Bitmen Coating For Fondation&Beams | 2d | 2024-01-27 | 2024-01-28 | B01-V09~V16-1050, B01-V01~V08-1060 | 1d | 0d | Bitumen Coating Foundations & Grade Beams [8] | 22,372.88 | Civil |
| B01-V09~V16-1070 |  | Backfilling Inside Fondations | 2d | 2024-01-29 | 2024-01-30 | B01-V09~V16-1060, B01-V01~V08-1070 | 1d | 0d | Backfilling 1st Layer [8]; Backfilling 2ed Layer [8] | 11,186.4 | Civil |
| B01-V09~V16-1080 |  | Mech Works Under Grond Slap | 3d | 2024-01-31 | 2024-02-03 | B01-V09~V16-1070, B01-V01~V08-1080 | 1d | 0d | Mech Establishment Under Ground Slap [8] | 13,423.76 | Mech |
| B01-V09~V16-1090 |  | Steel Fixing& Carpenter work for Ground Slap | 2d | 2024-02-04 | 2024-02-05 | B01-V09~V16-1080, B01-V01~V08-1090 | 1d | 0d | Steel & Carpentry For Ground Slap [8] | 10,246.8 | Civil |
| B01-V09~V16-1100 |  | Anti Termite Treatment For Ground Slap | 1d | 2024-02-06 | 2024-02-06 | B01-V09~V16-1090, B01-V01~V08-1100 | 1d | 0d | Anti Termite Treatment nder Ground Slap [8] | 2,237.28 | Civil |
| B01-V09~V16-1110 |  | Pouring Concrete For Ground Slap | 1d | 2024-02-06 | 2024-02-06 | B01-V09~V16-1100 FF, B01-V09~V16-1090, B01-V01~V08-1110 | 1d |  | Concrete For Ground Slap [8] | 58,169.52 | Civil |

| ID | WBS | Activity | Duration | Start | Finish | Predecessors | Total float | Free float | Resources | Cost | Department-1 |
| --- | --- | --- | --- | --- | --- | --- | --- | --- | --- | --- | --- |
|  | 4 | **Precast Works** |  | 2024-02-08 | 2024-02-15 |  |  |  |  |  |  |
| B01-V09~V16-1120 |  | Precast Constrction | 7d | 2024-02-08 | 2024-02-15 | B01-V09~V16-1110, B01-V01~V08-1120 | 0d |  | Precast Walls GF [8]; Hollow Core Slap GF [8]; Precast Stairs & staircase House [8]; Thermal insollation Outside Walls [8]; Concrete structure joints [8]; Hollow Core Slap FF [8]; Precast Walls FF [8] | 1,513,838.56 | Civil |
|  | 1 | **Works Inside The Villa** |  | 2024-02-17 | 2024-06-01 |  |  |  |  |  |  |
| B01-V09~V16-1130 |  | Block Work For GF & Estabishment 1F | 6d | 2024-02-17 | 2024-02-22 | B01-V09~V16-1120, B01-V01~V08-1130 | 13d | 0d | Block GF [8] | 13,647.1 | Arc |
| B01-V09~V16-1140 |  | L.L & H.L Drainage | 6d | 2024-02-24 | 2024-02-29 | B01-V09~V16-1130, B01-V01~V08-1140 | 13d | 0d | HL Drainage [8]; L.L Drainage [8] | 89,489.28 | Mech |
| B01-V09~V16-1150 |  | Elec Establishment For GF & 1F | 3d | 2024-02-24 | 2024-02-26 | B01-V09~V16-1130, B01-V01~V08-1150 | 16d | 3d | Elec Establishment GF [8] | 26,840.73 | Elec |
| B01-V09~V16-1160 |  | Screed Work For 1F & Roof | 6d | 2024-03-02 | 2024-03-07 | B01-V09~V16-1140, B01-V09~V16-1150, B01-V01~V08-1160 | 13d | 0d | Screed 1st Floor [8]; Screed Roof Floor [8]; Leveling Screed 1st Floor [8]; Leveling Screed Roof Floor [8] | 268,467.85 | Civil |
| B01-V09~V16-1170 |  | Water Tank & Heater Foundations | 4d | 2024-03-09 | 2024-03-12 | B01-V09~V16-1160, B01-V01~V08-1170 | 17d | 0d |  |  | Civil |
| B01-V09~V16-1180 |  | Block Works For 1F | 3d | 2024-03-09 | 2024-03-11 | B01-V09~V16-1160, B01-V01~V08-1180 | 13d | 0d | Block FF [8] | 20,537.81 | Arc |
| B01-V09~V16-1190 |  | Water Line Network | 6d | 2024-03-12 | 2024-03-18 | B01-V09~V16-1180, B01-V01~V08-1190 | 13d | 0d | Water Line Network [8] | 40,261.13 | Mech |
| B01-V09~V16-1200 |  | Continue Elec Establishment For GF & 1F | 3d | 2024-03-12 | 2024-03-14 | B01-V09~V16-1180, B01-V01~V08-1200 | 16d | 3d | Elec Establishment FF [8] | 26,840.73 | Elec |
| B01-V09~V16-1210 |  | Thermal Insulation For Roof | 5d | 2024-03-13 | 2024-03-18 | B01-V09~V16-1170, B01-V01~V08-1210 | 17d | 0d | Roof Insulation [8] | 32,530.16 | Arc |
| B01-V09~V16-1220 |  | Roof Floor Tiles | 6d | 2024-03-19 | 2024-03-25 | B01-V09~V16-1210, B01-V01~V08-1220 | 17d | 1d | Roof Tiles [8]; Roof Tiles Joints [8]; Re_Test Roof Insulation [8] | 63,179.38 | Arc |
| B01-V09~V16-1230 |  | Plaster Work For Villa | 6d | 2024-03-19 | 2024-03-25 | B01-V09~V16-1190, B01-V09~V16-1200, B01-V01~V08-1230 | 13d | 0d | Establishing a plastering GF [8]; Establishing a plastering FF [8]; Plastering GF [8]; Plastering FF [8] | 49,263.81 |  |
| B01-V09~V16-1240 |  | Marbale Stairs & Handrails | 6d | 2024-03-26 | 2024-04-01 | B01-V09~V16-1230, B01-V01~V08-1240 | 35d | 1d | Marbale Stairs [8]; Stairs Handrails SS [8] | 91,494.69 |  |
| B01-V09~V16-1250 |  | Water Proofing Of Bathrooms | 4d | 2024-03-26 | 2024-03-30 | B01-V09~V16-1230, B01-V01~V08-1250 | 13d | 0d | Bathrooms InsulationGF & FF [8] | 134.24 |  |
| B01-V09~V16-1260 |  | Pulling The Elec Wires | 4d | 2024-03-26 | 2024-03-30 | B01-V09~V16-1230, B01-V01~V08-1260 | 23d | 3d | Elec Wires GF [8]; Elec Wires FF [8] | 80,542.4 |  |
| B01-V09~V16-1270 |  | Bathroom Tiles | 4d | 2024-03-31 | 2024-04-03 | B01-V09~V16-1250, B01-V09~V16-1220, B01-V01~V08-1270 | 13d | 0d | Ceramic Walls Kitchen [8]; Ceramic Walls Bathrooms GF [8]; Ceramic Walls Bathrooms FF [8]; Ceramic Tiles Bathrooms GF [8]; Ceramic Tiles Kitchen GF [8]; Ceramic Tiles Store GF [8] | 73,204.08 |  |
| B01-V09~V16-1280 |  | Structure For Gypsum | 6d | 2024-04-04 | 2024-04-10 | B01-V09~V16-1270, B01-V01~V08-1280 | 13d | 0d | Structure For Gypsum GF Rooms [8]; Structure For Gypsum FF Rooms [8]; Structure For Gypsum Bathrooms & Kitchen [8] | 33,550.81 |  |
| B01-V09~V16-1290 |  | Gypsum Board For Room | 4d | 2024-04-11 | 2024-04-15 | B01-V09~V16-1280, B01-V09~V16-1260, B01-V01~V08-1290 | 13d | 0d | Gypsum Board For GF Room [8]; Gypsum Board For FF Room [8] | 35,796.64 |  |
| B01-V09~V16-1300 |  | Installation Of Gypsum Board For Bathroom & Kitchen | 4d | 2024-04-16 | 2024-04-20 | B01-V09~V16-1290, B01-V01~V08-1300 | 13d | 0d | Gypsum Board For Bathrooms & Kitchen [8] | 11,052.24 |  |
| B01-V09~V16-1310 |  | Putty Filler For Gypsm Board Ceiling | 6d | 2024-04-21 | 2024-04-27 | B01-V09~V16-1300, B01-V01~V08-1310 | 13d | 0d | Putty Filler 1st Layer Roof all Rooms [8]; Putty Filler 1st Layer Roof all Bathrooms & Kitchen [8]; Putty Filler1st Layer walls [8] | 62,182.52 |  |
| B01-V09~V16-1320 |  | Fixing Shower Glass | 4d | 2024-04-28 | 2024-05-01 | B01-V09~V16-1310, B01-V01~V08-1320 | 21d | 0d | Shower Glass [8] | 22,372.88 |  |
| B01-V09~V16-1330 |  | Interior Wall Putty Filler | 6d | 2024-04-28 | 2024-05-04 | B01-V09~V16-1310, B01-V09~V16-1240, B01-V01~V08-1330 | 13d | 0d | Putty Filler 2ed Layer Roof & WAlls GF [8]; Putty Filler 2ed Layer Roof & WAlls FF [8] | 62,150.21 |  |
| B01-V09~V16-1340 |  | Installation Of Sanitry Fixture | 7d | 2024-05-02 | 2024-05-09 | B01-V09~V16-1320, B01-V01~V08-1340 | 21d | 0d | Mech Fixtures & Accessories [8] | 98,435.64 |  |
| B01-V09~V16-1350 |  | 1st Face Paint | 6d | 2024-05-05 | 2024-05-11 | B01-V09~V16-1330, B01-V01~V08-1350 | 13d | 0d |  |  |  |
| B01-V09~V16-1360 |  | Installation Of Aluminum Windows | 7d | 2024-05-05 | 2024-05-12 | B01-V09~V16-1330, B01-V01~V08-1360 | 23d | 0d | Aluminum Windows [8] | 84,795.68 |  |
| B01-V09~V16-1370 |  | Installation Of Elec Fixture & Accessories | 7d | 2024-05-05 | 2024-05-12 | B01-V09~V16-1310, B01-V09~V16-1330, B01-V09~V16-1260, B01-V01~V08-1370 | 37d | 0d | Elec Fixtures & Accessories Villa & Yard [8]; Elec Cables GF & FF & Earthing [8] | 53,693.31 |  |
| B01-V09~V16-1380 |  | Installation Of Water Tank-Heater & Pumps | 7d | 2024-05-11 | 2024-05-18 | B01-V09~V16-1340, B01-V01~V08-1380, B01-V09~V16-1220 | 21d | 0d | Water Tank & booster Pump [8]; Lower Pump [8]; Heater [8] | 129,756.23 |  |
| B01-V09~V16-1390 |  | Installation Of Parquet | 4d | 2024-05-12 | 2024-05-15 | B01-V09~V16-1350, B01-V01~V08-1390 | 13d | 0d | Installation Of Parquet [8] | 52,978.96 |  |
| B01-V09~V16-1400 |  | Installation Of Wooden Doors | 7d | 2024-05-16 | 2024-05-23 | B01-V09~V16-1390, B01-V01~V08-1400 | 13d | 0d | Exterior Wooden Doors [8]; Wooden Doors Accessories all Villa [8]; Wooden Doors Kitchen & Bathroom without Accessories [8] | 142,105.45 |  |
| B01-V09~V16-1410 |  | Final Face Paint | 7d | 2024-05-25 | 2024-06-01 | B01-V09~V16-1360, B01-V09~V16-1400, B01-V01~V08-1410 | 13d | 0d | Final Face Paint Villa [8] | 31,096.77 |  |

| ID | WBS | Activity | Duration | Start | Finish | Predecessors | Total float | Free float | Resources | Cost |
| --- | --- | --- | --- | --- | --- | --- | --- | --- | --- | --- |
|  | 3 | **Fence & Courtyard Works** |  | 2024-02-17 | 2024-05-21 |  |  |  |  |  |
| B01-V09~V16-1420 |  | Pouring Bedding Concrete For Fence Fondations | 2d | 2024-02-17 | 2024-02-18 | B01-V09~V16-1120, B01-V01~V08-1420 | 9d | 0d | Excavation Fence Foundations [8] | 4,519.28 |
| B01-V09~V16-1430 |  | RC Concrete For Fence Fondations | 6d | 2024-02-19 | 2024-02-25 | B01-V09~V16-1420, B01-V01~V08-1430 | 9d | 0d | Fence Fondations-Eastern side [8]; Fence Fondations-Westren side [8]; Fence Fondations-Back side [8] | 13,420.32 |
| B01-V09~V16-1440 |  | Steel Fixing & Carpentry For Fence Columns | 6d | 2024-02-26 | 2024-03-03 | B01-V09~V16-1430, B01-V01~V08-1440 | 9d | 0d |  |  |
| B01-V09~V16-1450 |  | Establishing Elec For Fence Columns | 4d | 2024-03-04 | 2024-03-07 | B01-V09~V16-1440, B01-V01~V08-1450 | 9d | 0d |  |  |
| B01-V09~V16-1460 |  | Pouring Concrete For Fence Columns | 1d | 2024-03-09 | 2024-03-09 | B01-V09~V16-1450, B01-V01~V08-1460 | 9d | 0d | Fence Columns-Eastern side [8]; Fence Columns-Westren side [8]; Fence Columns-Back side [8] | 9,665.04 |
| B01-V09~V16-1470 |  | Installation Precast Panel For Fence | 5d | 2024-03-10 | 2024-03-14 | B01-V09~V16-1460, B01-V01~V08-1470 | 9d | 0d | Hollow Core Walls [8] | 71,593.2 |
| B01-V09~V16-1480 |  | Bitumen Coating For Fence Fondations | 4d | 2024-03-16 | 2024-03-19 | B01-V09~V16-1470, B01-V01~V08-1480 | 9d | 0d |  |  |
| B01-V09~V16-1490 |  | Pouring Bedding Concrete For "Front" Fence Fondations | 1d | 2024-03-16 | 2024-03-16 | B01-V09~V16-1470, B01-V01~V08-1490 | 21d | 0d |  |  |
| B01-V09~V16-1500 |  | RC Concrete For "Front" Fence Fondations | 4d | 2024-03-17 | 2024-03-20 | B01-V09~V16-1490, B01-V01~V08-1500 | 21d | 0d | Front Fence Fondations [8] | 8,904.4 |
| B01-V09~V16-1510 |  | Outdoor Drainage & Water Line | 5d | 2024-03-20 | 2024-03-25 | B01-V09~V16-1480, B01-V09~V16-1140, B01-V01~V08-1510 | 9d | 0d | Outdoor Drainage [8]; Outdoor Water Line [8] | 13,423.68 |
| B01-V09~V16-1520 |  | Steel Fixing & Carpentry For "Front" Fence Columns | 4d | 2024-03-21 | 2024-03-25 | B01-V09~V16-1500, B01-V01~V08-1520 | 21d | 0d |  |  |
| B01-V09~V16-1530 |  | Establishing Elec For "Front" Fence Columns | 4d | 2024-03-26 | 2024-03-30 | B01-V09~V16-1520, B01-V01~V08-1530 | 21d | 0d |  |  |
| B01-V09~V16-1540 |  | Establishing Elec For Fence & Yard | 2d | 2024-03-26 | 2024-03-27 | B01-V09~V16-1510, B01-V01~V08-1540 | 9d | 0d | Elec Establishment Fence & Yard [8] | 17,898.32 |
| B01-V09~V16-1550 |  | Backfilling the Yard | 4d | 2024-03-28 | 2024-04-01 | B01-V09~V16-1540, B01-V01~V08-1550 | 9d | 0d | Backfilling the Yard [8] | 10,560 |
| B01-V09~V16-1560 |  | Pouring Concrete Wall Of "Front" Fence Columns | 2d | 2024-03-31 | 2024-04-01 | B01-V09~V16-1530, B01-V01~V08-1560 | 21d | 0d | Front Fence Walls [8] | 17,898.32 |
| B01-V09~V16-1570 |  | Pouring Concrete Crown Of "Front" Fence Columns | 3d | 2024-04-02 | 2024-04-04 | B01-V09~V16-1560, B01-V01~V08-1570 | 21d | 0d | Fence Columns - C Chanel [8] | 3,310.37 |
| B01-V09~V16-1580 |  | Bardoura Works For Yard | 5d | 2024-04-02 | 2024-04-07 | B01-V09~V16-1550, B01-V01~V08-1580 | 9d | 0d | Bardoura Works For Yard [8] | 14,408.16 |
| B01-V09~V16-1590 |  | Pouring Concrete Flower Basin Of "Front" Fence Columns | 4d | 2024-04-06 | 2024-04-09 | B01-V09~V16-1570, B01-V01~V08-1590 | 21d | 0d |  |  |
| B01-V09~V16-1600 |  | Antitermite Treatment For Yard | 1d | 2024-04-08 | 2024-04-08 | B01-V09~V16-1580, B01-V01~V08-1600 | 9d | 0d | Antitermite Treatment For Yard [8] |  |
| B01-V09~V16-1610 |  | Pouring Concrete For Yard | 1d | 2024-04-09 | 2024-04-09 | B01-V09~V16-1600, B01-V01~V08-1610 | 9d | 0d |  |  |
| B01-V09~V16-1620 |  | Block Work For Flower Basin | 5d | 2024-04-10 | 2024-04-15 | B01-V09~V16-1610, B01-V01~V08-1620 | 9d | 0d |  |  |
| B01-V09~V16-1630 |  | Plastering Work For Flower Basin | 4d | 2024-04-16 | 2024-04-20 | B01-V09~V16-1620, B01-V01~V08-1630 | 9d | 0d |  |  |
| B01-V09~V16-1640 |  | Interlock Works For The Yard | 6d | 2024-04-21 | 2024-04-27 | B01-V09~V16-1630, B01-V01~V08-1640 | 9d | 0d | Interlock Works For The Yard [8] | 36,776.32 |
| B01-V09~V16-1650 |  | External Grading Works For The Villa | 4d | 2024-04-28 | 2024-05-01 | B01-V09~V16-1640, B01-V01~V08-1650 | 11d | 0d | External Grading Works For The Villa [8] | 3,221.68 |
| B01-V09~V16-1660 |  | Installation The Exterior Door & Garage Door | 5d | 2024-04-28 | 2024-05-02 | B01-V09~V16-1640, B01-V01~V08-1660 | 14d | 2d | Installation The Exterior Garage Door [8]; Installation The Exterior Door [8] | 40,002.72 |
| B01-V09~V16-1670 |  | Fixing Floor Drain For The Yard | 2d | 2024-04-28 | 2024-04-29 | B01-V09~V16-1640, B01-V01~V08-1670 | 17d | 5d | Floor Drain & Clean Out [8] | 13,423.76 |
| B01-V09~V16-1680 |  | Granite Surronds Around The Villa | 4d | 2024-05-02 | 2024-05-06 | B01-V09~V16-1650, B01-V01~V08-1680 | 11d | 2d | Granite Surronds Around The Villa [8] | 25,818.32 |
| B01-V09~V16-1690 |  | Painting The Base Surface Of The Fence | 2d | 2024-05-02 | 2024-05-04 | B01-V09~V16-1750, B01-V01~V08-1690 | 9d | 0d |  |  |
| B01-V09~V16-1700 |  | Painting The Final Face Of The Fence | 4d | 2024-05-05 | 2024-05-08 | B01-V09~V16-1690, B01-V01~V08-1700 | 9d | 0d | Painting Final Face Of The Fence [8] | 37,586.48 |
| B01-V09~V16-1710 |  | Exterior Painting Of The Villa | 7d | 2024-05-09 | 2024-05-16 | B01-V09~V16-1680, B01-V09~V16-1700, B01-V09~V16-1660, B01-V09~V16-1670, B01-V01~V08-1710 | 9d | 0d | Exterior Painting Of The Villa [8]; Exterior Painting Staircase House [8] | 105,684.16 |
| B01-V09~V16-1720 |  | Installation Elec Fixtures & Accessories For The Yard | 4d | 2024-05-18 | 2024-05-21 | B01-V09~V16-1700, B01-V09~V16-1710, B01-V01~V08-1720 | 83d | 0d | Elec feeding panels GF & FF [8] | 22,372.88 |

| ID | WBS | Activity | Duration | Start | Finish | Predecessors | Total float | Free float | Resources | Cost | Department-1 |
| --- | --- | --- | --- | --- | --- | --- | --- | --- | --- | --- | --- |
|  | 5 | **External Sidewalk Works** |  | 2024-04-10 | 2024-05-26 |  |  |  |  |  |  |
| B01-V09~V16-1730 |  | Connection The Drain To The Piblic Network | 3d | 2024-04-10 | 2024-04-13 | B01-V09~V16-1510, B01-V09~V16-1590, B01-V01~V08-1730 | 21d | 4d | Connection Drain To The Piblic Network [8]; Connection Water To The Piblic Network [8] | 13,420.32 |  |
| B01-V09~V16-1740 |  | Pardora Works For The External Sidewalk | 2d | 2024-04-28 | 2024-04-29 | B01-V09~V16-1640, B01-V09~V16-1730, B01-V01~V08-1740 | 9d | 0d |  |  |  |
| B01-V09~V16-1750 |  | Interlock Works For The Exerrnal Sidewalk | 2d | 2024-04-30 | 2024-05-01 | B01-V09~V16-1740, B01-V01~V08-1750 | 9d | 0d |  |  |  |
| B01-V09~V16-1760 |  | Pulling The Villa's Main Elec Cable | 4d | 2024-05-22 | 2024-05-26 | B01-V09~V16-1750, B01-V09~V16-1720, B01-V01~V08-1760 | 83d | 0d | Elec Work Testing [8] | 22,819.84 |  |
|  | 6 | **Final Testing & Handover** |  | 2024-05-19 | 2024-06-13 |  |  |  |  |  |  |
| B01-V09~V16-1770 |  | Mech Work Testing & Handover | 5d | 2024-05-19 | 2024-05-23 | B01-V09~V16-1730, B01-V09~V16-1340, B01-V09~V16-1380, B01-V01~V08-1770 | 90d | 2d | Mech Work Testing & Handover [8] | 14,318.64 |  |
| B01-V09~V16-1780 |  | Arch Snaglist & Handover | 5d | 2024-05-25 | 2024-05-29 | B01-V09~V16-1750, B01-V09~V16-1710, B01-V09~V16-1400, B01-V01~V08-1780 | 85d | 2d | Arch Snaglist & Handover [8] | 77,320.64 |  |
| B01-V09~V16-1790 |  | ElecWork Testing & Handover | 5d | 2024-05-27 | 2024-06-01 | B01-V09~V16-1760, B01-V09~V16-1370, B01-V01~V08-1790 | 83d | 0d | Elec Work Handover [8] | 23,804.72 |  |
| B01-V09~V16-1800 |  | Final Handover Of The Villa To The Consltant | 5d | 2024-06-02 | 2024-06-06 | B01-V09~V16-1780, B01-V09~V16-1790, B01-V09~V16-1770, B01-V09~V16-1410, B01-V01~V08-1800 | 83d | 0d |  |  |  |
| B01-V09~V16-1810 |  | Customer Delivery | 6d | 2024-06-08 | 2024-06-13 | B01-V09~V16-1800, B01-V01~V08-1810 | 83d | 1d |  |  |  |
|  | 2 | **B01-V17~V24** |  | 2024-01-10 | 2024-06-22 |  |  |  |  |  |  |
|  | 2 | **Under Grond Slap Works** |  | 2024-01-10 | 2024-02-11 |  |  |  |  |  |  |
| B01-V17~V24-1000 |  | Excavation&Compaction of Fondation | 4d | 2024-01-10 | 2024-01-14 | B01-V09~V16-1000 | 4d | 0d | Clearing & Groubbing [8]; Excavation & Leveling [8]; Stone Layer [8]; A3 Layer [8]; A1-a 1st Layer [8]; A1-a 2ed Layer [8] | 163,545.76 | Civil |
| B01-V17~V24-1010 |  | Pouring Concrete For Bedding | 2d | 2024-01-15 | 2024-01-16 | B01-V17~V24-1000, B01-V09~V16-1010 | 4d | 0d | PC Carpentry [8]; PC Concrete [8]; RC 18 MPA [9 M3] | 37,899.68 | Civil |
| B01-V17~V24-1020 |  | Reinforcement Concrete For Foundation | 4d | 2024-01-17 | 2024-01-21 | B01-V17~V24-1010, B01-V09~V16-1020 | 4d | 0d | RC Foundation Carpentry [8]; RC Foundation Steel [8]; RC Foundation Concrete [8] | 201,355.92 | Civil |
| B01-V17~V24-1030 |  | Steel Fixing& Carpenter work for Beams | 4d | 2024-01-22 | 2024-01-25 | B01-V17~V24-1020, B01-V09~V16-1030 | 4d | 0d | RC Grade Beam Carpentry & Steel [8] | 44,745.76 | Civil |
| B01-V17~V24-1040 |  | Mech&Elec Establishment for Beams | 3d | 2024-01-27 | 2024-01-29 | B01-V17~V24-1030, B01-V09~V16-1040 | 4d | 0d |  |  | Mech |
| B01-V17~V24-1050 |  | Pouring Concrete For Beams | 1d | 2024-01-30 | 2024-01-30 | B01-V17~V24-1040, B01-V09~V16-1050 | 4d | 0d | RC Grade Beam Concrete [8] | 77,141.68 | Civil |
| B01-V17~V24-1060 |  | Bitmen Coating For Fondation&Beams | 2d | 2024-01-31 | 2024-02-01 | B01-V17~V24-1050, B01-V09~V16-1060 | 4d | 0d | Bitumen Coating Foundations & Grade Beams [8] | 22,372.88 | Civil |
| B01-V17~V24-1070 |  | Backfilling Inside Fondations | 2d | 2024-02-03 | 2024-02-04 | B01-V17~V24-1060, B01-V09~V16-1070 | 4d | 0d | Backfilling 1st Layer [8]; Backfilling 2ed Layer [8] | 11,186.4 | Civil |
| B01-V17~V24-1080 |  | Mech Works Under Grond Slap | 3d | 2024-02-05 | 2024-02-07 | B01-V17~V24-1070, B01-V09~V16-1080 | 4d | 0d | Mech Establishment Under Ground Slap [8] | 13,423.42 | Mech |
| B01-V17~V24-1090 |  | Steel Fixing& Carpenter work for Ground Slap | 2d | 2024-02-08 | 2024-02-10 | B01-V17~V24-1080, B01-V09~V16-1090 | 4d | 0d | Steel & Carpentry For Ground Slap [8] | 10,246.8 | Civil |
| B01-V17~V24-1100 |  | Anti Termite Treatment For Ground Slap | 1d | 2024-02-11 | 2024-02-11 | B01-V17~V24-1090, B01-V09~V16-1100 | 4d | 0d | Anti Termite Treatment nder Ground Slap [8] | 2,237.28 | Civil |
| B01-V17~V24-1110 |  | Pouring Concrete For Ground Slap | 1d | 2024-02-11 | 2024-02-11 | B01-V17~V24-1100 FF, B01-V17~V24-1090, B01-V09~V16-1110 | 4d | 3d | Concrete For Ground Slap [8] | 58,169.52 | Civil |

| ID | WBS | Activity | Duration | Start | Finish | Predecessors | Total float | Free float | Resources | Cost | Department-1 |
| --- | --- | --- | --- | --- | --- | --- | --- | --- | --- | --- | --- |
|  | 4 | **Precast Works** |  | 2024-02-17 | 2024-02-24 |  |  |  |  |  |  |
| B01-V17~V24-1120 |  | Precast Constrction | 7d | 2024-02-17 | 2024-02-24 | B01-V17~V24-1110, B01-V09~V16-1120 | 0d |  | Precast Walls GF [8]; Hollow Core Slap GF [8]; Precast Stairs & staircase House [8]; Thermal insollation Outside Walls [8]; Concrete structure joints [8]; Precast Walls FF [8]; Hollow Core Slap FF [8] | 1,513,838.56 | Civil |
|  | 1 | **Works Inside The Villa** |  | 2024-02-25 | 2024-06-09 |  |  |  |  |  |  |
| B01-V17~V24-1130 |  | Block Work For GF & Estabishment 1F | 6d | 2024-02-25 | 2024-03-02 | B01-V17~V24-1120, B01-V09~V16-1130 | 13d | 0d | Block GF [8] | 13,647.1 | Arc |
| B01-V17~V24-1140 |  | L.L & H.L Drainage | 6d | 2024-03-03 | 2024-03-09 | B01-V17~V24-1130, B01-V09~V16-1140 | 13d | 0d | HL Drainage [8]; L.L Drainage [8] | 89,489.28 | Mech |
| B01-V17~V24-1150 |  | Elec Establishment For GF & 1F | 3d | 2024-03-03 | 2024-03-05 | B01-V17~V24-1130, B01-V09~V16-1150 | 16d | 3d | Elec Establishment GF [8] | 26,840.73 | Elec |
| B01-V17~V24-1160 |  | Screed Work For 1F & Roof | 6d | 2024-03-10 | 2024-03-16 | B01-V17~V24-1140, B01-V17~V24-1150, B01-V09~V16-1160 | 13d | 0d | Screed 1st Floor [8]; Screed Roof Floor [8]; Leveling Screed 1st Floor [8]; Leveling Screed Roof Floor [8] | 268,467.85 | Civil |
| B01-V17~V24-1170 |  | Water Tank & Heater Foundations | 4d | 2024-03-17 | 2024-03-20 | B01-V17~V24-1160, B01-V09~V16-1170 | 17d | 0d |  |  | Civil |
| B01-V17~V24-1180 |  | Block Works For 1F | 3d | 2024-03-17 | 2024-03-19 | B01-V17~V24-1160, B01-V09~V16-1180 | 13d | 0d | Block FF [8] | 20,537.81 | Arc |
| B01-V17~V24-1190 |  | Water Line Network | 6d | 2024-03-20 | 2024-03-26 | B01-V17~V24-1180, B01-V09~V16-1190 | 13d | 0d | Water Line Network [8] | 40,261.13 | Mech |
| B01-V17~V24-1200 |  | Continue Elec Establishment For GF & 1F | 3d | 2024-03-20 | 2024-03-23 | B01-V17~V24-1180, B01-V09~V16-1200 | 16d | 3d | Elec Establishment FF [8] | 26,840.73 | Elec |
| B01-V17~V24-1210 |  | Thermal Insulation For Roof | 5d | 2024-03-21 | 2024-03-26 | B01-V17~V24-1170, B01-V09~V16-1210 | 17d | 0d | Roof Insulation [8] | 32,530.16 | Arc |
| B01-V17~V24-1220 |  | Roof Floor Tiles | 6d | 2024-03-27 | 2024-04-02 | B01-V17~V24-1210, B01-V09~V16-1220 | 17d | 1d | Roof Tiles [8]; Roof Tiles Joints [8]; Re_Test Roof Insulation [8] | 63,179.38 | Arc |
| B01-V17~V24-1230 |  | Plaster Work For Villa | 6d | 2024-03-27 | 2024-04-02 | B01-V17~V24-1190, B01-V17~V24-1200, B01-V09~V16-1230 | 13d | 0d | Establishing a plastering GF [8]; Establishing a plastering FF [8]; Plastering GF [8]; Plastering FF [8] | 49,263.81 |  |
| B01-V17~V24-1240 |  | Marbale Stairs & Handrails | 6d | 2024-04-03 | 2024-04-09 | B01-V17~V24-1230, B01-V09~V16-1240 | 35d | 1d | Marbale Stairs [8]; Stairs Handrails SS [8] | 91,494.69 |  |
| B01-V17~V24-1250 |  | Water Proofing Of Bathrooms | 4d | 2024-04-03 | 2024-04-07 | B01-V17~V24-1230, B01-V09~V16-1250 | 13d | 0d | Bathrooms InsulationGF & FF [8] | 134.24 |  |
| B01-V17~V24-1260 |  | Pulling The Elec Wires | 4d | 2024-04-03 | 2024-04-07 | B01-V17~V24-1230, B01-V09~V16-1260 | 23d | 3d | Elec Wires GF [8]; Elec Wires FF [8] | 80,542.4 |  |
| B01-V17~V24-1270 |  | Bathroom Tiles | 4d | 2024-04-08 | 2024-04-11 | B01-V17~V24-1250, B01-V17~V24-1220, B01-V09~V16-1270 | 13d | 0d | Ceramic Walls Kitchen [8]; Ceramic Walls Bathrooms GF [8]; Ceramic Walls Bathrooms FF [8]; Ceramic Tiles Bathrooms GF [8]; Ceramic Tiles Kitchen GF [8]; Ceramic Tiles Store GF [8] | 73,204.08 |  |
| B01-V17~V24-1280 |  | Structure For Gypsum | 6d | 2024-04-13 | 2024-04-18 | B01-V17~V24-1270, B01-V09~V16-1280 | 13d | 0d | Structure For Gypsum GF Rooms [8]; Structure For Gypsum FF Rooms [8]; Structure For Gypsum Bathrooms & Kitchen [8] | 33,550.81 |  |
| B01-V17~V24-1290 |  | Gypsum Board For Room | 4d | 2024-04-20 | 2024-04-23 | B01-V17~V24-1280, B01-V17~V24-1260, B01-V09~V16-1290 | 13d | 0d | Gypsum Board For GF Room [8]; Gypsum Board For FF Room [8] | 35,796.64 |  |
| B01-V17~V24-1300 |  | Installation Of Gypsum Board For Bathroom & Kitchen | 4d | 2024-04-24 | 2024-04-28 | B01-V17~V24-1290, B01-V09~V16-1300 | 13d | 0d | Gypsum Board For Bathrooms & Kitchen [8] | 11,052.24 |  |
| B01-V17~V24-1310 |  | Putty Filler For Gypsm Board Ceiling | 6d | 2024-04-29 | 2024-05-05 | B01-V17~V24-1300, B01-V09~V16-1310 | 13d | 0d | Putty Filler 1st Layer Roof all Rooms [8]; Putty Filler 1st Layer Roof all Bathrooms & Kitchen [8]; Putty Filler1st Layer walls [8] | 62,182.52 |  |
| B01-V17~V24-1320 |  | Fixing Shower Glass | 4d | 2024-05-06 | 2024-05-09 | B01-V17~V24-1310, B01-V09~V16-1320 | 21d | 0d | Shower Glass [8] | 22,372.88 |  |
| B01-V17~V24-1330 |  | Interior Wall Putty Filler | 6d | 2024-05-06 | 2024-05-12 | B01-V17~V24-1310, B01-V17~V24-1240, B01-V09~V16-1330 | 13d | 0d | Putty Filler 2ed Layer Roof & WAlls GF [8]; Putty Filler 2ed Layer Roof & WAlls FF [8] | 62,150.21 |  |
| B01-V17~V24-1340 |  | Installation Of Sanitry Fixture | 7d | 2024-05-11 | 2024-05-18 | B01-V17~V24-1320, B01-V09~V16-1340 | 21d | 0d | Mech Fixtures & Accessories [8] | 98,435.64 |  |
| B01-V17~V24-1350 |  | 1st Face Paint | 6d | 2024-05-13 | 2024-05-19 | B01-V17~V24-1330, B01-V09~V16-1350 | 13d | 0d |  |  |  |
| B01-V17~V24-1360 |  | Installation Of Aluminum Windows | 7d | 2024-05-13 | 2024-05-20 | B01-V17~V24-1330, B01-V09~V16-1360 | 23d | 0d | Aluminum Windows [8] | 84,795.68 |  |
| B01-V17~V24-1370 |  | Installation Of Elec Fixture & Accessories | 7d | 2024-05-13 | 2024-05-20 | B01-V17~V24-1310, B01-V17~V24-1330, B01-V17~V24-1260, B01-V09~V16-1370 | 37d | 0d | Elec Fixtures & Accessories Villa & Yard [8]; Elec Cables GF & FF & Earthing [8] | 53,692.2 |  |
| B01-V17~V24-1380 |  | Installation Of Water Tank-Heater & Pumps | 7d | 2024-05-19 | 2024-05-26 | B01-V17~V24-1340, B01-V09~V16-1380, B01-V17~V24-1220 | 21d | 0d | Water Tank & booster Pump [8]; Lower Pump [8]; Heater [8] | 129,756.23 |  |
| B01-V17~V24-1390 |  | Installation Of Parquet | 4d | 2024-05-20 | 2024-05-23 | B01-V17~V24-1350, B01-V09~V16-1390 | 13d | 0d | Installation Of Parquet [8] | 52,978.96 |  |
| B01-V17~V24-1400 |  | Installation Of Wooden Doors | 7d | 2024-05-25 | 2024-06-01 | B01-V17~V24-1390, B01-V09~V16-1400 | 13d | 0d | Wooden Doors Kitchen & Bathroom without Accessories [8]; Wooden Doors Accessories all Villa [8]; Exterior Wooden Doors [8] | 142,105.45 |  |
| B01-V17~V24-1410 |  | Final Face Paint | 7d | 2024-06-02 | 2024-06-09 | B01-V17~V24-1360, B01-V17~V24-1400, B01-V09~V16-1410 | 13d | 0d | Final Face Paint Villa [8] | 31,096.77 |  |

| ID | WBS | Activity | Duration | Start | Finish | Predecessors | Total float | Free float | Resources | Cost |
| --- | --- | --- | --- | --- | --- | --- | --- | --- | --- | --- |
|  | 3 | **Fence & Courtyard Works** |  | 2024-02-25 | 2024-05-29 |  |  |  |  |  |
| B01-V17~V24-1420 |  | Pouring Bedding Concrete For Fence Fondations | 2d | 2024-02-25 | 2024-02-26 | B01-V17~V24-1120, B01-V09~V16-1420 | 9d | 0d | Excavation Fence Foundations [8] | 4,519.28 |
| B01-V17~V24-1430 |  | RC Concrete For Fence Fondations | 6d | 2024-02-27 | 2024-03-04 | B01-V17~V24-1420, B01-V09~V16-1430 | 9d | 0d | Fence Fondations-Eastern side [8]; Fence Fondations-Westren side [8]; Fence Fondations-Back side [8] | 13,420.32 |
| B01-V17~V24-1440 |  | Steel Fixing & Carpentry For Fence Columns | 6d | 2024-03-05 | 2024-03-11 | B01-V17~V24-1430, B01-V09~V16-1440 | 9d | 0d |  |  |
| B01-V17~V24-1450 |  | Establishing Elec For Fence Columns | 4d | 2024-03-12 | 2024-03-16 | B01-V17~V24-1440, B01-V09~V16-1450 | 9d | 0d |  |  |
| B01-V17~V24-1460 |  | Pouring Concrete For Fence Columns | 1d | 2024-03-17 | 2024-03-17 | B01-V17~V24-1450, B01-V09~V16-1460 | 9d | 0d | Fence Columns-Eastern side [8]; Fence Columns-Westren side [8]; Fence Columns-Back side [8] | 9,665.04 |
| B01-V17~V24-1470 |  | Installation Precast Panel For Fence | 5d | 2024-03-18 | 2024-03-23 | B01-V17~V24-1460, B01-V09~V16-1470 | 9d | 0d | Hollow Core Walls [8] | 71,593.2 |
| B01-V17~V24-1480 |  | Bitumen Coating For Fence Fondations | 4d | 2024-03-24 | 2024-03-27 | B01-V17~V24-1470, B01-V09~V16-1480 | 9d | 0d |  |  |
| B01-V17~V24-1490 |  | Pouring Bedding Concrete For "Front" Fence Fondations | 1d | 2024-03-24 | 2024-03-24 | B01-V17~V24-1470, B01-V09~V16-1490 | 21d | 0d |  |  |
| B01-V17~V24-1500 |  | RC Concrete For "Front" Fence Fondations | 4d | 2024-03-25 | 2024-03-28 | B01-V17~V24-1490, B01-V09~V16-1500 | 21d | 0d | Front Fence Fondations [8] | 8,904.4 |
| B01-V17~V24-1510 |  | Outdoor Drainage & Water Line | 5d | 2024-03-28 | 2024-04-02 | B01-V17~V24-1480, B01-V17~V24-1140, B01-V09~V16-1510 | 9d | 0d | Outdoor Drainage [8]; Outdoor Water Line [8] | 13,423.68 |
| B01-V17~V24-1520 |  | Steel Fixing & Carpentry For "Front" Fence Columns | 4d | 2024-03-30 | 2024-04-02 | B01-V17~V24-1500, B01-V09~V16-1520 | 21d | 0d |  |  |
| B01-V17~V24-1530 |  | Establishing Elec For "Front" Fence Columns | 4d | 2024-04-03 | 2024-04-07 | B01-V17~V24-1520, B01-V09~V16-1530 | 21d | 0d |  |  |
| B01-V17~V24-1540 |  | Establishing Elec For Fence & Yard | 2d | 2024-04-03 | 2024-04-04 | B01-V17~V24-1510, B01-V09~V16-1540 | 9d | 0d | Elec Establishment Fence & Yard [8] | 17,898.32 |
| B01-V17~V24-1550 |  | Backfilling the Yard | 4d | 2024-04-06 | 2024-04-09 | B01-V17~V24-1540, B01-V09~V16-1550 | 9d | 0d | Backfilling the Yard [8] | 10,560 |
| B01-V17~V24-1560 |  | Pouring Concrete Wall Of "Front" Fence Columns | 2d | 2024-04-08 | 2024-04-09 | B01-V17~V24-1530, B01-V09~V16-1560 | 21d | 0d | Front Fence Walls [8] | 17,898.32 |
| B01-V17~V24-1570 |  | Pouring Concrete Crown Of "Front" Fence Columns | 3d | 2024-04-10 | 2024-04-13 | B01-V17~V24-1560, B01-V09~V16-1570 | 21d | 0d | Fence Columns - C Chanel [8] | 3,310.37 |
| B01-V17~V24-1580 |  | Bardoura Works For Yard | 5d | 2024-04-10 | 2024-04-15 | B01-V17~V24-1550, B01-V09~V16-1580 | 9d | 0d | Bardoura Works For Yard [8] | 14,408.16 |
| B01-V17~V24-1590 |  | Pouring Concrete Flower Basin Of "Front" Fence Columns | 4d | 2024-04-14 | 2024-04-17 | B01-V17~V24-1570, B01-V09~V16-1590 | 21d | 0d |  |  |
| B01-V17~V24-1600 |  | Antitermite Treatment For Yard | 1d | 2024-04-16 | 2024-04-16 | B01-V17~V24-1580, B01-V09~V16-1600 | 9d | 0d | Antitermite Treatment For Yard [8] |  |
| B01-V17~V24-1610 |  | Pouring Concrete For Yard | 1d | 2024-04-17 | 2024-04-17 | B01-V17~V24-1600, B01-V09~V16-1610 | 9d | 0d |  |  |
| B01-V17~V24-1620 |  | Block Work For Flower Basin | 5d | 2024-04-18 | 2024-04-23 | B01-V17~V24-1610, B01-V09~V16-1620 | 9d | 0d |  |  |
| B01-V17~V24-1630 |  | Plastering Work For Flower Basin | 4d | 2024-04-24 | 2024-04-28 | B01-V17~V24-1620, B01-V09~V16-1630 | 9d | 0d |  |  |
| B01-V17~V24-1640 |  | Interlock Works For The Yard | 6d | 2024-04-29 | 2024-05-05 | B01-V17~V24-1630, B01-V09~V16-1640 | 9d | 0d | Interlock Works For The Yard [8] | 36,776.32 |
| B01-V17~V24-1650 |  | External Grading Works For The Villa | 4d | 2024-05-06 | 2024-05-09 | B01-V17~V24-1640, B01-V09~V16-1650 | 11d | 0d | External Grading Works For The Villa [8] | 3,221.68 |
| B01-V17~V24-1660 |  | Installation The Exterior Door & Garage Door | 5d | 2024-05-06 | 2024-05-11 | B01-V17~V24-1640, B01-V09~V16-1660 | 14d | 2d | Installation The Exterior Door [8]; Installation The Exterior Garage Door [8] | 40,002.72 |
| B01-V17~V24-1670 |  | Fixing Floor Drain For The Yard | 2d | 2024-05-06 | 2024-05-07 | B01-V17~V24-1640, B01-V09~V16-1670 | 17d | 5d | Floor Drain & Clean Out [8] | 13,423.76 |
| B01-V17~V24-1680 |  | Granite Surronds Around The Villa | 4d | 2024-05-11 | 2024-05-14 | B01-V17~V24-1650, B01-V09~V16-1680 | 11d | 2d | Granite Surronds Around The Villa [8] | 25,818.32 |
| B01-V17~V24-1690 |  | Painting The Base Surface Of The Fence | 2d | 2024-05-11 | 2024-05-12 | B01-V17~V24-1750, B01-V09~V16-1690 | 9d | 0d |  |  |
| B01-V17~V24-1700 |  | Painting The Final Face Of The Fence | 4d | 2024-05-13 | 2024-05-16 | B01-V17~V24-1690, B01-V09~V16-1700 | 9d | 0d | Painting Final Face Of The Fence [8] | 37,586.48 |
| B01-V17~V24-1710 |  | Exterior Painting Of The Villa | 7d | 2024-05-18 | 2024-05-25 | B01-V17~V24-1680, B01-V17~V24-1700, B01-V17~V24-1660, B01-V17~V24-1670, B01-V09~V16-1710 | 9d | 0d | Exterior Painting Of The Villa [8]; Exterior Painting Staircase House [8] | 105,684.16 |
| B01-V17~V24-1720 |  | Installation Elec Fixtures & Accessories For The Yard | 4d | 2024-05-26 | 2024-05-29 | B01-V17~V24-1700, B01-V17~V24-1710, B01-V09~V16-1720 | 82d | 0d | Elec feeding panels GF & FF [8] | 22,372.88 |

| ID | WBS | Activity | Duration | Start | Finish | Predecessors | Total float | Free float | Resources | Cost | Department-1 |
| --- | --- | --- | --- | --- | --- | --- | --- | --- | --- | --- | --- |
|  | 5 | **External Sidewalk Works** |  | 2024-04-18 | 2024-06-03 |  |  |  |  |  |  |
| B01-V17~V24-1730 |  | Connection The Drain To The Piblic Network | 3d | 2024-04-18 | 2024-04-21 | B01-V17~V24-1510, B01-V17~V24-1590, B01-V09~V16-1730 | 21d | 4d | Connection Drain To The Piblic Network [8]; Connection Water To The Piblic Network [8] | 13,420.32 |  |
| B01-V17~V24-1740 |  | Pardora Works For The External Sidewalk | 2d | 2024-05-06 | 2024-05-07 | B01-V17~V24-1640, B01-V17~V24-1730, B01-V09~V16-1740 | 9d | 0d |  |  |  |
| B01-V17~V24-1750 |  | Interlock Works For The Exerrnal Sidewalk | 2d | 2024-05-08 | 2024-05-09 | B01-V17~V24-1740, B01-V09~V16-1750 | 9d | 0d |  |  |  |
| B01-V17~V24-1760 |  | Pulling The Villa's Main Elec Cable | 4d | 2024-05-30 | 2024-06-03 | B01-V17~V24-1750, B01-V17~V24-1720, B01-V09~V16-1760 | 82d | 0d | Elec Work Testing [8] | 22,819.84 |  |
|  | 6 | **Final Testing & Handover** |  | 2024-05-27 | 2024-06-22 |  |  |  |  |  |  |
| B01-V17~V24-1770 |  | Mech Work Testing & Handover | 5d | 2024-05-27 | 2024-06-01 | B01-V17~V24-1730, B01-V17~V24-1340, B01-V17~V24-1380, B01-V09~V16-1770 | 89d | 2d | Mech Work Testing & Handover [8] | 14,318.64 |  |
| B01-V17~V24-1780 |  | Arch Snaglist & Handover | 5d | 2024-06-02 | 2024-06-06 | B01-V17~V24-1750, B01-V17~V24-1710, B01-V17~V24-1400, B01-V09~V16-1780 | 84d | 2d | Arch Snaglist & Handover [8] | 77,320.64 |  |
| B01-V17~V24-1790 |  | ElecWork Testing & Handover | 5d | 2024-06-04 | 2024-06-09 | B01-V17~V24-1760, B01-V17~V24-1370, B01-V09~V16-1790 | 82d | 0d | Elec Work Handover [8] | 23,804.72 |  |
| B01-V17~V24-1800 |  | Final Handover Of The Villa To The Consltant | 5d | 2024-06-10 | 2024-06-15 | B01-V17~V24-1780, B01-V17~V24-1790, B01-V17~V24-1770, B01-V17~V24-1410, B01-V09~V16-1800 | 82d | 0d |  |  |  |
| B01-V17~V24-1810 |  | Customer Delivery | 6d | 2024-06-16 | 2024-06-22 | B01-V17~V24-1800, B01-V09~V16-1810 | 82d | 1d |  |  |  |
|  | 3 | **B01-V25~V32** |  | 2024-01-15 | 2024-06-30 |  |  |  |  |  |  |
|  | 2 | **Under Grond Slap Works** |  | 2024-01-15 | 2024-02-15 |  |  |  |  |  |  |
| B01-V24~V32-1000 |  | Excavation&Compaction of Fondation | 4d | 2024-01-15 | 2024-01-18 | B01-V17~V24-1000 | 7d | 0d | Clearing & Groubbing [8]; Excavation & Leveling [8]; Stone Layer [8]; A3 Layer [8]; A1-a 1st Layer [8]; A1-a 2ed Layer [8] | 163,545.76 | Civil |
| B01-V24~V32-1010 |  | Pouring Concrete For Bedding | 2d | 2024-01-20 | 2024-01-21 | B01-V24~V32-1000, B01-V17~V24-1010 | 7d | 0d | PC Carpentry [8]; PC Concrete [8]; RC 18 MPA [9 M3] | 37,899.68 | Civil |
| B01-V24~V32-1020 |  | Reinforcement Concrete For Foundation | 4d | 2024-01-22 | 2024-01-25 | B01-V24~V32-1010, B01-V17~V24-1020 | 7d | 0d | RC Foundation Carpentry [8]; RC Foundation Steel [8]; RC Foundation Concrete [8] | 201,355.92 | Civil |
| B01-V24~V32-1030 |  | Steel Fixing& Carpenter work for Beams | 4d | 2024-01-27 | 2024-01-30 | B01-V24~V32-1020, B01-V17~V24-1030 | 7d | 0d | RC Grade Beam Carpentry & Steel [8] | 44,745.76 | Civil |
| B01-V24~V32-1040 |  | Mech&Elec Establishment for Beams | 3d | 2024-01-31 | 2024-02-03 | B01-V24~V32-1030, B01-V17~V24-1040 | 7d | 0d |  |  | Mech |
| B01-V24~V32-1050 |  | Pouring Concrete For Beams | 1d | 2024-02-04 | 2024-02-04 | B01-V24~V32-1040, B01-V17~V24-1050 | 7d | 0d | RC Grade Beam Concrete [8] | 77,141.68 | Civil |
| B01-V24~V32-1060 |  | Bitmen Coating For Fondation&Beams | 2d | 2024-02-05 | 2024-02-06 | B01-V24~V32-1050, B01-V17~V24-1060 | 7d | 0d | Bitumen Coating Foundations & Grade Beams [8] | 22,372.88 | Civil |
| B01-V24~V32-1070 |  | Backfilling Inside Fondations | 2d | 2024-02-07 | 2024-02-08 | B01-V24~V32-1060, B01-V17~V24-1070 | 7d | 0d | Backfilling 1st Layer [8]; Backfilling 2ed Layer [8] | 11,186.4 | Civil |
| B01-V24~V32-1080 |  | Mech Works Under Grond Slap | 3d | 2024-02-10 | 2024-02-12 | B01-V24~V32-1070, B01-V17~V24-1080 | 7d | 0d | Mech Establishment Under Ground Slap [8] | 13,423.42 | Mech |
| B01-V24~V32-1090 |  | Steel Fixing& Carpenter work for Ground Slap | 2d | 2024-02-13 | 2024-02-14 | B01-V24~V32-1080, B01-V17~V24-1090 | 7d | 0d | Steel & Carpentry For Ground Slap [8] | 10,246.8 | Civil |
| B01-V24~V32-1100 |  | Anti Termite Treatment For Ground Slap | 1d | 2024-02-15 | 2024-02-15 | B01-V24~V32-1090, B01-V17~V24-1100 | 7d | 0d | Anti Termite Treatment nder Ground Slap [8] | 2,237.28 | Civil |
| B01-V24~V32-1110 |  | Pouring Concrete For Ground Slap | 1d | 2024-02-15 | 2024-02-15 | B01-V24~V32-1100 FF, B01-V24~V32-1090, B01-V17~V24-1110 | 7d | 3d | Concrete For Ground Slap [8] | 58,169.52 | Civil |

| ID | WBS | Activity | Duration | Start | Finish | Predecessors | Total float | Free float | Resources | Cost | Department-1 |
| --- | --- | --- | --- | --- | --- | --- | --- | --- | --- | --- | --- |
|  | 4 | **Precast Works** |  | 2024-02-25 | 2024-03-03 |  |  |  |  |  |  |
| B01-V24~V32-1120 |  | Precast Constrction | 7d | 2024-02-25 | 2024-03-03 | B01-V24~V32-1110, B01-V17~V24-1120 | 0d |  | Precast Walls GF [8]; Hollow Core Slap GF [8]; Precast Stairs & staircase House [8]; Thermal insollation Outside Walls [8]; Concrete structure joints [8]; Precast Walls FF [8]; Hollow Core Slap FF [8] | 1,513,762.87 | Civil |
|  | 1 | **Works Inside The Villa** |  | 2024-03-04 | 2024-06-17 |  |  |  |  |  |  |
| B01-V24~V32-1130 |  | Block Work For GF & Estabishment 1F | 6d | 2024-03-04 | 2024-03-10 | B01-V24~V32-1120, B01-V17~V24-1130 | 13d | 0d | Block GF [8] | 13,647.1 | Arc |
| B01-V24~V32-1140 |  | L.L & H.L Drainage | 6d | 2024-03-11 | 2024-03-17 | B01-V24~V32-1130, B01-V17~V24-1140 | 13d | 0d | HL Drainage [8]; L.L Drainage [8] | 89,489.28 | Mech |
| B01-V24~V32-1150 |  | Elec Establishment For GF & 1F | 3d | 2024-03-11 | 2024-03-13 | B01-V24~V32-1130, B01-V17~V24-1150 | 16d | 3d | Elec Establishment GF [8] | 26,840.73 | Elec |
| B01-V24~V32-1160 |  | Screed Work For 1F & Roof | 6d | 2024-03-18 | 2024-03-24 | B01-V24~V32-1140, B01-V24~V32-1150, B01-V17~V24-1160 | 13d | 0d | Screed 1st Floor [8]; Screed Roof Floor [8]; Leveling Screed 1st Floor [8]; Leveling Screed Roof Floor [8] | 268,467.85 | Civil |
| B01-V24~V32-1170 |  | Water Tank & Heater Foundations | 4d | 2024-03-25 | 2024-03-28 | B01-V24~V32-1160, B01-V17~V24-1170 | 17d | 0d |  |  | Civil |
| B01-V24~V32-1180 |  | Block Works For 1F | 3d | 2024-03-25 | 2024-03-27 | B01-V24~V32-1160, B01-V17~V24-1180 | 13d | 0d | Block FF [8] | 20,537.81 | Arc |
| B01-V24~V32-1190 |  | Water Line Network | 6d | 2024-03-28 | 2024-04-03 | B01-V24~V32-1180, B01-V17~V24-1190 | 13d | 0d | Water Line Network [8] | 40,261.13 | Mech |
| B01-V24~V32-1200 |  | Continue Elec Establishment For GF & 1F | 3d | 2024-03-28 | 2024-03-31 | B01-V24~V32-1180, B01-V17~V24-1200 | 16d | 3d | Elec Establishment FF [8] | 26,840.73 | Elec |
| B01-V24~V32-1210 |  | Thermal Insulation For Roof | 5d | 2024-03-30 | 2024-04-03 | B01-V24~V32-1170, B01-V17~V24-1210 | 17d | 0d | Roof Insulation [8] | 32,530.16 | Arc |
| B01-V24~V32-1220 |  | Roof Floor Tiles | 6d | 2024-04-04 | 2024-04-10 | B01-V24~V32-1210, B01-V17~V24-1220 | 17d | 1d | Roof Tiles [8]; Roof Tiles Joints [8]; Re_Test Roof Insulation [8] | 63,179.38 | Arc |
| B01-V24~V32-1230 |  | Plaster Work For Villa | 6d | 2024-04-04 | 2024-04-10 | B01-V24~V32-1190, B01-V24~V32-1200, B01-V17~V24-1230 | 13d | 0d | Establishing a plastering GF [8]; Establishing a plastering FF [8]; Plastering GF [8]; Plastering FF [8] | 49,263.81 |  |
| B01-V24~V32-1240 |  | Marbale Stairs & Handrails | 6d | 2024-04-11 | 2024-04-17 | B01-V24~V32-1230, B01-V17~V24-1240 | 35d | 1d | Marbale Stairs [8]; Stairs Handrails SS [8] | 91,494.69 |  |
| B01-V24~V32-1250 |  | Water Proofing Of Bathrooms | 4d | 2024-04-11 | 2024-04-15 | B01-V24~V32-1230, B01-V17~V24-1250 | 13d | 0d | Bathrooms InsulationGF & FF [8] | 134.24 |  |
| B01-V24~V32-1260 |  | Pulling The Elec Wires | 4d | 2024-04-11 | 2024-04-15 | B01-V24~V32-1230, B01-V17~V24-1260 | 23d | 3d | Elec Wires GF [8]; Elec Wires FF [8] | 80,542.4 |  |
| B01-V24~V32-1270 |  | Bathroom Tiles | 4d | 2024-04-16 | 2024-04-20 | B01-V24~V32-1250, B01-V24~V32-1220, B01-V17~V24-1270 | 13d | 0d | Ceramic Walls Kitchen [8]; Ceramic Walls Bathrooms GF [8]; Ceramic Walls Bathrooms FF [8]; Ceramic Tiles Bathrooms GF [8]; Ceramic Tiles Kitchen GF [8]; Ceramic Tiles Store GF [8] | 73,204.08 |  |
| B01-V24~V32-1280 |  | Structure For Gypsum | 6d | 2024-04-21 | 2024-04-27 | B01-V24~V32-1270, B01-V17~V24-1280 | 13d | 0d | Structure For Gypsum GF Rooms [8]; Structure For Gypsum FF Rooms [8]; Structure For Gypsum Bathrooms & Kitchen [8] | 33,550.81 |  |
| B01-V24~V32-1290 |  | Gypsum Board For Room | 4d | 2024-04-28 | 2024-05-01 | B01-V24~V32-1280, B01-V24~V32-1260, B01-V17~V24-1290 | 13d | 0d | Gypsum Board For GF Room [8]; Gypsum Board For FF Room [8] | 35,796.64 |  |
| B01-V24~V32-1300 |  | Installation Of Gypsum Board For Bathroom & Kitchen | 4d | 2024-05-02 | 2024-05-06 | B01-V24~V32-1290, B01-V17~V24-1300 | 13d | 0d | Gypsum Board For Bathrooms & Kitchen [8] | 11,052.24 |  |
| B01-V24~V32-1310 |  | Putty Filler For Gypsm Board Ceiling | 6d | 2024-05-07 | 2024-05-13 | B01-V24~V32-1300, B01-V17~V24-1310 | 13d | 0d | Putty Filler 1st Layer Roof all Rooms [8]; Putty Filler 1st Layer Roof all Bathrooms & Kitchen [8]; Putty Filler1st Layer walls [8] | 62,182.52 |  |
| B01-V24~V32-1320 |  | Fixing Shower Glass | 4d | 2024-05-14 | 2024-05-18 | B01-V24~V32-1310, B01-V17~V24-1320 | 21d | 0d | Shower Glass [8] | 22,372.88 |  |
| B01-V24~V32-1330 |  | Interior Wall Putty Filler | 6d | 2024-05-14 | 2024-05-20 | B01-V24~V32-1310, B01-V24~V32-1240, B01-V17~V24-1330 | 13d | 0d | Putty Filler 2ed Layer Roof & WAlls GF [8]; Putty Filler 2ed Layer Roof & WAlls FF [8] | 62,150.21 |  |
| B01-V24~V32-1340 |  | Installation Of Sanitry Fixture | 7d | 2024-05-19 | 2024-05-26 | B01-V24~V32-1320, B01-V17~V24-1340 | 21d | 0d | Mech Fixtures & Accessories [8] | 98,435.64 |  |
| B01-V24~V32-1350 |  | 1st Face Paint | 6d | 2024-05-21 | 2024-05-27 | B01-V24~V32-1330, B01-V17~V24-1350 | 13d | 0d |  |  |  |
| B01-V24~V32-1360 |  | Installation Of Aluminum Windows | 7d | 2024-05-21 | 2024-05-28 | B01-V24~V32-1330, B01-V17~V24-1360 | 23d | 0d | Aluminum Windows [8] | 84,795.68 |  |
| B01-V24~V32-1370 |  | Installation Of Elec Fixture & Accessories | 7d | 2024-05-21 | 2024-05-28 | B01-V24~V32-1310, B01-V24~V32-1330, B01-V24~V32-1260, B01-V17~V24-1370 | 37d | 0d | Elec Fixtures & Accessories Villa & Yard [8]; Elec Cables GF & FF & Earthing [8] | 53,692.2 |  |
| B01-V24~V32-1380 |  | Installation Of Water Tank-Heater & Pumps | 7d | 2024-05-27 | 2024-06-03 | B01-V24~V32-1340, B01-V17~V24-1380, B01-V24~V32-1220 | 21d | 0d | Water Tank & booster Pump [8]; Lower Pump [8]; Heater [8] | 129,756.23 |  |
| B01-V24~V32-1390 |  | Installation Of Parquet | 4d | 2024-05-28 | 2024-06-01 | B01-V24~V32-1350, B01-V17~V24-1390 | 13d | 0d | Installation Of Parquet [8] | 52,978.96 |  |
| B01-V24~V32-1400 |  | Installation Of Wooden Doors | 7d | 2024-06-02 | 2024-06-09 | B01-V24~V32-1390, B01-V17~V24-1400 | 13d | 0d | Wooden Doors Kitchen & Bathroom without Accessories [8]; Wooden Doors Accessories all Villa [8]; Exterior Wooden Doors [8] | 142,105.45 |  |
| B01-V24~V32-1410 |  | Final Face Paint | 7d | 2024-06-10 | 2024-06-17 | B01-V24~V32-1360, B01-V24~V32-1400, B01-V17~V24-1410 | 13d | 0d | Final Face Paint Villa [8] | 31,096.77 |  |

| ID | WBS | Activity | Duration | Start | Finish | Predecessors | Total float | Free float | Resources | Cost |
| --- | --- | --- | --- | --- | --- | --- | --- | --- | --- | --- |
|  | 3 | **Fence & Courtyard Works** |  | 2024-03-04 | 2024-06-06 |  |  |  |  |  |
| B01-V24~V32-1420 |  | Pouring Bedding Concrete For Fence Fondations | 2d | 2024-03-04 | 2024-03-05 | B01-V24~V32-1120, B01-V17~V24-1420 | 9d | 0d | Excavation Fence Foundations [8] | 4,519.28 |
| B01-V24~V32-1430 |  | RC Concrete For Fence Fondations | 6d | 2024-03-06 | 2024-03-12 | B01-V24~V32-1420, B01-V17~V24-1430 | 9d | 0d | Fence Fondations-Eastern side [8]; Fence Fondations-Westren side [8]; Fence Fondations-Back side [8] | 13,420.32 |
| B01-V24~V32-1440 |  | Steel Fixing & Carpentry For Fence Columns | 6d | 2024-03-13 | 2024-03-19 | B01-V24~V32-1430, B01-V17~V24-1440 | 9d | 0d |  |  |
| B01-V24~V32-1450 |  | Establishing Elec For Fence Columns | 4d | 2024-03-20 | 2024-03-24 | B01-V24~V32-1440, B01-V17~V24-1450 | 9d | 0d |  |  |
| B01-V24~V32-1460 |  | Pouring Concrete For Fence Columns | 1d | 2024-03-25 | 2024-03-25 | B01-V24~V32-1450, B01-V17~V24-1460 | 9d | 0d | Fence Columns-Eastern side [8]; Fence Columns-Westren side [8]; Fence Columns-Back side [8] | 9,665.04 |
| B01-V24~V32-1470 |  | Installation Precast Panel For Fence | 5d | 2024-03-26 | 2024-03-31 | B01-V24~V32-1460, B01-V17~V24-1470 | 9d | 0d | Hollow Core Walls [8] | 71,593.2 |
| B01-V24~V32-1480 |  | Bitumen Coating For Fence Fondations | 4d | 2024-04-01 | 2024-04-04 | B01-V24~V32-1470, B01-V17~V24-1480 | 9d | 0d |  |  |
| B01-V24~V32-1490 |  | Pouring Bedding Concrete For "Front" Fence Fondations | 1d | 2024-04-01 | 2024-04-01 | B01-V24~V32-1470, B01-V17~V24-1490 | 21d | 0d |  |  |
| B01-V24~V32-1500 |  | RC Concrete For "Front" Fence Fondations | 4d | 2024-04-02 | 2024-04-06 | B01-V24~V32-1490, B01-V17~V24-1500 | 21d | 0d | Front Fence Fondations [8] | 8,904.4 |
| B01-V24~V32-1510 |  | Outdoor Drainage & Water Line | 5d | 2024-04-06 | 2024-04-10 | B01-V24~V32-1480, B01-V24~V32-1140, B01-V17~V24-1510 | 9d | 0d | Outdoor Drainage [8]; Outdoor Water Line [8] | 13,423.68 |
| B01-V24~V32-1520 |  | Steel Fixing & Carpentry For "Front" Fence Columns | 4d | 2024-04-07 | 2024-04-10 | B01-V24~V32-1500, B01-V17~V24-1520 | 21d | 0d |  |  |
| B01-V24~V32-1530 |  | Establishing Elec For "Front" Fence Columns | 4d | 2024-04-11 | 2024-04-15 | B01-V24~V32-1520, B01-V17~V24-1530 | 21d | 0d |  |  |
| B01-V24~V32-1540 |  | Establishing Elec For Fence & Yard | 2d | 2024-04-11 | 2024-04-13 | B01-V24~V32-1510, B01-V17~V24-1540 | 9d | 0d | Elec Establishment Fence & Yard [8] | 17,898.32 |
| B01-V24~V32-1550 |  | Backfilling the Yard | 4d | 2024-04-14 | 2024-04-17 | B01-V24~V32-1540, B01-V17~V24-1550 | 9d | 0d | Backfilling the Yard [8] | 10,560 |
| B01-V24~V32-1560 |  | Pouring Concrete Wall Of "Front" Fence Columns | 2d | 2024-04-16 | 2024-04-17 | B01-V24~V32-1530, B01-V17~V24-1560 | 21d | 0d | Front Fence Walls [8] | 17,898.32 |
| B01-V24~V32-1570 |  | Pouring Concrete Crown Of "Front" Fence Columns | 3d | 2024-04-18 | 2024-04-21 | B01-V24~V32-1560, B01-V17~V24-1570 | 21d | 0d | Fence Columns - C Chanel [8] | 3,310.37 |
| B01-V24~V32-1580 |  | Bardoura Works For Yard | 5d | 2024-04-18 | 2024-04-23 | B01-V24~V32-1550, B01-V17~V24-1580 | 9d | 0d | Bardoura Works For Yard [8] | 14,408.16 |
| B01-V24~V32-1590 |  | Pouring Concrete Flower Basin Of "Front" Fence Columns | 4d | 2024-04-22 | 2024-04-25 | B01-V24~V32-1570, B01-V17~V24-1590 | 21d | 0d |  |  |
| B01-V24~V32-1600 |  | Antitermite Treatment For Yard | 1d | 2024-04-24 | 2024-04-24 | B01-V24~V32-1580, B01-V17~V24-1600 | 9d | 0d | Antitermite Treatment For Yard [8] |  |
| B01-V24~V32-1610 |  | Pouring Concrete For Yard | 1d | 2024-04-25 | 2024-04-25 | B01-V24~V32-1600, B01-V17~V24-1610 | 9d | 0d |  |  |
| B01-V24~V32-1620 |  | Block Work For Flower Basin | 5d | 2024-04-27 | 2024-05-01 | B01-V24~V32-1610, B01-V17~V24-1620 | 9d | 0d |  |  |
| B01-V24~V32-1630 |  | Plastering Work For Flower Basin | 4d | 2024-05-02 | 2024-05-06 | B01-V24~V32-1620, B01-V17~V24-1630 | 9d | 0d |  |  |
| B01-V24~V32-1640 |  | Interlock Works For The Yard | 6d | 2024-05-07 | 2024-05-13 | B01-V24~V32-1630, B01-V17~V24-1640 | 9d | 0d | Interlock Works For The Yard [8] | 36,776.32 |
| B01-V24~V32-1650 |  | External Grading Works For The Villa | 4d | 2024-05-14 | 2024-05-18 | B01-V24~V32-1640, B01-V17~V24-1650 | 11d | 0d | External Grading Works For The Villa [8] | 3,221.68 |
| B01-V24~V32-1660 |  | Installation The Exterior Door & Garage Door | 5d | 2024-05-14 | 2024-05-19 | B01-V24~V32-1640, B01-V17~V24-1660 | 14d | 2d | Installation The Exterior Door [8]; Installation The Exterior Garage Door [8] | 40,002.72 |
| B01-V24~V32-1670 |  | Fixing Floor Drain For The Yard | 2d | 2024-05-14 | 2024-05-15 | B01-V24~V32-1640, B01-V17~V24-1670 | 17d | 5d | Floor Drain & Clean Out [8] | 13,423.76 |
| B01-V24~V32-1680 |  | Granite Surronds Around The Villa | 4d | 2024-05-19 | 2024-05-22 | B01-V24~V32-1650, B01-V17~V24-1680 | 11d | 2d | Granite Surronds Around The Villa [8] | 25,818.32 |
| B01-V24~V32-1690 |  | Painting The Base Surface Of The Fence | 2d | 2024-05-19 | 2024-05-20 | B01-V24~V32-1750, B01-V17~V24-1690 | 9d | 0d |  |  |
| B01-V24~V32-1700 |  | Painting The Final Face Of The Fence | 4d | 2024-05-21 | 2024-05-25 | B01-V24~V32-1690, B01-V17~V24-1700 | 9d | 0d | Painting Final Face Of The Fence [8] | 37,586.48 |
| B01-V24~V32-1710 |  | Exterior Painting Of The Villa | 7d | 2024-05-26 | 2024-06-02 | B01-V24~V32-1680, B01-V24~V32-1700, B01-V24~V32-1660, B01-V24~V32-1670, B01-V17~V24-1710 | 9d | 0d | Exterior Painting Of The Villa [8]; Exterior Painting Staircase House [8] | 105,684.16 |
| B01-V24~V32-1720 |  | Installation Elec Fixtures & Accessories For The Yard | 4d | 2024-06-03 | 2024-06-06 | B01-V24~V32-1700, B01-V24~V32-1710, B01-V17~V24-1720 | 81d | 0d | Elec feeding panels GF & FF [8] | 22,372.88 |

| ID | WBS | Activity | Duration | Start | Finish | Predecessors | Total float | Free float | Resources | Cost | Department-1 |
| --- | --- | --- | --- | --- | --- | --- | --- | --- | --- | --- | --- |
|  | 5 | **External Sidewalk Works** |  | 2024-04-27 | 2024-06-11 |  |  |  |  |  |  |
| B01-V24~V32-1730 |  | Connection The Drain To The Piblic Network | 3d | 2024-04-27 | 2024-04-29 | B01-V24~V32-1510, B01-V24~V32-1590, B01-V17~V24-1730 | 21d | 4d | Connection Drain To The Piblic Network [8]; Connection Water To The Piblic Network [8] | 13,420.32 |  |
| B01-V24~V32-1740 |  | Pardora Works For The External Sidewalk | 2d | 2024-05-14 | 2024-05-15 | B01-V24~V32-1640, B01-V24~V32-1730, B01-V17~V24-1740 | 9d | 0d |  |  |  |
| B01-V24~V32-1750 |  | Interlock Works For The Exerrnal Sidewalk | 2d | 2024-05-16 | 2024-05-18 | B01-V24~V32-1740, B01-V17~V24-1750 | 9d | 0d |  |  |  |
| B01-V24~V32-1760 |  | Pulling The Villa's Main Elec Cable | 4d | 2024-06-08 | 2024-06-11 | B01-V24~V32-1750, B01-V24~V32-1720, B01-V17~V24-1760 | 81d | 0d | Elec Work Testing [8] | 22,819.84 |  |
|  | 6 | **Final Testing & Handover** |  | 2024-06-04 | 2024-06-30 |  |  |  |  |  |  |
| B01-V24~V32-1770 |  | Mech Work Testing & Handover | 5d | 2024-06-04 | 2024-06-09 | B01-V24~V32-1730, B01-V24~V32-1340, B01-V24~V32-1380, B01-V17~V24-1770 | 88d | 2d | Mech Work Testing & Handover [8] | 14,318.64 |  |
| B01-V24~V32-1780 |  | Arch Snaglist & Handover | 5d | 2024-06-10 | 2024-06-15 | B01-V24~V32-1750, B01-V24~V32-1710, B01-V24~V32-1400, B01-V17~V24-1780 | 83d | 2d | Arch Snaglist & Handover [8] | 77,320.64 |  |
| B01-V24~V32-1790 |  | ElecWork Testing & Handover | 5d | 2024-06-12 | 2024-06-17 | B01-V24~V32-1760, B01-V24~V32-1370, B01-V17~V24-1790 | 81d | 0d | Elec Work Handover [8] | 23,804.72 |  |
| B01-V24~V32-1800 |  | Final Handover Of The Villa To The Consltant | 5d | 2024-06-18 | 2024-06-23 | B01-V24~V32-1780, B01-V24~V32-1790, B01-V24~V32-1770, B01-V24~V32-1410, B01-V17~V24-1800 | 81d | 0d |  |  |  |
| B01-V24~V32-1810 |  | Customer Delivery | 6d | 2024-06-24 | 2024-06-30 | B01-V24~V32-1800, B01-V17~V24-1810 | 81d | 1d |  |  |  |
|  | 4 | **B02-V01~V08** |  | 2024-01-20 | 2024-07-08 |  |  |  |  |  |  |
|  | 2 | **Under Grond Slap Works** |  | 2024-01-20 | 2024-02-20 |  |  |  |  |  |  |
| B02-V01~V08-1000 |  | Excavation&Compaction of Fondation | 4d | 2024-01-20 | 2024-01-23 | B01-V24~V32-1000 | 10d | 0d | Clearing & Groubbing [8]; Excavation & Leveling [8]; Stone Layer [8]; A3 Layer [8]; A1-a 1st Layer [8]; A1-a 2ed Layer [8] | 163,545.76 | Civil |
| B02-V01~V08-1010 |  | Pouring Concrete For Bedding | 2d | 2024-01-24 | 2024-01-25 | B02-V01~V08-1000, B01-V24~V32-1010 | 10d | 0d | PC Carpentry [8]; PC Concrete [8]; RC 18 MPA [9 M3] | 37,899.68 | Civil |
| B02-V01~V08-1020 |  | Reinforcement Concrete For Foundation | 4d | 2024-01-27 | 2024-01-30 | B02-V01~V08-1010, B01-V24~V32-1020 | 10d | 0d | RC Foundation Carpentry [8]; RC Foundation Steel [8]; RC Foundation Concrete [8] | 201,355.92 | Civil |
| B02-V01~V08-1030 |  | Steel Fixing& Carpenter work for Beams | 4d | 2024-01-31 | 2024-02-04 | B02-V01~V08-1020, B01-V24~V32-1030 | 10d | 0d | RC Grade Beam Carpentry & Steel [8] | 44,745.76 | Civil |
| B02-V01~V08-1040 |  | Mech&Elec Establishment for Beams | 3d | 2024-02-05 | 2024-02-07 | B02-V01~V08-1030, B01-V24~V32-1040 | 10d | 0d |  |  | Mech |
| B02-V01~V08-1050 |  | Pouring Concrete For Beams | 1d | 2024-02-08 | 2024-02-08 | B02-V01~V08-1040, B01-V24~V32-1050 | 10d | 0d | RC Grade Beam Concrete [8] | 77,141.68 | Civil |
| B02-V01~V08-1060 |  | Bitmen Coating For Fondation&Beams | 2d | 2024-02-10 | 2024-02-11 | B02-V01~V08-1050, B01-V24~V32-1060 | 10d | 0d | Bitumen Coating Foundations & Grade Beams [8] | 22,372.88 | Civil |
| B02-V01~V08-1070 |  | Backfilling Inside Fondations | 2d | 2024-02-12 | 2024-02-13 | B02-V01~V08-1060, B01-V24~V32-1070 | 10d | 0d | Backfilling 1st Layer [8]; Backfilling 2ed Layer [8] | 11,186.4 | Civil |
| B02-V01~V08-1080 |  | Mech Works Under Grond Slap | 3d | 2024-02-14 | 2024-02-17 | B02-V01~V08-1070, B01-V24~V32-1080 | 10d | 0d | Mech Establishment Under Ground Slap [8] | 13,423.42 | Mech |
| B02-V01~V08-1090 |  | Steel Fixing& Carpenter work for Ground Slap | 2d | 2024-02-18 | 2024-02-19 | B02-V01~V08-1080, B01-V24~V32-1090 | 10d | 0d | Steel & Carpentry For Ground Slap [8] | 10,246.8 | Civil |
| B02-V01~V08-1100 |  | Anti Termite Treatment For Ground Slap | 1d | 2024-02-20 | 2024-02-20 | B02-V01~V08-1090, B01-V24~V32-1100 | 10d | 0d | Anti Termite Treatment nder Ground Slap [8] | 2,237.28 | Civil |
| B02-V01~V08-1110 |  | Pouring Concrete For Ground Slap | 1d | 2024-02-20 | 2024-02-20 | B02-V01~V08-1100 FF, B02-V01~V08-1090, B01-V24~V32-1110 | 10d | 3d | Concrete For Ground Slap [8] | 58,169.52 | Civil |

| ID | WBS | Activity | Duration | Start | Finish | Predecessors | Total float | Free float | Resources | Cost | Department-1 |
| --- | --- | --- | --- | --- | --- | --- | --- | --- | --- | --- | --- |
|  | 4 | **Precast Works** |  | 2024-03-04 | 2024-03-11 |  |  |  |  |  |  |
| B02-V01~V08-1120 |  | Precast Constrction | 7d | 2024-03-04 | 2024-03-11 | B02-V01~V08-1110, B01-V24~V32-1120 | 0d |  | Precast Walls GF [8]; Hollow Core Slap GF [8]; Precast Stairs & staircase House [8]; Thermal insollation Outside Walls [8]; Concrete structure joints [8]; Precast Walls FF [8]; Hollow Core Slap FF [8] | 1,513,762.87 | Civil |
|  | 1 | **Works Inside The Villa** |  | 2024-03-12 | 2024-06-25 |  |  |  |  |  |  |
| B02-V01~V08-1130 |  | Block Work For GF & Estabishment 1F | 6d | 2024-03-12 | 2024-03-18 | B02-V01~V08-1120, B01-V24~V32-1130 | 13d | 0d | Block GF [8] | 13,647.1 | Arc |
| B02-V01~V08-1140 |  | L.L & H.L Drainage | 6d | 2024-03-19 | 2024-03-25 | B02-V01~V08-1130, B01-V24~V32-1140 | 13d | 0d | HL Drainage [8]; L.L Drainage [8] | 89,489.28 | Mech |
| B02-V01~V08-1150 |  | Elec Establishment For GF & 1F | 3d | 2024-03-19 | 2024-03-21 | B02-V01~V08-1130, B01-V24~V32-1150 | 16d | 3d | Elec Establishment GF [8] | 26,840.73 | Elec |
| B02-V01~V08-1160 |  | Screed Work For 1F & Roof | 6d | 2024-03-26 | 2024-04-01 | B02-V01~V08-1140, B02-V01~V08-1150, B01-V24~V32-1160 | 13d | 0d | Screed 1st Floor [8]; Screed Roof Floor [8]; Leveling Screed 1st Floor [8]; Leveling Screed Roof Floor [8] | 268,467.85 | Civil |
| B02-V01~V08-1170 |  | Water Tank & Heater Foundations | 4d | 2024-04-02 | 2024-04-06 | B02-V01~V08-1160, B01-V24~V32-1170 | 17d | 0d |  |  | Civil |
| B02-V01~V08-1180 |  | Block Works For 1F | 3d | 2024-04-02 | 2024-04-04 | B02-V01~V08-1160, B01-V24~V32-1180 | 13d | 0d | Block FF [8] | 20,537.81 | Arc |
| B02-V01~V08-1190 |  | Water Line Network | 6d | 2024-04-06 | 2024-04-11 | B02-V01~V08-1180, B01-V24~V32-1190 | 13d | 0d | Water Line Network [8] | 40,261.13 | Mech |
| B02-V01~V08-1200 |  | Continue Elec Establishment For GF & 1F | 3d | 2024-04-06 | 2024-04-08 | B02-V01~V08-1180, B01-V24~V32-1200 | 16d | 3d | Elec Establishment FF [8] | 26,840.73 | Elec |
| B02-V01~V08-1210 |  | Thermal Insulation For Roof | 5d | 2024-04-07 | 2024-04-11 | B02-V01~V08-1170, B01-V24~V32-1210 | 17d | 0d | Roof Insulation [8] | 32,530.16 | Arc |
| B02-V01~V08-1220 |  | Roof Floor Tiles | 6d | 2024-04-13 | 2024-04-18 | B02-V01~V08-1210, B01-V24~V32-1220 | 17d | 1d | Roof Tiles [8]; Roof Tiles Joints [8]; Re_Test Roof Insulation [8] | 63,179.38 | Arc |
| B02-V01~V08-1230 |  | Plaster Work For Villa | 6d | 2024-04-13 | 2024-04-18 | B02-V01~V08-1190, B02-V01~V08-1200, B01-V24~V32-1230 | 13d | 0d | Establishing a plastering GF [8]; Establishing a plastering FF [8]; Plastering GF [8]; Plastering FF [8] | 49,263.81 |  |
| B02-V01~V08-1240 |  | Marbale Stairs & Handrails | 6d | 2024-04-20 | 2024-04-25 | B02-V01~V08-1230, B01-V24~V32-1240 | 35d | 1d | Marbale Stairs [8]; Stairs Handrails SS [8] | 91,494.69 |  |
| B02-V01~V08-1250 |  | Water Proofing Of Bathrooms | 4d | 2024-04-20 | 2024-04-23 | B02-V01~V08-1230, B01-V24~V32-1250 | 13d | 0d | Bathrooms InsulationGF & FF [8] | 134.24 |  |
| B02-V01~V08-1260 |  | Pulling The Elec Wires | 4d | 2024-04-20 | 2024-04-23 | B02-V01~V08-1230, B01-V24~V32-1260 | 23d | 3d | Elec Wires GF [8]; Elec Wires FF [8] | 80,542.4 |  |
| B02-V01~V08-1270 |  | Bathroom Tiles | 4d | 2024-04-24 | 2024-04-28 | B02-V01~V08-1250, B02-V01~V08-1220, B01-V24~V32-1270 | 13d | 0d | Ceramic Walls Kitchen [8]; Ceramic Walls Bathrooms GF [8]; Ceramic Walls Bathrooms FF [8]; Ceramic Tiles Bathrooms GF [8]; Ceramic Tiles Kitchen GF [8]; Ceramic Tiles Store GF [8] | 73,204.08 |  |
| B02-V01~V08-1280 |  | Structure For Gypsum | 6d | 2024-04-29 | 2024-05-05 | B02-V01~V08-1270, B01-V24~V32-1280 | 13d | 0d | Structure For Gypsum GF Rooms [8]; Structure For Gypsum FF Rooms [8]; Structure For Gypsum Bathrooms & Kitchen [8] | 33,550.81 |  |
| B02-V01~V08-1290 |  | Gypsum Board For Room | 4d | 2024-05-06 | 2024-05-09 | B02-V01~V08-1280, B02-V01~V08-1260, B01-V24~V32-1290 | 13d | 0d | Gypsum Board For GF Room [8]; Gypsum Board For FF Room [8] | 35,796.64 |  |
| B02-V01~V08-1300 |  | Installation Of Gypsum Board For Bathroom & Kitchen | 4d | 2024-05-11 | 2024-05-14 | B02-V01~V08-1290, B01-V24~V32-1300 | 13d | 0d | Gypsum Board For Bathrooms & Kitchen [8] | 11,052.24 |  |
| B02-V01~V08-1310 |  | Putty Filler For Gypsm Board Ceiling | 6d | 2024-05-15 | 2024-05-21 | B02-V01~V08-1300, B01-V24~V32-1310 | 13d | 0d | Putty Filler 1st Layer Roof all Rooms [8]; Putty Filler 1st Layer Roof all Bathrooms & Kitchen [8]; Putty Filler1st Layer walls [8] | 62,182.52 |  |
| B02-V01~V08-1320 |  | Fixing Shower Glass | 4d | 2024-05-22 | 2024-05-26 | B02-V01~V08-1310, B01-V24~V32-1320 | 21d | 0d | Shower Glass [8] | 22,372.88 |  |
| B02-V01~V08-1330 |  | Interior Wall Putty Filler | 6d | 2024-05-22 | 2024-05-28 | B02-V01~V08-1310, B02-V01~V08-1240, B01-V24~V32-1330 | 13d | 0d | Putty Filler 2ed Layer Roof & WAlls GF [8]; Putty Filler 2ed Layer Roof & WAlls FF [8] | 62,150.21 |  |
| B02-V01~V08-1340 |  | Installation Of Sanitry Fixture | 7d | 2024-05-27 | 2024-06-03 | B02-V01~V08-1320, B01-V24~V32-1340 | 21d | 0d | Mech Fixtures & Accessories [8] | 98,435.64 |  |
| B02-V01~V08-1350 |  | 1st Face Paint | 6d | 2024-05-29 | 2024-06-04 | B02-V01~V08-1330, B01-V24~V32-1350 | 13d | 0d |  |  |  |
| B02-V01~V08-1360 |  | Installation Of Aluminum Windows | 7d | 2024-05-29 | 2024-06-05 | B02-V01~V08-1330, B01-V24~V32-1360 | 23d | 0d | Aluminum Windows [8] | 84,795.68 |  |
| B02-V01~V08-1370 |  | Installation Of Elec Fixture & Accessories | 7d | 2024-05-29 | 2024-06-05 | B02-V01~V08-1310, B02-V01~V08-1330, B02-V01~V08-1260, B01-V24~V32-1370 | 37d | 0d | Elec Fixtures & Accessories Villa & Yard [8]; Elec Cables GF & FF & Earthing [8] | 53,692.2 |  |
| B02-V01~V08-1380 |  | Installation Of Water Tank-Heater & Pumps | 7d | 2024-06-04 | 2024-06-11 | B02-V01~V08-1340, B01-V24~V32-1380, B02-V01~V08-1220 | 21d | 0d | Water Tank & booster Pump [8]; Lower Pump [8]; Heater [8] | 129,756.23 |  |
| B02-V01~V08-1390 |  | Installation Of Parquet | 4d | 2024-06-05 | 2024-06-09 | B02-V01~V08-1350, B01-V24~V32-1390 | 13d | 0d | Installation Of Parquet [8] | 52,978.96 |  |
| B02-V01~V08-1400 |  | Installation Of Wooden Doors | 7d | 2024-06-10 | 2024-06-17 | B02-V01~V08-1390, B01-V24~V32-1400 | 13d | 0d | Wooden Doors Kitchen & Bathroom without Accessories [8]; Wooden Doors Accessories all Villa [8]; Exterior Wooden Doors [8] | 142,105.45 |  |
| B02-V01~V08-1410 |  | Final Face Paint | 7d | 2024-06-18 | 2024-06-25 | B02-V01~V08-1360, B02-V01~V08-1400, B01-V24~V32-1410 | 13d | 0d | Final Face Paint Villa [8] | 31,096.77 |  |

| ID | WBS | Activity | Duration | Start | Finish | Predecessors | Total float | Free float | Resources | Cost |
| --- | --- | --- | --- | --- | --- | --- | --- | --- | --- | --- |
|  | 3 | **Fence & Courtyard Works** |  | 2024-03-12 | 2024-06-15 |  |  |  |  |  |
| B02-V01~V08-1420 |  | Pouring Bedding Concrete For Fence Fondations | 2d | 2024-03-12 | 2024-03-13 | B02-V01~V08-1120, B01-V24~V32-1420 | 9d | 0d | Excavation Fence Foundations [8] | 4,519.28 |
| B02-V01~V08-1430 |  | RC Concrete For Fence Fondations | 6d | 2024-03-14 | 2024-03-20 | B02-V01~V08-1420, B01-V24~V32-1430 | 9d | 0d | Fence Fondations-Eastern side [8]; Fence Fondations-Westren side [8]; Fence Fondations-Back side [8] | 13,420.32 |
| B02-V01~V08-1440 |  | Steel Fixing & Carpentry For Fence Columns | 6d | 2024-03-21 | 2024-03-27 | B02-V01~V08-1430, B01-V24~V32-1440 | 9d | 0d |  |  |
| B02-V01~V08-1450 |  | Establishing Elec For Fence Columns | 4d | 2024-03-28 | 2024-04-01 | B02-V01~V08-1440, B01-V24~V32-1450 | 9d | 0d |  |  |
| B02-V01~V08-1460 |  | Pouring Concrete For Fence Columns | 1d | 2024-04-02 | 2024-04-02 | B02-V01~V08-1450, B01-V24~V32-1460 | 9d | 0d | Fence Columns-Eastern side [8]; Fence Columns-Westren side [8]; Fence Columns-Back side [8] | 9,665.04 |
| B02-V01~V08-1470 |  | Installation Precast Panel For Fence | 5d | 2024-04-03 | 2024-04-08 | B02-V01~V08-1460, B01-V24~V32-1470 | 9d | 0d | Hollow Core Walls [8] | 71,593.2 |
| B02-V01~V08-1480 |  | Bitumen Coating For Fence Fondations | 4d | 2024-04-09 | 2024-04-13 | B02-V01~V08-1470, B01-V24~V32-1480 | 9d | 0d |  |  |
| B02-V01~V08-1490 |  | Pouring Bedding Concrete For "Front" Fence Fondations | 1d | 2024-04-09 | 2024-04-09 | B02-V01~V08-1470, B01-V24~V32-1490 | 21d | 0d |  |  |
| B02-V01~V08-1500 |  | RC Concrete For "Front" Fence Fondations | 4d | 2024-04-10 | 2024-04-14 | B02-V01~V08-1490, B01-V24~V32-1500 | 21d | 0d | Front Fence Fondations [8] | 8,904.4 |
| B02-V01~V08-1510 |  | Outdoor Drainage & Water Line | 5d | 2024-04-14 | 2024-04-18 | B02-V01~V08-1480, B02-V01~V08-1140, B01-V24~V32-1510 | 9d | 0d | Outdoor Drainage [8]; Outdoor Water Line [8] | 13,423.68 |
| B02-V01~V08-1520 |  | Steel Fixing & Carpentry For "Front" Fence Columns | 4d | 2024-04-15 | 2024-04-18 | B02-V01~V08-1500, B01-V24~V32-1520 | 21d | 0d |  |  |
| B02-V01~V08-1530 |  | Establishing Elec For "Front" Fence Columns | 4d | 2024-04-20 | 2024-04-23 | B02-V01~V08-1520, B01-V24~V32-1530 | 21d | 0d |  |  |
| B02-V01~V08-1540 |  | Establishing Elec For Fence & Yard | 2d | 2024-04-20 | 2024-04-21 | B02-V01~V08-1510, B01-V24~V32-1540 | 9d | 0d | Elec Establishment Fence & Yard [8] | 17,898.32 |
| B02-V01~V08-1550 |  | Backfilling the Yard | 4d | 2024-04-22 | 2024-04-25 | B02-V01~V08-1540, B01-V24~V32-1550 | 9d | 0d | Backfilling the Yard [8] | 10,560 |
| B02-V01~V08-1560 |  | Pouring Concrete Wall Of "Front" Fence Columns | 2d | 2024-04-24 | 2024-04-25 | B02-V01~V08-1530, B01-V24~V32-1560 | 21d | 0d | Front Fence Walls [8] | 17,898.32 |
| B02-V01~V08-1570 |  | Pouring Concrete Crown Of "Front" Fence Columns | 3d | 2024-04-27 | 2024-04-29 | B02-V01~V08-1560, B01-V24~V32-1570 | 21d | 0d | Fence Columns - C Chanel [8] | 3,310.37 |
| B02-V01~V08-1580 |  | Bardoura Works For Yard | 5d | 2024-04-27 | 2024-05-01 | B02-V01~V08-1550, B01-V24~V32-1580 | 9d | 0d | Bardoura Works For Yard [8] | 14,408.16 |
| B02-V01~V08-1590 |  | Pouring Concrete Flower Basin Of "Front" Fence Columns | 4d | 2024-04-30 | 2024-05-04 | B02-V01~V08-1570, B01-V24~V32-1590 | 21d | 0d |  |  |
| B02-V01~V08-1600 |  | Antitermite Treatment For Yard | 1d | 2024-05-02 | 2024-05-02 | B02-V01~V08-1580, B01-V24~V32-1600 | 9d | 0d | Antitermite Treatment For Yard [8] |  |
| B02-V01~V08-1610 |  | Pouring Concrete For Yard | 1d | 2024-05-04 | 2024-05-04 | B02-V01~V08-1600, B01-V24~V32-1610 | 9d | 0d |  |  |
| B02-V01~V08-1620 |  | Block Work For Flower Basin | 5d | 2024-05-05 | 2024-05-09 | B02-V01~V08-1610, B01-V24~V32-1620 | 9d | 0d |  |  |
| B02-V01~V08-1630 |  | Plastering Work For Flower Basin | 4d | 2024-05-11 | 2024-05-14 | B02-V01~V08-1620, B01-V24~V32-1630 | 9d | 0d |  |  |
| B02-V01~V08-1640 |  | Interlock Works For The Yard | 6d | 2024-05-15 | 2024-05-21 | B02-V01~V08-1630, B01-V24~V32-1640 | 9d | 0d | Interlock Works For The Yard [8] | 36,776.32 |
| B02-V01~V08-1650 |  | External Grading Works For The Villa | 4d | 2024-05-22 | 2024-05-26 | B02-V01~V08-1640, B01-V24~V32-1650 | 11d | 0d | External Grading Works For The Villa [8] | 3,221.68 |
| B02-V01~V08-1660 |  | Installation The Exterior Door & Garage Door | 5d | 2024-05-22 | 2024-05-27 | B02-V01~V08-1640, B01-V24~V32-1660 | 14d | 2d | Installation The Exterior Door [8]; Installation The Exterior Garage Door [8] | 40,002.72 |
| B02-V01~V08-1670 |  | Fixing Floor Drain For The Yard | 2d | 2024-05-22 | 2024-05-23 | B02-V01~V08-1640, B01-V24~V32-1670 | 17d | 5d | Floor Drain & Clean Out [8] | 13,423.76 |
| B02-V01~V08-1680 |  | Granite Surronds Around The Villa | 4d | 2024-05-27 | 2024-05-30 | B02-V01~V08-1650, B01-V24~V32-1680 | 11d | 2d | Granite Surronds Around The Villa [8] | 25,818.32 |
| B02-V01~V08-1690 |  | Painting The Base Surface Of The Fence | 2d | 2024-05-27 | 2024-05-28 | B02-V01~V08-1750, B01-V24~V32-1690 | 9d | 0d |  |  |
| B02-V01~V08-1700 |  | Painting The Final Face Of The Fence | 4d | 2024-05-29 | 2024-06-02 | B02-V01~V08-1690, B01-V24~V32-1700 | 9d | 0d | Painting Final Face Of The Fence [8] | 37,586.48 |
| B02-V01~V08-1710 |  | Exterior Painting Of The Villa | 7d | 2024-06-03 | 2024-06-10 | B02-V01~V08-1680, B02-V01~V08-1700, B02-V01~V08-1660, B02-V01~V08-1670, B01-V24~V32-1710 | 9d | 0d | Exterior Painting Of The Villa [8]; Exterior Painting Staircase House [8] | 105,684.16 |
| B02-V01~V08-1720 |  | Installation Elec Fixtures & Accessories For The Yard | 4d | 2024-06-11 | 2024-06-15 | B02-V01~V08-1700, B02-V01~V08-1710, B01-V24~V32-1720 | 80d | 0d | Elec feeding panels GF & FF [8] | 22,372.88 |

| ID | WBS | Activity | Duration | Start | Finish | Predecessors | Total float | Free float | Resources | Cost | Department-1 |
| --- | --- | --- | --- | --- | --- | --- | --- | --- | --- | --- | --- |
|  | 5 | **External Sidewalk Works** |  | 2024-05-05 | 2024-06-19 |  |  |  |  |  |  |
| B02-V01~V08-1730 |  | Connection The Drain To The Piblic Network | 3d | 2024-05-05 | 2024-05-07 | B02-V01~V08-1510, B02-V01~V08-1590, B01-V24~V32-1730 | 21d | 4d | Connection Drain To The Piblic Network [8]; Connection Water To The Piblic Network [8] | 13,420.32 |  |
| B02-V01~V08-1740 |  | Pardora Works For The External Sidewalk | 2d | 2024-05-22 | 2024-05-23 | B02-V01~V08-1640, B02-V01~V08-1730, B01-V24~V32-1740 | 9d | 0d |  |  |  |
| B02-V01~V08-1750 |  | Interlock Works For The Exerrnal Sidewalk | 2d | 2024-05-25 | 2024-05-26 | B02-V01~V08-1740, B01-V24~V32-1750 | 9d | 0d |  |  |  |
| B02-V01~V08-1760 |  | Pulling The Villa's Main Elec Cable | 4d | 2024-06-16 | 2024-06-19 | B02-V01~V08-1750, B02-V01~V08-1720, B01-V24~V32-1760 | 80d | 0d | Elec Work Testing [8] | 22,819.84 |  |
|  | 6 | **Final Testing & Handover** |  | 2024-06-12 | 2024-07-08 |  |  |  |  |  |  |
| B02-V01~V08-1770 |  | Mech Work Testing & Handover | 5d | 2024-06-12 | 2024-06-17 | B02-V01~V08-1730, B02-V01~V08-1340, B02-V01~V08-1380, B01-V24~V32-1770 | 87d | 2d | Mech Work Testing & Handover [8] | 14,318.64 |  |
| B02-V01~V08-1780 |  | Arch Snaglist & Handover | 5d | 2024-06-18 | 2024-06-23 | B02-V01~V08-1750, B02-V01~V08-1710, B02-V01~V08-1400, B01-V24~V32-1780 | 82d | 2d | Arch Snaglist & Handover [8] | 77,320.64 |  |
| B02-V01~V08-1790 |  | ElecWork Testing & Handover | 5d | 2024-06-20 | 2024-06-25 | B02-V01~V08-1760, B02-V01~V08-1370, B01-V24~V32-1790 | 80d | 0d | Elec Work Handover [8] | 23,804.72 |  |
| B02-V01~V08-1800 |  | Final Handover Of The Villa To The Consltant | 5d | 2024-06-26 | 2024-07-01 | B02-V01~V08-1780, B02-V01~V08-1790, B02-V01~V08-1770, B02-V01~V08-1410, B01-V24~V32-1800 | 80d | 0d |  |  |  |
| B02-V01~V08-1810 |  | Customer Delivery | 6d | 2024-07-02 | 2024-07-08 | B02-V01~V08-1800, B01-V24~V32-1810 | 80d | 1d |  |  |  |
|  | 5 | **B02-V09~V16** |  | 2024-01-24 | 2024-07-16 |  |  |  |  |  |  |
|  | 2 | **Under Grond Slap Works** |  | 2024-01-24 | 2024-02-25 |  |  |  |  |  |  |
| B02-V09~V16-1000 |  | Excavation&Compaction of Fondation | 4d | 2024-01-24 | 2024-01-28 | B02-V01~V08-1000 | 11d | 0d | Clearing & Groubbing [8]; Excavation & Leveling [8]; Stone Layer [8]; A3 Layer [8]; A1-a 1st Layer [8]; A1-a 2ed Layer [8] | 163,545.76 | Civil |
| B02-V09~V16-1010 |  | Pouring Concrete For Bedding | 2d | 2024-01-29 | 2024-01-30 | B02-V09~V16-1000, B02-V01~V08-1010 | 13d | 0d | PC Carpentry [8]; PC Concrete [8]; RC 18 MPA [9 M3] | 37,899.68 | Civil |
| B02-V09~V16-1020 |  | Reinforcement Concrete For Foundation | 4d | 2024-01-31 | 2024-02-04 | B02-V09~V16-1010, B02-V01~V08-1020 | 13d | 0d | RC Foundation Carpentry [8]; RC Foundation Steel [8]; RC Foundation Concrete [8] | 201,355.92 | Civil |
| B02-V09~V16-1030 |  | Steel Fixing& Carpenter work for Beams | 4d | 2024-02-05 | 2024-02-08 | B02-V09~V16-1020, B02-V01~V08-1030 | 13d | 0d | RC Grade Beam Carpentry & Steel [8] | 44,745.76 | Civil |
| B02-V09~V16-1040 |  | Mech&Elec Establishment for Beams | 3d | 2024-02-10 | 2024-02-12 | B02-V09~V16-1030, B02-V01~V08-1040 | 13d | 0d |  |  | Mech |
| B02-V09~V16-1050 |  | Pouring Concrete For Beams | 1d | 2024-02-13 | 2024-02-13 | B02-V09~V16-1040, B02-V01~V08-1050 | 13d | 0d | RC Grade Beam Concrete [8] | 77,141.68 | Civil |
| B02-V09~V16-1060 |  | Bitmen Coating For Fondation&Beams | 2d | 2024-02-14 | 2024-02-15 | B02-V09~V16-1050, B02-V01~V08-1060 | 13d | 0d | Bitumen Coating Foundations & Grade Beams [8] | 22,372.88 | Civil |
| B02-V09~V16-1070 |  | Backfilling Inside Fondations | 2d | 2024-02-17 | 2024-02-18 | B02-V09~V16-1060, B02-V01~V08-1070 | 13d | 0d | Backfilling 1st Layer [8]; Backfilling 2ed Layer [8] | 11,186.4 | Civil |
| B02-V09~V16-1080 |  | Mech Works Under Grond Slap | 3d | 2024-02-19 | 2024-02-21 | B02-V09~V16-1070, B02-V01~V08-1080 | 13d | 0d | Mech Establishment Under Ground Slap [8] | 13,423.42 | Mech |
| B02-V09~V16-1090 |  | Steel Fixing& Carpenter work for Ground Slap | 2d | 2024-02-22 | 2024-02-24 | B02-V09~V16-1080, B02-V01~V08-1090 | 13d | 0d | Steel & Carpentry For Ground Slap [8] | 10,246.8 | Civil |
| B02-V09~V16-1100 |  | Anti Termite Treatment For Ground Slap | 1d | 2024-02-25 | 2024-02-25 | B02-V09~V16-1090, B02-V01~V08-1100 | 13d | 0d | Anti Termite Treatment nder Ground Slap [8] | 2,237.28 | Civil |
| B02-V09~V16-1110 |  | Pouring Concrete For Ground Slap | 1d | 2024-02-25 | 2024-02-25 | B02-V09~V16-1100 FF, B02-V09~V16-1090, B02-V01~V08-1110 | 13d | 6d | Concrete For Ground Slap [8] | 58,169.52 | Civil |

| ID | WBS | Activity | Duration | Start | Finish | Predecessors | Total float | Free float | Resources | Cost | Department-1 |
| --- | --- | --- | --- | --- | --- | --- | --- | --- | --- | --- | --- |
|  | 4 | **Precast Works** |  | 2024-03-12 | 2024-03-19 |  |  |  |  |  |  |
| B02-V09~V16-1120 |  | Precast Constrction | 7d | 2024-03-12 | 2024-03-19 | B02-V09~V16-1110, B02-V01~V08-1120 | 0d |  | Precast Walls GF [8]; Hollow Core Slap GF [8]; Precast Stairs & staircase House [8]; Thermal insollation Outside Walls [8]; Concrete structure joints [8]; Precast Walls FF [8]; Hollow Core Slap FF [8] | 1,513,762.87 | Civil |
|  | 1 | **Works Inside The Villa** |  | 2024-03-20 | 2024-07-03 |  |  |  |  |  |  |
| B02-V09~V16-1130 |  | Block Work For GF & Estabishment 1F | 6d | 2024-03-20 | 2024-03-26 | B02-V09~V16-1120, B02-V01~V08-1130 | 13d | 0d | Block GF [8] | 13,647.1 | Arc |
| B02-V09~V16-1140 |  | L.L & H.L Drainage | 6d | 2024-03-27 | 2024-04-02 | B02-V09~V16-1130, B02-V01~V08-1140 | 13d | 0d | HL Drainage [8]; L.L Drainage [8] | 89,489.28 | Mech |
| B02-V09~V16-1150 |  | Elec Establishment For GF & 1F | 3d | 2024-03-27 | 2024-03-30 | B02-V09~V16-1130, B02-V01~V08-1150 | 16d | 3d | Elec Establishment GF [8] | 26,840.73 | Elec |
| B02-V09~V16-1160 |  | Screed Work For 1F & Roof | 6d | 2024-04-03 | 2024-04-09 | B02-V09~V16-1140, B02-V09~V16-1150, B02-V01~V08-1160 | 13d | 0d | Screed 1st Floor [8]; Screed Roof Floor [8]; Leveling Screed 1st Floor [8]; Leveling Screed Roof Floor [8] | 268,467.85 | Civil |
| B02-V09~V16-1170 |  | Water Tank & Heater Foundations | 4d | 2024-04-10 | 2024-04-14 | B02-V09~V16-1160, B02-V01~V08-1170 | 17d | 0d |  |  | Civil |
| B02-V09~V16-1180 |  | Block Works For 1F | 3d | 2024-04-10 | 2024-04-13 | B02-V09~V16-1160, B02-V01~V08-1180 | 13d | 0d | Block FF [8] | 20,537.81 | Arc |
| B02-V09~V16-1190 |  | Water Line Network | 6d | 2024-04-14 | 2024-04-20 | B02-V09~V16-1180, B02-V01~V08-1190 | 13d | 0d | Water Line Network [8] | 40,261.13 | Mech |
| B02-V09~V16-1200 |  | Continue Elec Establishment For GF & 1F | 3d | 2024-04-14 | 2024-04-16 | B02-V09~V16-1180, B02-V01~V08-1200 | 16d | 3d | Elec Establishment FF [8] | 26,840.73 | Elec |
| B02-V09~V16-1210 |  | Thermal Insulation For Roof | 5d | 2024-04-15 | 2024-04-20 | B02-V09~V16-1170, B02-V01~V08-1210 | 17d | 0d | Roof Insulation [8] | 32,530.16 | Arc |
| B02-V09~V16-1220 |  | Roof Floor Tiles | 6d | 2024-04-21 | 2024-04-27 | B02-V09~V16-1210, B02-V01~V08-1220 | 17d | 1d | Roof Tiles [8]; Roof Tiles Joints [8]; Re_Test Roof Insulation [8] | 63,179.38 | Arc |
| B02-V09~V16-1230 |  | Plaster Work For Villa | 6d | 2024-04-21 | 2024-04-27 | B02-V09~V16-1190, B02-V09~V16-1200, B02-V01~V08-1230 | 13d | 0d | Establishing a plastering GF [8]; Establishing a plastering FF [8]; Plastering GF [8]; Plastering FF [8] | 49,263.81 |  |
| B02-V09~V16-1240 |  | Marbale Stairs & Handrails | 6d | 2024-04-28 | 2024-05-04 | B02-V09~V16-1230, B02-V01~V08-1240 | 35d | 1d | Marbale Stairs [8]; Stairs Handrails SS [8] | 91,494.69 |  |
| B02-V09~V16-1250 |  | Water Proofing Of Bathrooms | 4d | 2024-04-28 | 2024-05-01 | B02-V09~V16-1230, B02-V01~V08-1250 | 13d | 0d | Bathrooms InsulationGF & FF [8] | 134.24 |  |
| B02-V09~V16-1260 |  | Pulling The Elec Wires | 4d | 2024-04-28 | 2024-05-01 | B02-V09~V16-1230, B02-V01~V08-1260 | 23d | 3d | Elec Wires GF [8]; Elec Wires FF [8] | 80,542.4 |  |
| B02-V09~V16-1270 |  | Bathroom Tiles | 4d | 2024-05-02 | 2024-05-06 | B02-V09~V16-1250, B02-V09~V16-1220, B02-V01~V08-1270 | 13d | 0d | Ceramic Walls Kitchen [8]; Ceramic Walls Bathrooms GF [8]; Ceramic Walls Bathrooms FF [8]; Ceramic Tiles Bathrooms GF [8]; Ceramic Tiles Kitchen GF [8]; Ceramic Tiles Store GF [8] | 73,204.08 |  |
| B02-V09~V16-1280 |  | Structure For Gypsum | 6d | 2024-05-07 | 2024-05-13 | B02-V09~V16-1270, B02-V01~V08-1280 | 13d | 0d | Structure For Gypsum GF Rooms [8]; Structure For Gypsum FF Rooms [8]; Structure For Gypsum Bathrooms & Kitchen [8] | 33,550.81 |  |
| B02-V09~V16-1290 |  | Gypsum Board For Room | 4d | 2024-05-14 | 2024-05-18 | B02-V09~V16-1280, B02-V09~V16-1260, B02-V01~V08-1290 | 13d | 0d | Gypsum Board For GF Room [8]; Gypsum Board For FF Room [8] | 35,796.64 |  |
| B02-V09~V16-1300 |  | Installation Of Gypsum Board For Bathroom & Kitchen | 4d | 2024-05-19 | 2024-05-22 | B02-V09~V16-1290, B02-V01~V08-1300 | 13d | 0d | Gypsum Board For Bathrooms & Kitchen [8] | 11,052.24 |  |
| B02-V09~V16-1310 |  | Putty Filler For Gypsm Board Ceiling | 6d | 2024-05-23 | 2024-05-29 | B02-V09~V16-1300, B02-V01~V08-1310 | 13d | 0d | Putty Filler 1st Layer Roof all Rooms [8]; Putty Filler 1st Layer Roof all Bathrooms & Kitchen [8]; Putty Filler1st Layer walls [8] | 62,182.52 |  |
| B02-V09~V16-1320 |  | Fixing Shower Glass | 4d | 2024-05-30 | 2024-06-03 | B02-V09~V16-1310, B02-V01~V08-1320 | 21d | 0d | Shower Glass [8] | 22,372.88 |  |
| B02-V09~V16-1330 |  | Interior Wall Putty Filler | 6d | 2024-05-30 | 2024-06-05 | B02-V09~V16-1310, B02-V09~V16-1240, B02-V01~V08-1330 | 13d | 0d | Putty Filler 2ed Layer Roof & WAlls GF [8]; Putty Filler 2ed Layer Roof & WAlls FF [8] | 62,150.21 |  |
| B02-V09~V16-1340 |  | Installation Of Sanitry Fixture | 7d | 2024-06-04 | 2024-06-11 | B02-V09~V16-1320, B02-V01~V08-1340 | 21d | 0d | Mech Fixtures & Accessories [8] | 98,435.64 |  |
| B02-V09~V16-1350 |  | 1st Face Paint | 6d | 2024-06-06 | 2024-06-12 | B02-V09~V16-1330, B02-V01~V08-1350 | 13d | 0d |  |  |  |
| B02-V09~V16-1360 |  | Installation Of Aluminum Windows | 7d | 2024-06-06 | 2024-06-13 | B02-V09~V16-1330, B02-V01~V08-1360 | 23d | 0d | Aluminum Windows [8] | 84,795.68 |  |
| B02-V09~V16-1370 |  | Installation Of Elec Fixture & Accessories | 7d | 2024-06-06 | 2024-06-13 | B02-V09~V16-1310, B02-V09~V16-1330, B02-V09~V16-1260, B02-V01~V08-1370 | 37d | 0d | Elec Fixtures & Accessories Villa & Yard [8]; Elec Cables GF & FF & Earthing [8] | 53,692.2 |  |
| B02-V09~V16-1380 |  | Installation Of Water Tank-Heater & Pumps | 7d | 2024-06-12 | 2024-06-19 | B02-V09~V16-1340, B02-V01~V08-1380, B02-V09~V16-1220 | 21d | 0d | Water Tank & booster Pump [8]; Lower Pump [8]; Heater [8] | 129,756.23 |  |
| B02-V09~V16-1390 |  | Installation Of Parquet | 4d | 2024-06-13 | 2024-06-17 | B02-V09~V16-1350, B02-V01~V08-1390 | 13d | 0d | Installation Of Parquet [8] | 52,978.96 |  |
| B02-V09~V16-1400 |  | Installation Of Wooden Doors | 7d | 2024-06-18 | 2024-06-25 | B02-V09~V16-1390, B02-V01~V08-1400 | 13d | 0d | Wooden Doors Kitchen & Bathroom without Accessories [8]; Wooden Doors Accessories all Villa [8]; Exterior Wooden Doors [8] | 142,105.45 |  |
| B02-V09~V16-1410 |  | Final Face Paint | 7d | 2024-06-26 | 2024-07-03 | B02-V09~V16-1360, B02-V09~V16-1400, B02-V01~V08-1410 | 13d | 0d | Final Face Paint Villa [8] | 31,096.77 |  |

| ID | WBS | Activity | Duration | Start | Finish | Predecessors | Total float | Free float | Resources | Cost |
| --- | --- | --- | --- | --- | --- | --- | --- | --- | --- | --- |
|  | 3 | **Fence & Courtyard Works** |  | 2024-03-20 | 2024-06-23 |  |  |  |  |  |
| B02-V09~V16-1420 |  | Pouring Bedding Concrete For Fence Fondations | 2d | 2024-03-20 | 2024-03-21 | B02-V09~V16-1120, B02-V01~V08-1420 | 9d | 0d | Excavation Fence Foundations [8] | 4,519.28 |
| B02-V09~V16-1430 |  | RC Concrete For Fence Fondations | 6d | 2024-03-23 | 2024-03-28 | B02-V09~V16-1420, B02-V01~V08-1430 | 9d | 0d | Fence Fondations-Eastern side [8]; Fence Fondations-Westren side [8]; Fence Fondations-Back side [8] | 13,420.32 |
| B02-V09~V16-1440 |  | Steel Fixing & Carpentry For Fence Columns | 6d | 2024-03-30 | 2024-04-04 | B02-V09~V16-1430, B02-V01~V08-1440 | 9d | 0d |  |  |
| B02-V09~V16-1450 |  | Establishing Elec For Fence Columns | 4d | 2024-04-06 | 2024-04-09 | B02-V09~V16-1440, B02-V01~V08-1450 | 9d | 0d |  |  |
| B02-V09~V16-1460 |  | Pouring Concrete For Fence Columns | 1d | 2024-04-10 | 2024-04-10 | B02-V09~V16-1450, B02-V01~V08-1460 | 9d | 0d | Fence Columns-Eastern side [8]; Fence Columns-Westren side [8]; Fence Columns-Back side [8] | 9,665.04 |
| B02-V09~V16-1470 |  | Installation Precast Panel For Fence | 5d | 2024-04-11 | 2024-04-16 | B02-V09~V16-1460, B02-V01~V08-1470 | 9d | 0d | Hollow Core Walls [8] | 71,593.2 |
| B02-V09~V16-1480 |  | Bitumen Coating For Fence Fondations | 4d | 2024-04-17 | 2024-04-21 | B02-V09~V16-1470, B02-V01~V08-1480 | 9d | 0d |  |  |
| B02-V09~V16-1490 |  | Pouring Bedding Concrete For "Front" Fence Fondations | 1d | 2024-04-17 | 2024-04-17 | B02-V09~V16-1470, B02-V01~V08-1490 | 21d | 0d |  |  |
| B02-V09~V16-1500 |  | RC Concrete For "Front" Fence Fondations | 4d | 2024-04-18 | 2024-04-22 | B02-V09~V16-1490, B02-V01~V08-1500 | 21d | 0d | Front Fence Fondations [8] | 8,904.4 |
| B02-V09~V16-1510 |  | Outdoor Drainage & Water Line | 5d | 2024-04-22 | 2024-04-27 | B02-V09~V16-1480, B02-V09~V16-1140, B02-V01~V08-1510 | 9d | 0d | Outdoor Drainage [8]; Outdoor Water Line [8] | 13,423.68 |
| B02-V09~V16-1520 |  | Steel Fixing & Carpentry For "Front" Fence Columns | 4d | 2024-04-23 | 2024-04-27 | B02-V09~V16-1500, B02-V01~V08-1520 | 21d | 0d |  |  |
| B02-V09~V16-1530 |  | Establishing Elec For "Front" Fence Columns | 4d | 2024-04-28 | 2024-05-01 | B02-V09~V16-1520, B02-V01~V08-1530 | 21d | 0d |  |  |
| B02-V09~V16-1540 |  | Establishing Elec For Fence & Yard | 2d | 2024-04-28 | 2024-04-29 | B02-V09~V16-1510, B02-V01~V08-1540 | 9d | 0d | Elec Establishment Fence & Yard [8] | 17,898.32 |
| B02-V09~V16-1550 |  | Backfilling the Yard | 4d | 2024-04-30 | 2024-05-04 | B02-V09~V16-1540, B02-V01~V08-1550 | 9d | 0d | Backfilling the Yard [8] | 10,560 |
| B02-V09~V16-1560 |  | Pouring Concrete Wall Of "Front" Fence Columns | 2d | 2024-05-02 | 2024-05-04 | B02-V09~V16-1530, B02-V01~V08-1560 | 21d | 0d | Front Fence Walls [8] | 17,898.32 |
| B02-V09~V16-1570 |  | Pouring Concrete Crown Of "Front" Fence Columns | 3d | 2024-05-05 | 2024-05-07 | B02-V09~V16-1560, B02-V01~V08-1570 | 21d | 0d | Fence Columns - C Chanel [8] | 3,310.37 |
| B02-V09~V16-1580 |  | Bardoura Works For Yard | 5d | 2024-05-05 | 2024-05-09 | B02-V09~V16-1550, B02-V01~V08-1580 | 9d | 0d | Bardoura Works For Yard [8] | 14,408.16 |
| B02-V09~V16-1590 |  | Pouring Concrete Flower Basin Of "Front" Fence Columns | 4d | 2024-05-08 | 2024-05-12 | B02-V09~V16-1570, B02-V01~V08-1590 | 21d | 0d |  |  |
| B02-V09~V16-1600 |  | Antitermite Treatment For Yard | 1d | 2024-05-11 | 2024-05-11 | B02-V09~V16-1580, B02-V01~V08-1600 | 9d | 0d | Antitermite Treatment For Yard [8] |  |
| B02-V09~V16-1610 |  | Pouring Concrete For Yard | 1d | 2024-05-12 | 2024-05-12 | B02-V09~V16-1600, B02-V01~V08-1610 | 9d | 0d |  |  |
| B02-V09~V16-1620 |  | Block Work For Flower Basin | 5d | 2024-05-13 | 2024-05-18 | B02-V09~V16-1610, B02-V01~V08-1620 | 9d | 0d |  |  |
| B02-V09~V16-1630 |  | Plastering Work For Flower Basin | 4d | 2024-05-19 | 2024-05-22 | B02-V09~V16-1620, B02-V01~V08-1630 | 9d | 0d |  |  |
| B02-V09~V16-1640 |  | Interlock Works For The Yard | 6d | 2024-05-23 | 2024-05-29 | B02-V09~V16-1630, B02-V01~V08-1640 | 9d | 0d | Interlock Works For The Yard [8] | 36,776.32 |
| B02-V09~V16-1650 |  | External Grading Works For The Villa | 4d | 2024-05-30 | 2024-06-03 | B02-V09~V16-1640, B02-V01~V08-1650 | 11d | 0d | External Grading Works For The Villa [8] | 3,221.68 |
| B02-V09~V16-1660 |  | Installation The Exterior Door & Garage Door | 5d | 2024-05-30 | 2024-06-04 | B02-V09~V16-1640, B02-V01~V08-1660 | 14d | 2d | Installation The Exterior Door [8]; Installation The Exterior Garage Door [8] | 40,002.72 |
| B02-V09~V16-1670 |  | Fixing Floor Drain For The Yard | 2d | 2024-05-30 | 2024-06-01 | B02-V09~V16-1640, B02-V01~V08-1670 | 17d | 5d | Floor Drain & Clean Out [8] | 13,423.76 |
| B02-V09~V16-1680 |  | Granite Surronds Around The Villa | 4d | 2024-06-04 | 2024-06-08 | B02-V09~V16-1650, B02-V01~V08-1680 | 11d | 2d | Granite Surronds Around The Villa [8] | 25,818.32 |
| B02-V09~V16-1690 |  | Painting The Base Surface Of The Fence | 2d | 2024-06-04 | 2024-06-05 | B02-V09~V16-1750, B02-V01~V08-1690 | 9d | 0d |  |  |
| B02-V09~V16-1700 |  | Painting The Final Face Of The Fence | 4d | 2024-06-06 | 2024-06-10 | B02-V09~V16-1690, B02-V01~V08-1700 | 9d | 0d | Painting Final Face Of The Fence [8] | 37,586.48 |
| B02-V09~V16-1710 |  | Exterior Painting Of The Villa | 7d | 2024-06-11 | 2024-06-18 | B02-V09~V16-1680, B02-V09~V16-1700, B02-V09~V16-1660, B02-V09~V16-1670, B02-V01~V08-1710 | 9d | 0d | Exterior Painting Of The Villa [8]; Exterior Painting Staircase House [8] | 105,684.16 |
| B02-V09~V16-1720 |  | Installation Elec Fixtures & Accessories For The Yard | 4d | 2024-06-19 | 2024-06-23 | B02-V09~V16-1700, B02-V09~V16-1710, B02-V01~V08-1720 | 79d | 0d | Elec feeding panels GF & FF [8] | 22,372.88 |

| ID | WBS | Activity | Duration | Start | Finish | Predecessors | Total float | Free float | Resources | Cost | Department-1 |
| --- | --- | --- | --- | --- | --- | --- | --- | --- | --- | --- | --- |
|  | 5 | **External Sidewalk Works** |  | 2024-05-13 | 2024-06-27 |  |  |  |  |  |  |
| B02-V09~V16-1730 |  | Connection The Drain To The Piblic Network | 3d | 2024-05-13 | 2024-05-15 | B02-V09~V16-1510, B02-V09~V16-1590, B02-V01~V08-1730 | 21d | 4d | Connection Drain To The Piblic Network [8]; Connection Water To The Piblic Network [8] | 13,420.32 |  |
| B02-V09~V16-1740 |  | Pardora Works For The External Sidewalk | 2d | 2024-05-30 | 2024-06-01 | B02-V09~V16-1640, B02-V09~V16-1730, B02-V01~V08-1740 | 9d | 0d |  |  |  |
| B02-V09~V16-1750 |  | Interlock Works For The Exerrnal Sidewalk | 2d | 2024-06-02 | 2024-06-03 | B02-V09~V16-1740, B02-V01~V08-1750 | 9d | 0d |  |  |  |
| B02-V09~V16-1760 |  | Pulling The Villa's Main Elec Cable | 4d | 2024-06-24 | 2024-06-27 | B02-V09~V16-1750, B02-V09~V16-1720, B02-V01~V08-1760 | 79d | 0d | Elec Work Testing [8] | 22,819.84 |  |
|  | 6 | **Final Testing & Handover** |  | 2024-06-20 | 2024-07-16 |  |  |  |  |  |  |
| B02-V09~V16-1770 |  | Mech Work Testing & Handover | 5d | 2024-06-20 | 2024-06-25 | B02-V09~V16-1730, B02-V09~V16-1340, B02-V09~V16-1380, B02-V01~V08-1770 | 86d | 2d | Mech Work Testing & Handover [8] | 14,318.64 |  |
| B02-V09~V16-1780 |  | Arch Snaglist & Handover | 5d | 2024-06-26 | 2024-07-01 | B02-V09~V16-1750, B02-V09~V16-1710, B02-V09~V16-1400, B02-V01~V08-1780 | 81d | 2d | Arch Snaglist & Handover [8] | 77,320.64 |  |
| B02-V09~V16-1790 |  | ElecWork Testing & Handover | 5d | 2024-06-29 | 2024-07-03 | B02-V09~V16-1760, B02-V09~V16-1370, B02-V01~V08-1790 | 79d | 0d | Elec Work Handover [8] | 23,804.72 |  |
| B02-V09~V16-1800 |  | Final Handover Of The Villa To The Consltant | 5d | 2024-07-04 | 2024-07-09 | B02-V09~V16-1780, B02-V09~V16-1790, B02-V09~V16-1770, B02-V09~V16-1410, B02-V01~V08-1800 | 79d | 0d |  |  |  |
| B02-V09~V16-1810 |  | Customer Delivery | 6d | 2024-07-10 | 2024-07-16 | B02-V09~V16-1800, B02-V01~V08-1810 | 79d | 1d |  |  |  |
|  | 6 | **B02-V17~V24** |  | 2024-01-29 | 2024-07-24 |  |  |  |  |  |  |
|  | 2 | **Under Grond Slap Works** |  | 2024-01-29 | 2024-03-04 |  |  |  |  |  |  |
| B02-V17~V24-1000 |  | Excavation&Compaction of Fondation | 6d | 2024-01-29 | 2024-02-04 | B02-V09~V16-1000 | 11d | 0d | Clearing & Groubbing [8]; Excavation & Leveling [8]; Stone Layer [8]; A3 Layer [8]; A1-a 1st Layer [8]; A1-a 2ed Layer [8] | 163,545.76 | Civil |
| B02-V17~V24-1010 |  | Pouring Concrete For Bedding | 2d | 2024-02-05 | 2024-02-06 | B02-V17~V24-1000, B02-V09~V16-1010 | 13d | 0d | PC Carpentry [8]; PC Concrete [8]; RC 18 MPA [9 M3] | 37,899.68 | Civil |
| B02-V17~V24-1020 |  | Reinforcement Concrete For Foundation | 4d | 2024-02-07 | 2024-02-11 | B02-V17~V24-1010, B02-V09~V16-1020 | 13d | 0d | RC Foundation Carpentry [8]; RC Foundation Steel [8]; RC Foundation Concrete [8] | 201,355.92 | Civil |
| B02-V17~V24-1030 |  | Steel Fixing& Carpenter work for Beams | 4d | 2024-02-12 | 2024-02-15 | B02-V17~V24-1020, B02-V09~V16-1030 | 13d | 0d | RC Grade Beam Carpentry & Steel [8] | 44,745.76 | Civil |
| B02-V17~V24-1040 |  | Mech&Elec Establishment for Beams | 3d | 2024-02-17 | 2024-02-19 | B02-V17~V24-1030, B02-V09~V16-1040 | 13d | 0d |  |  | Mech |
| B02-V17~V24-1050 |  | Pouring Concrete For Beams | 1d | 2024-02-20 | 2024-02-20 | B02-V17~V24-1040, B02-V09~V16-1050 | 13d | 0d | RC Grade Beam Concrete [8] | 77,141.68 | Civil |
| B02-V17~V24-1060 |  | Bitmen Coating For Fondation&Beams | 2d | 2024-02-21 | 2024-02-22 | B02-V17~V24-1050, B02-V09~V16-1060 | 13d | 0d | Bitumen Coating Foundations & Grade Beams [8] | 22,372.88 | Civil |
| B02-V17~V24-1070 |  | Backfilling Inside Fondations | 3d | 2024-02-24 | 2024-02-26 | B02-V17~V24-1060, B02-V09~V16-1070 | 13d | 0d | Backfilling 1st Layer [8]; Backfilling 2ed Layer [8] | 11,186.4 | Civil |
| B02-V17~V24-1080 |  | Mech Works Under Grond Slap | 3d | 2024-02-27 | 2024-02-29 | B02-V17~V24-1070, B02-V09~V16-1080 | 13d | 0d | Mech Establishment Under Ground Slap [8] | 13,423.42 | Mech |
| B02-V17~V24-1090 |  | Steel Fixing& Carpenter work for Ground Slap | 2d | 2024-03-02 | 2024-03-03 | B02-V17~V24-1080, B02-V09~V16-1090 | 13d | 0d | Steel & Carpentry For Ground Slap [8] | 10,246.8 | Civil |
| B02-V17~V24-1100 |  | Anti Termite Treatment For Ground Slap | 1d | 2024-03-04 | 2024-03-04 | B02-V17~V24-1090, B02-V09~V16-1100 | 13d | 0d | Anti Termite Treatment nder Ground Slap [8] | 2,237.28 | Civil |
| B02-V17~V24-1110 |  | Pouring Concrete For Ground Slap | 1d | 2024-03-04 | 2024-03-04 | B02-V17~V24-1100 FF, B02-V17~V24-1090, B02-V09~V16-1110 | 13d | 5d | Concrete For Ground Slap [8] | 58,169.52 | Civil |

| ID | WBS | Activity | Duration | Start | Finish | Predecessors | Total float | Free float | Resources | Cost | Department-1 |
| --- | --- | --- | --- | --- | --- | --- | --- | --- | --- | --- | --- |
|  | 4 | **Precast Works** |  | 2024-03-20 | 2024-03-27 |  |  |  |  |  |  |
| B02-V17~V24-1120 |  | Precast Constrction | 7d | 2024-03-20 | 2024-03-27 | B02-V17~V24-1110, B02-V09~V16-1120 | 0d |  | Precast Walls GF [8]; Hollow Core Slap GF [8]; Precast Stairs & staircase House [8]; Thermal insollation Outside Walls [8]; Concrete structure joints [8]; Precast Walls FF [8]; Hollow Core Slap FF [8] | 1,513,762.87 | Civil |
|  | 1 | **Works Inside The Villa** |  | 2024-03-28 | 2024-07-11 |  |  |  |  |  |  |
| B02-V17~V24-1130 |  | Block Work For GF & Estabishment 1F | 6d | 2024-03-28 | 2024-04-03 | B02-V17~V24-1120, B02-V09~V16-1130 | 13d | 0d | Block GF [8] | 13,647.1 | Arc |
| B02-V17~V24-1140 |  | L.L & H.L Drainage | 6d | 2024-04-04 | 2024-04-10 | B02-V17~V24-1130, B02-V09~V16-1140 | 13d | 0d | HL Drainage [8]; L.L Drainage [8] | 89,489.28 | Mech |
| B02-V17~V24-1150 |  | Elec Establishment For GF & 1F | 3d | 2024-04-04 | 2024-04-07 | B02-V17~V24-1130, B02-V09~V16-1150 | 16d | 3d | Elec Establishment GF [8] | 26,840.73 | Elec |
| B02-V17~V24-1160 |  | Screed Work For 1F & Roof | 6d | 2024-04-11 | 2024-04-17 | B02-V17~V24-1140, B02-V17~V24-1150, B02-V09~V16-1160 | 13d | 0d | Screed 1st Floor [8]; Screed Roof Floor [8]; Leveling Screed 1st Floor [8]; Leveling Screed Roof Floor [8] | 268,467.85 | Civil |
| B02-V17~V24-1170 |  | Water Tank & Heater Foundations | 4d | 2024-04-18 | 2024-04-22 | B02-V17~V24-1160, B02-V09~V16-1170 | 17d | 0d |  |  | Civil |
| B02-V17~V24-1180 |  | Block Works For 1F | 3d | 2024-04-18 | 2024-04-21 | B02-V17~V24-1160, B02-V09~V16-1180 | 13d | 0d | Block FF [8] | 20,537.81 | Arc |
| B02-V17~V24-1190 |  | Water Line Network | 6d | 2024-04-22 | 2024-04-28 | B02-V17~V24-1180, B02-V09~V16-1190 | 13d | 0d | Water Line Network [8] | 40,261.13 | Mech |
| B02-V17~V24-1200 |  | Continue Elec Establishment For GF & 1F | 3d | 2024-04-22 | 2024-04-24 | B02-V17~V24-1180, B02-V09~V16-1200 | 16d | 3d | Elec Establishment FF [8] | 26,840.73 | Elec |
| B02-V17~V24-1210 |  | Thermal Insulation For Roof | 5d | 2024-04-23 | 2024-04-28 | B02-V17~V24-1170, B02-V09~V16-1210 | 17d | 0d | Roof Insulation [8] | 32,530.16 | Arc |
| B02-V17~V24-1220 |  | Roof Floor Tiles | 6d | 2024-04-29 | 2024-05-05 | B02-V17~V24-1210, B02-V09~V16-1220 | 17d | 1d | Roof Tiles [8]; Roof Tiles Joints [8]; Re_Test Roof Insulation [8] | 63,179.38 | Arc |
| B02-V17~V24-1230 |  | Plaster Work For Villa | 6d | 2024-04-29 | 2024-05-05 | B02-V17~V24-1190, B02-V17~V24-1200, B02-V09~V16-1230 | 13d | 0d | Establishing a plastering GF [8]; Establishing a plastering FF [8]; Plastering GF [8]; Plastering FF [8] | 49,263.81 |  |
| B02-V17~V24-1240 |  | Marbale Stairs & Handrails | 6d | 2024-05-06 | 2024-05-12 | B02-V17~V24-1230, B02-V09~V16-1240 | 35d | 1d | Marbale Stairs [8]; Stairs Handrails SS [8] | 91,494.69 |  |
| B02-V17~V24-1250 |  | Water Proofing Of Bathrooms | 4d | 2024-05-06 | 2024-05-09 | B02-V17~V24-1230, B02-V09~V16-1250 | 13d | 0d | Bathrooms InsulationGF & FF [8] | 134.24 |  |
| B02-V17~V24-1260 |  | Pulling The Elec Wires | 4d | 2024-05-06 | 2024-05-09 | B02-V17~V24-1230, B02-V09~V16-1260 | 23d | 3d | Elec Wires GF [8]; Elec Wires FF [8] | 80,542.4 |  |
| B02-V17~V24-1270 |  | Bathroom Tiles | 4d | 2024-05-11 | 2024-05-14 | B02-V17~V24-1250, B02-V17~V24-1220, B02-V09~V16-1270 | 13d | 0d | Ceramic Walls Kitchen [8]; Ceramic Walls Bathrooms GF [8]; Ceramic Walls Bathrooms FF [8]; Ceramic Tiles Bathrooms GF [8]; Ceramic Tiles Kitchen GF [8]; Ceramic Tiles Store GF [8] | 73,204.08 |  |
| B02-V17~V24-1280 |  | Structure For Gypsum | 6d | 2024-05-15 | 2024-05-21 | B02-V17~V24-1270, B02-V09~V16-1280 | 13d | 0d | Structure For Gypsum GF Rooms [8]; Structure For Gypsum FF Rooms [8]; Structure For Gypsum Bathrooms & Kitchen [8] | 33,550.81 |  |
| B02-V17~V24-1290 |  | Gypsum Board For Room | 4d | 2024-05-22 | 2024-05-26 | B02-V17~V24-1280, B02-V17~V24-1260, B02-V09~V16-1290 | 13d | 0d | Gypsum Board For GF Room [8]; Gypsum Board For FF Room [8] | 35,796.64 |  |
| B02-V17~V24-1300 |  | Installation Of Gypsum Board For Bathroom & Kitchen | 4d | 2024-05-27 | 2024-05-30 | B02-V17~V24-1290, B02-V09~V16-1300 | 13d | 0d | Gypsum Board For Bathrooms & Kitchen [8] | 11,052.24 |  |
| B02-V17~V24-1310 |  | Putty Filler For Gypsm Board Ceiling | 6d | 2024-06-01 | 2024-06-06 | B02-V17~V24-1300, B02-V09~V16-1310 | 13d | 0d | Putty Filler 1st Layer Roof all Rooms [8]; Putty Filler 1st Layer Roof all Bathrooms & Kitchen [8]; Putty Filler1st Layer walls [8] | 62,182.52 |  |
| B02-V17~V24-1320 |  | Fixing Shower Glass | 4d | 2024-06-08 | 2024-06-11 | B02-V17~V24-1310, B02-V09~V16-1320 | 21d | 0d | Shower Glass [8] | 22,372.88 |  |
| B02-V17~V24-1330 |  | Interior Wall Putty Filler | 6d | 2024-06-08 | 2024-06-13 | B02-V17~V24-1310, B02-V17~V24-1240, B02-V09~V16-1330 | 13d | 0d | Putty Filler 2ed Layer Roof & WAlls GF [8]; Putty Filler 2ed Layer Roof & WAlls FF [8] | 62,150.21 |  |
| B02-V17~V24-1340 |  | Installation Of Sanitry Fixture | 7d | 2024-06-12 | 2024-06-19 | B02-V17~V24-1320, B02-V09~V16-1340 | 21d | 0d | Mech Fixtures & Accessories [8] | 98,435.64 |  |
| B02-V17~V24-1350 |  | 1st Face Paint | 6d | 2024-06-15 | 2024-06-20 | B02-V17~V24-1330, B02-V09~V16-1350 | 13d | 0d |  |  |  |
| B02-V17~V24-1360 |  | Installation Of Aluminum Windows | 7d | 2024-06-15 | 2024-06-22 | B02-V17~V24-1330, B02-V09~V16-1360 | 23d | 0d | Aluminum Windows [8] | 84,795.68 |  |
| B02-V17~V24-1370 |  | Installation Of Elec Fixture & Accessories | 7d | 2024-06-15 | 2024-06-22 | B02-V17~V24-1310, B02-V17~V24-1330, B02-V17~V24-1260, B02-V09~V16-1370 | 37d | 0d | Elec Fixtures & Accessories Villa & Yard [8]; Elec Cables GF & FF & Earthing [8] | 53,692.2 |  |
| B02-V17~V24-1380 |  | Installation Of Water Tank-Heater & Pumps | 7d | 2024-06-20 | 2024-06-27 | B02-V17~V24-1340, B02-V09~V16-1380, B02-V17~V24-1220 | 21d | 0d | Water Tank & booster Pump [8]; Lower Pump [8]; Heater [8] | 129,756.23 |  |
| B02-V17~V24-1390 |  | Installation Of Parquet | 4d | 2024-06-22 | 2024-06-25 | B02-V17~V24-1350, B02-V09~V16-1390 | 13d | 0d | Installation Of Parquet [8] | 52,978.96 |  |
| B02-V17~V24-1400 |  | Installation Of Wooden Doors | 7d | 2024-06-26 | 2024-07-03 | B02-V17~V24-1390, B02-V09~V16-1400 | 13d | 0d | Wooden Doors Kitchen & Bathroom without Accessories [8]; Wooden Doors Accessories all Villa [8]; Exterior Wooden Doors [8] | 142,105.45 |  |
| B02-V17~V24-1410 |  | Final Face Paint | 7d | 2024-07-04 | 2024-07-11 | B02-V17~V24-1360, B02-V17~V24-1400, B02-V09~V16-1410 | 13d | 0d | Final Face Paint Villa [8] | 31,096.77 |  |

| ID | WBS | Activity | Duration | Start | Finish | Predecessors | Total float | Free float | Resources | Cost |
| --- | --- | --- | --- | --- | --- | --- | --- | --- | --- | --- |
|  | 3 | **Fence & Courtyard Works** |  | 2024-03-28 | 2024-07-01 |  |  |  |  |  |
| B02-V17~V24-1420 |  | Pouring Bedding Concrete For Fence Fondations | 2d | 2024-03-28 | 2024-03-30 | B02-V17~V24-1120, B02-V09~V16-1420 | 9d | 0d | Excavation Fence Foundations [8] | 4,519.28 |
| B02-V17~V24-1430 |  | RC Concrete For Fence Fondations | 6d | 2024-03-31 | 2024-04-06 | B02-V17~V24-1420, B02-V09~V16-1430 | 9d | 0d | Fence Fondations-Eastern side [8]; Fence Fondations-Westren side [8]; Fence Fondations-Back side [8] | 13,420.32 |
| B02-V17~V24-1440 |  | Steel Fixing & Carpentry For Fence Columns | 6d | 2024-04-07 | 2024-04-13 | B02-V17~V24-1430, B02-V09~V16-1440 | 9d | 0d |  |  |
| B02-V17~V24-1450 |  | Establishing Elec For Fence Columns | 4d | 2024-04-14 | 2024-04-17 | B02-V17~V24-1440, B02-V09~V16-1450 | 9d | 0d |  |  |
| B02-V17~V24-1460 |  | Pouring Concrete For Fence Columns | 1d | 2024-04-18 | 2024-04-18 | B02-V17~V24-1450, B02-V09~V16-1460 | 9d | 0d | Fence Columns-Eastern side [8]; Fence Columns-Westren side [8]; Fence Columns-Back side [8] | 9,665.04 |
| B02-V17~V24-1470 |  | Installation Precast Panel For Fence | 5d | 2024-04-20 | 2024-04-24 | B02-V17~V24-1460, B02-V09~V16-1470 | 9d | 0d | Hollow Core Walls [8] | 71,593.2 |
| B02-V17~V24-1480 |  | Bitumen Coating For Fence Fondations | 4d | 2024-04-25 | 2024-04-29 | B02-V17~V24-1470, B02-V09~V16-1480 | 9d | 0d |  |  |
| B02-V17~V24-1490 |  | Pouring Bedding Concrete For "Front" Fence Fondations | 1d | 2024-04-25 | 2024-04-25 | B02-V17~V24-1470, B02-V09~V16-1490 | 21d | 0d |  |  |
| B02-V17~V24-1500 |  | RC Concrete For "Front" Fence Fondations | 4d | 2024-04-27 | 2024-04-30 | B02-V17~V24-1490, B02-V09~V16-1500 | 21d | 0d | Front Fence Fondations [8] | 8,904.4 |
| B02-V17~V24-1510 |  | Outdoor Drainage & Water Line | 5d | 2024-04-30 | 2024-05-05 | B02-V17~V24-1480, B02-V17~V24-1140, B02-V09~V16-1510 | 9d | 0d | Outdoor Drainage [8]; Outdoor Water Line [8] | 13,423.68 |
| B02-V17~V24-1520 |  | Steel Fixing & Carpentry For "Front" Fence Columns | 4d | 2024-05-01 | 2024-05-05 | B02-V17~V24-1500, B02-V09~V16-1520 | 21d | 0d |  |  |
| B02-V17~V24-1530 |  | Establishing Elec For "Front" Fence Columns | 4d | 2024-05-06 | 2024-05-09 | B02-V17~V24-1520, B02-V09~V16-1530 | 21d | 0d |  |  |
| B02-V17~V24-1540 |  | Establishing Elec For Fence & Yard | 2d | 2024-05-06 | 2024-05-07 | B02-V17~V24-1510, B02-V09~V16-1540 | 9d | 0d | Elec Establishment Fence & Yard [8] | 17,898.32 |
| B02-V17~V24-1550 |  | Backfilling the Yard | 4d | 2024-05-08 | 2024-05-12 | B02-V17~V24-1540, B02-V09~V16-1550 | 9d | 0d | Backfilling the Yard [8] | 10,560 |
| B02-V17~V24-1560 |  | Pouring Concrete Wall Of "Front" Fence Columns | 2d | 2024-05-11 | 2024-05-12 | B02-V17~V24-1530, B02-V09~V16-1560 | 21d | 0d | Front Fence Walls [8] | 17,898.32 |
| B02-V17~V24-1570 |  | Pouring Concrete Crown Of "Front" Fence Columns | 3d | 2024-05-13 | 2024-05-15 | B02-V17~V24-1560, B02-V09~V16-1570 | 21d | 0d | Fence Columns - C Chanel [8] | 3,310.37 |
| B02-V17~V24-1580 |  | Bardoura Works For Yard | 5d | 2024-05-13 | 2024-05-18 | B02-V17~V24-1550, B02-V09~V16-1580 | 9d | 0d | Bardoura Works For Yard [8] | 14,408.16 |
| B02-V17~V24-1590 |  | Pouring Concrete Flower Basin Of "Front" Fence Columns | 4d | 2024-05-16 | 2024-05-20 | B02-V17~V24-1570, B02-V09~V16-1590 | 21d | 0d |  |  |
| B02-V17~V24-1600 |  | Antitermite Treatment For Yard | 1d | 2024-05-19 | 2024-05-19 | B02-V17~V24-1580, B02-V09~V16-1600 | 9d | 0d | Antitermite Treatment For Yard [8] |  |
| B02-V17~V24-1610 |  | Pouring Concrete For Yard | 1d | 2024-05-20 | 2024-05-20 | B02-V17~V24-1600, B02-V09~V16-1610 | 9d | 0d |  |  |
| B02-V17~V24-1620 |  | Block Work For Flower Basin | 5d | 2024-05-21 | 2024-05-26 | B02-V17~V24-1610, B02-V09~V16-1620 | 9d | 0d |  |  |
| B02-V17~V24-1630 |  | Plastering Work For Flower Basin | 4d | 2024-05-27 | 2024-05-30 | B02-V17~V24-1620, B02-V09~V16-1630 | 9d | 0d |  |  |
| B02-V17~V24-1640 |  | Interlock Works For The Yard | 6d | 2024-06-01 | 2024-06-06 | B02-V17~V24-1630, B02-V09~V16-1640 | 9d | 0d | Interlock Works For The Yard [8] | 36,776.32 |
| B02-V17~V24-1650 |  | External Grading Works For The Villa | 4d | 2024-06-08 | 2024-06-11 | B02-V17~V24-1640, B02-V09~V16-1650 | 11d | 0d | External Grading Works For The Villa [8] | 3,221.68 |
| B02-V17~V24-1660 |  | Installation The Exterior Door & Garage Door | 5d | 2024-06-08 | 2024-06-12 | B02-V17~V24-1640, B02-V09~V16-1660 | 14d | 2d | Installation The Exterior Door [8]; Installation The Exterior Garage Door [8] | 40,002.72 |
| B02-V17~V24-1670 |  | Fixing Floor Drain For The Yard | 2d | 2024-06-08 | 2024-06-09 | B02-V17~V24-1640, B02-V09~V16-1670 | 17d | 5d | Floor Drain & Clean Out [8] | 13,423.76 |
| B02-V17~V24-1680 |  | Granite Surronds Around The Villa | 4d | 2024-06-12 | 2024-06-16 | B02-V17~V24-1650, B02-V09~V16-1680 | 11d | 2d | Granite Surronds Around The Villa [8] | 25,818.32 |
| B02-V17~V24-1690 |  | Painting The Base Surface Of The Fence | 2d | 2024-06-12 | 2024-06-13 | B02-V17~V24-1750, B02-V09~V16-1690 | 9d | 0d |  |  |
| B02-V17~V24-1700 |  | Painting The Final Face Of The Fence | 4d | 2024-06-15 | 2024-06-18 | B02-V17~V24-1690, B02-V09~V16-1700 | 9d | 0d | Painting Final Face Of The Fence [8] | 37,586.48 |
| B02-V17~V24-1710 |  | Exterior Painting Of The Villa | 7d | 2024-06-19 | 2024-06-26 | B02-V17~V24-1680, B02-V17~V24-1700, B02-V17~V24-1660, B02-V17~V24-1670, B02-V09~V16-1710 | 9d | 0d | Exterior Painting Of The Villa [8]; Exterior Painting Staircase House [8] | 105,684.16 |
| B02-V17~V24-1720 |  | Installation Elec Fixtures & Accessories For The Yard | 4d | 2024-06-27 | 2024-07-01 | B02-V17~V24-1700, B02-V17~V24-1710, B02-V09~V16-1720 | 78d | 0d | Elec feeding panels GF & FF [8] | 22,372.88 |

| ID | WBS | Activity | Duration | Start | Finish | Predecessors | Total float | Free float | Resources | Cost | Department-1 |
| --- | --- | --- | --- | --- | --- | --- | --- | --- | --- | --- | --- |
|  | 5 | **External Sidewalk Works** |  | 2024-05-21 | 2024-07-06 |  |  |  |  |  |  |
| B02-V17~V24-1730 |  | Connection The Drain To The Piblic Network | 3d | 2024-05-21 | 2024-05-23 | B02-V17~V24-1510, B02-V17~V24-1590, B02-V09~V16-1730 | 21d | 4d | Connection Drain To The Piblic Network [8]; Connection Water To The Piblic Network [8] | 13,420.32 |  |
| B02-V17~V24-1740 |  | Pardora Works For The External Sidewalk | 2d | 2024-06-08 | 2024-06-09 | B02-V17~V24-1640, B02-V17~V24-1730, B02-V09~V16-1740 | 9d | 0d |  |  |  |
| B02-V17~V24-1750 |  | Interlock Works For The Exerrnal Sidewalk | 2d | 2024-06-10 | 2024-06-11 | B02-V17~V24-1740, B02-V09~V16-1750 | 9d | 0d |  |  |  |
| B02-V17~V24-1760 |  | Pulling The Villa's Main Elec Cable | 4d | 2024-07-02 | 2024-07-06 | B02-V17~V24-1750, B02-V17~V24-1720, B02-V09~V16-1760 | 78d | 0d | Elec Work Testing [8] | 22,819.84 |  |
|  | 6 | **Final Testing & Handover** |  | 2024-06-29 | 2024-07-24 |  |  |  |  |  |  |
| B02-V17~V24-1770 |  | Mech Work Testing & Handover | 5d | 2024-06-29 | 2024-07-03 | B02-V17~V24-1730, B02-V17~V24-1340, B02-V17~V24-1380, B02-V09~V16-1770 | 85d | 2d | Mech Work Testing & Handover [8] | 14,318.64 |  |
| B02-V17~V24-1780 |  | Arch Snaglist & Handover | 5d | 2024-07-04 | 2024-07-09 | B02-V17~V24-1750, B02-V17~V24-1710, B02-V17~V24-1400, B02-V09~V16-1780 | 80d | 2d | Arch Snaglist & Handover [8] | 77,320.64 |  |
| B02-V17~V24-1790 |  | ElecWork Testing & Handover | 5d | 2024-07-07 | 2024-07-11 | B02-V17~V24-1760, B02-V17~V24-1370, B02-V09~V16-1790 | 78d | 0d | Elec Work Handover [8] | 23,804.72 |  |
| B02-V17~V24-1800 |  | Final Handover Of The Villa To The Consltant | 5d | 2024-07-13 | 2024-07-17 | B02-V17~V24-1780, B02-V17~V24-1790, B02-V17~V24-1770, B02-V17~V24-1410, B02-V09~V16-1800 | 78d | 0d |  |  |  |
| B02-V17~V24-1810 |  | Customer Delivery | 6d | 2024-07-18 | 2024-07-24 | B02-V17~V24-1800, B02-V09~V16-1810 | 78d | 1d |  |  |  |
|  | 8 | **B02-V25~V32** |  | 2024-02-05 | 2024-08-01 |  |  |  |  |  |  |
|  | 2 | **Under Grond Slap Works** |  | 2024-02-05 | 2024-03-11 |  |  |  |  |  |  |
| B02-V25~V32-1000 |  | Excavation&Compaction of Fondation | 6d | 2024-02-05 | 2024-02-11 | B02-V17~V24-1000 | 11d | 0d | Clearing & Groubbing [8]; Excavation & Leveling [8]; Stone Layer [8]; A3 Layer [8]; A1-a 1st Layer [8]; A1-a 2ed Layer [8] | 163,545.76 | Civil |
| B02-V25~V32-1010 |  | Pouring Concrete For Bedding | 2d | 2024-02-12 | 2024-02-13 | B02-V25~V32-1000, B02-V17~V24-1010 | 13d | 0d | PC Carpentry [8]; PC Concrete [8]; RC 18 MPA [9 M3] | 37,899.68 | Civil |
| B02-V25~V32-1020 |  | Reinforcement Concrete For Foundation | 4d | 2024-02-14 | 2024-02-18 | B02-V25~V32-1010, B02-V17~V24-1020 | 13d | 0d | RC Foundation Carpentry [8]; RC Foundation Steel [8]; RC Foundation Concrete [8] | 201,355.92 | Civil |
| B02-V25~V32-1030 |  | Steel Fixing& Carpenter work for Beams | 4d | 2024-02-19 | 2024-02-22 | B02-V25~V32-1020, B02-V17~V24-1030 | 14d | 0d | RC Grade Beam Carpentry & Steel [8] | 44,745.76 | Civil |
| B02-V25~V32-1040 |  | Mech&Elec Establishment for Beams | 3d | 2024-02-24 | 2024-02-26 | B02-V25~V32-1030, B02-V17~V24-1040 | 14d | 0d |  |  | Mech |
| B02-V25~V32-1050 |  | Pouring Concrete For Beams | 1d | 2024-02-27 | 2024-02-27 | B02-V25~V32-1040, B02-V17~V24-1050 | 14d | 0d | RC Grade Beam Concrete [8] | 77,141.68 | Civil |
| B02-V25~V32-1060 |  | Bitmen Coating For Fondation&Beams | 2d | 2024-02-28 | 2024-02-29 | B02-V25~V32-1050, B02-V17~V24-1060 | 14d | 0d | Bitumen Coating Foundations & Grade Beams [8] | 22,372.88 | Civil |
| B02-V25~V32-1070 |  | Backfilling Inside Fondations | 3d | 2024-03-02 | 2024-03-04 | B02-V25~V32-1060, B02-V17~V24-1070 | 14d | 0d | Backfilling 1st Layer [8]; Backfilling 2ed Layer [8] | 11,186.4 | Civil |
| B02-V25~V32-1080 |  | Mech Works Under Grond Slap | 3d | 2024-03-05 | 2024-03-07 | B02-V25~V32-1070, B02-V17~V24-1080 | 14d | 0d | Mech Establishment Under Ground Slap [8] | 13,423.42 | Mech |
| B02-V25~V32-1090 |  | Steel Fixing& Carpenter work for Ground Slap | 2d | 2024-03-09 | 2024-03-10 | B02-V25~V32-1080, B02-V17~V24-1090 | 14d | 0d | Steel & Carpentry For Ground Slap [8] | 10,246.8 | Civil |
| B02-V25~V32-1100 |  | Anti Termite Treatment For Ground Slap | 1d | 2024-03-11 | 2024-03-11 | B02-V25~V32-1090, B02-V17~V24-1100 | 14d | 0d | Anti Termite Treatment nder Ground Slap [8] | 2,237.28 | Civil |
| B02-V25~V32-1110 |  | Pouring Concrete For Ground Slap | 1d | 2024-03-11 | 2024-03-11 | B02-V25~V32-1100 FF, B02-V25~V32-1090, B02-V17~V24-1110 | 14d | 9d | Concrete For Ground Slap [8] | 58,169.52 | Civil |

| ID | WBS | Activity | Duration | Start | Finish | Predecessors | Total float | Free float | Resources | Cost | Department-1 |
| --- | --- | --- | --- | --- | --- | --- | --- | --- | --- | --- | --- |
|  | 4 | **Precast Works** |  | 2024-03-28 | 2024-04-04 |  |  |  |  |  |  |
| B02-V25~V32-1120 |  | Precast Constrction | 7d | 2024-03-28 | 2024-04-04 | B02-V25~V32-1110, B02-V17~V24-1120 | 0d |  | Precast Walls GF [8]; Hollow Core Slap GF [8]; Precast Stairs & staircase House [8]; Thermal insollation Outside Walls [8]; Concrete structure joints [8]; Precast Walls FF [8]; Hollow Core Slap FF [8] | 1,513,762.87 | Civil |
|  | 1 | **Works Inside The Villa** |  | 2024-04-06 | 2024-07-20 |  |  |  |  |  |  |
| B02-V25~V32-1130 |  | Block Work For GF & Estabishment 1F | 6d | 2024-04-06 | 2024-04-11 | B02-V25~V32-1120, B02-V17~V24-1130 | 13d | 0d | Block GF [8] | 13,647.1 | Arc |
| B02-V25~V32-1140 |  | L.L & H.L Drainage | 6d | 2024-04-13 | 2024-04-18 | B02-V25~V32-1130, B02-V17~V24-1140 | 13d | 0d | HL Drainage [8]; L.L Drainage [8] | 89,489.28 | Mech |
| B02-V25~V32-1150 |  | Elec Establishment For GF & 1F | 3d | 2024-04-13 | 2024-04-15 | B02-V25~V32-1130, B02-V17~V24-1150 | 16d | 3d | Elec Establishment GF [8] | 26,840.73 | Elec |
| B02-V25~V32-1160 |  | Screed Work For 1F & Roof | 6d | 2024-04-20 | 2024-04-25 | B02-V25~V32-1140, B02-V25~V32-1150, B02-V17~V24-1160 | 13d | 0d | Screed 1st Floor [8]; Screed Roof Floor [8]; Leveling Screed 1st Floor [8]; Leveling Screed Roof Floor [8] | 268,467.85 | Civil |
| B02-V25~V32-1170 |  | Water Tank & Heater Foundations | 4d | 2024-04-27 | 2024-04-30 | B02-V25~V32-1160, B02-V17~V24-1170 | 17d | 0d |  |  | Civil |
| B02-V25~V32-1180 |  | Block Works For 1F | 3d | 2024-04-27 | 2024-04-29 | B02-V25~V32-1160, B02-V17~V24-1180 | 13d | 0d | Block FF [8] | 20,537.81 | Arc |
| B02-V25~V32-1190 |  | Water Line Network | 6d | 2024-04-30 | 2024-05-06 | B02-V25~V32-1180, B02-V17~V24-1190 | 13d | 0d | Water Line Network [8] | 40,261.13 | Mech |
| B02-V25~V32-1200 |  | Continue Elec Establishment For GF & 1F | 3d | 2024-04-30 | 2024-05-02 | B02-V25~V32-1180, B02-V17~V24-1200 | 16d | 3d | Elec Establishment FF [8] | 26,840.73 | Elec |
| B02-V25~V32-1210 |  | Thermal Insulation For Roof | 5d | 2024-05-01 | 2024-05-06 | B02-V25~V32-1170, B02-V17~V24-1210 | 17d | 0d | Roof Insulation [8] | 32,530.16 | Arc |
| B02-V25~V32-1220 |  | Roof Floor Tiles | 6d | 2024-05-07 | 2024-05-13 | B02-V25~V32-1210, B02-V17~V24-1220 | 17d | 1d | Roof Tiles [8]; Roof Tiles Joints [8]; Re_Test Roof Insulation [8] | 63,179.38 | Arc |
| B02-V25~V32-1230 |  | Plaster Work For Villa | 6d | 2024-05-07 | 2024-05-13 | B02-V25~V32-1190, B02-V25~V32-1200, B02-V17~V24-1230 | 13d | 0d | Establishing a plastering GF [8]; Establishing a plastering FF [8]; Plastering GF [8]; Plastering FF [8] | 49,263.81 |  |
| B02-V25~V32-1240 |  | Marbale Stairs & Handrails | 6d | 2024-05-14 | 2024-05-20 | B02-V25~V32-1230, B02-V17~V24-1240 | 35d | 1d | Marbale Stairs [8]; Stairs Handrails SS [8] | 91,494.69 |  |
| B02-V25~V32-1250 |  | Water Proofing Of Bathrooms | 4d | 2024-05-14 | 2024-05-18 | B02-V25~V32-1230, B02-V17~V24-1250 | 13d | 0d | Bathrooms InsulationGF & FF [8] | 134.24 |  |
| B02-V25~V32-1260 |  | Pulling The Elec Wires | 4d | 2024-05-14 | 2024-05-18 | B02-V25~V32-1230, B02-V17~V24-1260 | 23d | 3d | Elec Wires GF [8]; Elec Wires FF [8] | 80,542.4 |  |
| B02-V25~V32-1270 |  | Bathroom Tiles | 4d | 2024-05-19 | 2024-05-22 | B02-V25~V32-1250, B02-V25~V32-1220, B02-V17~V24-1270 | 13d | 0d | Ceramic Walls Kitchen [8]; Ceramic Walls Bathrooms GF [8]; Ceramic Walls Bathrooms FF [8]; Ceramic Tiles Bathrooms GF [8]; Ceramic Tiles Kitchen GF [8]; Ceramic Tiles Store GF [8] | 73,204.08 |  |
| B02-V25~V32-1280 |  | Structure For Gypsum | 6d | 2024-05-23 | 2024-05-29 | B02-V25~V32-1270, B02-V17~V24-1280 | 13d | 0d | Structure For Gypsum GF Rooms [8]; Structure For Gypsum FF Rooms [8]; Structure For Gypsum Bathrooms & Kitchen [8] | 33,550.81 |  |
| B02-V25~V32-1290 |  | Gypsum Board For Room | 4d | 2024-05-30 | 2024-06-03 | B02-V25~V32-1280, B02-V25~V32-1260, B02-V17~V24-1290 | 13d | 0d | Gypsum Board For GF Room [8]; Gypsum Board For FF Room [8] | 35,796.64 |  |
| B02-V25~V32-1300 |  | Installation Of Gypsum Board For Bathroom & Kitchen | 4d | 2024-06-04 | 2024-06-08 | B02-V25~V32-1290, B02-V17~V24-1300 | 13d | 0d | Gypsum Board For Bathrooms & Kitchen [8] | 11,052.24 |  |
| B02-V25~V32-1310 |  | Putty Filler For Gypsm Board Ceiling | 6d | 2024-06-09 | 2024-06-15 | B02-V25~V32-1300, B02-V17~V24-1310 | 13d | 0d | Putty Filler 1st Layer Roof all Rooms [8]; Putty Filler 1st Layer Roof all Bathrooms & Kitchen [8]; Putty Filler1st Layer walls [8] | 62,182.52 |  |
| B02-V25~V32-1320 |  | Fixing Shower Glass | 4d | 2024-06-16 | 2024-06-19 | B02-V25~V32-1310, B02-V17~V24-1320 | 21d | 0d | Shower Glass [8] | 22,372.88 |  |
| B02-V25~V32-1330 |  | Interior Wall Putty Filler | 6d | 2024-06-16 | 2024-06-22 | B02-V25~V32-1310, B02-V25~V32-1240, B02-V17~V24-1330 | 13d | 0d | Putty Filler 2ed Layer Roof & WAlls GF [8]; Putty Filler 2ed Layer Roof & WAlls FF [8] | 62,150.21 |  |
| B02-V25~V32-1340 |  | Installation Of Sanitry Fixture | 7d | 2024-06-20 | 2024-06-27 | B02-V25~V32-1320, B02-V17~V24-1340 | 21d | 0d | Mech Fixtures & Accessories [8] | 98,435.64 |  |
| B02-V25~V32-1350 |  | 1st Face Paint | 6d | 2024-06-23 | 2024-06-29 | B02-V25~V32-1330, B02-V17~V24-1350 | 13d | 0d |  |  |  |
| B02-V25~V32-1360 |  | Installation Of Aluminum Windows | 7d | 2024-06-23 | 2024-06-30 | B02-V25~V32-1330, B02-V17~V24-1360 | 23d | 0d | Aluminum Windows [8] | 84,795.68 |  |
| B02-V25~V32-1370 |  | Installation Of Elec Fixture & Accessories | 7d | 2024-06-23 | 2024-06-30 | B02-V25~V32-1310, B02-V25~V32-1330, B02-V25~V32-1260, B02-V17~V24-1370 | 37d | 0d | Elec Fixtures & Accessories Villa & Yard [8]; Elec Cables GF & FF & Earthing [8] | 53,692.2 |  |
| B02-V25~V32-1380 |  | Installation Of Water Tank-Heater & Pumps | 7d | 2024-06-29 | 2024-07-06 | B02-V25~V32-1340, B02-V17~V24-1380, B02-V25~V32-1220 | 21d | 0d | Water Tank & booster Pump [8]; Lower Pump [8]; Heater [8] | 129,756.23 |  |
| B02-V25~V32-1390 |  | Installation Of Parquet | 4d | 2024-06-30 | 2024-07-03 | B02-V25~V32-1350, B02-V17~V24-1390 | 13d | 0d | Installation Of Parquet [8] | 52,978.96 |  |
| B02-V25~V32-1400 |  | Installation Of Wooden Doors | 7d | 2024-07-04 | 2024-07-11 | B02-V25~V32-1390, B02-V17~V24-1400 | 13d | 0d | Wooden Doors Kitchen & Bathroom without Accessories [8]; Wooden Doors Accessories all Villa [8]; Exterior Wooden Doors [8] | 142,105.45 |  |
| B02-V25~V32-1410 |  | Final Face Paint | 7d | 2024-07-13 | 2024-07-20 | B02-V25~V32-1360, B02-V25~V32-1400, B02-V17~V24-1410 | 13d | 0d | Final Face Paint Villa [8] | 31,096.77 |  |

| ID | WBS | Activity | Duration | Start | Finish | Predecessors | Total float | Free float | Resources | Cost |
| --- | --- | --- | --- | --- | --- | --- | --- | --- | --- | --- |
|  | 3 | **Fence & Courtyard Works** |  | 2024-04-06 | 2024-07-09 |  |  |  |  |  |
| B02-V25~V32-1420 |  | Pouring Bedding Concrete For Fence Fondations | 2d | 2024-04-06 | 2024-04-07 | B02-V25~V32-1120, B02-V17~V24-1420 | 9d | 0d | Excavation Fence Foundations [8] | 4,519.28 |
| B02-V25~V32-1430 |  | RC Concrete For Fence Fondations | 6d | 2024-04-08 | 2024-04-14 | B02-V25~V32-1420, B02-V17~V24-1430 | 9d | 0d | Fence Fondations-Eastern side [8]; Fence Fondations-Westren side [8]; Fence Fondations-Back side [8] | 13,420.32 |
| B02-V25~V32-1440 |  | Steel Fixing & Carpentry For Fence Columns | 6d | 2024-04-15 | 2024-04-21 | B02-V25~V32-1430, B02-V17~V24-1440 | 9d | 0d |  |  |
| B02-V25~V32-1450 |  | Establishing Elec For Fence Columns | 4d | 2024-04-22 | 2024-04-25 | B02-V25~V32-1440, B02-V17~V24-1450 | 9d | 0d |  |  |
| B02-V25~V32-1460 |  | Pouring Concrete For Fence Columns | 1d | 2024-04-27 | 2024-04-27 | B02-V25~V32-1450, B02-V17~V24-1460 | 9d | 0d | Fence Columns-Eastern side [8]; Fence Columns-Westren side [8]; Fence Columns-Back side [8] | 9,665.04 |
| B02-V25~V32-1470 |  | Installation Precast Panel For Fence | 5d | 2024-04-28 | 2024-05-02 | B02-V25~V32-1460, B02-V17~V24-1470 | 9d | 0d | Hollow Core Walls [8] | 71,593.2 |
| B02-V25~V32-1480 |  | Bitumen Coating For Fence Fondations | 4d | 2024-05-04 | 2024-05-07 | B02-V25~V32-1470, B02-V17~V24-1480 | 9d | 0d |  |  |
| B02-V25~V32-1490 |  | Pouring Bedding Concrete For "Front" Fence Fondations | 1d | 2024-05-04 | 2024-05-04 | B02-V25~V32-1470, B02-V17~V24-1490 | 21d | 0d |  |  |
| B02-V25~V32-1500 |  | RC Concrete For "Front" Fence Fondations | 4d | 2024-05-05 | 2024-05-08 | B02-V25~V32-1490, B02-V17~V24-1500 | 21d | 0d | Front Fence Fondations [8] | 8,904.4 |
| B02-V25~V32-1510 |  | Outdoor Drainage & Water Line | 5d | 2024-05-08 | 2024-05-13 | B02-V25~V32-1480, B02-V25~V32-1140, B02-V17~V24-1510 | 9d | 0d | Outdoor Drainage [8]; Outdoor Water Line [8] | 13,423.68 |
| B02-V25~V32-1520 |  | Steel Fixing & Carpentry For "Front" Fence Columns | 4d | 2024-05-09 | 2024-05-13 | B02-V25~V32-1500, B02-V17~V24-1520 | 21d | 0d |  |  |
| B02-V25~V32-1530 |  | Establishing Elec For "Front" Fence Columns | 4d | 2024-05-14 | 2024-05-18 | B02-V25~V32-1520, B02-V17~V24-1530 | 21d | 0d |  |  |
| B02-V25~V32-1540 |  | Establishing Elec For Fence & Yard | 2d | 2024-05-14 | 2024-05-15 | B02-V25~V32-1510, B02-V17~V24-1540 | 9d | 0d | Elec Establishment Fence & Yard [8] | 17,898.32 |
| B02-V25~V32-1550 |  | Backfilling the Yard | 4d | 2024-05-16 | 2024-05-20 | B02-V25~V32-1540, B02-V17~V24-1550 | 9d | 0d | Backfilling the Yard [8] | 10,560 |
| B02-V25~V32-1560 |  | Pouring Concrete Wall Of "Front" Fence Columns | 2d | 2024-05-19 | 2024-05-20 | B02-V25~V32-1530, B02-V17~V24-1560 | 21d | 0d | Front Fence Walls [8] | 17,898.32 |
| B02-V25~V32-1570 |  | Pouring Concrete Crown Of "Front" Fence Columns | 3d | 2024-05-21 | 2024-05-23 | B02-V25~V32-1560, B02-V17~V24-1570 | 21d | 0d | Fence Columns - C Chanel [8] | 3,310.37 |
| B02-V25~V32-1580 |  | Bardoura Works For Yard | 5d | 2024-05-21 | 2024-05-26 | B02-V25~V32-1550, B02-V17~V24-1580 | 9d | 0d | Bardoura Works For Yard [8] | 14,408.16 |
| B02-V25~V32-1590 |  | Pouring Concrete Flower Basin Of "Front" Fence Columns | 4d | 2024-05-25 | 2024-05-28 | B02-V25~V32-1570, B02-V17~V24-1590 | 21d | 0d |  |  |
| B02-V25~V32-1600 |  | Antitermite Treatment For Yard | 1d | 2024-05-27 | 2024-05-27 | B02-V25~V32-1580, B02-V17~V24-1600 | 9d | 0d | Antitermite Treatment For Yard [8] |  |
| B02-V25~V32-1610 |  | Pouring Concrete For Yard | 1d | 2024-05-28 | 2024-05-28 | B02-V25~V32-1600, B02-V17~V24-1610 | 9d | 0d |  |  |
| B02-V25~V32-1620 |  | Block Work For Flower Basin | 5d | 2024-05-29 | 2024-06-03 | B02-V25~V32-1610, B02-V17~V24-1620 | 9d | 0d |  |  |
| B02-V25~V32-1630 |  | Plastering Work For Flower Basin | 4d | 2024-06-04 | 2024-06-08 | B02-V25~V32-1620, B02-V17~V24-1630 | 9d | 0d |  |  |
| B02-V25~V32-1640 |  | Interlock Works For The Yard | 6d | 2024-06-09 | 2024-06-15 | B02-V25~V32-1630, B02-V17~V24-1640 | 9d | 0d | Interlock Works For The Yard [8] | 36,776.32 |
| B02-V25~V32-1650 |  | External Grading Works For The Villa | 4d | 2024-06-16 | 2024-06-19 | B02-V25~V32-1640, B02-V17~V24-1650 | 11d | 0d | External Grading Works For The Villa [8] | 3,221.68 |
| B02-V25~V32-1660 |  | Installation The Exterior Door & Garage Door | 5d | 2024-06-16 | 2024-06-20 | B02-V25~V32-1640, B02-V17~V24-1660 | 14d | 2d | Installation The Exterior Door [8]; Installation The Exterior Garage Door [8] | 40,002.72 |
| B02-V25~V32-1670 |  | Fixing Floor Drain For The Yard | 2d | 2024-06-16 | 2024-06-17 | B02-V25~V32-1640, B02-V17~V24-1670 | 17d | 5d | Floor Drain & Clean Out [8] | 13,423.76 |
| B02-V25~V32-1680 |  | Granite Surronds Around The Villa | 4d | 2024-06-20 | 2024-06-24 | B02-V25~V32-1650, B02-V17~V24-1680 | 11d | 2d | Granite Surronds Around The Villa [8] | 25,818.32 |
| B02-V25~V32-1690 |  | Painting The Base Surface Of The Fence | 2d | 2024-06-20 | 2024-06-22 | B02-V25~V32-1750, B02-V17~V24-1690 | 9d | 0d |  |  |
| B02-V25~V32-1700 |  | Painting The Final Face Of The Fence | 4d | 2024-06-23 | 2024-06-26 | B02-V25~V32-1690, B02-V17~V24-1700 | 9d | 0d | Painting Final Face Of The Fence [8] | 37,586.48 |
| B02-V25~V32-1710 |  | Exterior Painting Of The Villa | 7d | 2024-06-27 | 2024-07-04 | B02-V25~V32-1680, B02-V25~V32-1700, B02-V25~V32-1660, B02-V25~V32-1670, B02-V17~V24-1710 | 9d | 0d | Exterior Painting Of The Villa [8]; Exterior Painting Staircase House [8] | 105,684.16 |
| B02-V25~V32-1720 |  | Installation Elec Fixtures & Accessories For The Yard | 4d | 2024-07-06 | 2024-07-09 | B02-V25~V32-1700, B02-V25~V32-1710, B02-V17~V24-1720 | 77d | 0d | Elec feeding panels GF & FF [8] | 22,372.88 |

| ID | WBS | Activity | Duration | Start | Finish | Predecessors | Total float | Free float | Resources | Cost | Department-1 |
| --- | --- | --- | --- | --- | --- | --- | --- | --- | --- | --- | --- |
|  | 5 | **External Sidewalk Works** |  | 2024-05-29 | 2024-07-14 |  |  |  |  |  |  |
| B02-V25~V32-1730 |  | Connection The Drain To The Piblic Network | 3d | 2024-05-29 | 2024-06-01 | B02-V25~V32-1510, B02-V25~V32-1590, B02-V17~V24-1730 | 21d | 4d | Connection Drain To The Piblic Network [8]; Connection Water To The Piblic Network [8] | 13,420.32 |  |
| B02-V25~V32-1740 |  | Pardora Works For The External Sidewalk | 2d | 2024-06-16 | 2024-06-17 | B02-V25~V32-1640, B02-V25~V32-1730, B02-V17~V24-1740 | 9d | 0d |  |  |  |
| B02-V25~V32-1750 |  | Interlock Works For The Exerrnal Sidewalk | 2d | 2024-06-18 | 2024-06-19 | B02-V25~V32-1740, B02-V17~V24-1750 | 9d | 0d |  |  |  |
| B02-V25~V32-1760 |  | Pulling The Villa's Main Elec Cable | 4d | 2024-07-10 | 2024-07-14 | B02-V25~V32-1750, B02-V25~V32-1720, B02-V17~V24-1760 | 77d | 0d | Elec Work Testing [8] | 22,819.84 |  |
|  | 6 | **Final Testing & Handover** |  | 2024-07-07 | 2024-08-01 |  |  |  |  |  |  |
| B02-V25~V32-1770 |  | Mech Work Testing & Handover | 5d | 2024-07-07 | 2024-07-11 | B02-V25~V32-1730, B02-V25~V32-1340, B02-V25~V32-1380, B02-V17~V24-1770 | 84d | 2d | Mech Work Testing & Handover [8] | 14,318.64 |  |
| B02-V25~V32-1780 |  | Arch Snaglist & Handover | 5d | 2024-07-13 | 2024-07-17 | B02-V25~V32-1750, B02-V25~V32-1710, B02-V25~V32-1400, B02-V17~V24-1780 | 79d | 2d | Arch Snaglist & Handover [8] | 77,320.64 |  |
| B02-V25~V32-1790 |  | ElecWork Testing & Handover | 5d | 2024-07-15 | 2024-07-20 | B02-V25~V32-1760, B02-V25~V32-1370, B02-V17~V24-1790 | 77d | 0d | Elec Work Handover [8] | 23,804.72 |  |
| B02-V25~V32-1800 |  | Final Handover Of The Villa To The Consltant | 5d | 2024-07-21 | 2024-07-25 | B02-V25~V32-1780, B02-V25~V32-1790, B02-V25~V32-1770, B02-V25~V32-1410, B02-V17~V24-1800 | 77d | 0d |  |  |  |
| B02-V25~V32-1810 |  | Customer Delivery | 6d | 2024-07-27 | 2024-08-01 | B02-V25~V32-1800, B02-V17~V24-1810 | 77d | 1d |  |  |  |
|  | 9 | **B03-V01~V08** |  | 2024-02-12 | 2024-08-10 |  |  |  |  |  |  |
|  | 2 | **Under Grond Slap Works** |  | 2024-02-12 | 2024-03-23 |  |  |  |  |  |  |
| B03-V01~V08-1000 |  | Excavation&Compaction of Fondation | 6d | 2024-02-12 | 2024-02-18 | B02-V25~V32-1000 | 11d | 0d | Clearing & Groubbing [8]; Excavation & Leveling [8]; Stone Layer [8]; A3 Layer [8]; A1-a 1st Layer [8]; A1-a 2ed Layer [8] | 163,545.76 | Civil |
| B03-V01~V08-1010 |  | Pouring Concrete For Bedding | 2d | 2024-02-19 | 2024-02-20 | B03-V01~V08-1000, B02-V25~V32-1010 | 11d | 0d | PC Carpentry [8]; PC Concrete [8]; RC 18 MPA [9 M3] | 37,899.68 | Civil |
| B03-V01~V08-1020 |  | Reinforcement Concrete For Foundation | 5d | 2024-02-21 | 2024-02-26 | B03-V01~V08-1010, B02-V25~V32-1020 | 11d | 0d | RC Foundation Carpentry [8]; RC Foundation Steel [8]; RC Foundation Concrete [8] | 201,355.92 | Civil |
| B03-V01~V08-1030 |  | Steel Fixing& Carpenter work for Beams | 4d | 2024-02-27 | 2024-03-02 | B03-V01~V08-1020, B02-V25~V32-1030 | 11d | 0d | RC Grade Beam Carpentry & Steel [8] | 44,745.76 | Civil |
| B03-V01~V08-1040 |  | Mech&Elec Establishment for Beams | 3d | 2024-03-03 | 2024-03-05 | B03-V01~V08-1030, B02-V25~V32-1040 | 11d | 0d |  |  | Mech |
| B03-V01~V08-1050 |  | Pouring Concrete For Beams | 1d | 2024-03-06 | 2024-03-06 | B03-V01~V08-1040, B02-V25~V32-1050 | 11d | 0d | RC Grade Beam Concrete [8] | 77,141.68 | Civil |
| B03-V01~V08-1060 |  | Bitmen Coating For Fondation&Beams | 3d | 2024-03-07 | 2024-03-10 | B03-V01~V08-1050, B02-V25~V32-1060 | 11d | 0d | Bitumen Coating Foundations & Grade Beams [8] | 22,372.88 | Civil |
| B03-V01~V08-1070 |  | Backfilling Inside Fondations | 4d | 2024-03-11 | 2024-03-14 | B03-V01~V08-1060, B02-V25~V32-1070 | 11d | 0d | Backfilling 1st Layer [8]; Backfilling 2ed Layer [8] | 11,186.4 | Civil |
| B03-V01~V08-1080 |  | Mech Works Under Grond Slap | 3d | 2024-03-16 | 2024-03-18 | B03-V01~V08-1070, B02-V25~V32-1080 | 11d | 0d | Mech Establishment Under Ground Slap [8] | 13,423.42 | Mech |
| B03-V01~V08-1090 |  | Steel Fixing& Carpenter work for Ground Slap | 3d | 2024-03-19 | 2024-03-21 | B03-V01~V08-1080, B02-V25~V32-1090 | 11d | 0d | Steel & Carpentry For Ground Slap [8] | 10,246.8 | Civil |
| B03-V01~V08-1100 |  | Anti Termite Treatment For Ground Slap | 1d | 2024-03-23 | 2024-03-23 | B03-V01~V08-1090, B02-V25~V32-1100 | 11d | 0d | Anti Termite Treatment nder Ground Slap [8] | 2,237.28 | Civil |
| B03-V01~V08-1110 |  | Pouring Concrete For Ground Slap | 1d | 2024-03-23 | 2024-03-23 | B03-V01~V08-1100 FF, B03-V01~V08-1090, B02-V25~V32-1110 | 11d | 5d | Concrete For Ground Slap [8] | 58,169.52 | Civil |

| ID | WBS | Activity | Duration | Start | Finish | Predecessors | Total float | Free float | Resources | Cost | Department-1 |
| --- | --- | --- | --- | --- | --- | --- | --- | --- | --- | --- | --- |
|  | 4 | **Precast Works** |  | 2024-04-06 | 2024-04-13 |  |  |  |  |  |  |
| B03-V01~V08-1120 |  | Precast Constrction | 7d | 2024-04-06 | 2024-04-13 | B03-V01~V08-1110, B02-V25~V32-1120 | 0d |  | Precast Walls GF [8]; Hollow Core Slap GF [8]; Precast Stairs & staircase House [8]; Thermal insollation Outside Walls [8]; Concrete structure joints [8]; Precast Walls FF [8]; Hollow Core Slap FF [8] | 1,513,762.87 | Civil |
|  | 1 | **Works Inside The Villa** |  | 2024-04-14 | 2024-07-28 |  |  |  |  |  |  |
| B03-V01~V08-1130 |  | Block Work For GF & Estabishment 1F | 6d | 2024-04-14 | 2024-04-20 | B03-V01~V08-1120, B02-V25~V32-1130 | 13d | 0d | Block GF [8] | 13,647.1 | Arc |
| B03-V01~V08-1140 |  | L.L & H.L Drainage | 6d | 2024-04-21 | 2024-04-27 | B03-V01~V08-1130, B02-V25~V32-1140 | 13d | 0d | HL Drainage [8]; L.L Drainage [8] | 89,489.28 | Mech |
| B03-V01~V08-1150 |  | Elec Establishment For GF & 1F | 3d | 2024-04-21 | 2024-04-23 | B03-V01~V08-1130, B02-V25~V32-1150 | 16d | 3d | Elec Establishment GF [8] | 26,840.73 | Elec |
| B03-V01~V08-1160 |  | Screed Work For 1F & Roof | 6d | 2024-04-28 | 2024-05-04 | B03-V01~V08-1140, B03-V01~V08-1150, B02-V25~V32-1160 | 13d | 0d | Screed 1st Floor [8]; Screed Roof Floor [8]; Leveling Screed 1st Floor [8]; Leveling Screed Roof Floor [8] | 268,467.85 | Civil |
| B03-V01~V08-1170 |  | Water Tank & Heater Foundations | 4d | 2024-05-05 | 2024-05-08 | B03-V01~V08-1160, B02-V25~V32-1170 | 17d | 0d |  |  | Civil |
| B03-V01~V08-1180 |  | Block Works For 1F | 3d | 2024-05-05 | 2024-05-07 | B03-V01~V08-1160, B02-V25~V32-1180 | 13d | 0d | Block FF [8] | 20,537.81 | Arc |
| B03-V01~V08-1190 |  | Water Line Network | 6d | 2024-05-08 | 2024-05-14 | B03-V01~V08-1180, B02-V25~V32-1190 | 13d | 0d | Water Line Network [8] | 40,261.13 | Mech |
| B03-V01~V08-1200 |  | Continue Elec Establishment For GF & 1F | 3d | 2024-05-08 | 2024-05-11 | B03-V01~V08-1180, B02-V25~V32-1200 | 16d | 3d | Elec Establishment FF [8] | 26,840.73 | Elec |
| B03-V01~V08-1210 |  | Thermal Insulation For Roof | 5d | 2024-05-09 | 2024-05-14 | B03-V01~V08-1170, B02-V25~V32-1210 | 17d | 0d | Roof Insulation [8] | 32,530.16 | Arc |
| B03-V01~V08-1220 |  | Roof Floor Tiles | 6d | 2024-05-15 | 2024-05-21 | B03-V01~V08-1210, B02-V25~V32-1220 | 17d | 1d | Roof Tiles [8]; Roof Tiles Joints [8]; Re_Test Roof Insulation [8] | 63,179.38 | Arc |
| B03-V01~V08-1230 |  | Plaster Work For Villa | 6d | 2024-05-15 | 2024-05-21 | B03-V01~V08-1190, B03-V01~V08-1200, B02-V25~V32-1230 | 13d | 0d | Establishing a plastering GF [8]; Establishing a plastering FF [8]; Plastering GF [8]; Plastering FF [8] | 49,263.81 |  |
| B03-V01~V08-1240 |  | Marbale Stairs & Handrails | 6d | 2024-05-22 | 2024-05-28 | B03-V01~V08-1230, B02-V25~V32-1240 | 35d | 1d | Marbale Stairs [8]; Stairs Handrails SS [8] | 91,494.69 |  |
| B03-V01~V08-1250 |  | Water Proofing Of Bathrooms | 4d | 2024-05-22 | 2024-05-26 | B03-V01~V08-1230, B02-V25~V32-1250 | 13d | 0d | Bathrooms InsulationGF & FF [8] | 134.24 |  |
| B03-V01~V08-1260 |  | Pulling The Elec Wires | 4d | 2024-05-22 | 2024-05-26 | B03-V01~V08-1230, B02-V25~V32-1260 | 23d | 3d | Elec Wires GF [8]; Elec Wires FF [8] | 80,542.4 |  |
| B03-V01~V08-1270 |  | Bathroom Tiles | 4d | 2024-05-27 | 2024-05-30 | B03-V01~V08-1250, B03-V01~V08-1220, B02-V25~V32-1270 | 13d | 0d | Ceramic Walls Kitchen [8]; Ceramic Walls Bathrooms GF [8]; Ceramic Walls Bathrooms FF [8]; Ceramic Tiles Bathrooms GF [8]; Ceramic Tiles Kitchen GF [8]; Ceramic Tiles Store GF [8] | 73,204.08 |  |
| B03-V01~V08-1280 |  | Structure For Gypsum | 6d | 2024-06-01 | 2024-06-06 | B03-V01~V08-1270, B02-V25~V32-1280 | 13d | 0d | Structure For Gypsum GF Rooms [8]; Structure For Gypsum FF Rooms [8]; Structure For Gypsum Bathrooms & Kitchen [8] | 33,550.81 |  |
| B03-V01~V08-1290 |  | Gypsum Board For Room | 4d | 2024-06-08 | 2024-06-11 | B03-V01~V08-1280, B03-V01~V08-1260, B02-V25~V32-1290 | 13d | 0d | Gypsum Board For GF Room [8]; Gypsum Board For FF Room [8] | 35,796.64 |  |
| B03-V01~V08-1300 |  | Installation Of Gypsum Board For Bathroom & Kitchen | 4d | 2024-06-12 | 2024-06-16 | B03-V01~V08-1290, B02-V25~V32-1300 | 13d | 0d | Gypsum Board For Bathrooms & Kitchen [8] | 11,052.24 |  |
| B03-V01~V08-1310 |  | Putty Filler For Gypsm Board Ceiling | 6d | 2024-06-17 | 2024-06-23 | B03-V01~V08-1300, B02-V25~V32-1310 | 13d | 0d | Putty Filler 1st Layer Roof all Rooms [8]; Putty Filler 1st Layer Roof all Bathrooms & Kitchen [8]; Putty Filler1st Layer walls [8] | 62,182.52 |  |
| B03-V01~V08-1320 |  | Fixing Shower Glass | 4d | 2024-06-24 | 2024-06-27 | B03-V01~V08-1310, B02-V25~V32-1320 | 21d | 0d | Shower Glass [8] | 22,372.88 |  |
| B03-V01~V08-1330 |  | Interior Wall Putty Filler | 6d | 2024-06-24 | 2024-06-30 | B03-V01~V08-1310, B03-V01~V08-1240, B02-V25~V32-1330 | 13d | 0d | Putty Filler 2ed Layer Roof & WAlls GF [8]; Putty Filler 2ed Layer Roof & WAlls FF [8] | 62,150.21 |  |
| B03-V01~V08-1340 |  | Installation Of Sanitry Fixture | 7d | 2024-06-29 | 2024-07-06 | B03-V01~V08-1320, B02-V25~V32-1340 | 21d | 0d | Mech Fixtures & Accessories [8] | 98,435.64 |  |
| B03-V01~V08-1350 |  | 1st Face Paint | 6d | 2024-07-01 | 2024-07-07 | B03-V01~V08-1330, B02-V25~V32-1350 | 13d | 0d |  |  |  |
| B03-V01~V08-1360 |  | Installation Of Aluminum Windows | 7d | 2024-07-01 | 2024-07-08 | B03-V01~V08-1330, B02-V25~V32-1360 | 23d | 0d | Aluminum Windows [8] | 84,795.68 |  |
| B03-V01~V08-1370 |  | Installation Of Elec Fixture & Accessories | 7d | 2024-07-01 | 2024-07-08 | B03-V01~V08-1310, B03-V01~V08-1330, B03-V01~V08-1260, B02-V25~V32-1370 | 37d | 0d | Elec Fixtures & Accessories Villa & Yard [8]; Elec Cables GF & FF & Earthing [8] | 53,692.2 |  |
| B03-V01~V08-1380 |  | Installation Of Water Tank-Heater & Pumps | 7d | 2024-07-07 | 2024-07-14 | B03-V01~V08-1340, B02-V25~V32-1380, B03-V01~V08-1220 | 21d | 0d | Water Tank & booster Pump [8]; Lower Pump [8]; Heater [8] | 129,756.23 |  |
| B03-V01~V08-1390 |  | Installation Of Parquet | 4d | 2024-07-08 | 2024-07-11 | B03-V01~V08-1350, B02-V25~V32-1390 | 13d | 0d | Installation Of Parquet [8] | 52,978.96 |  |
| B03-V01~V08-1400 |  | Installation Of Wooden Doors | 7d | 2024-07-13 | 2024-07-20 | B03-V01~V08-1390, B02-V25~V32-1400 | 13d | 0d | Wooden Doors Kitchen & Bathroom without Accessories [8]; Wooden Doors Accessories all Villa [8]; Exterior Wooden Doors [8] | 142,105.45 |  |
| B03-V01~V08-1410 |  | Final Face Paint | 7d | 2024-07-21 | 2024-07-28 | B03-V01~V08-1360, B03-V01~V08-1400, B02-V25~V32-1410 | 13d | 0d | Final Face Paint Villa [8] | 31,096.77 |  |

| ID | WBS | Activity | Duration | Start | Finish | Predecessors | Total float | Free float | Resources | Cost |
| --- | --- | --- | --- | --- | --- | --- | --- | --- | --- | --- |
|  | 3 | **Fence & Courtyard Works** |  | 2024-04-14 | 2024-07-17 |  |  |  |  |  |
| B03-V01~V08-1420 |  | Pouring Bedding Concrete For Fence Fondations | 2d | 2024-04-14 | 2024-04-15 | B03-V01~V08-1120, B02-V25~V32-1420 | 9d | 0d | Excavation Fence Foundations [8] | 4,519.28 |
| B03-V01~V08-1430 |  | RC Concrete For Fence Fondations | 6d | 2024-04-16 | 2024-04-22 | B03-V01~V08-1420, B02-V25~V32-1430 | 9d | 0d | Fence Fondations-Eastern side [8]; Fence Fondations-Westren side [8]; Fence Fondations-Back side [8] | 13,420.32 |
| B03-V01~V08-1440 |  | Steel Fixing & Carpentry For Fence Columns | 6d | 2024-04-23 | 2024-04-29 | B03-V01~V08-1430, B02-V25~V32-1440 | 9d | 0d |  |  |
| B03-V01~V08-1450 |  | Establishing Elec For Fence Columns | 4d | 2024-04-30 | 2024-05-04 | B03-V01~V08-1440, B02-V25~V32-1450 | 9d | 0d |  |  |
| B03-V01~V08-1460 |  | Pouring Concrete For Fence Columns | 1d | 2024-05-05 | 2024-05-05 | B03-V01~V08-1450, B02-V25~V32-1460 | 9d | 0d | Fence Columns-Eastern side [8]; Fence Columns-Westren side [8]; Fence Columns-Back side [8] | 9,665.04 |
| B03-V01~V08-1470 |  | Installation Precast Panel For Fence | 5d | 2024-05-06 | 2024-05-11 | B03-V01~V08-1460, B02-V25~V32-1470 | 9d | 0d | Hollow Core Walls [8] | 71,593.2 |
| B03-V01~V08-1480 |  | Bitumen Coating For Fence Fondations | 4d | 2024-05-12 | 2024-05-15 | B03-V01~V08-1470, B02-V25~V32-1480 | 9d | 0d |  |  |
| B03-V01~V08-1490 |  | Pouring Bedding Concrete For "Front" Fence Fondations | 1d | 2024-05-12 | 2024-05-12 | B03-V01~V08-1470, B02-V25~V32-1490 | 21d | 0d |  |  |
| B03-V01~V08-1500 |  | RC Concrete For "Front" Fence Fondations | 4d | 2024-05-13 | 2024-05-16 | B03-V01~V08-1490, B02-V25~V32-1500 | 21d | 0d | Front Fence Fondations [8] | 8,904.4 |
| B03-V01~V08-1510 |  | Outdoor Drainage & Water Line | 5d | 2024-05-16 | 2024-05-21 | B03-V01~V08-1480, B03-V01~V08-1140, B02-V25~V32-1510 | 9d | 0d | Outdoor Drainage [8]; Outdoor Water Line [8] | 13,423.68 |
| B03-V01~V08-1520 |  | Steel Fixing & Carpentry For "Front" Fence Columns | 4d | 2024-05-18 | 2024-05-21 | B03-V01~V08-1500, B02-V25~V32-1520 | 21d | 0d |  |  |
| B03-V01~V08-1530 |  | Establishing Elec For "Front" Fence Columns | 4d | 2024-05-22 | 2024-05-26 | B03-V01~V08-1520, B02-V25~V32-1530 | 21d | 0d |  |  |
| B03-V01~V08-1540 |  | Establishing Elec For Fence & Yard | 2d | 2024-05-22 | 2024-05-23 | B03-V01~V08-1510, B02-V25~V32-1540 | 9d | 0d | Elec Establishment Fence & Yard [8] | 17,898.32 |
| B03-V01~V08-1550 |  | Backfilling the Yard | 4d | 2024-05-25 | 2024-05-28 | B03-V01~V08-1540, B02-V25~V32-1550 | 9d | 0d | Backfilling the Yard [8] | 10,560 |
| B03-V01~V08-1560 |  | Pouring Concrete Wall Of "Front" Fence Columns | 2d | 2024-05-27 | 2024-05-28 | B03-V01~V08-1530, B02-V25~V32-1560 | 21d | 0d | Front Fence Walls [8] | 17,898.32 |
| B03-V01~V08-1570 |  | Pouring Concrete Crown Of "Front" Fence Columns | 3d | 2024-05-29 | 2024-06-01 | B03-V01~V08-1560, B02-V25~V32-1570 | 21d | 0d | Fence Columns - C Chanel [8] | 3,310.37 |
| B03-V01~V08-1580 |  | Bardoura Works For Yard | 5d | 2024-05-29 | 2024-06-03 | B03-V01~V08-1550, B02-V25~V32-1580 | 9d | 0d | Bardoura Works For Yard [8] | 14,408.16 |
| B03-V01~V08-1590 |  | Pouring Concrete Flower Basin Of "Front" Fence Columns | 4d | 2024-06-02 | 2024-06-05 | B03-V01~V08-1570, B02-V25~V32-1590 | 21d | 0d |  |  |
| B03-V01~V08-1600 |  | Antitermite Treatment For Yard | 1d | 2024-06-04 | 2024-06-04 | B03-V01~V08-1580, B02-V25~V32-1600 | 9d | 0d | Antitermite Treatment For Yard [8] |  |
| B03-V01~V08-1610 |  | Pouring Concrete For Yard | 1d | 2024-06-05 | 2024-06-05 | B03-V01~V08-1600, B02-V25~V32-1610 | 9d | 0d |  |  |
| B03-V01~V08-1620 |  | Block Work For Flower Basin | 5d | 2024-06-06 | 2024-06-11 | B03-V01~V08-1610, B02-V25~V32-1620 | 9d | 0d |  |  |
| B03-V01~V08-1630 |  | Plastering Work For Flower Basin | 4d | 2024-06-12 | 2024-06-16 | B03-V01~V08-1620, B02-V25~V32-1630 | 9d | 0d |  |  |
| B03-V01~V08-1640 |  | Interlock Works For The Yard | 6d | 2024-06-17 | 2024-06-23 | B03-V01~V08-1630, B02-V25~V32-1640 | 9d | 0d | Interlock Works For The Yard [8] | 36,776.32 |
| B03-V01~V08-1650 |  | External Grading Works For The Villa | 4d | 2024-06-24 | 2024-06-27 | B03-V01~V08-1640, B02-V25~V32-1650 | 11d | 0d | External Grading Works For The Villa [8] | 3,221.68 |
| B03-V01~V08-1660 |  | Installation The Exterior Door & Garage Door | 5d | 2024-06-24 | 2024-06-29 | B03-V01~V08-1640, B02-V25~V32-1660 | 14d | 2d | Installation The Exterior Door [8]; Installation The Exterior Garage Door [8] | 40,002.72 |
| B03-V01~V08-1670 |  | Fixing Floor Drain For The Yard | 2d | 2024-06-24 | 2024-06-25 | B03-V01~V08-1640, B02-V25~V32-1670 | 17d | 5d | Floor Drain & Clean Out [8] | 13,423.76 |
| B03-V01~V08-1680 |  | Granite Surronds Around The Villa | 4d | 2024-06-29 | 2024-07-02 | B03-V01~V08-1650, B02-V25~V32-1680 | 11d | 2d | Granite Surronds Around The Villa [8] | 25,818.32 |
| B03-V01~V08-1690 |  | Painting The Base Surface Of The Fence | 2d | 2024-06-29 | 2024-06-30 | B03-V01~V08-1750, B02-V25~V32-1690 | 9d | 0d |  |  |
| B03-V01~V08-1700 |  | Painting The Final Face Of The Fence | 4d | 2024-07-01 | 2024-07-04 | B03-V01~V08-1690, B02-V25~V32-1700 | 9d | 0d | Painting Final Face Of The Fence [8] | 37,586.48 |
| B03-V01~V08-1710 |  | Exterior Painting Of The Villa | 7d | 2024-07-06 | 2024-07-13 | B03-V01~V08-1680, B03-V01~V08-1700, B03-V01~V08-1660, B03-V01~V08-1670, B02-V25~V32-1710 | 9d | 0d | Exterior Painting Of The Villa [8]; Exterior Painting Staircase House [8] | 105,684.16 |
| B03-V01~V08-1720 |  | Installation Elec Fixtures & Accessories For The Yard | 4d | 2024-07-14 | 2024-07-17 | B03-V01~V08-1700, B03-V01~V08-1710, B02-V25~V32-1720 | 76d | 0d | Elec feeding panels GF & FF [8] | 22,372.88 |

| ID | WBS | Activity | Duration | Start | Finish | Predecessors | Total float | Free float | Resources | Cost | Department-1 |
| --- | --- | --- | --- | --- | --- | --- | --- | --- | --- | --- | --- |
|  | 5 | **External Sidewalk Works** |  | 2024-06-06 | 2024-07-22 |  |  |  |  |  |  |
| B03-V01~V08-1730 |  | Connection The Drain To The Piblic Network | 3d | 2024-06-06 | 2024-06-09 | B03-V01~V08-1510, B03-V01~V08-1590, B02-V25~V32-1730 | 21d | 4d | Connection Drain To The Piblic Network [8]; Connection Water To The Piblic Network [8] | 13,420.32 |  |
| B03-V01~V08-1740 |  | Pardora Works For The External Sidewalk | 2d | 2024-06-24 | 2024-06-25 | B03-V01~V08-1640, B03-V01~V08-1730, B02-V25~V32-1740 | 9d | 0d |  |  |  |
| B03-V01~V08-1750 |  | Interlock Works For The Exerrnal Sidewalk | 2d | 2024-06-26 | 2024-06-27 | B03-V01~V08-1740, B02-V25~V32-1750 | 9d | 0d |  |  |  |
| B03-V01~V08-1760 |  | Pulling The Villa's Main Elec Cable | 4d | 2024-07-18 | 2024-07-22 | B03-V01~V08-1750, B03-V01~V08-1720, B02-V25~V32-1760 | 76d | 0d | Elec Work Testing [8] | 22,819.84 |  |
|  | 6 | **Final Testing & Handover** |  | 2024-07-15 | 2024-08-10 |  |  |  |  |  |  |
| B03-V01~V08-1770 |  | Mech Work Testing & Handover | 5d | 2024-07-15 | 2024-07-20 | B03-V01~V08-1730, B03-V01~V08-1340, B03-V01~V08-1380, B02-V25~V32-1770 | 83d | 2d | Mech Work Testing & Handover [8] | 14,318.64 |  |
| B03-V01~V08-1780 |  | Arch Snaglist & Handover | 5d | 2024-07-21 | 2024-07-25 | B03-V01~V08-1750, B03-V01~V08-1710, B03-V01~V08-1400, B02-V25~V32-1780 | 78d | 2d | Arch Snaglist & Handover [8] | 77,320.64 |  |
| B03-V01~V08-1790 |  | ElecWork Testing & Handover | 5d | 2024-07-23 | 2024-07-28 | B03-V01~V08-1760, B03-V01~V08-1370, B02-V25~V32-1790 | 76d | 0d | Elec Work Handover [8] | 23,804.72 |  |
| B03-V01~V08-1800 |  | Final Handover Of The Villa To The Consltant | 5d | 2024-07-29 | 2024-08-03 | B03-V01~V08-1780, B03-V01~V08-1790, B03-V01~V08-1770, B03-V01~V08-1410, B02-V25~V32-1800 | 76d | 0d |  |  |  |
| B03-V01~V08-1810 |  | Customer Delivery | 6d | 2024-08-04 | 2024-08-10 | B03-V01~V08-1800, B02-V25~V32-1810 | 76d | 1d |  |  |  |
|  | 10 | **B03-V09~V16** |  | 2024-02-19 | 2024-08-18 |  |  |  |  |  |  |
|  | 2 | **Under Grond Slap Works** |  | 2024-02-19 | 2024-03-30 |  |  |  |  |  |  |
| B03-V09~V16-1000 |  | Excavation&Compaction of Fondation | 6d | 2024-02-19 | 2024-02-25 | B03-V01~V08-1000 | 12d | 0d | Clearing & Groubbing [8]; Excavation & Leveling [8]; Stone Layer [8]; A3 Layer [8]; A1-a 1st Layer [8]; A1-a 2ed Layer [8] | 163,545.76 | Civil |
| B03-V09~V16-1010 |  | Pouring Concrete For Bedding | 2d | 2024-02-26 | 2024-02-27 | B03-V09~V16-1000, B03-V01~V08-1010 | 12d | 0d | PC Carpentry [8]; PC Concrete [8]; RC 18 MPA [9 M3] | 37,899.68 | Civil |
| B03-V09~V16-1020 |  | Reinforcement Concrete For Foundation | 5d | 2024-02-28 | 2024-03-04 | B03-V09~V16-1010, B03-V01~V08-1020 | 12d | 0d | RC Foundation Carpentry [8]; RC Foundation Steel [8]; RC Foundation Concrete [8] | 201,355.92 | Civil |
| B03-V09~V16-1030 |  | Steel Fixing& Carpenter work for Beams | 4d | 2024-03-05 | 2024-03-09 | B03-V09~V16-1020, B03-V01~V08-1030 | 12d | 0d | RC Grade Beam Carpentry & Steel [8] | 44,745.76 | Civil |
| B03-V09~V16-1040 |  | Mech&Elec Establishment for Beams | 3d | 2024-03-10 | 2024-03-12 | B03-V09~V16-1030, B03-V01~V08-1040 | 12d | 0d |  |  | Mech |
| B03-V09~V16-1050 |  | Pouring Concrete For Beams | 1d | 2024-03-13 | 2024-03-13 | B03-V09~V16-1040, B03-V01~V08-1050 | 12d | 0d | RC Grade Beam Concrete [8] | 77,141.68 | Civil |
| B03-V09~V16-1060 |  | Bitmen Coating For Fondation&Beams | 3d | 2024-03-14 | 2024-03-17 | B03-V09~V16-1050, B03-V01~V08-1060 | 12d | 0d | Bitumen Coating Foundations & Grade Beams [8] | 22,372.32 | Civil |
| B03-V09~V16-1070 |  | Backfilling Inside Fondations | 4d | 2024-03-18 | 2024-03-21 | B03-V09~V16-1060, B03-V01~V08-1070 | 12d | 0d | Backfilling 1st Layer [8]; Backfilling 2ed Layer [8] | 11,186.4 | Civil |
| B03-V09~V16-1080 |  | Mech Works Under Grond Slap | 3d | 2024-03-23 | 2024-03-25 | B03-V09~V16-1070, B03-V01~V08-1080 | 12d | 0d | Mech Establishment Under Ground Slap [8] | 13,423.42 | Mech |
| B03-V09~V16-1090 |  | Steel Fixing& Carpenter work for Ground Slap | 3d | 2024-03-26 | 2024-03-28 | B03-V09~V16-1080, B03-V01~V08-1090 | 12d | 0d | Steel & Carpentry For Ground Slap [8] | 10,246.54 | Civil |
| B03-V09~V16-1100 |  | Anti Termite Treatment For Ground Slap | 1d | 2024-03-30 | 2024-03-30 | B03-V09~V16-1090, B03-V01~V08-1100 | 12d | 0d | Anti Termite Treatment nder Ground Slap [8] | 2,237.28 | Civil |
| B03-V09~V16-1110 |  | Pouring Concrete For Ground Slap | 1d | 2024-03-30 | 2024-03-30 | B03-V09~V16-1100 FF, B03-V09~V16-1090, B03-V01~V08-1110 | 12d | 5d | Concrete For Ground Slap [8] | 58,169.52 | Civil |

| ID | WBS | Activity | Duration | Start | Finish | Predecessors | Total float | Free float | Resources | Cost | Department-1 |
| --- | --- | --- | --- | --- | --- | --- | --- | --- | --- | --- | --- |
|  | 4 | **Precast Works** |  | 2024-04-14 | 2024-04-21 |  |  |  |  |  |  |
| B03-V09~V16-1120 |  | Precast Constrction | 7d | 2024-04-14 | 2024-04-21 | B03-V09~V16-1110, B03-V01~V08-1120 | 0d |  | Precast Walls GF [8]; Hollow Core Slap GF [8]; Precast Stairs & staircase House [8]; Thermal insollation Outside Walls [8]; Concrete structure joints [8]; Precast Walls FF [8]; Hollow Core Slap FF [8] | 1,513,762.87 | Civil |
|  | 1 | **Works Inside The Villa** |  | 2024-04-22 | 2024-08-05 |  |  |  |  |  |  |
| B03-V09~V16-1130 |  | Block Work For GF & Estabishment 1F | 6d | 2024-04-22 | 2024-04-28 | B03-V09~V16-1120, B03-V01~V08-1130 | 13d | 0d | Block GF [8] | 13,647.1 | Arc |
| B03-V09~V16-1140 |  | L.L & H.L Drainage | 6d | 2024-04-29 | 2024-05-05 | B03-V09~V16-1130, B03-V01~V08-1140 | 13d | 0d | HL Drainage [8]; L.L Drainage [8] | 89,489.28 | Mech |
| B03-V09~V16-1150 |  | Elec Establishment For GF & 1F | 3d | 2024-04-29 | 2024-05-01 | B03-V09~V16-1130, B03-V01~V08-1150 | 16d | 3d | Elec Establishment GF [8] | 26,840.73 | Elec |
| B03-V09~V16-1160 |  | Screed Work For 1F & Roof | 6d | 2024-05-06 | 2024-05-12 | B03-V09~V16-1140, B03-V09~V16-1150, B03-V01~V08-1160 | 13d | 0d | Screed 1st Floor [8]; Screed Roof Floor [8]; Leveling Screed 1st Floor [8]; Leveling Screed Roof Floor [8] | 268,467.85 | Civil |
| B03-V09~V16-1170 |  | Water Tank & Heater Foundations | 4d | 2024-05-13 | 2024-05-16 | B03-V09~V16-1160, B03-V01~V08-1170 | 17d | 0d |  |  | Civil |
| B03-V09~V16-1180 |  | Block Works For 1F | 3d | 2024-05-13 | 2024-05-15 | B03-V09~V16-1160, B03-V01~V08-1180 | 13d | 0d | Block FF [8] | 20,537.81 | Arc |
| B03-V09~V16-1190 |  | Water Line Network | 6d | 2024-05-16 | 2024-05-22 | B03-V09~V16-1180, B03-V01~V08-1190 | 13d | 0d | Water Line Network [8] | 40,261.13 | Mech |
| B03-V09~V16-1200 |  | Continue Elec Establishment For GF & 1F | 3d | 2024-05-16 | 2024-05-19 | B03-V09~V16-1180, B03-V01~V08-1200 | 16d | 3d | Elec Establishment FF [8] | 26,840.73 | Elec |
| B03-V09~V16-1210 |  | Thermal Insulation For Roof | 5d | 2024-05-18 | 2024-05-22 | B03-V09~V16-1170, B03-V01~V08-1210 | 17d | 0d | Roof Insulation [8] | 32,530.16 | Arc |
| B03-V09~V16-1220 |  | Roof Floor Tiles | 6d | 2024-05-23 | 2024-05-29 | B03-V09~V16-1210, B03-V01~V08-1220 | 17d | 1d | Roof Tiles [8]; Roof Tiles Joints [8]; Re_Test Roof Insulation [8] | 63,179.38 | Arc |
| B03-V09~V16-1230 |  | Plaster Work For Villa | 6d | 2024-05-23 | 2024-05-29 | B03-V09~V16-1190, B03-V09~V16-1200, B03-V01~V08-1230 | 13d | 0d | Establishing a plastering GF [8]; Establishing a plastering FF [8]; Plastering GF [8]; Plastering FF [8] | 49,263.81 |  |
| B03-V09~V16-1240 |  | Marbale Stairs & Handrails | 6d | 2024-05-30 | 2024-06-05 | B03-V09~V16-1230, B03-V01~V08-1240 | 35d | 1d | Marbale Stairs [8]; Stairs Handrails SS [8] | 91,494.69 |  |
| B03-V09~V16-1250 |  | Water Proofing Of Bathrooms | 4d | 2024-05-30 | 2024-06-03 | B03-V09~V16-1230, B03-V01~V08-1250 | 13d | 0d | Bathrooms InsulationGF & FF [8] | 134.24 |  |
| B03-V09~V16-1260 |  | Pulling The Elec Wires | 4d | 2024-05-30 | 2024-06-03 | B03-V09~V16-1230, B03-V01~V08-1260 | 23d | 3d | Elec Wires GF [8]; Elec Wires FF [8] | 80,542.4 |  |
| B03-V09~V16-1270 |  | Bathroom Tiles | 4d | 2024-06-04 | 2024-06-08 | B03-V09~V16-1250, B03-V09~V16-1220, B03-V01~V08-1270 | 13d | 0d | Ceramic Walls Kitchen [8]; Ceramic Walls Bathrooms GF [8]; Ceramic Walls Bathrooms FF [8]; Ceramic Tiles Bathrooms GF [8]; Ceramic Tiles Kitchen GF [8]; Ceramic Tiles Store GF [8] | 73,204.08 |  |
| B03-V09~V16-1280 |  | Structure For Gypsum | 6d | 2024-06-09 | 2024-06-15 | B03-V09~V16-1270, B03-V01~V08-1280 | 13d | 0d | Structure For Gypsum GF Rooms [8]; Structure For Gypsum FF Rooms [8]; Structure For Gypsum Bathrooms & Kitchen [8] | 33,550.81 |  |
| B03-V09~V16-1290 |  | Gypsum Board For Room | 4d | 2024-06-16 | 2024-06-19 | B03-V09~V16-1280, B03-V09~V16-1260, B03-V01~V08-1290 | 13d | 0d | Gypsum Board For GF Room [8]; Gypsum Board For FF Room [8] | 35,796.64 |  |
| B03-V09~V16-1300 |  | Installation Of Gypsum Board For Bathroom & Kitchen | 4d | 2024-06-20 | 2024-06-24 | B03-V09~V16-1290, B03-V01~V08-1300 | 13d | 0d | Gypsum Board For Bathrooms & Kitchen [8] | 11,052.24 |  |
| B03-V09~V16-1310 |  | Putty Filler For Gypsm Board Ceiling | 6d | 2024-06-25 | 2024-07-01 | B03-V09~V16-1300, B03-V01~V08-1310 | 13d | 0d | Putty Filler 1st Layer Roof all Rooms [8]; Putty Filler 1st Layer Roof all Bathrooms & Kitchen [8]; Putty Filler1st Layer walls [8] | 62,182.52 |  |
| B03-V09~V16-1320 |  | Fixing Shower Glass | 4d | 2024-07-02 | 2024-07-06 | B03-V09~V16-1310, B03-V01~V08-1320 | 21d | 0d | Shower Glass [8] | 22,372.88 |  |
| B03-V09~V16-1330 |  | Interior Wall Putty Filler | 6d | 2024-07-02 | 2024-07-08 | B03-V09~V16-1310, B03-V09~V16-1240, B03-V01~V08-1330 | 13d | 0d | Putty Filler 2ed Layer Roof & WAlls GF [8]; Putty Filler 2ed Layer Roof & WAlls FF [8] | 62,150.21 |  |
| B03-V09~V16-1340 |  | Installation Of Sanitry Fixture | 7d | 2024-07-07 | 2024-07-14 | B03-V09~V16-1320, B03-V01~V08-1340 | 21d | 0d | Mech Fixtures & Accessories [8] | 98,435.64 |  |
| B03-V09~V16-1350 |  | 1st Face Paint | 6d | 2024-07-09 | 2024-07-15 | B03-V09~V16-1330, B03-V01~V08-1350 | 13d | 0d |  |  |  |
| B03-V09~V16-1360 |  | Installation Of Aluminum Windows | 7d | 2024-07-09 | 2024-07-16 | B03-V09~V16-1330, B03-V01~V08-1360 | 23d | 0d | Aluminum Windows [8] | 84,795.68 |  |
| B03-V09~V16-1370 |  | Installation Of Elec Fixture & Accessories | 7d | 2024-07-09 | 2024-07-16 | B03-V09~V16-1310, B03-V09~V16-1330, B03-V09~V16-1260, B03-V01~V08-1370 | 37d | 0d | Elec Fixtures & Accessories Villa & Yard [8]; Elec Cables GF & FF & Earthing [8] | 53,692.2 |  |
| B03-V09~V16-1380 |  | Installation Of Water Tank-Heater & Pumps | 7d | 2024-07-15 | 2024-07-22 | B03-V09~V16-1340, B03-V01~V08-1380, B03-V09~V16-1220 | 21d | 0d | Water Tank & booster Pump [8]; Lower Pump [8]; Heater [8] | 129,756.23 |  |
| B03-V09~V16-1390 |  | Installation Of Parquet | 4d | 2024-07-16 | 2024-07-20 | B03-V09~V16-1350, B03-V01~V08-1390 | 13d | 0d | Installation Of Parquet [8] | 52,978.96 |  |
| B03-V09~V16-1400 |  | Installation Of Wooden Doors | 7d | 2024-07-21 | 2024-07-28 | B03-V09~V16-1390, B03-V01~V08-1400 | 13d | 0d | Wooden Doors Kitchen & Bathroom without Accessories [8]; Wooden Doors Accessories all Villa [8]; Exterior Wooden Doors [8] | 142,105.45 |  |
| B03-V09~V16-1410 |  | Final Face Paint | 7d | 2024-07-29 | 2024-08-05 | B03-V09~V16-1360, B03-V09~V16-1400, B03-V01~V08-1410 | 13d | 0d | Final Face Paint Villa [8] | 31,096.77 |  |

| ID | WBS | Activity | Duration | Start | Finish | Predecessors | Total float | Free float | Resources | Cost |
| --- | --- | --- | --- | --- | --- | --- | --- | --- | --- | --- |
|  | 3 | **Fence & Courtyard Works** |  | 2024-04-22 | 2024-07-25 |  |  |  |  |  |
| B03-V09~V16-1420 |  | Pouring Bedding Concrete For Fence Fondations | 2d | 2024-04-22 | 2024-04-23 | B03-V09~V16-1120, B03-V01~V08-1420 | 9d | 0d | Excavation Fence Foundations [8] | 4,519.28 |
| B03-V09~V16-1430 |  | RC Concrete For Fence Fondations | 6d | 2024-04-24 | 2024-04-30 | B03-V09~V16-1420, B03-V01~V08-1430 | 9d | 0d | Fence Fondations-Eastern side [8]; Fence Fondations-Westren side [8]; Fence Fondations-Back side [8] | 13,420.32 |
| B03-V09~V16-1440 |  | Steel Fixing & Carpentry For Fence Columns | 6d | 2024-05-01 | 2024-05-07 | B03-V09~V16-1430, B03-V01~V08-1440 | 9d | 0d |  |  |
| B03-V09~V16-1450 |  | Establishing Elec For Fence Columns | 4d | 2024-05-08 | 2024-05-12 | B03-V09~V16-1440, B03-V01~V08-1450 | 9d | 0d |  |  |
| B03-V09~V16-1460 |  | Pouring Concrete For Fence Columns | 1d | 2024-05-13 | 2024-05-13 | B03-V09~V16-1450, B03-V01~V08-1460 | 9d | 0d | Fence Columns-Eastern side [8]; Fence Columns-Westren side [8]; Fence Columns-Back side [8] | 9,665.04 |
| B03-V09~V16-1470 |  | Installation Precast Panel For Fence | 5d | 2024-05-14 | 2024-05-19 | B03-V09~V16-1460, B03-V01~V08-1470 | 9d | 0d | Hollow Core Walls [8] | 71,593.2 |
| B03-V09~V16-1480 |  | Bitumen Coating For Fence Fondations | 4d | 2024-05-20 | 2024-05-23 | B03-V09~V16-1470, B03-V01~V08-1480 | 9d | 0d |  |  |
| B03-V09~V16-1490 |  | Pouring Bedding Concrete For "Front" Fence Fondations | 1d | 2024-05-20 | 2024-05-20 | B03-V09~V16-1470, B03-V01~V08-1490 | 21d | 0d |  |  |
| B03-V09~V16-1500 |  | RC Concrete For "Front" Fence Fondations | 4d | 2024-05-21 | 2024-05-25 | B03-V09~V16-1490, B03-V01~V08-1500 | 21d | 0d | Front Fence Fondations [8] | 8,904.4 |
| B03-V09~V16-1510 |  | Outdoor Drainage & Water Line | 5d | 2024-05-25 | 2024-05-29 | B03-V09~V16-1480, B03-V09~V16-1140, B03-V01~V08-1510 | 9d | 0d | Outdoor Drainage [8]; Outdoor Water Line [8] | 13,423.68 |
| B03-V09~V16-1520 |  | Steel Fixing & Carpentry For "Front" Fence Columns | 4d | 2024-05-26 | 2024-05-29 | B03-V09~V16-1500, B03-V01~V08-1520 | 21d | 0d |  |  |
| B03-V09~V16-1530 |  | Establishing Elec For "Front" Fence Columns | 4d | 2024-05-30 | 2024-06-03 | B03-V09~V16-1520, B03-V01~V08-1530 | 21d | 0d |  |  |
| B03-V09~V16-1540 |  | Establishing Elec For Fence & Yard | 2d | 2024-05-30 | 2024-06-01 | B03-V09~V16-1510, B03-V01~V08-1540 | 9d | 0d | Elec Establishment Fence & Yard [8] | 17,898.32 |
| B03-V09~V16-1550 |  | Backfilling the Yard | 4d | 2024-06-02 | 2024-06-05 | B03-V09~V16-1540, B03-V01~V08-1550 | 9d | 0d | Backfilling the Yard [8] | 10,560 |
| B03-V09~V16-1560 |  | Pouring Concrete Wall Of "Front" Fence Columns | 2d | 2024-06-04 | 2024-06-05 | B03-V09~V16-1530, B03-V01~V08-1560 | 21d | 0d | Front Fence Walls [8] | 17,898.32 |
| B03-V09~V16-1570 |  | Pouring Concrete Crown Of "Front" Fence Columns | 3d | 2024-06-06 | 2024-06-09 | B03-V09~V16-1560, B03-V01~V08-1570 | 21d | 0d | Fence Columns - C Chanel [8] | 3,310.37 |
| B03-V09~V16-1580 |  | Bardoura Works For Yard | 5d | 2024-06-06 | 2024-06-11 | B03-V09~V16-1550, B03-V01~V08-1580 | 9d | 0d | Bardoura Works For Yard [8] | 14,408.16 |
| B03-V09~V16-1590 |  | Pouring Concrete Flower Basin Of "Front" Fence Columns | 4d | 2024-06-10 | 2024-06-13 | B03-V09~V16-1570, B03-V01~V08-1590 | 21d | 0d |  |  |
| B03-V09~V16-1600 |  | Antitermite Treatment For Yard | 1d | 2024-06-12 | 2024-06-12 | B03-V09~V16-1580, B03-V01~V08-1600 | 9d | 0d | Antitermite Treatment For Yard [8] |  |
| B03-V09~V16-1610 |  | Pouring Concrete For Yard | 1d | 2024-06-13 | 2024-06-13 | B03-V09~V16-1600, B03-V01~V08-1610 | 9d | 0d |  |  |
| B03-V09~V16-1620 |  | Block Work For Flower Basin | 5d | 2024-06-15 | 2024-06-19 | B03-V09~V16-1610, B03-V01~V08-1620 | 9d | 0d |  |  |
| B03-V09~V16-1630 |  | Plastering Work For Flower Basin | 4d | 2024-06-20 | 2024-06-24 | B03-V09~V16-1620, B03-V01~V08-1630 | 9d | 0d |  |  |
| B03-V09~V16-1640 |  | Interlock Works For The Yard | 6d | 2024-06-25 | 2024-07-01 | B03-V09~V16-1630, B03-V01~V08-1640 | 9d | 0d | Interlock Works For The Yard [8] | 36,776.32 |
| B03-V09~V16-1650 |  | External Grading Works For The Villa | 4d | 2024-07-02 | 2024-07-06 | B03-V09~V16-1640, B03-V01~V08-1650 | 11d | 0d | External Grading Works For The Villa [8] | 3,221.68 |
| B03-V09~V16-1660 |  | Installation The Exterior Door & Garage Door | 5d | 2024-07-02 | 2024-07-07 | B03-V09~V16-1640, B03-V01~V08-1660 | 14d | 2d | Installation The Exterior Door [8]; Installation The Exterior Garage Door [8] | 40,002.72 |
| B03-V09~V16-1670 |  | Fixing Floor Drain For The Yard | 2d | 2024-07-02 | 2024-07-03 | B03-V09~V16-1640, B03-V01~V08-1670 | 17d | 5d | Floor Drain & Clean Out [8] | 13,423.76 |
| B03-V09~V16-1680 |  | Granite Surronds Around The Villa | 4d | 2024-07-07 | 2024-07-10 | B03-V09~V16-1650, B03-V01~V08-1680 | 11d | 2d | Granite Surronds Around The Villa [8] | 25,818.32 |
| B03-V09~V16-1690 |  | Painting The Base Surface Of The Fence | 2d | 2024-07-07 | 2024-07-08 | B03-V09~V16-1750, B03-V01~V08-1690 | 9d | 0d |  |  |
| B03-V09~V16-1700 |  | Painting The Final Face Of The Fence | 4d | 2024-07-09 | 2024-07-13 | B03-V09~V16-1690, B03-V01~V08-1700 | 9d | 0d | Painting Final Face Of The Fence [8] | 37,586.48 |
| B03-V09~V16-1710 |  | Exterior Painting Of The Villa | 7d | 2024-07-14 | 2024-07-21 | B03-V09~V16-1680, B03-V09~V16-1700, B03-V09~V16-1660, B03-V09~V16-1670, B03-V01~V08-1710 | 9d | 0d | Exterior Painting Of The Villa [8]; Exterior Painting Staircase House [8] | 105,684.16 |
| B03-V09~V16-1720 |  | Installation Elec Fixtures & Accessories For The Yard | 4d | 2024-07-22 | 2024-07-25 | B03-V09~V16-1700, B03-V09~V16-1710, B03-V01~V08-1720 | 75d | 0d | Elec feeding panels GF & FF [8] | 22,372.88 |

| ID | WBS | Activity | Duration | Start | Finish | Predecessors | Total float | Free float | Resources | Cost | Department-1 |
| --- | --- | --- | --- | --- | --- | --- | --- | --- | --- | --- | --- |
|  | 5 | **External Sidewalk Works** |  | 2024-06-15 | 2024-07-30 |  |  |  |  |  |  |
| B03-V09~V16-1730 |  | Connection The Drain To The Piblic Network | 3d | 2024-06-15 | 2024-06-17 | B03-V09~V16-1510, B03-V09~V16-1590, B03-V01~V08-1730 | 21d | 4d | Connection Drain To The Piblic Network [8]; Connection Water To The Piblic Network [8] | 13,420.32 |  |
| B03-V09~V16-1740 |  | Pardora Works For The External Sidewalk | 2d | 2024-07-02 | 2024-07-03 | B03-V09~V16-1640, B03-V09~V16-1730, B03-V01~V08-1740 | 9d | 0d |  |  |  |
| B03-V09~V16-1750 |  | Interlock Works For The Exerrnal Sidewalk | 2d | 2024-07-04 | 2024-07-06 | B03-V09~V16-1740, B03-V01~V08-1750 | 9d | 0d |  |  |  |
| B03-V09~V16-1760 |  | Pulling The Villa's Main Elec Cable | 4d | 2024-07-27 | 2024-07-30 | B03-V09~V16-1750, B03-V09~V16-1720, B03-V01~V08-1760 | 75d | 0d | Elec Work Testing [8] | 22,819.84 |  |
|  | 6 | **Final Testing & Handover** |  | 2024-07-23 | 2024-08-18 |  |  |  |  |  |  |
| B03-V09~V16-1770 |  | Mech Work Testing & Handover | 5d | 2024-07-23 | 2024-07-28 | B03-V09~V16-1730, B03-V09~V16-1340, B03-V09~V16-1380, B03-V01~V08-1770 | 82d | 2d | Mech Work Testing & Handover [8] | 14,318.64 |  |
| B03-V09~V16-1780 |  | Arch Snaglist & Handover | 5d | 2024-07-29 | 2024-08-03 | B03-V09~V16-1750, B03-V09~V16-1710, B03-V09~V16-1400, B03-V01~V08-1780 | 77d | 2d | Arch Snaglist & Handover [8] | 77,320.64 |  |
| B03-V09~V16-1790 |  | ElecWork Testing & Handover | 5d | 2024-07-31 | 2024-08-05 | B03-V09~V16-1760, B03-V09~V16-1370, B03-V01~V08-1790 | 75d | 0d | Elec Work Handover [8] | 23,804.72 |  |
| B03-V09~V16-1800 |  | Final Handover Of The Villa To The Consltant | 5d | 2024-08-06 | 2024-08-11 | B03-V09~V16-1780, B03-V09~V16-1790, B03-V09~V16-1770, B03-V09~V16-1410, B03-V01~V08-1800 | 75d | 0d |  |  |  |
| B03-V09~V16-1810 |  | Customer Delivery | 6d | 2024-08-12 | 2024-08-18 | B03-V09~V16-1800, B03-V01~V08-1810 | 75d | 1d |  |  |  |
|  | 11 | **B03-V17~V24** |  | 2024-02-26 | 2024-08-26 |  |  |  |  |  |  |
|  | 2 | **Under Grond Slap Works** |  | 2024-02-26 | 2024-04-06 |  |  |  |  |  |  |
| B03-V17~V24-1000 |  | Excavation&Compaction of Fondation | 6d | 2024-02-26 | 2024-03-03 | B03-V09~V16-1000 | 13d | 0d | Clearing & Groubbing [8]; Excavation & Leveling [8]; Stone Layer [8]; A3 Layer [8]; A1-a 1st Layer [8]; A1-a 2ed Layer [8] | 163,545.76 | Civil |
| B03-V17~V24-1010 |  | Pouring Concrete For Bedding | 2d | 2024-03-04 | 2024-03-05 | B03-V17~V24-1000, B03-V09~V16-1010 | 13d | 0d | PC Carpentry [8]; PC Concrete [8]; RC 18 MPA [9 M3] | 37,899.68 | Civil |
| B03-V17~V24-1020 |  | Reinforcement Concrete For Foundation | 5d | 2024-03-06 | 2024-03-11 | B03-V17~V24-1010, B03-V09~V16-1020 | 13d | 0d | RC Foundation Carpentry [8]; RC Foundation Steel [8]; RC Foundation Concrete [8] | 201,355.92 | Civil |
| B03-V17~V24-1030 |  | Steel Fixing& Carpenter work for Beams | 4d | 2024-03-12 | 2024-03-16 | B03-V17~V24-1020, B03-V09~V16-1030 | 13d | 0d | RC Grade Beam Carpentry & Steel [8] | 44,745.76 | Civil |
| B03-V17~V24-1040 |  | Mech&Elec Establishment for Beams | 3d | 2024-03-17 | 2024-03-19 | B03-V17~V24-1030, B03-V09~V16-1040 | 13d | 0d |  |  | Mech |
| B03-V17~V24-1050 |  | Pouring Concrete For Beams | 1d | 2024-03-20 | 2024-03-20 | B03-V17~V24-1040, B03-V09~V16-1050 | 13d | 0d | RC Grade Beam Concrete [8] | 77,141.68 | Civil |
| B03-V17~V24-1060 |  | Bitmen Coating For Fondation&Beams | 3d | 2024-03-21 | 2024-03-24 | B03-V17~V24-1050, B03-V09~V16-1060 | 13d | 0d | Bitumen Coating Foundations & Grade Beams [8] | 22,372.32 | Civil |
| B03-V17~V24-1070 |  | Backfilling Inside Fondations | 4d | 2024-03-25 | 2024-03-28 | B03-V17~V24-1060, B03-V09~V16-1070 | 13d | 0d | Backfilling 1st Layer [8]; Backfilling 2ed Layer [8] | 11,186.4 | Civil |
| B03-V17~V24-1080 |  | Mech Works Under Grond Slap | 3d | 2024-03-30 | 2024-04-01 | B03-V17~V24-1070, B03-V09~V16-1080 | 13d | 0d | Mech Establishment Under Ground Slap [8] | 13,423.42 | Mech |
| B03-V17~V24-1090 |  | Steel Fixing& Carpenter work for Ground Slap | 3d | 2024-04-02 | 2024-04-04 | B03-V17~V24-1080, B03-V09~V16-1090 | 13d | 0d | Steel & Carpentry For Ground Slap [8] | 10,246.54 | Civil |
| B03-V17~V24-1100 |  | Anti Termite Treatment For Ground Slap | 1d | 2024-04-06 | 2024-04-06 | B03-V17~V24-1090, B03-V09~V16-1100 | 13d | 0d | Anti Termite Treatment nder Ground Slap [8] | 2,237.28 | Civil |
| B03-V17~V24-1110 |  | Pouring Concrete For Ground Slap | 1d | 2024-04-06 | 2024-04-06 | B03-V17~V24-1100 FF, B03-V17~V24-1090, B03-V09~V16-1110 | 13d | 5d | Concrete For Ground Slap [8] | 58,169.52 | Civil |

| ID | WBS | Activity | Duration | Start | Finish | Predecessors | Total float | Free float | Resources | Cost | Department-1 |
| --- | --- | --- | --- | --- | --- | --- | --- | --- | --- | --- | --- |
|  | 4 | **Precast Works** |  | 2024-04-22 | 2024-04-29 |  |  |  |  |  |  |
| B03-V17~V24-1120 |  | Precast Constrction | 7d | 2024-04-22 | 2024-04-29 | B03-V17~V24-1110, B03-V09~V16-1120 | 0d |  | Precast Walls GF [8]; Hollow Core Slap GF [8]; Precast Stairs & staircase House [8]; Thermal insollation Outside Walls [8]; Concrete structure joints [8]; Precast Walls FF [8]; Hollow Core Slap FF [8] | 1,513,762.87 | Civil |
|  | 1 | **Works Inside The Villa** |  | 2024-04-30 | 2024-08-13 |  |  |  |  |  |  |
| B03-V17~V24-1130 |  | Block Work For GF & Estabishment 1F | 6d | 2024-04-30 | 2024-05-06 | B03-V17~V24-1120, B03-V09~V16-1130 | 13d | 0d | Block GF [8] | 13,647.1 | Arc |
| B03-V17~V24-1140 |  | L.L & H.L Drainage | 6d | 2024-05-07 | 2024-05-13 | B03-V17~V24-1130, B03-V09~V16-1140 | 13d | 0d | HL Drainage [8]; L.L Drainage [8] | 89,489.28 | Mech |
| B03-V17~V24-1150 |  | Elec Establishment For GF & 1F | 3d | 2024-05-07 | 2024-05-09 | B03-V17~V24-1130, B03-V09~V16-1150 | 16d | 3d | Elec Establishment GF [8] | 26,840.73 | Elec |
| B03-V17~V24-1160 |  | Screed Work For 1F & Roof | 6d | 2024-05-14 | 2024-05-20 | B03-V17~V24-1140, B03-V17~V24-1150, B03-V09~V16-1160 | 13d | 0d | Screed 1st Floor [8]; Screed Roof Floor [8]; Leveling Screed 1st Floor [8]; Leveling Screed Roof Floor [8] | 268,467.85 | Civil |
| B03-V17~V24-1170 |  | Water Tank & Heater Foundations | 4d | 2024-05-21 | 2024-05-25 | B03-V17~V24-1160, B03-V09~V16-1170 | 17d | 0d |  |  | Civil |
| B03-V17~V24-1180 |  | Block Works For 1F | 3d | 2024-05-21 | 2024-05-23 | B03-V17~V24-1160, B03-V09~V16-1180 | 13d | 0d | Block FF [8] | 20,537.81 | Arc |
| B03-V17~V24-1190 |  | Water Line Network | 6d | 2024-05-25 | 2024-05-30 | B03-V17~V24-1180, B03-V09~V16-1190 | 13d | 0d | Water Line Network [8] | 40,261.13 | Mech |
| B03-V17~V24-1200 |  | Continue Elec Establishment For GF & 1F | 3d | 2024-05-25 | 2024-05-27 | B03-V17~V24-1180, B03-V09~V16-1200 | 16d | 3d | Elec Establishment FF [8] | 26,840.73 | Elec |
| B03-V17~V24-1210 |  | Thermal Insulation For Roof | 5d | 2024-05-26 | 2024-05-30 | B03-V17~V24-1170, B03-V09~V16-1210 | 17d | 0d | Roof Insulation [8] | 32,530.16 | Arc |
| B03-V17~V24-1220 |  | Roof Floor Tiles | 6d | 2024-06-01 | 2024-06-06 | B03-V17~V24-1210, B03-V09~V16-1220 | 17d | 1d | Roof Tiles [8]; Roof Tiles Joints [8]; Re_Test Roof Insulation [8] | 63,179.38 | Arc |
| B03-V17~V24-1230 |  | Plaster Work For Villa | 6d | 2024-06-01 | 2024-06-06 | B03-V17~V24-1190, B03-V17~V24-1200, B03-V09~V16-1230 | 13d | 0d | Establishing a plastering GF [8]; Establishing a plastering FF [8]; Plastering GF [8]; Plastering FF [8] | 49,263.81 |  |
| B03-V17~V24-1240 |  | Marbale Stairs & Handrails | 6d | 2024-06-08 | 2024-06-13 | B03-V17~V24-1230, B03-V09~V16-1240 | 35d | 1d | Marbale Stairs [8]; Stairs Handrails SS [8] | 91,494.69 |  |
| B03-V17~V24-1250 |  | Water Proofing Of Bathrooms | 4d | 2024-06-08 | 2024-06-11 | B03-V17~V24-1230, B03-V09~V16-1250 | 13d | 0d | Bathrooms InsulationGF & FF [8] | 134.24 |  |
| B03-V17~V24-1260 |  | Pulling The Elec Wires | 4d | 2024-06-08 | 2024-06-11 | B03-V17~V24-1230, B03-V09~V16-1260 | 23d | 3d | Elec Wires GF [8]; Elec Wires FF [8] | 80,542.4 |  |
| B03-V17~V24-1270 |  | Bathroom Tiles | 4d | 2024-06-12 | 2024-06-16 | B03-V17~V24-1250, B03-V17~V24-1220, B03-V09~V16-1270 | 13d | 0d | Ceramic Walls Kitchen [8]; Ceramic Walls Bathrooms GF [8]; Ceramic Walls Bathrooms FF [8]; Ceramic Tiles Bathrooms GF [8]; Ceramic Tiles Kitchen GF [8]; Ceramic Tiles Store GF [8] | 73,204.08 |  |
| B03-V17~V24-1280 |  | Structure For Gypsum | 6d | 2024-06-17 | 2024-06-23 | B03-V17~V24-1270, B03-V09~V16-1280 | 13d | 0d | Structure For Gypsum GF Rooms [8]; Structure For Gypsum FF Rooms [8]; Structure For Gypsum Bathrooms & Kitchen [8] | 33,550.81 |  |
| B03-V17~V24-1290 |  | Gypsum Board For Room | 4d | 2024-06-24 | 2024-06-27 | B03-V17~V24-1280, B03-V17~V24-1260, B03-V09~V16-1290 | 13d | 0d | Gypsum Board For GF Room [8]; Gypsum Board For FF Room [8] | 35,796.64 |  |
| B03-V17~V24-1300 |  | Installation Of Gypsum Board For Bathroom & Kitchen | 4d | 2024-06-29 | 2024-07-02 | B03-V17~V24-1290, B03-V09~V16-1300 | 13d | 0d | Gypsum Board For Bathrooms & Kitchen [8] | 11,052.24 |  |
| B03-V17~V24-1310 |  | Putty Filler For Gypsm Board Ceiling | 6d | 2024-07-03 | 2024-07-09 | B03-V17~V24-1300, B03-V09~V16-1310 | 13d | 0d | Putty Filler 1st Layer Roof all Rooms [8]; Putty Filler 1st Layer Roof all Bathrooms & Kitchen [8]; Putty Filler1st Layer walls [8] | 62,182.52 |  |
| B03-V17~V24-1320 |  | Fixing Shower Glass | 4d | 2024-07-10 | 2024-07-14 | B03-V17~V24-1310, B03-V09~V16-1320 | 21d | 0d | Shower Glass [8] | 22,372.88 |  |
| B03-V17~V24-1330 |  | Interior Wall Putty Filler | 6d | 2024-07-10 | 2024-07-16 | B03-V17~V24-1310, B03-V17~V24-1240, B03-V09~V16-1330 | 13d | 0d | Putty Filler 2ed Layer Roof & WAlls GF [8]; Putty Filler 2ed Layer Roof & WAlls FF [8] | 62,150.21 |  |
| B03-V17~V24-1340 |  | Installation Of Sanitry Fixture | 7d | 2024-07-15 | 2024-07-22 | B03-V17~V24-1320, B03-V09~V16-1340 | 21d | 0d | Mech Fixtures & Accessories [8] | 98,435.64 |  |
| B03-V17~V24-1350 |  | 1st Face Paint | 6d | 2024-07-17 | 2024-07-23 | B03-V17~V24-1330, B03-V09~V16-1350 | 13d | 0d |  |  |  |
| B03-V17~V24-1360 |  | Installation Of Aluminum Windows | 7d | 2024-07-17 | 2024-07-24 | B03-V17~V24-1330, B03-V09~V16-1360 | 23d | 0d | Aluminum Windows [8] | 84,795.68 |  |
| B03-V17~V24-1370 |  | Installation Of Elec Fixture & Accessories | 7d | 2024-07-17 | 2024-07-24 | B03-V17~V24-1310, B03-V17~V24-1330, B03-V17~V24-1260, B03-V09~V16-1370 | 37d | 0d | Elec Fixtures & Accessories Villa & Yard [8]; Elec Cables GF & FF & Earthing [8] | 53,692.2 |  |
| B03-V17~V24-1380 |  | Installation Of Water Tank-Heater & Pumps | 7d | 2024-07-23 | 2024-07-30 | B03-V17~V24-1340, B03-V09~V16-1380, B03-V17~V24-1220 | 21d | 0d | Water Tank & booster Pump [8]; Lower Pump [8]; Heater [8] | 129,756.23 |  |
| B03-V17~V24-1390 |  | Installation Of Parquet | 4d | 2024-07-24 | 2024-07-28 | B03-V17~V24-1350, B03-V09~V16-1390 | 13d | 0d | Installation Of Parquet [8] | 52,978.96 |  |
| B03-V17~V24-1400 |  | Installation Of Wooden Doors | 7d | 2024-07-29 | 2024-08-05 | B03-V17~V24-1390, B03-V09~V16-1400 | 13d | 0d | Wooden Doors Kitchen & Bathroom without Accessories [8]; Wooden Doors Accessories all Villa [8]; Exterior Wooden Doors [8] | 142,105.45 |  |
| B03-V17~V24-1410 |  | Final Face Paint | 7d | 2024-08-06 | 2024-08-13 | B03-V17~V24-1360, B03-V17~V24-1400, B03-V09~V16-1410 | 13d | 0d | Final Face Paint Villa [8] | 31,096.77 |  |

| ID | WBS | Activity | Duration | Start | Finish | Predecessors | Total float | Free float | Resources | Cost |
| --- | --- | --- | --- | --- | --- | --- | --- | --- | --- | --- |
|  | 3 | **Fence & Courtyard Works** |  | 2024-04-30 | 2024-08-03 |  |  |  |  |  |
| B03-V17~V24-1420 |  | Pouring Bedding Concrete For Fence Fondations | 2d | 2024-04-30 | 2024-05-01 | B03-V17~V24-1120, B03-V09~V16-1420 | 9d | 0d | Excavation Fence Foundations [8] | 4,519.28 |
| B03-V17~V24-1430 |  | RC Concrete For Fence Fondations | 6d | 2024-05-02 | 2024-05-08 | B03-V17~V24-1420, B03-V09~V16-1430 | 9d | 0d | Fence Fondations-Eastern side [8]; Fence Fondations-Westren side [8]; Fence Fondations-Back side [8] | 13,420.32 |
| B03-V17~V24-1440 |  | Steel Fixing & Carpentry For Fence Columns | 6d | 2024-05-09 | 2024-05-15 | B03-V17~V24-1430, B03-V09~V16-1440 | 9d | 0d |  |  |
| B03-V17~V24-1450 |  | Establishing Elec For Fence Columns | 4d | 2024-05-16 | 2024-05-20 | B03-V17~V24-1440, B03-V09~V16-1450 | 9d | 0d |  |  |
| B03-V17~V24-1460 |  | Pouring Concrete For Fence Columns | 1d | 2024-05-21 | 2024-05-21 | B03-V17~V24-1450, B03-V09~V16-1460 | 9d | 0d | Fence Columns-Eastern side [8]; Fence Columns-Westren side [8]; Fence Columns-Back side [8] | 9,665.04 |
| B03-V17~V24-1470 |  | Installation Precast Panel For Fence | 5d | 2024-05-22 | 2024-05-27 | B03-V17~V24-1460, B03-V09~V16-1470 | 9d | 0d | Hollow Core Walls [8] | 71,593.2 |
| B03-V17~V24-1480 |  | Bitumen Coating For Fence Fondations | 4d | 2024-05-28 | 2024-06-01 | B03-V17~V24-1470, B03-V09~V16-1480 | 9d | 0d |  |  |
| B03-V17~V24-1490 |  | Pouring Bedding Concrete For "Front" Fence Fondations | 1d | 2024-05-28 | 2024-05-28 | B03-V17~V24-1470, B03-V09~V16-1490 | 21d | 0d |  |  |
| B03-V17~V24-1500 |  | RC Concrete For "Front" Fence Fondations | 4d | 2024-05-29 | 2024-06-02 | B03-V17~V24-1490, B03-V09~V16-1500 | 21d | 0d | Front Fence Fondations [8] | 8,904.4 |
| B03-V17~V24-1510 |  | Outdoor Drainage & Water Line | 5d | 2024-06-02 | 2024-06-06 | B03-V17~V24-1480, B03-V17~V24-1140, B03-V09~V16-1510 | 9d | 0d | Outdoor Drainage [8]; Outdoor Water Line [8] | 13,423.68 |
| B03-V17~V24-1520 |  | Steel Fixing & Carpentry For "Front" Fence Columns | 4d | 2024-06-03 | 2024-06-06 | B03-V17~V24-1500, B03-V09~V16-1520 | 21d | 0d |  |  |
| B03-V17~V24-1530 |  | Establishing Elec For "Front" Fence Columns | 4d | 2024-06-08 | 2024-06-11 | B03-V17~V24-1520, B03-V09~V16-1530 | 21d | 0d |  |  |
| B03-V17~V24-1540 |  | Establishing Elec For Fence & Yard | 2d | 2024-06-08 | 2024-06-09 | B03-V17~V24-1510, B03-V09~V16-1540 | 9d | 0d | Elec Establishment Fence & Yard [8] | 17,898.32 |
| B03-V17~V24-1550 |  | Backfilling the Yard | 4d | 2024-06-10 | 2024-06-13 | B03-V17~V24-1540, B03-V09~V16-1550 | 9d | 0d | Backfilling the Yard [8] | 10,560 |
| B03-V17~V24-1560 |  | Pouring Concrete Wall Of "Front" Fence Columns | 2d | 2024-06-12 | 2024-06-13 | B03-V17~V24-1530, B03-V09~V16-1560 | 21d | 0d | Front Fence Walls [8] | 17,898.32 |
| B03-V17~V24-1570 |  | Pouring Concrete Crown Of "Front" Fence Columns | 3d | 2024-06-15 | 2024-06-17 | B03-V17~V24-1560, B03-V09~V16-1570 | 21d | 0d | Fence Columns - C Chanel [8] | 3,310.37 |
| B03-V17~V24-1580 |  | Bardoura Works For Yard | 5d | 2024-06-15 | 2024-06-19 | B03-V17~V24-1550, B03-V09~V16-1580 | 9d | 0d | Bardoura Works For Yard [8] | 14,408.16 |
| B03-V17~V24-1590 |  | Pouring Concrete Flower Basin Of "Front" Fence Columns | 4d | 2024-06-18 | 2024-06-22 | B03-V17~V24-1570, B03-V09~V16-1590 | 21d | 0d |  |  |
| B03-V17~V24-1600 |  | Antitermite Treatment For Yard | 1d | 2024-06-20 | 2024-06-20 | B03-V17~V24-1580, B03-V09~V16-1600 | 9d | 0d | Antitermite Treatment For Yard [8] |  |
| B03-V17~V24-1610 |  | Pouring Concrete For Yard | 1d | 2024-06-22 | 2024-06-22 | B03-V17~V24-1600, B03-V09~V16-1610 | 9d | 0d |  |  |
| B03-V17~V24-1620 |  | Block Work For Flower Basin | 5d | 2024-06-23 | 2024-06-27 | B03-V17~V24-1610, B03-V09~V16-1620 | 9d | 0d |  |  |
| B03-V17~V24-1630 |  | Plastering Work For Flower Basin | 4d | 2024-06-29 | 2024-07-02 | B03-V17~V24-1620, B03-V09~V16-1630 | 9d | 0d |  |  |
| B03-V17~V24-1640 |  | Interlock Works For The Yard | 6d | 2024-07-03 | 2024-07-09 | B03-V17~V24-1630, B03-V09~V16-1640 | 9d | 0d | Interlock Works For The Yard [8] | 36,776.32 |
| B03-V17~V24-1650 |  | External Grading Works For The Villa | 4d | 2024-07-10 | 2024-07-14 | B03-V17~V24-1640, B03-V09~V16-1650 | 11d | 0d | External Grading Works For The Villa [8] | 3,221.68 |
| B03-V17~V24-1660 |  | Installation The Exterior Door & Garage Door | 5d | 2024-07-10 | 2024-07-15 | B03-V17~V24-1640, B03-V09~V16-1660 | 14d | 2d | Installation The Exterior Door [8]; Installation The Exterior Garage Door [8] | 40,002.72 |
| B03-V17~V24-1670 |  | Fixing Floor Drain For The Yard | 2d | 2024-07-10 | 2024-07-11 | B03-V17~V24-1640, B03-V09~V16-1670 | 17d | 5d | Floor Drain & Clean Out [8] | 13,423.76 |
| B03-V17~V24-1680 |  | Granite Surronds Around The Villa | 4d | 2024-07-15 | 2024-07-18 | B03-V17~V24-1650, B03-V09~V16-1680 | 11d | 2d | Granite Surronds Around The Villa [8] | 25,818.32 |
| B03-V17~V24-1690 |  | Painting The Base Surface Of The Fence | 2d | 2024-07-15 | 2024-07-16 | B03-V17~V24-1750, B03-V09~V16-1690 | 9d | 0d |  |  |
| B03-V17~V24-1700 |  | Painting The Final Face Of The Fence | 4d | 2024-07-17 | 2024-07-21 | B03-V17~V24-1690, B03-V09~V16-1700 | 9d | 0d | Painting Final Face Of The Fence [8] | 37,586.48 |
| B03-V17~V24-1710 |  | Exterior Painting Of The Villa | 7d | 2024-07-22 | 2024-07-29 | B03-V17~V24-1680, B03-V17~V24-1700, B03-V17~V24-1660, B03-V17~V24-1670, B03-V09~V16-1710 | 9d | 0d | Exterior Painting Of The Villa [8]; Exterior Painting Staircase House [8] | 105,684.16 |
| B03-V17~V24-1720 |  | Installation Elec Fixtures & Accessories For The Yard | 4d | 2024-07-30 | 2024-08-03 | B03-V17~V24-1700, B03-V17~V24-1710, B03-V09~V16-1720 | 74d | 0d | Elec feeding panels GF & FF [8] | 22,372.88 |

| ID | WBS | Activity | Duration | Start | Finish | Predecessors | Total float | Free float | Resources | Cost | Department-1 |
| --- | --- | --- | --- | --- | --- | --- | --- | --- | --- | --- | --- |
|  | 5 | **External Sidewalk Works** |  | 2024-06-23 | 2024-08-07 |  |  |  |  |  |  |
| B03-V17~V24-1730 |  | Connection The Drain To The Piblic Network | 3d | 2024-06-23 | 2024-06-25 | B03-V17~V24-1510, B03-V17~V24-1590, B03-V09~V16-1730 | 21d | 4d | Connection Drain To The Piblic Network [8]; Connection Water To The Piblic Network [8] | 13,420.32 |  |
| B03-V17~V24-1740 |  | Pardora Works For The External Sidewalk | 2d | 2024-07-10 | 2024-07-11 | B03-V17~V24-1640, B03-V17~V24-1730, B03-V09~V16-1740 | 9d | 0d |  |  |  |
| B03-V17~V24-1750 |  | Interlock Works For The Exerrnal Sidewalk | 2d | 2024-07-13 | 2024-07-14 | B03-V17~V24-1740, B03-V09~V16-1750 | 9d | 0d |  |  |  |
| B03-V17~V24-1760 |  | Pulling The Villa's Main Elec Cable | 4d | 2024-08-04 | 2024-08-07 | B03-V17~V24-1750, B03-V17~V24-1720, B03-V09~V16-1760 | 74d | 0d | Elec Work Testing [8] | 22,819.84 |  |
|  | 6 | **Final Testing & Handover** |  | 2024-07-31 | 2024-08-26 |  |  |  |  |  |  |
| B03-V17~V24-1770 |  | Mech Work Testing & Handover | 5d | 2024-07-31 | 2024-08-05 | B03-V17~V24-1730, B03-V17~V24-1340, B03-V17~V24-1380, B03-V09~V16-1770 | 81d | 2d | Mech Work Testing & Handover [8] | 14,318.64 |  |
| B03-V17~V24-1780 |  | Arch Snaglist & Handover | 5d | 2024-08-06 | 2024-08-11 | B03-V17~V24-1750, B03-V17~V24-1710, B03-V17~V24-1400, B03-V09~V16-1780 | 76d | 2d | Arch Snaglist & Handover [8] | 77,320.64 |  |
| B03-V17~V24-1790 |  | ElecWork Testing & Handover | 5d | 2024-08-08 | 2024-08-13 | B03-V17~V24-1760, B03-V17~V24-1370, B03-V09~V16-1790 | 74d | 0d | Elec Work Handover [8] | 23,804.72 |  |
| B03-V17~V24-1800 |  | Final Handover Of The Villa To The Consltant | 5d | 2024-08-14 | 2024-08-19 | B03-V17~V24-1780, B03-V17~V24-1790, B03-V17~V24-1770, B03-V17~V24-1410, B03-V09~V16-1800 | 74d | 0d |  |  |  |
| B03-V17~V24-1810 |  | Customer Delivery | 6d | 2024-08-20 | 2024-08-26 | B03-V17~V24-1800, B03-V09~V16-1810 | 74d | 1d |  |  |  |
|  | 12 | **B03-V25~V32** |  | 2024-03-04 | 2024-09-03 |  |  |  |  |  |  |
|  | 2 | **Under Grond Slap Works** |  | 2024-03-04 | 2024-04-13 |  |  |  |  |  |  |
| B03-V25~V32-1000 |  | Excavation&Compaction of Fondation | 6d | 2024-03-04 | 2024-03-10 | B03-V17~V24-1000 | 14d | 0d | Clearing & Groubbing [8]; Excavation & Leveling [8]; Stone Layer [8]; A3 Layer [8]; A1-a 1st Layer [8]; A1-a 2ed Layer [8] | 163,545.76 | Civil |
| B03-V25~V32-1010 |  | Pouring Concrete For Bedding | 2d | 2024-03-11 | 2024-03-12 | B03-V25~V32-1000, B03-V17~V24-1010 | 14d | 0d | PC Carpentry [8]; PC Concrete [8]; RC 18 MPA [9 M3] | 37,899.68 | Civil |
| B03-V25~V32-1020 |  | Reinforcement Concrete For Foundation | 5d | 2024-03-13 | 2024-03-18 | B03-V25~V32-1010, B03-V17~V24-1020 | 14d | 0d | RC Foundation Carpentry [8]; RC Foundation Steel [8]; RC Foundation Concrete [8] | 201,355.92 | Civil |
| B03-V25~V32-1030 |  | Steel Fixing& Carpenter work for Beams | 4d | 2024-03-19 | 2024-03-23 | B03-V25~V32-1020, B03-V17~V24-1030 | 14d | 0d | RC Grade Beam Carpentry & Steel [8] | 44,745.76 | Civil |
| B03-V25~V32-1040 |  | Mech&Elec Establishment for Beams | 3d | 2024-03-24 | 2024-03-26 | B03-V25~V32-1030, B03-V17~V24-1040 | 14d | 0d |  |  | Mech |
| B03-V25~V32-1050 |  | Pouring Concrete For Beams | 1d | 2024-03-27 | 2024-03-27 | B03-V25~V32-1040, B03-V17~V24-1050 | 14d | 0d | RC Grade Beam Concrete [8] | 77,141.68 | Civil |
| B03-V25~V32-1060 |  | Bitmen Coating For Fondation&Beams | 3d | 2024-03-28 | 2024-03-31 | B03-V25~V32-1050, B03-V17~V24-1060 | 14d | 0d | Bitumen Coating Foundations & Grade Beams [8] | 22,372.32 | Civil |
| B03-V25~V32-1070 |  | Backfilling Inside Fondations | 4d | 2024-04-01 | 2024-04-04 | B03-V25~V32-1060, B03-V17~V24-1070 | 14d | 0d | Backfilling 1st Layer [8]; Backfilling 2ed Layer [8] | 11,186.4 | Civil |
| B03-V25~V32-1080 |  | Mech Works Under Grond Slap | 3d | 2024-04-06 | 2024-04-08 | B03-V25~V32-1070, B03-V17~V24-1080 | 14d | 0d | Mech Establishment Under Ground Slap [8] | 13,423.42 | Mech |
| B03-V25~V32-1090 |  | Steel Fixing& Carpenter work for Ground Slap | 3d | 2024-04-09 | 2024-04-11 | B03-V25~V32-1080, B03-V17~V24-1090 | 14d | 0d | Steel & Carpentry For Ground Slap [8] | 10,246.54 | Civil |
| B03-V25~V32-1100 |  | Anti Termite Treatment For Ground Slap | 1d | 2024-04-13 | 2024-04-13 | B03-V25~V32-1090, B03-V17~V24-1100 | 14d | 0d | Anti Termite Treatment nder Ground Slap [8] | 2,237.28 | Civil |
| B03-V25~V32-1110 |  | Pouring Concrete For Ground Slap | 1d | 2024-04-13 | 2024-04-13 | B03-V25~V32-1100 FF, B03-V25~V32-1090, B03-V17~V24-1110 | 14d | 5d | Concrete For Ground Slap [8] | 58,169.52 | Civil |

| ID | WBS | Activity | Duration | Start | Finish | Predecessors | Total float | Free float | Resources | Cost | Department-1 |
| --- | --- | --- | --- | --- | --- | --- | --- | --- | --- | --- | --- |
|  | 4 | **Precast Works** |  | 2024-04-30 | 2024-05-07 |  |  |  |  |  |  |
| B03-V25~V32-1120 |  | Precast Constrction | 7d | 2024-04-30 | 2024-05-07 | B03-V25~V32-1110, B03-V17~V24-1120 | 0d |  | Precast Walls GF [8]; Hollow Core Slap GF [8]; Precast Stairs & staircase House [8]; Thermal insollation Outside Walls [8]; Concrete structure joints [8]; Precast Walls FF [8]; Hollow Core Slap FF [8] | 1,513,762.87 | Civil |
|  | 1 | **Works Inside The Villa** |  | 2024-05-08 | 2024-08-21 |  |  |  |  |  |  |
| B03-V25~V32-1130 |  | Block Work For GF & Estabishment 1F | 6d | 2024-05-08 | 2024-05-14 | B03-V25~V32-1120, B03-V17~V24-1130 | 13d | 0d | Block GF [8] | 13,647.1 | Arc |
| B03-V25~V32-1140 |  | L.L & H.L Drainage | 6d | 2024-05-15 | 2024-05-21 | B03-V25~V32-1130, B03-V17~V24-1140 | 13d | 0d | HL Drainage [8]; L.L Drainage [8] | 89,489.28 | Mech |
| B03-V25~V32-1150 |  | Elec Establishment For GF & 1F | 3d | 2024-05-15 | 2024-05-18 | B03-V25~V32-1130, B03-V17~V24-1150 | 16d | 3d | Elec Establishment GF [8] | 26,840.73 | Elec |
| B03-V25~V32-1160 |  | Screed Work For 1F & Roof | 6d | 2024-05-22 | 2024-05-28 | B03-V25~V32-1140, B03-V25~V32-1150, B03-V17~V24-1160 | 13d | 0d | Screed 1st Floor [8]; Screed Roof Floor [8]; Leveling Screed 1st Floor [8]; Leveling Screed Roof Floor [8] | 268,467.85 | Civil |
| B03-V25~V32-1170 |  | Water Tank & Heater Foundations | 4d | 2024-05-29 | 2024-06-02 | B03-V25~V32-1160, B03-V17~V24-1170 | 17d | 0d |  |  | Civil |
| B03-V25~V32-1180 |  | Block Works For 1F | 3d | 2024-05-29 | 2024-06-01 | B03-V25~V32-1160, B03-V17~V24-1180 | 13d | 0d | Block FF [8] | 20,537.81 | Arc |
| B03-V25~V32-1190 |  | Water Line Network | 6d | 2024-06-02 | 2024-06-08 | B03-V25~V32-1180, B03-V17~V24-1190 | 13d | 0d | Water Line Network [8] | 40,261.13 | Mech |
| B03-V25~V32-1200 |  | Continue Elec Establishment For GF & 1F | 3d | 2024-06-02 | 2024-06-04 | B03-V25~V32-1180, B03-V17~V24-1200 | 16d | 3d | Elec Establishment FF [8] | 26,840.73 | Elec |
| B03-V25~V32-1210 |  | Thermal Insulation For Roof | 5d | 2024-06-03 | 2024-06-08 | B03-V25~V32-1170, B03-V17~V24-1210 | 17d | 0d | Roof Insulation [8] | 32,530.16 | Arc |
| B03-V25~V32-1220 |  | Roof Floor Tiles | 6d | 2024-06-09 | 2024-06-15 | B03-V25~V32-1210, B03-V17~V24-1220 | 17d | 1d | Roof Tiles [8]; Roof Tiles Joints [8]; Re_Test Roof Insulation [8] | 63,179.38 | Arc |
| B03-V25~V32-1230 |  | Plaster Work For Villa | 6d | 2024-06-09 | 2024-06-15 | B03-V25~V32-1190, B03-V25~V32-1200, B03-V17~V24-1230 | 13d | 0d | Establishing a plastering GF [8]; Establishing a plastering FF [8]; Plastering GF [8]; Plastering FF [8] | 49,263.81 |  |
| B03-V25~V32-1240 |  | Marbale Stairs & Handrails | 6d | 2024-06-16 | 2024-06-22 | B03-V25~V32-1230, B03-V17~V24-1240 | 35d | 1d | Marbale Stairs [8]; Stairs Handrails SS [8] | 91,494.69 |  |
| B03-V25~V32-1250 |  | Water Proofing Of Bathrooms | 4d | 2024-06-16 | 2024-06-19 | B03-V25~V32-1230, B03-V17~V24-1250 | 13d | 0d | Bathrooms InsulationGF & FF [8] | 134.24 |  |
| B03-V25~V32-1260 |  | Pulling The Elec Wires | 4d | 2024-06-16 | 2024-06-19 | B03-V25~V32-1230, B03-V17~V24-1260 | 23d | 3d | Elec Wires GF [8]; Elec Wires FF [8] | 80,542.4 |  |
| B03-V25~V32-1270 |  | Bathroom Tiles | 4d | 2024-06-20 | 2024-06-24 | B03-V25~V32-1250, B03-V25~V32-1220, B03-V17~V24-1270 | 13d | 0d | Ceramic Walls Kitchen [8]; Ceramic Walls Bathrooms GF [8]; Ceramic Walls Bathrooms FF [8]; Ceramic Tiles Bathrooms GF [8]; Ceramic Tiles Kitchen GF [8]; Ceramic Tiles Store GF [8] | 73,204.08 |  |
| B03-V25~V32-1280 |  | Structure For Gypsum | 6d | 2024-06-25 | 2024-07-01 | B03-V25~V32-1270, B03-V17~V24-1280 | 13d | 0d | Structure For Gypsum GF Rooms [8]; Structure For Gypsum FF Rooms [8]; Structure For Gypsum Bathrooms & Kitchen [8] | 33,550.81 |  |
| B03-V25~V32-1290 |  | Gypsum Board For Room | 4d | 2024-07-02 | 2024-07-06 | B03-V25~V32-1280, B03-V25~V32-1260, B03-V17~V24-1290 | 13d | 0d | Gypsum Board For GF Room [8]; Gypsum Board For FF Room [8] | 35,796.64 |  |
| B03-V25~V32-1300 |  | Installation Of Gypsum Board For Bathroom & Kitchen | 4d | 2024-07-07 | 2024-07-10 | B03-V25~V32-1290, B03-V17~V24-1300 | 13d | 0d | Gypsum Board For Bathrooms & Kitchen [8] | 11,052.24 |  |
| B03-V25~V32-1310 |  | Putty Filler For Gypsm Board Ceiling | 6d | 2024-07-11 | 2024-07-17 | B03-V25~V32-1300, B03-V17~V24-1310 | 13d | 0d | Putty Filler 1st Layer Roof all Rooms [8]; Putty Filler 1st Layer Roof all Bathrooms & Kitchen [8]; Putty Filler1st Layer walls [8] | 62,182.52 |  |
| B03-V25~V32-1320 |  | Fixing Shower Glass | 4d | 2024-07-18 | 2024-07-22 | B03-V25~V32-1310, B03-V17~V24-1320 | 21d | 0d | Shower Glass [8] | 22,372.88 |  |
| B03-V25~V32-1330 |  | Interior Wall Putty Filler | 6d | 2024-07-18 | 2024-07-24 | B03-V25~V32-1310, B03-V25~V32-1240, B03-V17~V24-1330 | 13d | 0d | Putty Filler 2ed Layer Roof & WAlls GF [8]; Putty Filler 2ed Layer Roof & WAlls FF [8] | 62,150.21 |  |
| B03-V25~V32-1340 |  | Installation Of Sanitry Fixture | 7d | 2024-07-23 | 2024-07-30 | B03-V25~V32-1320, B03-V17~V24-1340 | 21d | 0d | Mech Fixtures & Accessories [8] | 98,435.64 |  |
| B03-V25~V32-1350 |  | 1st Face Paint | 6d | 2024-07-25 | 2024-07-31 | B03-V25~V32-1330, B03-V17~V24-1350 | 13d | 0d |  |  |  |
| B03-V25~V32-1360 |  | Installation Of Aluminum Windows | 7d | 2024-07-25 | 2024-08-01 | B03-V25~V32-1330, B03-V17~V24-1360 | 23d | 0d | Aluminum Windows [8] | 84,795.68 |  |
| B03-V25~V32-1370 |  | Installation Of Elec Fixture & Accessories | 7d | 2024-07-25 | 2024-08-01 | B03-V25~V32-1310, B03-V25~V32-1330, B03-V25~V32-1260, B03-V17~V24-1370 | 37d | 0d | Elec Fixtures & Accessories Villa & Yard [8]; Elec Cables GF & FF & Earthing [8] | 53,692.2 |  |
| B03-V25~V32-1380 |  | Installation Of Water Tank-Heater & Pumps | 7d | 2024-07-31 | 2024-08-07 | B03-V25~V32-1340, B03-V17~V24-1380, B03-V25~V32-1220 | 21d | 0d | Water Tank & booster Pump [8]; Lower Pump [8]; Heater [8] | 129,756.23 |  |
| B03-V25~V32-1390 |  | Installation Of Parquet | 4d | 2024-08-01 | 2024-08-05 | B03-V25~V32-1350, B03-V17~V24-1390 | 13d | 0d | Installation Of Parquet [8] | 52,978.96 |  |
| B03-V25~V32-1400 |  | Installation Of Wooden Doors | 7d | 2024-08-06 | 2024-08-13 | B03-V25~V32-1390, B03-V17~V24-1400 | 13d | 0d | Wooden Doors Kitchen & Bathroom without Accessories [8]; Wooden Doors Accessories all Villa [8]; Exterior Wooden Doors [8] | 142,105.45 |  |
| B03-V25~V32-1410 |  | Final Face Paint | 7d | 2024-08-14 | 2024-08-21 | B03-V25~V32-1360, B03-V25~V32-1400, B03-V17~V24-1410 | 13d | 0d | Final Face Paint Villa [8] | 31,096.77 |  |

| ID | WBS | Activity | Duration | Start | Finish | Predecessors | Total float | Free float | Resources | Cost |
| --- | --- | --- | --- | --- | --- | --- | --- | --- | --- | --- |
|  | 3 | **Fence & Courtyard Works** |  | 2024-05-08 | 2024-08-11 |  |  |  |  |  |
| B03-V25~V32-1420 |  | Pouring Bedding Concrete For Fence Fondations | 2d | 2024-05-08 | 2024-05-09 | B03-V25~V32-1120, B03-V17~V24-1420 | 9d | 0d | Excavation Fence Foundations [8] | 4,519.28 |
| B03-V25~V32-1430 |  | RC Concrete For Fence Fondations | 6d | 2024-05-11 | 2024-05-16 | B03-V25~V32-1420, B03-V17~V24-1430 | 9d | 0d | Fence Fondations-Eastern side [8]; Fence Fondations-Westren side [8]; Fence Fondations-Back side [8] | 13,420.32 |
| B03-V25~V32-1440 |  | Steel Fixing & Carpentry For Fence Columns | 6d | 2024-05-18 | 2024-05-23 | B03-V25~V32-1430, B03-V17~V24-1440 | 9d | 0d |  |  |
| B03-V25~V32-1450 |  | Establishing Elec For Fence Columns | 4d | 2024-05-25 | 2024-05-28 | B03-V25~V32-1440, B03-V17~V24-1450 | 9d | 0d |  |  |
| B03-V25~V32-1460 |  | Pouring Concrete For Fence Columns | 1d | 2024-05-29 | 2024-05-29 | B03-V25~V32-1450, B03-V17~V24-1460 | 9d | 0d | Fence Columns-Eastern side [8]; Fence Columns-Westren side [8]; Fence Columns-Back side [8] | 9,665.04 |
| B03-V25~V32-1470 |  | Installation Precast Panel For Fence | 5d | 2024-05-30 | 2024-06-04 | B03-V25~V32-1460, B03-V17~V24-1470 | 9d | 0d | Hollow Core Walls [8] | 71,593.2 |
| B03-V25~V32-1480 |  | Bitumen Coating For Fence Fondations | 4d | 2024-06-05 | 2024-06-09 | B03-V25~V32-1470, B03-V17~V24-1480 | 9d | 0d |  |  |
| B03-V25~V32-1490 |  | Pouring Bedding Concrete For "Front" Fence Fondations | 1d | 2024-06-05 | 2024-06-05 | B03-V25~V32-1470, B03-V17~V24-1490 | 21d | 0d |  |  |
| B03-V25~V32-1500 |  | RC Concrete For "Front" Fence Fondations | 4d | 2024-06-06 | 2024-06-10 | B03-V25~V32-1490, B03-V17~V24-1500 | 21d | 0d | Front Fence Fondations [8] | 8,904.4 |
| B03-V25~V32-1510 |  | Outdoor Drainage & Water Line | 5d | 2024-06-10 | 2024-06-15 | B03-V25~V32-1480, B03-V25~V32-1140, B03-V17~V24-1510 | 9d | 0d | Outdoor Drainage [8]; Outdoor Water Line [8] | 13,423.68 |
| B03-V25~V32-1520 |  | Steel Fixing & Carpentry For "Front" Fence Columns | 4d | 2024-06-11 | 2024-06-15 | B03-V25~V32-1500, B03-V17~V24-1520 | 21d | 0d |  |  |
| B03-V25~V32-1530 |  | Establishing Elec For "Front" Fence Columns | 4d | 2024-06-16 | 2024-06-19 | B03-V25~V32-1520, B03-V17~V24-1530 | 21d | 0d |  |  |
| B03-V25~V32-1540 |  | Establishing Elec For Fence & Yard | 2d | 2024-06-16 | 2024-06-17 | B03-V25~V32-1510, B03-V17~V24-1540 | 9d | 0d | Elec Establishment Fence & Yard [8] | 17,898.32 |
| B03-V25~V32-1550 |  | Backfilling the Yard | 4d | 2024-06-18 | 2024-06-22 | B03-V25~V32-1540, B03-V17~V24-1550 | 9d | 0d | Backfilling the Yard [8] | 10,560 |
| B03-V25~V32-1560 |  | Pouring Concrete Wall Of "Front" Fence Columns | 2d | 2024-06-20 | 2024-06-22 | B03-V25~V32-1530, B03-V17~V24-1560 | 21d | 0d | Front Fence Walls [8] | 17,898.32 |
| B03-V25~V32-1570 |  | Pouring Concrete Crown Of "Front" Fence Columns | 3d | 2024-06-23 | 2024-06-25 | B03-V25~V32-1560, B03-V17~V24-1570 | 21d | 0d | Fence Columns - C Chanel [8] | 3,310.37 |
| B03-V25~V32-1580 |  | Bardoura Works For Yard | 5d | 2024-06-23 | 2024-06-27 | B03-V25~V32-1550, B03-V17~V24-1580 | 9d | 0d | Bardoura Works For Yard [8] | 14,408.16 |
| B03-V25~V32-1590 |  | Pouring Concrete Flower Basin Of "Front" Fence Columns | 4d | 2024-06-26 | 2024-06-30 | B03-V25~V32-1570, B03-V17~V24-1590 | 21d | 0d |  |  |
| B03-V25~V32-1600 |  | Antitermite Treatment For Yard | 1d | 2024-06-29 | 2024-06-29 | B03-V25~V32-1580, B03-V17~V24-1600 | 9d | 0d | Antitermite Treatment For Yard [8] |  |
| B03-V25~V32-1610 |  | Pouring Concrete For Yard | 1d | 2024-06-30 | 2024-06-30 | B03-V25~V32-1600, B03-V17~V24-1610 | 9d | 0d |  |  |
| B03-V25~V32-1620 |  | Block Work For Flower Basin | 5d | 2024-07-01 | 2024-07-06 | B03-V25~V32-1610, B03-V17~V24-1620 | 9d | 0d |  |  |
| B03-V25~V32-1630 |  | Plastering Work For Flower Basin | 4d | 2024-07-07 | 2024-07-10 | B03-V25~V32-1620, B03-V17~V24-1630 | 9d | 0d |  |  |
| B03-V25~V32-1640 |  | Interlock Works For The Yard | 6d | 2024-07-11 | 2024-07-17 | B03-V25~V32-1630, B03-V17~V24-1640 | 9d | 0d | Interlock Works For The Yard [8] | 36,776.32 |
| B03-V25~V32-1650 |  | External Grading Works For The Villa | 4d | 2024-07-18 | 2024-07-22 | B03-V25~V32-1640, B03-V17~V24-1650 | 11d | 0d | External Grading Works For The Villa [8] | 3,221.68 |
| B03-V25~V32-1660 |  | Installation The Exterior Door & Garage Door | 5d | 2024-07-18 | 2024-07-23 | B03-V25~V32-1640, B03-V17~V24-1660 | 14d | 2d | Installation The Exterior Door [8]; Installation The Exterior Garage Door [8] | 40,002.72 |
| B03-V25~V32-1670 |  | Fixing Floor Drain For The Yard | 2d | 2024-07-18 | 2024-07-20 | B03-V25~V32-1640, B03-V17~V24-1670 | 17d | 5d | Floor Drain & Clean Out [8] | 13,423.76 |
| B03-V25~V32-1680 |  | Granite Surronds Around The Villa | 4d | 2024-07-23 | 2024-07-27 | B03-V25~V32-1650, B03-V17~V24-1680 | 11d | 2d | Granite Surronds Around The Villa [8] | 25,818.32 |
| B03-V25~V32-1690 |  | Painting The Base Surface Of The Fence | 2d | 2024-07-23 | 2024-07-24 | B03-V25~V32-1750, B03-V17~V24-1690 | 9d | 0d |  |  |
| B03-V25~V32-1700 |  | Painting The Final Face Of The Fence | 4d | 2024-07-25 | 2024-07-29 | B03-V25~V32-1690, B03-V17~V24-1700 | 9d | 0d | Painting Final Face Of The Fence [8] | 37,586.48 |
| B03-V25~V32-1710 |  | Exterior Painting Of The Villa | 7d | 2024-07-30 | 2024-08-06 | B03-V25~V32-1680, B03-V25~V32-1700, B03-V25~V32-1660, B03-V25~V32-1670, B03-V17~V24-1710 | 9d | 0d | Exterior Painting Of The Villa [8]; Exterior Painting Staircase House [8] | 105,684.16 |
| B03-V25~V32-1720 |  | Installation Elec Fixtures & Accessories For The Yard | 4d | 2024-08-07 | 2024-08-11 | B03-V25~V32-1700, B03-V25~V32-1710, B03-V17~V24-1720 | 73d | 0d | Elec feeding panels GF & FF [8] | 22,372.88 |

| ID | WBS | Activity | Duration | Start | Finish | Predecessors | Total float | Free float | Resources | Cost | Department-1 |
| --- | --- | --- | --- | --- | --- | --- | --- | --- | --- | --- | --- |
|  | 5 | **External Sidewalk Works** |  | 2024-07-01 | 2024-08-15 |  |  |  |  |  |  |
| B03-V25~V32-1730 |  | Connection The Drain To The Piblic Network | 3d | 2024-07-01 | 2024-07-03 | B03-V25~V32-1510, B03-V25~V32-1590, B03-V17~V24-1730 | 21d | 4d | Connection Drain To The Piblic Network [8]; Connection Water To The Piblic Network [8] | 13,420.32 |  |
| B03-V25~V32-1740 |  | Pardora Works For The External Sidewalk | 2d | 2024-07-18 | 2024-07-20 | B03-V25~V32-1640, B03-V25~V32-1730, B03-V17~V24-1740 | 9d | 0d |  |  |  |
| B03-V25~V32-1750 |  | Interlock Works For The Exerrnal Sidewalk | 2d | 2024-07-21 | 2024-07-22 | B03-V25~V32-1740, B03-V17~V24-1750 | 9d | 0d |  |  |  |
| B03-V25~V32-1760 |  | Pulling The Villa's Main Elec Cable | 4d | 2024-08-12 | 2024-08-15 | B03-V25~V32-1750, B03-V25~V32-1720, B03-V17~V24-1760 | 73d | 0d | Elec Work Testing [8] | 22,819.84 |  |
|  | 6 | **Final Testing & Handover** |  | 2024-08-08 | 2024-09-03 |  |  |  |  |  |  |
| B03-V25~V32-1770 |  | Mech Work Testing & Handover | 5d | 2024-08-08 | 2024-08-13 | B03-V25~V32-1730, B03-V25~V32-1340, B03-V25~V32-1380, B03-V17~V24-1770 | 80d | 2d | Mech Work Testing & Handover [8] | 14,318.64 |  |
| B03-V25~V32-1780 |  | Arch Snaglist & Handover | 5d | 2024-08-14 | 2024-08-19 | B03-V25~V32-1750, B03-V25~V32-1710, B03-V25~V32-1400, B03-V17~V24-1780 | 75d | 2d | Arch Snaglist & Handover [8] | 77,320.64 |  |
| B03-V25~V32-1790 |  | ElecWork Testing & Handover | 5d | 2024-08-17 | 2024-08-21 | B03-V25~V32-1760, B03-V25~V32-1370, B03-V17~V24-1790 | 73d | 0d | Elec Work Handover [8] | 23,804.72 |  |
| B03-V25~V32-1800 |  | Final Handover Of The Villa To The Consltant | 5d | 2024-08-22 | 2024-08-27 | B03-V25~V32-1780, B03-V25~V32-1790, B03-V25~V32-1770, B03-V25~V32-1410, B03-V17~V24-1800 | 73d | 0d |  |  |  |
| B03-V25~V32-1810 |  | Customer Delivery | 6d | 2024-08-28 | 2024-09-03 | B03-V25~V32-1800, B03-V17~V24-1810 | 73d | 1d |  |  |  |
|  | 13 | **B04-V01~V08** |  | 2024-03-11 | 2024-09-11 |  |  |  |  |  |  |
|  | 2 | **Under Grond Slap Works** |  | 2024-03-11 | 2024-04-20 |  |  |  |  |  |  |
| B04-V01~V08-1000 |  | Excavation&Compaction of Fondation | 6d | 2024-03-11 | 2024-03-17 | B03-V25~V32-1000 | 15d | 0d | Clearing & Groubbing [8]; Excavation & Leveling [8]; Stone Layer [8]; A3 Layer [8]; A1-a 1st Layer [8]; A1-a 2ed Layer [8] | 163,545.76 | Civil |
| B04-V01~V08-1010 |  | Pouring Concrete For Bedding | 2d | 2024-03-18 | 2024-03-19 | B04-V01~V08-1000, B03-V25~V32-1010 | 15d | 0d | PC Carpentry [8]; PC Concrete [8]; RC 18 MPA [9 M3] | 37,899.68 | Civil |
| B04-V01~V08-1020 |  | Reinforcement Concrete For Foundation | 5d | 2024-03-20 | 2024-03-25 | B04-V01~V08-1010, B03-V25~V32-1020 | 15d | 0d | RC Foundation Carpentry [8]; RC Foundation Steel [8]; RC Foundation Concrete [8] | 201,355.92 | Civil |
| B04-V01~V08-1030 |  | Steel Fixing& Carpenter work for Beams | 4d | 2024-03-26 | 2024-03-30 | B04-V01~V08-1020, B03-V25~V32-1030 | 15d | 0d | RC Grade Beam Carpentry & Steel [8] | 44,745.76 | Civil |
| B04-V01~V08-1040 |  | Mech&Elec Establishment for Beams | 3d | 2024-03-31 | 2024-04-02 | B04-V01~V08-1030, B03-V25~V32-1040 | 15d | 0d |  |  | Mech |
| B04-V01~V08-1050 |  | Pouring Concrete For Beams | 1d | 2024-04-03 | 2024-04-03 | B04-V01~V08-1040, B03-V25~V32-1050 | 15d | 0d | RC Grade Beam Concrete [8] | 77,141.68 | Civil |
| B04-V01~V08-1060 |  | Bitmen Coating For Fondation&Beams | 3d | 2024-04-04 | 2024-04-07 | B04-V01~V08-1050, B03-V25~V32-1060 | 15d | 0d | Bitumen Coating Foundations & Grade Beams [8] | 22,372.32 | Civil |
| B04-V01~V08-1070 |  | Backfilling Inside Fondations | 4d | 2024-04-08 | 2024-04-11 | B04-V01~V08-1060, B03-V25~V32-1070 | 15d | 0d | Backfilling 1st Layer [8]; Backfilling 2ed Layer [8] | 11,186.4 | Civil |
| B04-V01~V08-1080 |  | Mech Works Under Grond Slap | 3d | 2024-04-13 | 2024-04-15 | B04-V01~V08-1070, B03-V25~V32-1080 | 15d | 0d | Mech Establishment Under Ground Slap [8] | 13,423.42 | Mech |
| B04-V01~V08-1090 |  | Steel Fixing& Carpenter work for Ground Slap | 3d | 2024-04-16 | 2024-04-18 | B04-V01~V08-1080, B03-V25~V32-1090 | 15d | 0d | Steel & Carpentry For Ground Slap [8] | 10,246.54 | Civil |
| B04-V01~V08-1100 |  | Anti Termite Treatment For Ground Slap | 1d | 2024-04-20 | 2024-04-20 | B04-V01~V08-1090, B03-V25~V32-1100 | 15d | 0d | Anti Termite Treatment nder Ground Slap [8] | 2,237.28 | Civil |
| B04-V01~V08-1110 |  | Pouring Concrete For Ground Slap | 1d | 2024-04-20 | 2024-04-20 | B04-V01~V08-1100 FF, B04-V01~V08-1090, B03-V25~V32-1110 | 15d | 5d | Concrete For Ground Slap [8] | 58,169.52 | Civil |

| ID | WBS | Activity | Duration | Start | Finish | Predecessors | Total float | Free float | Resources | Cost | Department-1 |
| --- | --- | --- | --- | --- | --- | --- | --- | --- | --- | --- | --- |
|  | 4 | **Precast Works** |  | 2024-05-08 | 2024-05-15 |  |  |  |  |  |  |
| B04-V01~V08-1120 |  | Precast Constrction | 7d | 2024-05-08 | 2024-05-15 | B04-V01~V08-1110, B03-V25~V32-1120 | 0d |  | Precast Walls GF [8]; Hollow Core Slap GF [8]; Precast Stairs & staircase House [8]; Thermal insollation Outside Walls [8]; Concrete structure joints [8]; Precast Walls FF [8]; Hollow Core Slap FF [8] | 1,513,762.87 | Civil |
|  | 1 | **Works Inside The Villa** |  | 2024-05-16 | 2024-08-29 |  |  |  |  |  |  |
| B04-V01~V08-1130 |  | Block Work For GF & Estabishment 1F | 6d | 2024-05-16 | 2024-05-22 | B04-V01~V08-1120, B03-V25~V32-1130 | 13d | 0d | Block GF [8] | 13,647.1 | Arc |
| B04-V01~V08-1140 |  | L.L & H.L Drainage | 6d | 2024-05-23 | 2024-05-29 | B04-V01~V08-1130, B03-V25~V32-1140 | 13d | 0d | HL Drainage [8]; L.L Drainage [8] | 89,489.28 | Mech |
| B04-V01~V08-1150 |  | Elec Establishment For GF & 1F | 3d | 2024-05-23 | 2024-05-26 | B04-V01~V08-1130, B03-V25~V32-1150 | 16d | 3d | Elec Establishment GF [8] | 26,840.73 | Elec |
| B04-V01~V08-1160 |  | Screed Work For 1F & Roof | 6d | 2024-05-30 | 2024-06-05 | B04-V01~V08-1140, B04-V01~V08-1150, B03-V25~V32-1160 | 13d | 0d | Screed 1st Floor [8]; Screed Roof Floor [8]; Leveling Screed 1st Floor [8]; Leveling Screed Roof Floor [8] | 268,467.85 | Civil |
| B04-V01~V08-1170 |  | Water Tank & Heater Foundations | 4d | 2024-06-06 | 2024-06-10 | B04-V01~V08-1160, B03-V25~V32-1170 | 17d | 0d |  |  | Civil |
| B04-V01~V08-1180 |  | Block Works For 1F | 3d | 2024-06-06 | 2024-06-09 | B04-V01~V08-1160, B03-V25~V32-1180 | 13d | 0d | Block FF [8] | 20,537.81 | Arc |
| B04-V01~V08-1190 |  | Water Line Network | 6d | 2024-06-10 | 2024-06-16 | B04-V01~V08-1180, B03-V25~V32-1190 | 13d | 0d | Water Line Network [8] | 40,261.13 | Mech |
| B04-V01~V08-1200 |  | Continue Elec Establishment For GF & 1F | 3d | 2024-06-10 | 2024-06-12 | B04-V01~V08-1180, B03-V25~V32-1200 | 16d | 3d | Elec Establishment FF [8] | 26,840.73 | Elec |
| B04-V01~V08-1210 |  | Thermal Insulation For Roof | 5d | 2024-06-11 | 2024-06-16 | B04-V01~V08-1170, B03-V25~V32-1210 | 17d | 0d | Roof Insulation [8] | 32,530.16 | Arc |
| B04-V01~V08-1220 |  | Roof Floor Tiles | 6d | 2024-06-17 | 2024-06-23 | B04-V01~V08-1210, B03-V25~V32-1220 | 17d | 1d | Roof Tiles [8]; Roof Tiles Joints [8]; Re_Test Roof Insulation [8] | 63,179.38 | Arc |
| B04-V01~V08-1230 |  | Plaster Work For Villa | 6d | 2024-06-17 | 2024-06-23 | B04-V01~V08-1190, B04-V01~V08-1200, B03-V25~V32-1230 | 13d | 0d | Establishing a plastering GF [8]; Establishing a plastering FF [8]; Plastering GF [8]; Plastering FF [8] | 49,263.81 |  |
| B04-V01~V08-1240 |  | Marbale Stairs & Handrails | 6d | 2024-06-24 | 2024-06-30 | B04-V01~V08-1230, B03-V25~V32-1240 | 35d | 1d | Marbale Stairs [8]; Stairs Handrails SS [8] | 91,494.69 |  |
| B04-V01~V08-1250 |  | Water Proofing Of Bathrooms | 4d | 2024-06-24 | 2024-06-27 | B04-V01~V08-1230, B03-V25~V32-1250 | 13d | 0d | Bathrooms InsulationGF & FF [8] | 134.24 |  |
| B04-V01~V08-1260 |  | Pulling The Elec Wires | 4d | 2024-06-24 | 2024-06-27 | B04-V01~V08-1230, B03-V25~V32-1260 | 23d | 3d | Elec Wires GF [8]; Elec Wires FF [8] | 80,542.4 |  |
| B04-V01~V08-1270 |  | Bathroom Tiles | 4d | 2024-06-29 | 2024-07-02 | B04-V01~V08-1250, B04-V01~V08-1220, B03-V25~V32-1270 | 13d | 0d | Ceramic Walls Kitchen [8]; Ceramic Walls Bathrooms GF [8]; Ceramic Walls Bathrooms FF [8]; Ceramic Tiles Bathrooms GF [8]; Ceramic Tiles Kitchen GF [8]; Ceramic Tiles Store GF [8] | 73,204.08 |  |
| B04-V01~V08-1280 |  | Structure For Gypsum | 6d | 2024-07-03 | 2024-07-09 | B04-V01~V08-1270, B03-V25~V32-1280 | 13d | 0d | Structure For Gypsum GF Rooms [8]; Structure For Gypsum FF Rooms [8]; Structure For Gypsum Bathrooms & Kitchen [8] | 33,550.81 |  |
| B04-V01~V08-1290 |  | Gypsum Board For Room | 4d | 2024-07-10 | 2024-07-14 | B04-V01~V08-1280, B04-V01~V08-1260, B03-V25~V32-1290 | 13d | 0d | Gypsum Board For GF Room [8]; Gypsum Board For FF Room [8] | 35,796.64 |  |
| B04-V01~V08-1300 |  | Installation Of Gypsum Board For Bathroom & Kitchen | 4d | 2024-07-15 | 2024-07-18 | B04-V01~V08-1290, B03-V25~V32-1300 | 13d | 0d | Gypsum Board For Bathrooms & Kitchen [8] | 11,052.24 |  |
| B04-V01~V08-1310 |  | Putty Filler For Gypsm Board Ceiling | 6d | 2024-07-20 | 2024-07-25 | B04-V01~V08-1300, B03-V25~V32-1310 | 13d | 0d | Putty Filler 1st Layer Roof all Rooms [8]; Putty Filler 1st Layer Roof all Bathrooms & Kitchen [8]; Putty Filler1st Layer walls [8] | 62,182.52 |  |
| B04-V01~V08-1320 |  | Fixing Shower Glass | 4d | 2024-07-27 | 2024-07-30 | B04-V01~V08-1310, B03-V25~V32-1320 | 21d | 0d | Shower Glass [8] | 22,372.88 |  |
| B04-V01~V08-1330 |  | Interior Wall Putty Filler | 6d | 2024-07-27 | 2024-08-01 | B04-V01~V08-1310, B04-V01~V08-1240, B03-V25~V32-1330 | 13d | 0d | Putty Filler 2ed Layer Roof & WAlls GF [8]; Putty Filler 2ed Layer Roof & WAlls FF [8] | 62,150.21 |  |
| B04-V01~V08-1340 |  | Installation Of Sanitry Fixture | 7d | 2024-07-31 | 2024-08-07 | B04-V01~V08-1320, B03-V25~V32-1340 | 21d | 0d | Mech Fixtures & Accessories [8] | 98,435.64 |  |
| B04-V01~V08-1350 |  | 1st Face Paint | 6d | 2024-08-03 | 2024-08-08 | B04-V01~V08-1330, B03-V25~V32-1350 | 13d | 0d |  |  |  |
| B04-V01~V08-1360 |  | Installation Of Aluminum Windows | 7d | 2024-08-03 | 2024-08-10 | B04-V01~V08-1330, B03-V25~V32-1360 | 23d | 0d | Aluminum Windows [8] | 84,795.68 |  |
| B04-V01~V08-1370 |  | Installation Of Elec Fixture & Accessories | 7d | 2024-08-03 | 2024-08-10 | B04-V01~V08-1310, B04-V01~V08-1330, B04-V01~V08-1260, B03-V25~V32-1370 | 37d | 0d | Elec Fixtures & Accessories Villa & Yard [8]; Elec Cables GF & FF & Earthing [8] | 53,692.2 |  |
| B04-V01~V08-1380 |  | Installation Of Water Tank-Heater & Pumps | 7d | 2024-08-08 | 2024-08-15 | B04-V01~V08-1340, B03-V25~V32-1380, B04-V01~V08-1220 | 21d | 0d | Water Tank & booster Pump [8]; Lower Pump [8]; Heater [8] | 129,756.23 |  |
| B04-V01~V08-1390 |  | Installation Of Parquet | 4d | 2024-08-10 | 2024-08-13 | B04-V01~V08-1350, B03-V25~V32-1390 | 13d | 0d | Installation Of Parquet [8] | 52,978.96 |  |
| B04-V01~V08-1400 |  | Installation Of Wooden Doors | 7d | 2024-08-14 | 2024-08-21 | B04-V01~V08-1390, B03-V25~V32-1400 | 13d | 0d | Wooden Doors Kitchen & Bathroom without Accessories [8]; Wooden Doors Accessories all Villa [8]; Exterior Wooden Doors [8] | 142,105.45 |  |
| B04-V01~V08-1410 |  | Final Face Paint | 7d | 2024-08-22 | 2024-08-29 | B04-V01~V08-1360, B04-V01~V08-1400, B03-V25~V32-1410 | 13d | 0d | Final Face Paint Villa [8] | 31,096.77 |  |

| ID | WBS | Activity | Duration | Start | Finish | Predecessors | Total float | Free float | Resources | Cost |
| --- | --- | --- | --- | --- | --- | --- | --- | --- | --- | --- |
|  | 3 | **Fence & Courtyard Works** |  | 2024-05-16 | 2024-08-19 |  |  |  |  |  |
| B04-V01~V08-1420 |  | Pouring Bedding Concrete For Fence Fondations | 2d | 2024-05-16 | 2024-05-18 | B04-V01~V08-1120, B03-V25~V32-1420 | 9d | 0d | Excavation Fence Foundations [8] | 4,519.28 |
| B04-V01~V08-1430 |  | RC Concrete For Fence Fondations | 6d | 2024-05-19 | 2024-05-25 | B04-V01~V08-1420, B03-V25~V32-1430 | 9d | 0d | Fence Fondations-Eastern side [8]; Fence Fondations-Westren side [8]; Fence Fondations-Back side [8] | 13,420.32 |
| B04-V01~V08-1440 |  | Steel Fixing & Carpentry For Fence Columns | 6d | 2024-05-26 | 2024-06-01 | B04-V01~V08-1430, B03-V25~V32-1440 | 9d | 0d |  |  |
| B04-V01~V08-1450 |  | Establishing Elec For Fence Columns | 4d | 2024-06-02 | 2024-06-05 | B04-V01~V08-1440, B03-V25~V32-1450 | 9d | 0d |  |  |
| B04-V01~V08-1460 |  | Pouring Concrete For Fence Columns | 1d | 2024-06-06 | 2024-06-06 | B04-V01~V08-1450, B03-V25~V32-1460 | 9d | 0d | Fence Columns-Eastern side [8]; Fence Columns-Westren side [8]; Fence Columns-Back side [8] | 9,665.04 |
| B04-V01~V08-1470 |  | Installation Precast Panel For Fence | 5d | 2024-06-08 | 2024-06-12 | B04-V01~V08-1460, B03-V25~V32-1470 | 9d | 0d | Hollow Core Walls [8] | 71,593.2 |
| B04-V01~V08-1480 |  | Bitumen Coating For Fence Fondations | 4d | 2024-06-13 | 2024-06-17 | B04-V01~V08-1470, B03-V25~V32-1480 | 9d | 0d |  |  |
| B04-V01~V08-1490 |  | Pouring Bedding Concrete For "Front" Fence Fondations | 1d | 2024-06-13 | 2024-06-13 | B04-V01~V08-1470, B03-V25~V32-1490 | 21d | 0d |  |  |
| B04-V01~V08-1500 |  | RC Concrete For "Front" Fence Fondations | 4d | 2024-06-15 | 2024-06-18 | B04-V01~V08-1490, B03-V25~V32-1500 | 21d | 0d | Front Fence Fondations [8] | 8,904.4 |
| B04-V01~V08-1510 |  | Outdoor Drainage & Water Line | 5d | 2024-06-18 | 2024-06-23 | B04-V01~V08-1480, B04-V01~V08-1140, B03-V25~V32-1510 | 9d | 0d | Outdoor Drainage [8]; Outdoor Water Line [8] | 13,423.68 |
| B04-V01~V08-1520 |  | Steel Fixing & Carpentry For "Front" Fence Columns | 4d | 2024-06-19 | 2024-06-23 | B04-V01~V08-1500, B03-V25~V32-1520 | 21d | 0d |  |  |
| B04-V01~V08-1530 |  | Establishing Elec For "Front" Fence Columns | 4d | 2024-06-24 | 2024-06-27 | B04-V01~V08-1520, B03-V25~V32-1530 | 21d | 0d |  |  |
| B04-V01~V08-1540 |  | Establishing Elec For Fence & Yard | 2d | 2024-06-24 | 2024-06-25 | B04-V01~V08-1510, B03-V25~V32-1540 | 9d | 0d | Elec Establishment Fence & Yard [8] | 17,898.32 |
| B04-V01~V08-1550 |  | Backfilling the Yard | 4d | 2024-06-26 | 2024-06-30 | B04-V01~V08-1540, B03-V25~V32-1550 | 9d | 0d | Backfilling the Yard [8] | 10,560 |
| B04-V01~V08-1560 |  | Pouring Concrete Wall Of "Front" Fence Columns | 2d | 2024-06-29 | 2024-06-30 | B04-V01~V08-1530, B03-V25~V32-1560 | 21d | 0d | Front Fence Walls [8] | 17,898.32 |
| B04-V01~V08-1570 |  | Pouring Concrete Crown Of "Front" Fence Columns | 3d | 2024-07-01 | 2024-07-03 | B04-V01~V08-1560, B03-V25~V32-1570 | 21d | 0d | Fence Columns - C Chanel [8] | 3,310.37 |
| B04-V01~V08-1580 |  | Bardoura Works For Yard | 5d | 2024-07-01 | 2024-07-06 | B04-V01~V08-1550, B03-V25~V32-1580 | 9d | 0d | Bardoura Works For Yard [8] | 14,408.16 |
| B04-V01~V08-1590 |  | Pouring Concrete Flower Basin Of "Front" Fence Columns | 4d | 2024-07-04 | 2024-07-08 | B04-V01~V08-1570, B03-V25~V32-1590 | 21d | 0d |  |  |
| B04-V01~V08-1600 |  | Antitermite Treatment For Yard | 1d | 2024-07-07 | 2024-07-07 | B04-V01~V08-1580, B03-V25~V32-1600 | 9d | 0d | Antitermite Treatment For Yard [8] |  |
| B04-V01~V08-1610 |  | Pouring Concrete For Yard | 1d | 2024-07-08 | 2024-07-08 | B04-V01~V08-1600, B03-V25~V32-1610 | 9d | 0d |  |  |
| B04-V01~V08-1620 |  | Block Work For Flower Basin | 5d | 2024-07-09 | 2024-07-14 | B04-V01~V08-1610, B03-V25~V32-1620 | 9d | 0d |  |  |
| B04-V01~V08-1630 |  | Plastering Work For Flower Basin | 4d | 2024-07-15 | 2024-07-18 | B04-V01~V08-1620, B03-V25~V32-1630 | 9d | 0d |  |  |
| B04-V01~V08-1640 |  | Interlock Works For The Yard | 6d | 2024-07-20 | 2024-07-25 | B04-V01~V08-1630, B03-V25~V32-1640 | 9d | 0d | Interlock Works For The Yard [8] | 36,776.32 |
| B04-V01~V08-1650 |  | External Grading Works For The Villa | 4d | 2024-07-27 | 2024-07-30 | B04-V01~V08-1640, B03-V25~V32-1650 | 11d | 0d | External Grading Works For The Villa [8] | 3,221.68 |
| B04-V01~V08-1660 |  | Installation The Exterior Door & Garage Door | 5d | 2024-07-27 | 2024-07-31 | B04-V01~V08-1640, B03-V25~V32-1660 | 14d | 2d | Installation The Exterior Door [8]; Installation The Exterior Garage Door [8] | 40,002.72 |
| B04-V01~V08-1670 |  | Fixing Floor Drain For The Yard | 2d | 2024-07-27 | 2024-07-28 | B04-V01~V08-1640, B03-V25~V32-1670 | 17d | 5d | Floor Drain & Clean Out [8] | 13,423.76 |
| B04-V01~V08-1680 |  | Granite Surronds Around The Villa | 4d | 2024-07-31 | 2024-08-04 | B04-V01~V08-1650, B03-V25~V32-1680 | 11d | 2d | Granite Surronds Around The Villa [8] | 25,818.32 |
| B04-V01~V08-1690 |  | Painting The Base Surface Of The Fence | 2d | 2024-07-31 | 2024-08-01 | B04-V01~V08-1750, B03-V25~V32-1690 | 9d | 0d |  |  |
| B04-V01~V08-1700 |  | Painting The Final Face Of The Fence | 4d | 2024-08-03 | 2024-08-06 | B04-V01~V08-1690, B03-V25~V32-1700 | 9d | 0d | Painting Final Face Of The Fence [8] | 37,586.48 |
| B04-V01~V08-1710 |  | Exterior Painting Of The Villa | 7d | 2024-08-07 | 2024-08-14 | B04-V01~V08-1680, B04-V01~V08-1700, B04-V01~V08-1660, B04-V01~V08-1670, B03-V25~V32-1710 | 9d | 0d | Exterior Painting Of The Villa [8]; Exterior Painting Staircase House [8] | 105,684.16 |
| B04-V01~V08-1720 |  | Installation Elec Fixtures & Accessories For The Yard | 4d | 2024-08-15 | 2024-08-19 | B04-V01~V08-1700, B04-V01~V08-1710, B03-V25~V32-1720 | 72d | 0d | Elec feeding panels GF & FF [8] | 22,372.88 |

| ID | WBS | Activity | Duration | Start | Finish | Predecessors | Total float | Free float | Resources | Cost | Department-1 |
| --- | --- | --- | --- | --- | --- | --- | --- | --- | --- | --- | --- |
|  | 5 | **External Sidewalk Works** |  | 2024-07-09 | 2024-08-24 |  |  |  |  |  |  |
| B04-V01~V08-1730 |  | Connection The Drain To The Piblic Network | 3d | 2024-07-09 | 2024-07-11 | B04-V01~V08-1510, B04-V01~V08-1590, B03-V25~V32-1730 | 21d | 4d | Connection Drain To The Piblic Network [8]; Connection Water To The Piblic Network [8] | 13,420.32 |  |
| B04-V01~V08-1740 |  | Pardora Works For The External Sidewalk | 2d | 2024-07-27 | 2024-07-28 | B04-V01~V08-1640, B04-V01~V08-1730, B03-V25~V32-1740 | 9d | 0d |  |  |  |
| B04-V01~V08-1750 |  | Interlock Works For The Exerrnal Sidewalk | 2d | 2024-07-29 | 2024-07-30 | B04-V01~V08-1740, B03-V25~V32-1750 | 9d | 0d |  |  |  |
| B04-V01~V08-1760 |  | Pulling The Villa's Main Elec Cable | 4d | 2024-08-20 | 2024-08-24 | B04-V01~V08-1750, B04-V01~V08-1720, B03-V25~V32-1760 | 72d | 0d | Elec Work Testing [8] | 22,819.84 |  |
|  | 6 | **Final Testing & Handover** |  | 2024-08-17 | 2024-09-11 |  |  |  |  |  |  |
| B04-V01~V08-1770 |  | Mech Work Testing & Handover | 5d | 2024-08-17 | 2024-08-21 | B04-V01~V08-1730, B04-V01~V08-1340, B04-V01~V08-1380, B03-V25~V32-1770 | 79d | 2d | Mech Work Testing & Handover [8] | 14,318.64 |  |
| B04-V01~V08-1780 |  | Arch Snaglist & Handover | 5d | 2024-08-22 | 2024-08-27 | B04-V01~V08-1750, B04-V01~V08-1710, B04-V01~V08-1400, B03-V25~V32-1780 | 74d | 2d | Arch Snaglist & Handover [8] | 77,320.64 |  |
| B04-V01~V08-1790 |  | ElecWork Testing & Handover | 5d | 2024-08-25 | 2024-08-29 | B04-V01~V08-1760, B04-V01~V08-1370, B03-V25~V32-1790 | 72d | 0d | Elec Work Handover [8] | 23,804.72 |  |
| B04-V01~V08-1800 |  | Final Handover Of The Villa To The Consltant | 5d | 2024-08-31 | 2024-09-04 | B04-V01~V08-1780, B04-V01~V08-1790, B04-V01~V08-1770, B04-V01~V08-1410, B03-V25~V32-1800 | 72d | 0d |  |  |  |
| B04-V01~V08-1810 |  | Customer Delivery | 6d | 2024-09-05 | 2024-09-11 | B04-V01~V08-1800, B03-V25~V32-1810 | 72d | 1d |  |  |  |
|  | 14 | **B04-V09~V16** |  | 2024-03-18 | 2024-09-19 |  |  |  |  |  |  |
|  | 2 | **Under Grond Slap Works** |  | 2024-03-18 | 2024-04-27 |  |  |  |  |  |  |
| B04-V09~V16-1000 |  | Excavation&Compaction of Fondation | 6d | 2024-03-18 | 2024-03-24 | B04-V01~V08-1000 | 16d | 0d | Clearing & Groubbing [8]; Excavation & Leveling [8]; Stone Layer [8]; A3 Layer [8]; A1-a 1st Layer [8]; A1-a 2ed Layer [8] | 163,545.76 | Civil |
| B04-V09~V16-1010 |  | Pouring Concrete For Bedding | 2d | 2024-03-25 | 2024-03-26 | B04-V09~V16-1000, B04-V01~V08-1010 | 16d | 0d | PC Carpentry [8]; PC Concrete [8]; RC 18 MPA [9 M3] | 37,899.68 | Civil |
| B04-V09~V16-1020 |  | Reinforcement Concrete For Foundation | 5d | 2024-03-27 | 2024-04-01 | B04-V09~V16-1010, B04-V01~V08-1020 | 16d | 0d | RC Foundation Carpentry [8]; RC Foundation Steel [8]; RC Foundation Concrete [8] | 201,355.92 | Civil |
| B04-V09~V16-1030 |  | Steel Fixing& Carpenter work for Beams | 4d | 2024-04-02 | 2024-04-06 | B04-V09~V16-1020, B04-V01~V08-1030 | 16d | 0d | RC Grade Beam Carpentry & Steel [8] | 44,745.76 | Civil |
| B04-V09~V16-1040 |  | Mech&Elec Establishment for Beams | 3d | 2024-04-07 | 2024-04-09 | B04-V09~V16-1030, B04-V01~V08-1040 | 16d | 0d |  |  | Mech |
| B04-V09~V16-1050 |  | Pouring Concrete For Beams | 1d | 2024-04-10 | 2024-04-10 | B04-V09~V16-1040, B04-V01~V08-1050 | 16d | 0d | RC Grade Beam Concrete [8] | 77,141.68 | Civil |
| B04-V09~V16-1060 |  | Bitmen Coating For Fondation&Beams | 3d | 2024-04-11 | 2024-04-14 | B04-V09~V16-1050, B04-V01~V08-1060 | 16d | 0d | Bitumen Coating Foundations & Grade Beams [8] | 22,372.32 | Civil |
| B04-V09~V16-1070 |  | Backfilling Inside Fondations | 4d | 2024-04-15 | 2024-04-18 | B04-V09~V16-1060, B04-V01~V08-1070 | 16d | 0d | Backfilling 1st Layer [8]; Backfilling 2ed Layer [8] | 11,186.4 | Civil |
| B04-V09~V16-1080 |  | Mech Works Under Grond Slap | 3d | 2024-04-20 | 2024-04-22 | B04-V09~V16-1070, B04-V01~V08-1080 | 16d | 0d | Mech Establishment Under Ground Slap [8] | 13,423.42 | Mech |
| B04-V09~V16-1090 |  | Steel Fixing& Carpenter work for Ground Slap | 3d | 2024-04-23 | 2024-04-25 | B04-V09~V16-1080, B04-V01~V08-1090 | 16d | 0d | Steel & Carpentry For Ground Slap [8] | 10,246.54 | Civil |
| B04-V09~V16-1100 |  | Anti Termite Treatment For Ground Slap | 1d | 2024-04-27 | 2024-04-27 | B04-V09~V16-1090, B04-V01~V08-1100 | 16d | 0d | Anti Termite Treatment nder Ground Slap [8] | 2,237.28 | Civil |
| B04-V09~V16-1110 |  | Pouring Concrete For Ground Slap | 1d | 2024-04-27 | 2024-04-27 | B04-V09~V16-1100 FF, B04-V09~V16-1090, B04-V01~V08-1110 | 16d | 5d | Concrete For Ground Slap [8] | 58,169.52 | Civil |

| ID | WBS | Activity | Duration | Start | Finish | Predecessors | Total float | Free float | Resources | Cost | Department-1 |
| --- | --- | --- | --- | --- | --- | --- | --- | --- | --- | --- | --- |
|  | 4 | **Precast Works** |  | 2024-05-16 | 2024-05-23 |  |  |  |  |  |  |
| B04-V09~V16-1120 |  | Precast Constrction | 7d | 2024-05-16 | 2024-05-23 | B04-V09~V16-1110, B04-V01~V08-1120 | 0d |  | Precast Walls GF [8]; Hollow Core Slap GF [8]; Precast Stairs & staircase House [8]; Thermal insollation Outside Walls [8]; Concrete structure joints [8]; Precast Walls FF [8]; Hollow Core Slap FF [8] | 1,513,762.87 | Civil |
|  | 1 | **Works Inside The Villa** |  | 2024-05-25 | 2024-09-07 |  |  |  |  |  |  |
| B04-V09~V16-1130 |  | Block Work For GF & Estabishment 1F | 6d | 2024-05-25 | 2024-05-30 | B04-V09~V16-1120, B04-V01~V08-1130 | 13d | 0d | Block GF [8] | 13,647.1 | Arc |
| B04-V09~V16-1140 |  | L.L & H.L Drainage | 6d | 2024-06-01 | 2024-06-06 | B04-V09~V16-1130, B04-V01~V08-1140 | 13d | 0d | HL Drainage [8]; L.L Drainage [8] | 89,489.28 | Mech |
| B04-V09~V16-1150 |  | Elec Establishment For GF & 1F | 3d | 2024-06-01 | 2024-06-03 | B04-V09~V16-1130, B04-V01~V08-1150 | 16d | 3d | Elec Establishment GF [8] | 26,840.73 | Elec |
| B04-V09~V16-1160 |  | Screed Work For 1F & Roof | 6d | 2024-06-08 | 2024-06-13 | B04-V09~V16-1140, B04-V09~V16-1150, B04-V01~V08-1160 | 13d | 0d | Screed 1st Floor [8]; Screed Roof Floor [8]; Leveling Screed 1st Floor [8]; Leveling Screed Roof Floor [8] | 268,467.85 | Civil |
| B04-V09~V16-1170 |  | Water Tank & Heater Foundations | 4d | 2024-06-15 | 2024-06-18 | B04-V09~V16-1160, B04-V01~V08-1170 | 17d | 0d |  |  | Civil |
| B04-V09~V16-1180 |  | Block Works For 1F | 3d | 2024-06-15 | 2024-06-17 | B04-V09~V16-1160, B04-V01~V08-1180 | 13d | 0d | Block FF [8] | 20,537.81 | Arc |
| B04-V09~V16-1190 |  | Water Line Network | 6d | 2024-06-18 | 2024-06-24 | B04-V09~V16-1180, B04-V01~V08-1190 | 13d | 0d | Water Line Network [8] | 40,261.13 | Mech |
| B04-V09~V16-1200 |  | Continue Elec Establishment For GF & 1F | 3d | 2024-06-18 | 2024-06-20 | B04-V09~V16-1180, B04-V01~V08-1200 | 16d | 3d | Elec Establishment FF [8] | 26,840.73 | Elec |
| B04-V09~V16-1210 |  | Thermal Insulation For Roof | 5d | 2024-06-19 | 2024-06-24 | B04-V09~V16-1170, B04-V01~V08-1210 | 17d | 0d | Roof Insulation [8] | 32,530.16 | Arc |
| B04-V09~V16-1220 |  | Roof Floor Tiles | 6d | 2024-06-25 | 2024-07-01 | B04-V09~V16-1210, B04-V01~V08-1220 | 17d | 1d | Roof Tiles [8]; Roof Tiles Joints [8]; Re_Test Roof Insulation [8] | 63,179.38 | Arc |
| B04-V09~V16-1230 |  | Plaster Work For Villa | 6d | 2024-06-25 | 2024-07-01 | B04-V09~V16-1190, B04-V09~V16-1200, B04-V01~V08-1230 | 13d | 0d | Establishing a plastering GF [8]; Establishing a plastering FF [8]; Plastering GF [8]; Plastering FF [8] | 49,263.81 |  |
| B04-V09~V16-1240 |  | Marbale Stairs & Handrails | 6d | 2024-07-02 | 2024-07-08 | B04-V09~V16-1230, B04-V01~V08-1240 | 35d | 1d | Marbale Stairs [8]; Stairs Handrails SS [8] | 91,494.69 |  |
| B04-V09~V16-1250 |  | Water Proofing Of Bathrooms | 4d | 2024-07-02 | 2024-07-06 | B04-V09~V16-1230, B04-V01~V08-1250 | 13d | 0d | Bathrooms InsulationGF & FF [8] | 134.24 |  |
| B04-V09~V16-1260 |  | Pulling The Elec Wires | 4d | 2024-07-02 | 2024-07-06 | B04-V09~V16-1230, B04-V01~V08-1260 | 23d | 3d | Elec Wires GF [8]; Elec Wires FF [8] | 80,542.4 |  |
| B04-V09~V16-1270 |  | Bathroom Tiles | 4d | 2024-07-07 | 2024-07-10 | B04-V09~V16-1250, B04-V09~V16-1220, B04-V01~V08-1270 | 13d | 0d | Ceramic Walls Kitchen [8]; Ceramic Walls Bathrooms GF [8]; Ceramic Walls Bathrooms FF [8]; Ceramic Tiles Bathrooms GF [8]; Ceramic Tiles Kitchen GF [8]; Ceramic Tiles Store GF [8] | 73,204.08 |  |
| B04-V09~V16-1280 |  | Structure For Gypsum | 6d | 2024-07-11 | 2024-07-17 | B04-V09~V16-1270, B04-V01~V08-1280 | 13d | 0d | Structure For Gypsum GF Rooms [8]; Structure For Gypsum FF Rooms [8]; Structure For Gypsum Bathrooms & Kitchen [8] | 33,550.81 |  |
| B04-V09~V16-1290 |  | Gypsum Board For Room | 4d | 2024-07-18 | 2024-07-22 | B04-V09~V16-1280, B04-V09~V16-1260, B04-V01~V08-1290 | 13d | 0d | Gypsum Board For GF Room [8]; Gypsum Board For FF Room [8] | 35,796.64 |  |
| B04-V09~V16-1300 |  | Installation Of Gypsum Board For Bathroom & Kitchen | 4d | 2024-07-23 | 2024-07-27 | B04-V09~V16-1290, B04-V01~V08-1300 | 13d | 0d | Gypsum Board For Bathrooms & Kitchen [8] | 11,052.24 |  |
| B04-V09~V16-1310 |  | Putty Filler For Gypsm Board Ceiling | 6d | 2024-07-28 | 2024-08-03 | B04-V09~V16-1300, B04-V01~V08-1310 | 13d | 0d | Putty Filler 1st Layer Roof all Rooms [8]; Putty Filler 1st Layer Roof all Bathrooms & Kitchen [8]; Putty Filler1st Layer walls [8] | 62,182.52 |  |
| B04-V09~V16-1320 |  | Fixing Shower Glass | 4d | 2024-08-04 | 2024-08-07 | B04-V09~V16-1310, B04-V01~V08-1320 | 21d | 0d | Shower Glass [8] | 22,372.88 |  |
| B04-V09~V16-1330 |  | Interior Wall Putty Filler | 6d | 2024-08-04 | 2024-08-10 | B04-V09~V16-1310, B04-V09~V16-1240, B04-V01~V08-1330 | 13d | 0d | Putty Filler 2ed Layer Roof & WAlls GF [8]; Putty Filler 2ed Layer Roof & WAlls FF [8] | 62,150.21 |  |
| B04-V09~V16-1340 |  | Installation Of Sanitry Fixture | 7d | 2024-08-08 | 2024-08-15 | B04-V09~V16-1320, B04-V01~V08-1340 | 21d | 0d | Mech Fixtures & Accessories [8] | 98,435.64 |  |
| B04-V09~V16-1350 |  | 1st Face Paint | 6d | 2024-08-11 | 2024-08-17 | B04-V09~V16-1330, B04-V01~V08-1350 | 13d | 0d |  |  |  |
| B04-V09~V16-1360 |  | Installation Of Aluminum Windows | 7d | 2024-08-11 | 2024-08-18 | B04-V09~V16-1330, B04-V01~V08-1360 | 23d | 0d | Aluminum Windows [8] | 84,795.68 |  |
| B04-V09~V16-1370 |  | Installation Of Elec Fixture & Accessories | 7d | 2024-08-11 | 2024-08-18 | B04-V09~V16-1310, B04-V09~V16-1330, B04-V09~V16-1260, B04-V01~V08-1370 | 37d | 0d | Elec Fixtures & Accessories Villa & Yard [8]; Elec Cables GF & FF & Earthing [8] | 53,692.2 |  |
| B04-V09~V16-1380 |  | Installation Of Water Tank-Heater & Pumps | 7d | 2024-08-17 | 2024-08-24 | B04-V09~V16-1340, B04-V01~V08-1380, B04-V09~V16-1220 | 21d | 0d | Water Tank & booster Pump [8]; Lower Pump [8]; Heater [8] | 129,756.23 |  |
| B04-V09~V16-1390 |  | Installation Of Parquet | 4d | 2024-08-18 | 2024-08-21 | B04-V09~V16-1350, B04-V01~V08-1390 | 13d | 0d | Installation Of Parquet [8] | 52,978.96 |  |
| B04-V09~V16-1400 |  | Installation Of Wooden Doors | 7d | 2024-08-22 | 2024-08-29 | B04-V09~V16-1390, B04-V01~V08-1400 | 13d | 0d | Wooden Doors Kitchen & Bathroom without Accessories [8]; Wooden Doors Accessories all Villa [8]; Exterior Wooden Doors [8] | 142,105.45 |  |
| B04-V09~V16-1410 |  | Final Face Paint | 7d | 2024-08-31 | 2024-09-07 | B04-V09~V16-1360, B04-V09~V16-1400, B04-V01~V08-1410 | 13d | 0d | Final Face Paint Villa [8] | 31,096.77 |  |

| ID | WBS | Activity | Duration | Start | Finish | Predecessors | Total float | Free float | Resources | Cost |
| --- | --- | --- | --- | --- | --- | --- | --- | --- | --- | --- |
|  | 3 | **Fence & Courtyard Works** |  | 2024-05-25 | 2024-08-27 |  |  |  |  |  |
| B04-V09~V16-1420 |  | Pouring Bedding Concrete For Fence Fondations | 2d | 2024-05-25 | 2024-05-26 | B04-V09~V16-1120, B04-V01~V08-1420 | 9d | 0d | Excavation Fence Foundations [8] | 4,519.28 |
| B04-V09~V16-1430 |  | RC Concrete For Fence Fondations | 6d | 2024-05-27 | 2024-06-02 | B04-V09~V16-1420, B04-V01~V08-1430 | 9d | 0d | Fence Fondations-Eastern side [8]; Fence Fondations-Westren side [8]; Fence Fondations-Back side [8] | 13,420.32 |
| B04-V09~V16-1440 |  | Steel Fixing & Carpentry For Fence Columns | 6d | 2024-06-03 | 2024-06-09 | B04-V09~V16-1430, B04-V01~V08-1440 | 9d | 0d |  |  |
| B04-V09~V16-1450 |  | Establishing Elec For Fence Columns | 4d | 2024-06-10 | 2024-06-13 | B04-V09~V16-1440, B04-V01~V08-1450 | 9d | 0d |  |  |
| B04-V09~V16-1460 |  | Pouring Concrete For Fence Columns | 1d | 2024-06-15 | 2024-06-15 | B04-V09~V16-1450, B04-V01~V08-1460 | 9d | 0d | Fence Columns-Eastern side [8]; Fence Columns-Westren side [8]; Fence Columns-Back side [8] | 9,665.04 |
| B04-V09~V16-1470 |  | Installation Precast Panel For Fence | 5d | 2024-06-16 | 2024-06-20 | B04-V09~V16-1460, B04-V01~V08-1470 | 9d | 0d | Hollow Core Walls [8] | 71,593.2 |
| B04-V09~V16-1480 |  | Bitumen Coating For Fence Fondations | 4d | 2024-06-22 | 2024-06-25 | B04-V09~V16-1470, B04-V01~V08-1480 | 9d | 0d |  |  |
| B04-V09~V16-1490 |  | Pouring Bedding Concrete For "Front" Fence Fondations | 1d | 2024-06-22 | 2024-06-22 | B04-V09~V16-1470, B04-V01~V08-1490 | 21d | 0d |  |  |
| B04-V09~V16-1500 |  | RC Concrete For "Front" Fence Fondations | 4d | 2024-06-23 | 2024-06-26 | B04-V09~V16-1490, B04-V01~V08-1500 | 21d | 0d | Front Fence Fondations [8] | 8,904.4 |
| B04-V09~V16-1510 |  | Outdoor Drainage & Water Line | 5d | 2024-06-26 | 2024-07-01 | B04-V09~V16-1480, B04-V09~V16-1140, B04-V01~V08-1510 | 9d | 0d | Outdoor Drainage [8]; Outdoor Water Line [8] | 13,423.68 |
| B04-V09~V16-1520 |  | Steel Fixing & Carpentry For "Front" Fence Columns | 4d | 2024-06-27 | 2024-07-01 | B04-V09~V16-1500, B04-V01~V08-1520 | 21d | 0d |  |  |
| B04-V09~V16-1530 |  | Establishing Elec For "Front" Fence Columns | 4d | 2024-07-02 | 2024-07-06 | B04-V09~V16-1520, B04-V01~V08-1530 | 21d | 0d |  |  |
| B04-V09~V16-1540 |  | Establishing Elec For Fence & Yard | 2d | 2024-07-02 | 2024-07-03 | B04-V09~V16-1510, B04-V01~V08-1540 | 9d | 0d | Elec Establishment Fence & Yard [8] | 17,898.32 |
| B04-V09~V16-1550 |  | Backfilling the Yard | 4d | 2024-07-04 | 2024-07-08 | B04-V09~V16-1540, B04-V01~V08-1550 | 9d | 0d | Backfilling the Yard [8] | 10,560 |
| B04-V09~V16-1560 |  | Pouring Concrete Wall Of "Front" Fence Columns | 2d | 2024-07-07 | 2024-07-08 | B04-V09~V16-1530, B04-V01~V08-1560 | 21d | 0d | Front Fence Walls [8] | 17,898.32 |
| B04-V09~V16-1570 |  | Pouring Concrete Crown Of "Front" Fence Columns | 3d | 2024-07-09 | 2024-07-11 | B04-V09~V16-1560, B04-V01~V08-1570 | 21d | 0d | Fence Columns - C Chanel [8] | 3,310.37 |
| B04-V09~V16-1580 |  | Bardoura Works For Yard | 5d | 2024-07-09 | 2024-07-14 | B04-V09~V16-1550, B04-V01~V08-1580 | 9d | 0d | Bardoura Works For Yard [8] | 14,408.16 |
| B04-V09~V16-1590 |  | Pouring Concrete Flower Basin Of "Front" Fence Columns | 4d | 2024-07-13 | 2024-07-16 | B04-V09~V16-1570, B04-V01~V08-1590 | 21d | 0d |  |  |
| B04-V09~V16-1600 |  | Antitermite Treatment For Yard | 1d | 2024-07-15 | 2024-07-15 | B04-V09~V16-1580, B04-V01~V08-1600 | 9d | 0d | Antitermite Treatment For Yard [8] |  |
| B04-V09~V16-1610 |  | Pouring Concrete For Yard | 1d | 2024-07-16 | 2024-07-16 | B04-V09~V16-1600, B04-V01~V08-1610 | 9d | 0d |  |  |
| B04-V09~V16-1620 |  | Block Work For Flower Basin | 5d | 2024-07-17 | 2024-07-22 | B04-V09~V16-1610, B04-V01~V08-1620 | 9d | 0d |  |  |
| B04-V09~V16-1630 |  | Plastering Work For Flower Basin | 4d | 2024-07-23 | 2024-07-27 | B04-V09~V16-1620, B04-V01~V08-1630 | 9d | 0d |  |  |
| B04-V09~V16-1640 |  | Interlock Works For The Yard | 6d | 2024-07-28 | 2024-08-03 | B04-V09~V16-1630, B04-V01~V08-1640 | 9d | 0d | Interlock Works For The Yard [8] | 36,776.32 |
| B04-V09~V16-1650 |  | External Grading Works For The Villa | 4d | 2024-08-04 | 2024-08-07 | B04-V09~V16-1640, B04-V01~V08-1650 | 11d | 0d | External Grading Works For The Villa [8] | 3,221.68 |
| B04-V09~V16-1660 |  | Installation The Exterior Door & Garage Door | 5d | 2024-08-04 | 2024-08-08 | B04-V09~V16-1640, B04-V01~V08-1660 | 14d | 2d | Installation The Exterior Door [8]; Installation The Exterior Garage Door [8] | 40,002.72 |
| B04-V09~V16-1670 |  | Fixing Floor Drain For The Yard | 2d | 2024-08-04 | 2024-08-05 | B04-V09~V16-1640, B04-V01~V08-1670 | 17d | 5d | Floor Drain & Clean Out [8] | 13,423.76 |
| B04-V09~V16-1680 |  | Granite Surronds Around The Villa | 4d | 2024-08-08 | 2024-08-12 | B04-V09~V16-1650, B04-V01~V08-1680 | 11d | 2d | Granite Surronds Around The Villa [8] | 25,818.32 |
| B04-V09~V16-1690 |  | Painting The Base Surface Of The Fence | 2d | 2024-08-08 | 2024-08-10 | B04-V09~V16-1750, B04-V01~V08-1690 | 9d | 0d |  |  |
| B04-V09~V16-1700 |  | Painting The Final Face Of The Fence | 4d | 2024-08-11 | 2024-08-14 | B04-V09~V16-1690, B04-V01~V08-1700 | 9d | 0d | Painting Final Face Of The Fence [8] | 37,586.48 |
| B04-V09~V16-1710 |  | Exterior Painting Of The Villa | 7d | 2024-08-15 | 2024-08-22 | B04-V09~V16-1680, B04-V09~V16-1700, B04-V09~V16-1660, B04-V09~V16-1670, B04-V01~V08-1710 | 9d | 0d | Exterior Painting Of The Villa [8]; Exterior Painting Staircase House [8] | 105,684.16 |
| B04-V09~V16-1720 |  | Installation Elec Fixtures & Accessories For The Yard | 4d | 2024-08-24 | 2024-08-27 | B04-V09~V16-1700, B04-V09~V16-1710, B04-V01~V08-1720 | 71d | 0d | Elec feeding panels GF & FF [8] | 22,372.88 |

| ID | WBS | Activity | Duration | Start | Finish | Predecessors | Total float | Free float | Resources | Cost | Department-1 |
| --- | --- | --- | --- | --- | --- | --- | --- | --- | --- | --- | --- |
|  | 5 | **External Sidewalk Works** |  | 2024-07-17 | 2024-09-01 |  |  |  |  |  |  |
| B04-V09~V16-1730 |  | Connection The Drain To The Piblic Network | 3d | 2024-07-17 | 2024-07-20 | B04-V09~V16-1510, B04-V09~V16-1590, B04-V01~V08-1730 | 21d | 4d | Connection Drain To The Piblic Network [8]; Connection Water To The Piblic Network [8] | 13,420.32 |  |
| B04-V09~V16-1740 |  | Pardora Works For The External Sidewalk | 2d | 2024-08-04 | 2024-08-05 | B04-V09~V16-1640, B04-V09~V16-1730, B04-V01~V08-1740 | 9d | 0d |  |  |  |
| B04-V09~V16-1750 |  | Interlock Works For The Exerrnal Sidewalk | 2d | 2024-08-06 | 2024-08-07 | B04-V09~V16-1740, B04-V01~V08-1750 | 9d | 0d |  |  |  |
| B04-V09~V16-1760 |  | Pulling The Villa's Main Elec Cable | 4d | 2024-08-28 | 2024-09-01 | B04-V09~V16-1750, B04-V09~V16-1720, B04-V01~V08-1760 | 71d | 0d | Elec Work Testing [8] | 22,819.84 |  |
|  | 6 | **Final Testing & Handover** |  | 2024-08-25 | 2024-09-19 |  |  |  |  |  |  |
| B04-V09~V16-1770 |  | Mech Work Testing & Handover | 5d | 2024-08-25 | 2024-08-29 | B04-V09~V16-1730, B04-V09~V16-1340, B04-V09~V16-1380, B04-V01~V08-1770 | 78d | 2d | Mech Work Testing & Handover [8] | 14,318.64 |  |
| B04-V09~V16-1780 |  | Arch Snaglist & Handover | 5d | 2024-08-31 | 2024-09-04 | B04-V09~V16-1750, B04-V09~V16-1710, B04-V09~V16-1400, B04-V01~V08-1780 | 73d | 2d | Arch Snaglist & Handover [8] | 77,320.64 |  |
| B04-V09~V16-1790 |  | ElecWork Testing & Handover | 5d | 2024-09-02 | 2024-09-07 | B04-V09~V16-1760, B04-V09~V16-1370, B04-V01~V08-1790 | 71d | 0d | Elec Work Handover [8] | 23,804.72 |  |
| B04-V09~V16-1800 |  | Final Handover Of The Villa To The Consltant | 5d | 2024-09-08 | 2024-09-12 | B04-V09~V16-1780, B04-V09~V16-1790, B04-V09~V16-1770, B04-V09~V16-1410, B04-V01~V08-1800 | 71d | 0d |  |  |  |
| B04-V09~V16-1810 |  | Customer Delivery | 6d | 2024-09-14 | 2024-09-19 | B04-V09~V16-1800, B04-V01~V08-1810 | 71d | 1d |  |  |  |
|  | 15 | **B04-V17~V24** |  | 2024-03-25 | 2024-09-28 |  |  |  |  |  |  |
|  | 2 | **Under Grond Slap Works** |  | 2024-03-25 | 2024-05-04 |  |  |  |  |  |  |
| B04-V17~V24-1000 |  | Excavation&Compaction of Fondation | 6d | 2024-03-25 | 2024-03-31 | B04-V09~V16-1000 | 17d | 0d | Clearing & Groubbing [8]; Excavation & Leveling [8]; Stone Layer [8]; A3 Layer [8]; A1-a 1st Layer [8]; A1-a 2ed Layer [8] | 163,545.76 | Civil |
| B04-V17~V24-1010 |  | Pouring Concrete For Bedding | 2d | 2024-04-01 | 2024-04-02 | B04-V17~V24-1000, B04-V09~V16-1010 | 17d | 0d | PC Carpentry [8]; PC Concrete [8]; RC 18 MPA [9 M3] | 37,899.68 | Civil |
| B04-V17~V24-1020 |  | Reinforcement Concrete For Foundation | 5d | 2024-04-03 | 2024-04-08 | B04-V17~V24-1010, B04-V09~V16-1020 | 17d | 0d | RC Foundation Carpentry [8]; RC Foundation Steel [8]; RC Foundation Concrete [8] | 201,355.92 | Civil |
| B04-V17~V24-1030 |  | Steel Fixing& Carpenter work for Beams | 4d | 2024-04-09 | 2024-04-13 | B04-V17~V24-1020, B04-V09~V16-1030 | 17d | 0d | RC Grade Beam Carpentry & Steel [8] | 44,745.76 | Civil |
| B04-V17~V24-1040 |  | Mech&Elec Establishment for Beams | 3d | 2024-04-14 | 2024-04-16 | B04-V17~V24-1030, B04-V09~V16-1040 | 17d | 0d |  |  | Mech |
| B04-V17~V24-1050 |  | Pouring Concrete For Beams | 1d | 2024-04-17 | 2024-04-17 | B04-V17~V24-1040, B04-V09~V16-1050 | 17d | 0d | RC Grade Beam Concrete [8] | 77,141.68 | Civil |
| B04-V17~V24-1060 |  | Bitmen Coating For Fondation&Beams | 3d | 2024-04-18 | 2024-04-21 | B04-V17~V24-1050, B04-V09~V16-1060 | 17d | 0d | Bitumen Coating Foundations & Grade Beams [8] | 22,372.32 | Civil |
| B04-V17~V24-1070 |  | Backfilling Inside Fondations | 4d | 2024-04-22 | 2024-04-25 | B04-V17~V24-1060, B04-V09~V16-1070 | 17d | 0d | Backfilling 1st Layer [8]; Backfilling 2ed Layer [8] | 11,186.4 | Civil |
| B04-V17~V24-1080 |  | Mech Works Under Grond Slap | 3d | 2024-04-27 | 2024-04-29 | B04-V17~V24-1070, B04-V09~V16-1080 | 17d | 0d | Mech Establishment Under Ground Slap [8] | 13,423.42 | Mech |
| B04-V17~V24-1090 |  | Steel Fixing& Carpenter work for Ground Slap | 3d | 2024-04-30 | 2024-05-02 | B04-V17~V24-1080, B04-V09~V16-1090 | 17d | 0d | Steel & Carpentry For Ground Slap [8] | 10,246.54 | Civil |
| B04-V17~V24-1100 |  | Anti Termite Treatment For Ground Slap | 1d | 2024-05-04 | 2024-05-04 | B04-V17~V24-1090, B04-V09~V16-1100 | 17d | 0d | Anti Termite Treatment nder Ground Slap [8] | 2,237.28 | Civil |
| B04-V17~V24-1110 |  | Pouring Concrete For Ground Slap | 1d | 2024-05-04 | 2024-05-04 | B04-V17~V24-1100 FF, B04-V17~V24-1090, B04-V09~V16-1110 | 17d | 5d | Concrete For Ground Slap [8] | 58,169.52 | Civil |

| ID | WBS | Activity | Duration | Start | Finish | Predecessors | Total float | Free float | Resources | Cost | Department-1 |
| --- | --- | --- | --- | --- | --- | --- | --- | --- | --- | --- | --- |
|  | 4 | **Precast Works** |  | 2024-05-25 | 2024-06-01 |  |  |  |  |  |  |
| B04-V17~V24-1120 |  | Precast Constrction | 7d | 2024-05-25 | 2024-06-01 | B04-V17~V24-1110, B04-V09~V16-1120 | 0d |  | Precast Walls GF [8]; Hollow Core Slap GF [8]; Precast Stairs & staircase House [8]; Thermal insollation Outside Walls [8]; Concrete structure joints [8]; Precast Walls FF [8]; Hollow Core Slap FF [8] | 1,513,762.87 | Civil |
|  | 1 | **Works Inside The Villa** |  | 2024-06-02 | 2024-09-15 |  |  |  |  |  |  |
| B04-V17~V24-1130 |  | Block Work For GF & Estabishment 1F | 6d | 2024-06-02 | 2024-06-08 | B04-V17~V24-1120, B04-V09~V16-1130 | 13d | 0d | Block GF [8] | 13,647.1 | Arc |
| B04-V17~V24-1140 |  | L.L & H.L Drainage | 6d | 2024-06-09 | 2024-06-15 | B04-V17~V24-1130, B04-V09~V16-1140 | 13d | 0d | HL Drainage [8]; L.L Drainage [8] | 89,489.28 | Mech |
| B04-V17~V24-1150 |  | Elec Establishment For GF & 1F | 3d | 2024-06-09 | 2024-06-11 | B04-V17~V24-1130, B04-V09~V16-1150 | 16d | 3d | Elec Establishment GF [8] | 26,840.73 | Elec |
| B04-V17~V24-1160 |  | Screed Work For 1F & Roof | 6d | 2024-06-16 | 2024-06-22 | B04-V17~V24-1140, B04-V17~V24-1150, B04-V09~V16-1160 | 13d | 0d | Screed 1st Floor [8]; Screed Roof Floor [8]; Leveling Screed 1st Floor [8]; Leveling Screed Roof Floor [8] | 268,467.85 | Civil |
| B04-V17~V24-1170 |  | Water Tank & Heater Foundations | 4d | 2024-06-23 | 2024-06-26 | B04-V17~V24-1160, B04-V09~V16-1170 | 17d | 0d |  |  | Civil |
| B04-V17~V24-1180 |  | Block Works For 1F | 3d | 2024-06-23 | 2024-06-25 | B04-V17~V24-1160, B04-V09~V16-1180 | 13d | 0d | Block FF [8] | 20,537.81 | Arc |
| B04-V17~V24-1190 |  | Water Line Network | 6d | 2024-06-26 | 2024-07-02 | B04-V17~V24-1180, B04-V09~V16-1190 | 13d | 0d | Water Line Network [8] | 40,261.13 | Mech |
| B04-V17~V24-1200 |  | Continue Elec Establishment For GF & 1F | 3d | 2024-06-26 | 2024-06-29 | B04-V17~V24-1180, B04-V09~V16-1200 | 16d | 3d | Elec Establishment FF [8] | 26,840.73 | Elec |
| B04-V17~V24-1210 |  | Thermal Insulation For Roof | 5d | 2024-06-27 | 2024-07-02 | B04-V17~V24-1170, B04-V09~V16-1210 | 17d | 0d | Roof Insulation [8] | 32,530.16 | Arc |
| B04-V17~V24-1220 |  | Roof Floor Tiles | 6d | 2024-07-03 | 2024-07-09 | B04-V17~V24-1210, B04-V09~V16-1220 | 17d | 1d | Roof Tiles [8]; Roof Tiles Joints [8]; Re_Test Roof Insulation [8] | 63,179.38 | Arc |
| B04-V17~V24-1230 |  | Plaster Work For Villa | 6d | 2024-07-03 | 2024-07-09 | B04-V17~V24-1190, B04-V17~V24-1200, B04-V09~V16-1230 | 13d | 0d | Establishing a plastering GF [8]; Establishing a plastering FF [8]; Plastering GF [8]; Plastering FF [8] | 49,263.81 |  |
| B04-V17~V24-1240 |  | Marbale Stairs & Handrails | 6d | 2024-07-10 | 2024-07-16 | B04-V17~V24-1230, B04-V09~V16-1240 | 35d | 1d | Marbale Stairs [8]; Stairs Handrails SS [8] | 91,494.69 |  |
| B04-V17~V24-1250 |  | Water Proofing Of Bathrooms | 4d | 2024-07-10 | 2024-07-14 | B04-V17~V24-1230, B04-V09~V16-1250 | 13d | 0d | Bathrooms InsulationGF & FF [8] | 134.24 |  |
| B04-V17~V24-1260 |  | Pulling The Elec Wires | 4d | 2024-07-10 | 2024-07-14 | B04-V17~V24-1230, B04-V09~V16-1260 | 23d | 3d | Elec Wires GF [8]; Elec Wires FF [8] | 80,542.4 |  |
| B04-V17~V24-1270 |  | Bathroom Tiles | 4d | 2024-07-15 | 2024-07-18 | B04-V17~V24-1250, B04-V17~V24-1220, B04-V09~V16-1270 | 13d | 0d | Ceramic Walls Kitchen [8]; Ceramic Walls Bathrooms GF [8]; Ceramic Walls Bathrooms FF [8]; Ceramic Tiles Bathrooms GF [8]; Ceramic Tiles Kitchen GF [8]; Ceramic Tiles Store GF [8] | 73,204.08 |  |
| B04-V17~V24-1280 |  | Structure For Gypsum | 6d | 2024-07-20 | 2024-07-25 | B04-V17~V24-1270, B04-V09~V16-1280 | 13d | 0d | Structure For Gypsum GF Rooms [8]; Structure For Gypsum FF Rooms [8]; Structure For Gypsum Bathrooms & Kitchen [8] | 33,550.81 |  |
| B04-V17~V24-1290 |  | Gypsum Board For Room | 4d | 2024-07-27 | 2024-07-30 | B04-V17~V24-1280, B04-V17~V24-1260, B04-V09~V16-1290 | 13d | 0d | Gypsum Board For GF Room [8]; Gypsum Board For FF Room [8] | 35,796.64 |  |
| B04-V17~V24-1300 |  | Installation Of Gypsum Board For Bathroom & Kitchen | 4d | 2024-07-31 | 2024-08-04 | B04-V17~V24-1290, B04-V09~V16-1300 | 13d | 0d | Gypsum Board For Bathrooms & Kitchen [8] | 11,052.24 |  |
| B04-V17~V24-1310 |  | Putty Filler For Gypsm Board Ceiling | 6d | 2024-08-05 | 2024-08-11 | B04-V17~V24-1300, B04-V09~V16-1310 | 13d | 0d | Putty Filler 1st Layer Roof all Rooms [8]; Putty Filler 1st Layer Roof all Bathrooms & Kitchen [8]; Putty Filler1st Layer walls [8] | 62,182.52 |  |
| B04-V17~V24-1320 |  | Fixing Shower Glass | 4d | 2024-08-12 | 2024-08-15 | B04-V17~V24-1310, B04-V09~V16-1320 | 21d | 0d | Shower Glass [8] | 22,372.88 |  |
| B04-V17~V24-1330 |  | Interior Wall Putty Filler | 6d | 2024-08-12 | 2024-08-18 | B04-V17~V24-1310, B04-V17~V24-1240, B04-V09~V16-1330 | 13d | 0d | Putty Filler 2ed Layer Roof & WAlls GF [8]; Putty Filler 2ed Layer Roof & WAlls FF [8] | 62,150.21 |  |
| B04-V17~V24-1340 |  | Installation Of Sanitry Fixture | 7d | 2024-08-17 | 2024-08-24 | B04-V17~V24-1320, B04-V09~V16-1340 | 21d | 0d | Mech Fixtures & Accessories [8] | 98,435.64 |  |
| B04-V17~V24-1350 |  | 1st Face Paint | 6d | 2024-08-19 | 2024-08-25 | B04-V17~V24-1330, B04-V09~V16-1350 | 13d | 0d |  |  |  |
| B04-V17~V24-1360 |  | Installation Of Aluminum Windows | 7d | 2024-08-19 | 2024-08-26 | B04-V17~V24-1330, B04-V09~V16-1360 | 23d | 0d | Aluminum Windows [8] | 84,795.68 |  |
| B04-V17~V24-1370 |  | Installation Of Elec Fixture & Accessories | 7d | 2024-08-19 | 2024-08-26 | B04-V17~V24-1310, B04-V17~V24-1330, B04-V17~V24-1260, B04-V09~V16-1370 | 37d | 0d | Elec Fixtures & Accessories Villa & Yard [8]; Elec Cables GF & FF & Earthing [8] | 53,692.2 |  |
| B04-V17~V24-1380 |  | Installation Of Water Tank-Heater & Pumps | 7d | 2024-08-25 | 2024-09-01 | B04-V17~V24-1340, B04-V09~V16-1380, B04-V17~V24-1220 | 21d | 0d | Water Tank & booster Pump [8]; Lower Pump [8]; Heater [8] | 129,756.23 |  |
| B04-V17~V24-1390 |  | Installation Of Parquet | 4d | 2024-08-26 | 2024-08-29 | B04-V17~V24-1350, B04-V09~V16-1390 | 13d | 0d | Installation Of Parquet [8] | 52,978.96 |  |
| B04-V17~V24-1400 |  | Installation Of Wooden Doors | 7d | 2024-08-31 | 2024-09-07 | B04-V17~V24-1390, B04-V09~V16-1400 | 13d | 0d | Wooden Doors Kitchen & Bathroom without Accessories [8]; Wooden Doors Accessories all Villa [8]; Exterior Wooden Doors [8] | 142,105.45 |  |
| B04-V17~V24-1410 |  | Final Face Paint | 7d | 2024-09-08 | 2024-09-15 | B04-V17~V24-1360, B04-V17~V24-1400, B04-V09~V16-1410 | 13d | 0d | Final Face Paint Villa [8] | 31,096.77 |  |

| ID | WBS | Activity | Duration | Start | Finish | Predecessors | Total float | Free float | Resources | Cost |
| --- | --- | --- | --- | --- | --- | --- | --- | --- | --- | --- |
|  | 3 | **Fence & Courtyard Works** |  | 2024-06-02 | 2024-09-04 |  |  |  |  |  |
| B04-V17~V24-1420 |  | Pouring Bedding Concrete For Fence Fondations | 2d | 2024-06-02 | 2024-06-03 | B04-V17~V24-1120, B04-V09~V16-1420 | 9d | 0d | Excavation Fence Foundations [8] | 4,519.28 |
| B04-V17~V24-1430 |  | RC Concrete For Fence Fondations | 6d | 2024-06-04 | 2024-06-10 | B04-V17~V24-1420, B04-V09~V16-1430 | 9d | 0d | Fence Fondations-Eastern side [8]; Fence Fondations-Westren side [8]; Fence Fondations-Back side [8] | 13,420.32 |
| B04-V17~V24-1440 |  | Steel Fixing & Carpentry For Fence Columns | 6d | 2024-06-11 | 2024-06-17 | B04-V17~V24-1430, B04-V09~V16-1440 | 9d | 0d |  |  |
| B04-V17~V24-1450 |  | Establishing Elec For Fence Columns | 4d | 2024-06-18 | 2024-06-22 | B04-V17~V24-1440, B04-V09~V16-1450 | 9d | 0d |  |  |
| B04-V17~V24-1460 |  | Pouring Concrete For Fence Columns | 1d | 2024-06-23 | 2024-06-23 | B04-V17~V24-1450, B04-V09~V16-1460 | 9d | 0d | Fence Columns-Eastern side [8]; Fence Columns-Westren side [8]; Fence Columns-Back side [8] | 9,665.04 |
| B04-V17~V24-1470 |  | Installation Precast Panel For Fence | 5d | 2024-06-24 | 2024-06-29 | B04-V17~V24-1460, B04-V09~V16-1470 | 9d | 0d | Hollow Core Walls [8] | 71,593.2 |
| B04-V17~V24-1480 |  | Bitumen Coating For Fence Fondations | 4d | 2024-06-30 | 2024-07-03 | B04-V17~V24-1470, B04-V09~V16-1480 | 9d | 0d |  |  |
| B04-V17~V24-1490 |  | Pouring Bedding Concrete For "Front" Fence Fondations | 1d | 2024-06-30 | 2024-06-30 | B04-V17~V24-1470, B04-V09~V16-1490 | 21d | 0d |  |  |
| B04-V17~V24-1500 |  | RC Concrete For "Front" Fence Fondations | 4d | 2024-07-01 | 2024-07-04 | B04-V17~V24-1490, B04-V09~V16-1500 | 21d | 0d | Front Fence Fondations [8] | 8,904.4 |
| B04-V17~V24-1510 |  | Outdoor Drainage & Water Line | 5d | 2024-07-04 | 2024-07-09 | B04-V17~V24-1480, B04-V17~V24-1140, B04-V09~V16-1510 | 9d | 0d | Outdoor Drainage [8]; Outdoor Water Line [8] | 13,423.68 |
| B04-V17~V24-1520 |  | Steel Fixing & Carpentry For "Front" Fence Columns | 4d | 2024-07-06 | 2024-07-09 | B04-V17~V24-1500, B04-V09~V16-1520 | 21d | 0d |  |  |
| B04-V17~V24-1530 |  | Establishing Elec For "Front" Fence Columns | 4d | 2024-07-10 | 2024-07-14 | B04-V17~V24-1520, B04-V09~V16-1530 | 21d | 0d |  |  |
| B04-V17~V24-1540 |  | Establishing Elec For Fence & Yard | 2d | 2024-07-10 | 2024-07-11 | B04-V17~V24-1510, B04-V09~V16-1540 | 9d | 0d | Elec Establishment Fence & Yard [8] | 17,898.32 |
| B04-V17~V24-1550 |  | Backfilling the Yard | 4d | 2024-07-13 | 2024-07-16 | B04-V17~V24-1540, B04-V09~V16-1550 | 9d | 0d | Backfilling the Yard [8] | 10,560 |
| B04-V17~V24-1560 |  | Pouring Concrete Wall Of "Front" Fence Columns | 2d | 2024-07-15 | 2024-07-16 | B04-V17~V24-1530, B04-V09~V16-1560 | 21d | 0d | Front Fence Walls [8] | 17,898.32 |
| B04-V17~V24-1570 |  | Pouring Concrete Crown Of "Front" Fence Columns | 3d | 2024-07-17 | 2024-07-20 | B04-V17~V24-1560, B04-V09~V16-1570 | 21d | 0d | Fence Columns - C Chanel [8] | 3,310.37 |
| B04-V17~V24-1580 |  | Bardoura Works For Yard | 5d | 2024-07-17 | 2024-07-22 | B04-V17~V24-1550, B04-V09~V16-1580 | 9d | 0d | Bardoura Works For Yard [8] | 14,408.16 |
| B04-V17~V24-1590 |  | Pouring Concrete Flower Basin Of "Front" Fence Columns | 4d | 2024-07-21 | 2024-07-24 | B04-V17~V24-1570, B04-V09~V16-1590 | 21d | 0d |  |  |
| B04-V17~V24-1600 |  | Antitermite Treatment For Yard | 1d | 2024-07-23 | 2024-07-23 | B04-V17~V24-1580, B04-V09~V16-1600 | 9d | 0d | Antitermite Treatment For Yard [8] |  |
| B04-V17~V24-1610 |  | Pouring Concrete For Yard | 1d | 2024-07-24 | 2024-07-24 | B04-V17~V24-1600, B04-V09~V16-1610 | 9d | 0d |  |  |
| B04-V17~V24-1620 |  | Block Work For Flower Basin | 5d | 2024-07-25 | 2024-07-30 | B04-V17~V24-1610, B04-V09~V16-1620 | 9d | 0d |  |  |
| B04-V17~V24-1630 |  | Plastering Work For Flower Basin | 4d | 2024-07-31 | 2024-08-04 | B04-V17~V24-1620, B04-V09~V16-1630 | 9d | 0d |  |  |
| B04-V17~V24-1640 |  | Interlock Works For The Yard | 6d | 2024-08-05 | 2024-08-11 | B04-V17~V24-1630, B04-V09~V16-1640 | 9d | 0d | Interlock Works For The Yard [8] | 36,776.32 |
| B04-V17~V24-1650 |  | External Grading Works For The Villa | 4d | 2024-08-12 | 2024-08-15 | B04-V17~V24-1640, B04-V09~V16-1650 | 11d | 0d | External Grading Works For The Villa [8] | 3,221.68 |
| B04-V17~V24-1660 |  | Installation The Exterior Door & Garage Door | 5d | 2024-08-12 | 2024-08-17 | B04-V17~V24-1640, B04-V09~V16-1660 | 14d | 2d | Installation The Exterior Door [8]; Installation The Exterior Garage Door [8] | 40,002.72 |
| B04-V17~V24-1670 |  | Fixing Floor Drain For The Yard | 2d | 2024-08-12 | 2024-08-13 | B04-V17~V24-1640, B04-V09~V16-1670 | 17d | 5d | Floor Drain & Clean Out [8] | 13,423.76 |
| B04-V17~V24-1680 |  | Granite Surronds Around The Villa | 4d | 2024-08-17 | 2024-08-20 | B04-V17~V24-1650, B04-V09~V16-1680 | 11d | 2d | Granite Surronds Around The Villa [8] | 25,818.32 |
| B04-V17~V24-1690 |  | Painting The Base Surface Of The Fence | 2d | 2024-08-17 | 2024-08-18 | B04-V17~V24-1750, B04-V09~V16-1690 | 9d | 0d |  |  |
| B04-V17~V24-1700 |  | Painting The Final Face Of The Fence | 4d | 2024-08-19 | 2024-08-22 | B04-V17~V24-1690, B04-V09~V16-1700 | 9d | 0d | Painting Final Face Of The Fence [8] | 37,586.48 |
| B04-V17~V24-1710 |  | Exterior Painting Of The Villa | 7d | 2024-08-24 | 2024-08-31 | B04-V17~V24-1680, B04-V17~V24-1700, B04-V17~V24-1660, B04-V17~V24-1670, B04-V09~V16-1710 | 9d | 0d | Exterior Painting Of The Villa [8]; Exterior Painting Staircase House [8] | 105,684.16 |
| B04-V17~V24-1720 |  | Installation Elec Fixtures & Accessories For The Yard | 4d | 2024-09-01 | 2024-09-04 | B04-V17~V24-1700, B04-V17~V24-1710, B04-V09~V16-1720 | 70d | 0d | Elec feeding panels GF & FF [8] | 22,372.88 |

| ID | WBS | Activity | Duration | Start | Finish | Predecessors | Total float | Free float | Resources | Cost | Department-1 |
| --- | --- | --- | --- | --- | --- | --- | --- | --- | --- | --- | --- |
|  | 5 | **External Sidewalk Works** |  | 2024-07-25 | 2024-09-09 |  |  |  |  |  |  |
| B04-V17~V24-1730 |  | Connection The Drain To The Piblic Network | 3d | 2024-07-25 | 2024-07-28 | B04-V17~V24-1510, B04-V17~V24-1590, B04-V09~V16-1730 | 21d | 4d | Connection Drain To The Piblic Network [8]; Connection Water To The Piblic Network [8] | 13,420.32 |  |
| B04-V17~V24-1740 |  | Pardora Works For The External Sidewalk | 2d | 2024-08-12 | 2024-08-13 | B04-V17~V24-1640, B04-V17~V24-1730, B04-V09~V16-1740 | 9d | 0d |  |  |  |
| B04-V17~V24-1750 |  | Interlock Works For The Exerrnal Sidewalk | 2d | 2024-08-14 | 2024-08-15 | B04-V17~V24-1740, B04-V09~V16-1750 | 9d | 0d |  |  |  |
| B04-V17~V24-1760 |  | Pulling The Villa's Main Elec Cable | 4d | 2024-09-05 | 2024-09-09 | B04-V17~V24-1750, B04-V17~V24-1720, B04-V09~V16-1760 | 70d | 0d | Elec Work Testing [8] | 22,819.84 |  |
|  | 6 | **Final Testing & Handover** |  | 2024-09-02 | 2024-09-28 |  |  |  |  |  |  |
| B04-V17~V24-1770 |  | Mech Work Testing & Handover | 5d | 2024-09-02 | 2024-09-07 | B04-V17~V24-1730, B04-V17~V24-1340, B04-V17~V24-1380, B04-V09~V16-1770 | 77d | 2d | Mech Work Testing & Handover [8] | 14,318.64 |  |
| B04-V17~V24-1780 |  | Arch Snaglist & Handover | 5d | 2024-09-08 | 2024-09-12 | B04-V17~V24-1750, B04-V17~V24-1710, B04-V17~V24-1400, B04-V09~V16-1780 | 72d | 2d | Arch Snaglist & Handover [8] | 77,320.64 |  |
| B04-V17~V24-1790 |  | ElecWork Testing & Handover | 5d | 2024-09-10 | 2024-09-15 | B04-V17~V24-1760, B04-V17~V24-1370, B04-V09~V16-1790 | 70d | 0d | Elec Work Handover [8] | 23,804.72 |  |
| B04-V17~V24-1800 |  | Final Handover Of The Villa To The Consltant | 5d | 2024-09-16 | 2024-09-21 | B04-V17~V24-1780, B04-V17~V24-1790, B04-V17~V24-1770, B04-V17~V24-1410, B04-V09~V16-1800 | 70d | 0d |  |  |  |
| B04-V17~V24-1810 |  | Customer Delivery | 6d | 2024-09-22 | 2024-09-28 | B04-V17~V24-1800, B04-V09~V16-1810 | 70d | 1d |  |  |  |
|  | 16 | **B04-V25~V32** |  | 2024-04-01 | 2024-10-06 |  |  |  |  |  |  |
|  | 2 | **Under Grond Slap Works** |  | 2024-04-01 | 2024-05-11 |  |  |  |  |  |  |
| B04-V25~V32-1000 |  | Excavation&Compaction of Fondation | 6d | 2024-04-01 | 2024-04-07 | B04-V17~V24-1000 | 18d | 0d | Clearing & Groubbing [8]; Excavation & Leveling [8]; Stone Layer [8]; A3 Layer [8]; A1-a 1st Layer [8]; A1-a 2ed Layer [8] | 163,545.76 | Civil |
| B04-V25~V32-1010 |  | Pouring Concrete For Bedding | 2d | 2024-04-08 | 2024-04-09 | B04-V25~V32-1000, B04-V17~V24-1010 | 18d | 0d | PC Carpentry [8]; PC Concrete [8]; RC 18 MPA [9 M3] | 37,899.68 | Civil |
| B04-V25~V32-1020 |  | Reinforcement Concrete For Foundation | 5d | 2024-04-10 | 2024-04-15 | B04-V25~V32-1010, B04-V17~V24-1020 | 18d | 0d | RC Foundation Carpentry [8]; RC Foundation Steel [8]; RC Foundation Concrete [8] | 201,355.92 | Civil |
| B04-V25~V32-1030 |  | Steel Fixing& Carpenter work for Beams | 4d | 2024-04-16 | 2024-04-20 | B04-V25~V32-1020, B04-V17~V24-1030 | 18d | 0d | RC Grade Beam Carpentry & Steel [8] | 44,745.76 | Civil |
| B04-V25~V32-1040 |  | Mech&Elec Establishment for Beams | 3d | 2024-04-21 | 2024-04-23 | B04-V25~V32-1030, B04-V17~V24-1040 | 18d | 0d |  |  | Mech |
| B04-V25~V32-1050 |  | Pouring Concrete For Beams | 1d | 2024-04-24 | 2024-04-24 | B04-V25~V32-1040, B04-V17~V24-1050 | 18d | 0d | RC Grade Beam Concrete [8] | 77,141.68 | Civil |
| B04-V25~V32-1060 |  | Bitmen Coating For Fondation&Beams | 3d | 2024-04-25 | 2024-04-28 | B04-V25~V32-1050, B04-V17~V24-1060 | 18d | 0d | Bitumen Coating Foundations & Grade Beams [8] | 22,372.32 | Civil |
| B04-V25~V32-1070 |  | Backfilling Inside Fondations | 4d | 2024-04-29 | 2024-05-02 | B04-V25~V32-1060, B04-V17~V24-1070 | 18d | 0d | Backfilling 1st Layer [8]; Backfilling 2ed Layer [8] | 11,186.4 | Civil |
| B04-V25~V32-1080 |  | Mech Works Under Grond Slap | 3d | 2024-05-04 | 2024-05-06 | B04-V25~V32-1070, B04-V17~V24-1080 | 18d | 0d | Mech Establishment Under Ground Slap [8] | 13,423.42 | Mech |
| B04-V25~V32-1090 |  | Steel Fixing& Carpenter work for Ground Slap | 3d | 2024-05-07 | 2024-05-09 | B04-V25~V32-1080, B04-V17~V24-1090 | 18d | 0d | Steel & Carpentry For Ground Slap [8] | 10,246.54 | Civil |
| B04-V25~V32-1100 |  | Anti Termite Treatment For Ground Slap | 1d | 2024-05-11 | 2024-05-11 | B04-V25~V32-1090, B04-V17~V24-1100 | 18d | 0d | Anti Termite Treatment nder Ground Slap [8] | 2,237.28 | Civil |
| B04-V25~V32-1110 |  | Pouring Concrete For Ground Slap | 1d | 2024-05-11 | 2024-05-11 | B04-V25~V32-1100 FF, B04-V25~V32-1090, B04-V17~V24-1110 | 18d | 5d | Concrete For Ground Slap [8] | 58,169.52 | Civil |

| ID | WBS | Activity | Duration | Start | Finish | Predecessors | Total float | Free float | Resources | Cost | Department-1 |
| --- | --- | --- | --- | --- | --- | --- | --- | --- | --- | --- | --- |
|  | 4 | **Precast Works** |  | 2024-06-02 | 2024-06-09 |  |  |  |  |  |  |
| B04-V25~V32-1120 |  | Precast Constrction | 7d | 2024-06-02 | 2024-06-09 | B04-V25~V32-1110, B04-V17~V24-1120 | 0d |  | Precast Walls GF [8]; Hollow Core Slap GF [8]; Precast Stairs & staircase House [8]; Thermal insollation Outside Walls [8]; Concrete structure joints [8]; Precast Walls FF [8]; Hollow Core Slap FF [8] | 1,513,762.87 | Civil |
|  | 1 | **Works Inside The Villa** |  | 2024-06-10 | 2024-09-23 |  |  |  |  |  |  |
| B04-V25~V32-1130 |  | Block Work For GF & Estabishment 1F | 6d | 2024-06-10 | 2024-06-16 | B04-V25~V32-1120, B04-V17~V24-1130 | 13d | 0d | Block GF [8] | 13,647.1 | Arc |
| B04-V25~V32-1140 |  | L.L & H.L Drainage | 6d | 2024-06-17 | 2024-06-23 | B04-V25~V32-1130, B04-V17~V24-1140 | 13d | 0d | HL Drainage [8]; L.L Drainage [8] | 89,489.28 | Mech |
| B04-V25~V32-1150 |  | Elec Establishment For GF & 1F | 3d | 2024-06-17 | 2024-06-19 | B04-V25~V32-1130, B04-V17~V24-1150 | 16d | 3d | Elec Establishment GF [8] | 26,840.73 | Elec |
| B04-V25~V32-1160 |  | Screed Work For 1F & Roof | 6d | 2024-06-24 | 2024-06-30 | B04-V25~V32-1140, B04-V25~V32-1150, B04-V17~V24-1160 | 13d | 0d | Screed 1st Floor [8]; Screed Roof Floor [8]; Leveling Screed 1st Floor [8]; Leveling Screed Roof Floor [8] | 268,467.85 | Civil |
| B04-V25~V32-1170 |  | Water Tank & Heater Foundations | 4d | 2024-07-01 | 2024-07-04 | B04-V25~V32-1160, B04-V17~V24-1170 | 17d | 0d |  |  | Civil |
| B04-V25~V32-1180 |  | Block Works For 1F | 3d | 2024-07-01 | 2024-07-03 | B04-V25~V32-1160, B04-V17~V24-1180 | 13d | 0d | Block FF [8] | 20,537.81 | Arc |
| B04-V25~V32-1190 |  | Water Line Network | 6d | 2024-07-04 | 2024-07-10 | B04-V25~V32-1180, B04-V17~V24-1190 | 13d | 0d | Water Line Network [8] | 40,261.13 | Mech |
| B04-V25~V32-1200 |  | Continue Elec Establishment For GF & 1F | 3d | 2024-07-04 | 2024-07-07 | B04-V25~V32-1180, B04-V17~V24-1200 | 16d | 3d | Elec Establishment FF [8] | 26,840.73 | Elec |
| B04-V25~V32-1210 |  | Thermal Insulation For Roof | 5d | 2024-07-06 | 2024-07-10 | B04-V25~V32-1170, B04-V17~V24-1210 | 17d | 0d | Roof Insulation [8] | 32,530.16 | Arc |
| B04-V25~V32-1220 |  | Roof Floor Tiles | 6d | 2024-07-11 | 2024-07-17 | B04-V25~V32-1210, B04-V17~V24-1220 | 17d | 1d | Roof Tiles [8]; Roof Tiles Joints [8]; Re_Test Roof Insulation [8] | 63,179.38 | Arc |
| B04-V25~V32-1230 |  | Plaster Work For Villa | 6d | 2024-07-11 | 2024-07-17 | B04-V25~V32-1190, B04-V25~V32-1200, B04-V17~V24-1230 | 13d | 0d | Establishing a plastering GF [8]; Establishing a plastering FF [8]; Plastering GF [8]; Plastering FF [8] | 49,263.81 |  |
| B04-V25~V32-1240 |  | Marbale Stairs & Handrails | 6d | 2024-07-18 | 2024-07-24 | B04-V25~V32-1230, B04-V17~V24-1240 | 35d | 1d | Marbale Stairs [8]; Stairs Handrails SS [8] | 91,494.69 |  |
| B04-V25~V32-1250 |  | Water Proofing Of Bathrooms | 4d | 2024-07-18 | 2024-07-22 | B04-V25~V32-1230, B04-V17~V24-1250 | 13d | 0d | Bathrooms InsulationGF & FF [8] | 134.24 |  |
| B04-V25~V32-1260 |  | Pulling The Elec Wires | 4d | 2024-07-18 | 2024-07-22 | B04-V25~V32-1230, B04-V17~V24-1260 | 23d | 3d | Elec Wires GF [8]; Elec Wires FF [8] | 80,542.4 |  |
| B04-V25~V32-1270 |  | Bathroom Tiles | 4d | 2024-07-23 | 2024-07-27 | B04-V25~V32-1250, B04-V25~V32-1220, B04-V17~V24-1270 | 13d | 0d | Ceramic Walls Kitchen [8]; Ceramic Walls Bathrooms GF [8]; Ceramic Walls Bathrooms FF [8]; Ceramic Tiles Bathrooms GF [8]; Ceramic Tiles Kitchen GF [8]; Ceramic Tiles Store GF [8] | 73,204.08 |  |
| B04-V25~V32-1280 |  | Structure For Gypsum | 6d | 2024-07-28 | 2024-08-03 | B04-V25~V32-1270, B04-V17~V24-1280 | 13d | 0d | Structure For Gypsum GF Rooms [8]; Structure For Gypsum FF Rooms [8]; Structure For Gypsum Bathrooms & Kitchen [8] | 33,550.81 |  |
| B04-V25~V32-1290 |  | Gypsum Board For Room | 4d | 2024-08-04 | 2024-08-07 | B04-V25~V32-1280, B04-V25~V32-1260, B04-V17~V24-1290 | 13d | 0d | Gypsum Board For GF Room [8]; Gypsum Board For FF Room [8] | 35,796.64 |  |
| B04-V25~V32-1300 |  | Installation Of Gypsum Board For Bathroom & Kitchen | 4d | 2024-08-08 | 2024-08-12 | B04-V25~V32-1290, B04-V17~V24-1300 | 13d | 0d | Gypsum Board For Bathrooms & Kitchen [8] | 11,052.24 |  |
| B04-V25~V32-1310 |  | Putty Filler For Gypsm Board Ceiling | 6d | 2024-08-13 | 2024-08-19 | B04-V25~V32-1300, B04-V17~V24-1310 | 13d | 0d | Putty Filler 1st Layer Roof all Rooms [8]; Putty Filler 1st Layer Roof all Bathrooms & Kitchen [8]; Putty Filler1st Layer walls [8] | 62,182.52 |  |
| B04-V25~V32-1320 |  | Fixing Shower Glass | 4d | 2024-08-20 | 2024-08-24 | B04-V25~V32-1310, B04-V17~V24-1320 | 21d | 0d | Shower Glass [8] | 22,372.88 |  |
| B04-V25~V32-1330 |  | Interior Wall Putty Filler | 6d | 2024-08-20 | 2024-08-26 | B04-V25~V32-1310, B04-V25~V32-1240, B04-V17~V24-1330 | 13d | 0d | Putty Filler 2ed Layer Roof & WAlls GF [8]; Putty Filler 2ed Layer Roof & WAlls FF [8] | 62,150.21 |  |
| B04-V25~V32-1340 |  | Installation Of Sanitry Fixture | 7d | 2024-08-25 | 2024-09-01 | B04-V25~V32-1320, B04-V17~V24-1340 | 21d | 0d | Mech Fixtures & Accessories [8] | 98,435.64 |  |
| B04-V25~V32-1350 |  | 1st Face Paint | 6d | 2024-08-27 | 2024-09-02 | B04-V25~V32-1330, B04-V17~V24-1350 | 13d | 0d |  |  |  |
| B04-V25~V32-1360 |  | Installation Of Aluminum Windows | 7d | 2024-08-27 | 2024-09-03 | B04-V25~V32-1330, B04-V17~V24-1360 | 23d | 0d | Aluminum Windows [8] | 84,795.68 |  |
| B04-V25~V32-1370 |  | Installation Of Elec Fixture & Accessories | 7d | 2024-08-27 | 2024-09-03 | B04-V25~V32-1310, B04-V25~V32-1330, B04-V25~V32-1260, B04-V17~V24-1370 | 37d | 0d | Elec Fixtures & Accessories Villa & Yard [8]; Elec Cables GF & FF & Earthing [8] | 53,692.2 |  |
| B04-V25~V32-1380 |  | Installation Of Water Tank-Heater & Pumps | 7d | 2024-09-02 | 2024-09-09 | B04-V25~V32-1340, B04-V17~V24-1380, B04-V25~V32-1220 | 21d | 0d | Water Tank & booster Pump [8]; Lower Pump [8]; Heater [8] | 129,756.23 |  |
| B04-V25~V32-1390 |  | Installation Of Parquet | 4d | 2024-09-03 | 2024-09-07 | B04-V25~V32-1350, B04-V17~V24-1390 | 13d | 0d | Installation Of Parquet [8] | 52,978.96 |  |
| B04-V25~V32-1400 |  | Installation Of Wooden Doors | 7d | 2024-09-08 | 2024-09-15 | B04-V25~V32-1390, B04-V17~V24-1400 | 13d | 0d | Wooden Doors Kitchen & Bathroom without Accessories [8]; Wooden Doors Accessories all Villa [8]; Exterior Wooden Doors [8] | 142,105.45 |  |
| B04-V25~V32-1410 |  | Final Face Paint | 7d | 2024-09-16 | 2024-09-23 | B04-V25~V32-1360, B04-V25~V32-1400, B04-V17~V24-1410 | 13d | 0d | Final Face Paint Villa [8] | 31,096.77 |  |

| ID | WBS | Activity | Duration | Start | Finish | Predecessors | Total float | Free float | Resources | Cost |
| --- | --- | --- | --- | --- | --- | --- | --- | --- | --- | --- |
|  | 3 | **Fence & Courtyard Works** |  | 2024-06-10 | 2024-09-12 |  |  |  |  |  |
| B04-V25~V32-1420 |  | Pouring Bedding Concrete For Fence Fondations | 2d | 2024-06-10 | 2024-06-11 | B04-V25~V32-1120, B04-V17~V24-1420 | 9d | 0d | Excavation Fence Foundations [8] | 4,519.28 |
| B04-V25~V32-1430 |  | RC Concrete For Fence Fondations | 6d | 2024-06-12 | 2024-06-18 | B04-V25~V32-1420, B04-V17~V24-1430 | 9d | 0d | Fence Fondations-Eastern side [8]; Fence Fondations-Westren side [8]; Fence Fondations-Back side [8] | 13,420.32 |
| B04-V25~V32-1440 |  | Steel Fixing & Carpentry For Fence Columns | 6d | 2024-06-19 | 2024-06-25 | B04-V25~V32-1430, B04-V17~V24-1440 | 9d | 0d |  |  |
| B04-V25~V32-1450 |  | Establishing Elec For Fence Columns | 4d | 2024-06-26 | 2024-06-30 | B04-V25~V32-1440, B04-V17~V24-1450 | 9d | 0d |  |  |
| B04-V25~V32-1460 |  | Pouring Concrete For Fence Columns | 1d | 2024-07-01 | 2024-07-01 | B04-V25~V32-1450, B04-V17~V24-1460 | 9d | 0d | Fence Columns-Eastern side [8]; Fence Columns-Westren side [8]; Fence Columns-Back side [8] | 9,665.04 |
| B04-V25~V32-1470 |  | Installation Precast Panel For Fence | 5d | 2024-07-02 | 2024-07-07 | B04-V25~V32-1460, B04-V17~V24-1470 | 9d | 0d | Hollow Core Walls [8] | 71,593.2 |
| B04-V25~V32-1480 |  | Bitumen Coating For Fence Fondations | 4d | 2024-07-08 | 2024-07-11 | B04-V25~V32-1470, B04-V17~V24-1480 | 9d | 0d |  |  |
| B04-V25~V32-1490 |  | Pouring Bedding Concrete For "Front" Fence Fondations | 1d | 2024-07-08 | 2024-07-08 | B04-V25~V32-1470, B04-V17~V24-1490 | 21d | 0d |  |  |
| B04-V25~V32-1500 |  | RC Concrete For "Front" Fence Fondations | 4d | 2024-07-09 | 2024-07-13 | B04-V25~V32-1490, B04-V17~V24-1500 | 21d | 0d | Front Fence Fondations [8] | 8,904.4 |
| B04-V25~V32-1510 |  | Outdoor Drainage & Water Line | 5d | 2024-07-13 | 2024-07-17 | B04-V25~V32-1480, B04-V25~V32-1140, B04-V17~V24-1510 | 9d | 0d | Outdoor Drainage [8]; Outdoor Water Line [8] | 13,423.68 |
| B04-V25~V32-1520 |  | Steel Fixing & Carpentry For "Front" Fence Columns | 4d | 2024-07-14 | 2024-07-17 | B04-V25~V32-1500, B04-V17~V24-1520 | 21d | 0d |  |  |
| B04-V25~V32-1530 |  | Establishing Elec For "Front" Fence Columns | 4d | 2024-07-18 | 2024-07-22 | B04-V25~V32-1520, B04-V17~V24-1530 | 21d | 0d |  |  |
| B04-V25~V32-1540 |  | Establishing Elec For Fence & Yard | 2d | 2024-07-18 | 2024-07-20 | B04-V25~V32-1510, B04-V17~V24-1540 | 9d | 0d | Elec Establishment Fence & Yard [8] | 17,898.32 |
| B04-V25~V32-1550 |  | Backfilling the Yard | 4d | 2024-07-21 | 2024-07-24 | B04-V25~V32-1540, B04-V17~V24-1550 | 9d | 0d | Backfilling the Yard [8] | 10,560 |
| B04-V25~V32-1560 |  | Pouring Concrete Wall Of "Front" Fence Columns | 2d | 2024-07-23 | 2024-07-24 | B04-V25~V32-1530, B04-V17~V24-1560 | 21d | 0d | Front Fence Walls [8] | 17,898.32 |
| B04-V25~V32-1570 |  | Pouring Concrete Crown Of "Front" Fence Columns | 3d | 2024-07-25 | 2024-07-28 | B04-V25~V32-1560, B04-V17~V24-1570 | 21d | 0d | Fence Columns - C Chanel [8] | 3,310.37 |
| B04-V25~V32-1580 |  | Bardoura Works For Yard | 5d | 2024-07-25 | 2024-07-30 | B04-V25~V32-1550, B04-V17~V24-1580 | 9d | 0d | Bardoura Works For Yard [8] | 14,408.16 |
| B04-V25~V32-1590 |  | Pouring Concrete Flower Basin Of "Front" Fence Columns | 4d | 2024-07-29 | 2024-08-01 | B04-V25~V32-1570, B04-V17~V24-1590 | 21d | 0d |  |  |
| B04-V25~V32-1600 |  | Antitermite Treatment For Yard | 1d | 2024-07-31 | 2024-07-31 | B04-V25~V32-1580, B04-V17~V24-1600 | 9d | 0d | Antitermite Treatment For Yard [8] |  |
| B04-V25~V32-1610 |  | Pouring Concrete For Yard | 1d | 2024-08-01 | 2024-08-01 | B04-V25~V32-1600, B04-V17~V24-1610 | 9d | 0d |  |  |
| B04-V25~V32-1620 |  | Block Work For Flower Basin | 5d | 2024-08-03 | 2024-08-07 | B04-V25~V32-1610, B04-V17~V24-1620 | 9d | 0d |  |  |
| B04-V25~V32-1630 |  | Plastering Work For Flower Basin | 4d | 2024-08-08 | 2024-08-12 | B04-V25~V32-1620, B04-V17~V24-1630 | 9d | 0d |  |  |
| B04-V25~V32-1640 |  | Interlock Works For The Yard | 6d | 2024-08-13 | 2024-08-19 | B04-V25~V32-1630, B04-V17~V24-1640 | 9d | 0d | Interlock Works For The Yard [8] | 36,776.32 |
| B04-V25~V32-1650 |  | External Grading Works For The Villa | 4d | 2024-08-20 | 2024-08-24 | B04-V25~V32-1640, B04-V17~V24-1650 | 11d | 0d | External Grading Works For The Villa [8] | 3,221.68 |
| B04-V25~V32-1660 |  | Installation The Exterior Door & Garage Door | 5d | 2024-08-20 | 2024-08-25 | B04-V25~V32-1640, B04-V17~V24-1660 | 14d | 2d | Installation The Exterior Door [8]; Installation The Exterior Garage Door [8] | 40,002.72 |
| B04-V25~V32-1670 |  | Fixing Floor Drain For The Yard | 2d | 2024-08-20 | 2024-08-21 | B04-V25~V32-1640, B04-V17~V24-1670 | 17d | 5d | Floor Drain & Clean Out [8] | 13,423.76 |
| B04-V25~V32-1680 |  | Granite Surronds Around The Villa | 4d | 2024-08-25 | 2024-08-28 | B04-V25~V32-1650, B04-V17~V24-1680 | 11d | 2d | Granite Surronds Around The Villa [8] | 25,818.32 |
| B04-V25~V32-1690 |  | Painting The Base Surface Of The Fence | 2d | 2024-08-25 | 2024-08-26 | B04-V25~V32-1750, B04-V17~V24-1690 | 9d | 0d |  |  |
| B04-V25~V32-1700 |  | Painting The Final Face Of The Fence | 4d | 2024-08-27 | 2024-08-31 | B04-V25~V32-1690, B04-V17~V24-1700 | 9d | 0d | Painting Final Face Of The Fence [8] | 37,586.48 |
| B04-V25~V32-1710 |  | Exterior Painting Of The Villa | 7d | 2024-09-01 | 2024-09-08 | B04-V25~V32-1680, B04-V25~V32-1700, B04-V25~V32-1660, B04-V25~V32-1670, B04-V17~V24-1710 | 9d | 0d | Exterior Painting Of The Villa [8]; Exterior Painting Staircase House [8] | 105,684.16 |
| B04-V25~V32-1720 |  | Installation Elec Fixtures & Accessories For The Yard | 4d | 2024-09-09 | 2024-09-12 | B04-V25~V32-1700, B04-V25~V32-1710, B04-V17~V24-1720 | 69d | 0d | Elec feeding panels GF & FF [8] | 22,372.88 |

| ID | WBS | Activity | Duration | Start | Finish | Predecessors | Total float | Free float | Resources | Cost | Department-1 |
| --- | --- | --- | --- | --- | --- | --- | --- | --- | --- | --- | --- |
|  | 5 | **External Sidewalk Works** |  | 2024-08-03 | 2024-09-17 |  |  |  |  |  |  |
| B04-V25~V32-1730 |  | Connection The Drain To The Piblic Network | 3d | 2024-08-03 | 2024-08-05 | B04-V25~V32-1510, B04-V25~V32-1590, B04-V17~V24-1730 | 21d | 4d | Connection Drain To The Piblic Network [8]; Connection Water To The Piblic Network [8] | 13,420.32 |  |
| B04-V25~V32-1740 |  | Pardora Works For The External Sidewalk | 2d | 2024-08-20 | 2024-08-21 | B04-V25~V32-1640, B04-V25~V32-1730, B04-V17~V24-1740 | 9d | 0d |  |  |  |
| B04-V25~V32-1750 |  | Interlock Works For The Exerrnal Sidewalk | 2d | 2024-08-22 | 2024-08-24 | B04-V25~V32-1740, B04-V17~V24-1750 | 9d | 0d |  |  |  |
| B04-V25~V32-1760 |  | Pulling The Villa's Main Elec Cable | 4d | 2024-09-14 | 2024-09-17 | B04-V25~V32-1750, B04-V25~V32-1720, B04-V17~V24-1760 | 69d | 0d | Elec Work Testing [8] | 22,819.84 |  |
|  | 6 | **Final Testing & Handover** |  | 2024-09-10 | 2024-10-06 |  |  |  |  |  |  |
| B04-V25~V32-1770 |  | Mech Work Testing & Handover | 5d | 2024-09-10 | 2024-09-15 | B04-V25~V32-1730, B04-V25~V32-1340, B04-V25~V32-1380, B04-V17~V24-1770 | 76d | 2d | Mech Work Testing & Handover [8] | 14,318.64 |  |
| B04-V25~V32-1780 |  | Arch Snaglist & Handover | 5d | 2024-09-16 | 2024-09-21 | B04-V25~V32-1750, B04-V25~V32-1710, B04-V25~V32-1400, B04-V17~V24-1780 | 71d | 2d | Arch Snaglist & Handover [8] | 77,320.64 |  |
| B04-V25~V32-1790 |  | ElecWork Testing & Handover | 5d | 2024-09-18 | 2024-09-23 | B04-V25~V32-1760, B04-V25~V32-1370, B04-V17~V24-1790 | 69d | 0d | Elec Work Handover [8] | 23,804.72 |  |
| B04-V25~V32-1800 |  | Final Handover Of The Villa To The Consltant | 5d | 2024-09-24 | 2024-09-29 | B04-V25~V32-1780, B04-V25~V32-1790, B04-V25~V32-1770, B04-V25~V32-1410, B04-V17~V24-1800 | 69d | 0d |  |  |  |
| B04-V25~V32-1810 |  | Customer Delivery | 6d | 2024-09-30 | 2024-10-06 | B04-V25~V32-1800, B04-V17~V24-1810 | 69d | 1d |  |  |  |
|  | 17 | **B05-V01~V08** |  | 2024-04-08 | 2024-10-14 |  |  |  |  |  |  |
|  | 2 | **Under Grond Slap Works** |  | 2024-04-08 | 2024-05-18 |  |  |  |  |  |  |
| B05-V01~V08-1000 |  | Excavation&Compaction of Fondation | 6d | 2024-04-08 | 2024-04-14 | B04-V25~V32-1000 | 19d | 0d | Clearing & Groubbing [8]; Excavation & Leveling [8]; Stone Layer [8]; A3 Layer [8]; A1-a 1st Layer [8]; A1-a 2ed Layer [8] | 163,545.76 | Civil |
| B05-V01~V08-1010 |  | Pouring Concrete For Bedding | 2d | 2024-04-15 | 2024-04-16 | B05-V01~V08-1000, B04-V25~V32-1010 | 19d | 0d | PC Carpentry [8]; PC Concrete [8]; RC 18 MPA [9 M3] | 37,899.68 | Civil |
| B05-V01~V08-1020 |  | Reinforcement Concrete For Foundation | 5d | 2024-04-17 | 2024-04-22 | B05-V01~V08-1010, B04-V25~V32-1020 | 19d | 0d | RC Foundation Carpentry [8]; RC Foundation Steel [8]; RC Foundation Concrete [8] | 201,355.92 | Civil |
| B05-V01~V08-1030 |  | Steel Fixing& Carpenter work for Beams | 4d | 2024-04-23 | 2024-04-27 | B05-V01~V08-1020, B04-V25~V32-1030 | 19d | 0d | RC Grade Beam Carpentry & Steel [8] | 44,745.76 | Civil |
| B05-V01~V08-1040 |  | Mech&Elec Establishment for Beams | 3d | 2024-04-28 | 2024-04-30 | B05-V01~V08-1030, B04-V25~V32-1040 | 19d | 0d |  |  | Mech |
| B05-V01~V08-1050 |  | Pouring Concrete For Beams | 1d | 2024-05-01 | 2024-05-01 | B05-V01~V08-1040, B04-V25~V32-1050 | 19d | 0d | RC Grade Beam Concrete [8] | 77,141.68 | Civil |
| B05-V01~V08-1060 |  | Bitmen Coating For Fondation&Beams | 3d | 2024-05-02 | 2024-05-05 | B05-V01~V08-1050, B04-V25~V32-1060 | 19d | 0d | Bitumen Coating Foundations & Grade Beams [8] | 22,372.32 | Civil |
| B05-V01~V08-1070 |  | Backfilling Inside Fondations | 4d | 2024-05-06 | 2024-05-09 | B05-V01~V08-1060, B04-V25~V32-1070 | 19d | 0d | Backfilling 1st Layer [8]; Backfilling 2ed Layer [8] | 11,186.4 | Civil |
| B05-V01~V08-1080 |  | Mech Works Under Grond Slap | 3d | 2024-05-11 | 2024-05-13 | B05-V01~V08-1070, B04-V25~V32-1080 | 19d | 0d | Mech Establishment Under Ground Slap [8] | 13,423.42 | Mech |
| B05-V01~V08-1090 |  | Steel Fixing& Carpenter work for Ground Slap | 3d | 2024-05-14 | 2024-05-16 | B05-V01~V08-1080, B04-V25~V32-1090 | 19d | 0d | Steel & Carpentry For Ground Slap [8] | 10,246.54 | Civil |
| B05-V01~V08-1100 |  | Anti Termite Treatment For Ground Slap | 1d | 2024-05-18 | 2024-05-18 | B05-V01~V08-1090, B04-V25~V32-1100 | 19d | 0d | Anti Termite Treatment nder Ground Slap [8] | 2,237.28 | Civil |
| B05-V01~V08-1110 |  | Pouring Concrete For Ground Slap | 1d | 2024-05-18 | 2024-05-18 | B05-V01~V08-1100 FF, B05-V01~V08-1090, B04-V25~V32-1110 | 19d | 5d | Concrete For Ground Slap [8] | 58,169.52 | Civil |

| ID | WBS | Activity | Duration | Start | Finish | Predecessors | Total float | Free float | Resources | Cost | Department-1 |
| --- | --- | --- | --- | --- | --- | --- | --- | --- | --- | --- | --- |
|  | 4 | **Precast Works** |  | 2024-06-10 | 2024-06-17 |  |  |  |  |  |  |
| B05-V01~V08-1120 |  | Precast Constrction | 7d | 2024-06-10 | 2024-06-17 | B05-V01~V08-1110, B04-V25~V32-1120 | 0d |  | Precast Walls GF [8]; Hollow Core Slap GF [8]; Precast Stairs & staircase House [8]; Thermal insollation Outside Walls [8]; Concrete structure joints [8]; Precast Walls FF [8]; Hollow Core Slap FF [8] | 1,513,762.87 | Civil |
|  | 1 | **Works Inside The Villa** |  | 2024-06-18 | 2024-10-01 |  |  |  |  |  |  |
| B05-V01~V08-1130 |  | Block Work For GF & Estabishment 1F | 6d | 2024-06-18 | 2024-06-24 | B05-V01~V08-1120, B04-V25~V32-1130 | 13d | 0d | Block GF [8] | 13,647.1 | Arc |
| B05-V01~V08-1140 |  | L.L & H.L Drainage | 6d | 2024-06-25 | 2024-07-01 | B05-V01~V08-1130, B04-V25~V32-1140 | 13d | 0d | HL Drainage [8]; L.L Drainage [8] | 89,489.28 | Mech |
| B05-V01~V08-1150 |  | Elec Establishment For GF & 1F | 3d | 2024-06-25 | 2024-06-27 | B05-V01~V08-1130, B04-V25~V32-1150 | 16d | 3d | Elec Establishment GF [8] | 26,840.73 | Elec |
| B05-V01~V08-1160 |  | Screed Work For 1F & Roof | 6d | 2024-07-02 | 2024-07-08 | B05-V01~V08-1140, B05-V01~V08-1150, B04-V25~V32-1160 | 13d | 0d | Screed 1st Floor [8]; Screed Roof Floor [8]; Leveling Screed 1st Floor [8]; Leveling Screed Roof Floor [8] | 268,467.85 | Civil |
| B05-V01~V08-1170 |  | Water Tank & Heater Foundations | 4d | 2024-07-09 | 2024-07-13 | B05-V01~V08-1160, B04-V25~V32-1170 | 17d | 0d |  |  | Civil |
| B05-V01~V08-1180 |  | Block Works For 1F | 3d | 2024-07-09 | 2024-07-11 | B05-V01~V08-1160, B04-V25~V32-1180 | 13d | 0d | Block FF [8] | 20,537.81 | Arc |
| B05-V01~V08-1190 |  | Water Line Network | 6d | 2024-07-13 | 2024-07-18 | B05-V01~V08-1180, B04-V25~V32-1190 | 13d | 0d | Water Line Network [8] | 40,261.13 | Mech |
| B05-V01~V08-1200 |  | Continue Elec Establishment For GF & 1F | 3d | 2024-07-13 | 2024-07-15 | B05-V01~V08-1180, B04-V25~V32-1200 | 16d | 3d | Elec Establishment FF [8] | 26,840.73 | Elec |
| B05-V01~V08-1210 |  | Thermal Insulation For Roof | 5d | 2024-07-14 | 2024-07-18 | B05-V01~V08-1170, B04-V25~V32-1210 | 17d | 0d | Roof Insulation [8] | 32,530.16 | Arc |
| B05-V01~V08-1220 |  | Roof Floor Tiles | 6d | 2024-07-20 | 2024-07-25 | B05-V01~V08-1210, B04-V25~V32-1220 | 17d | 1d | Roof Tiles [8]; Roof Tiles Joints [8]; Re_Test Roof Insulation [8] | 63,179.38 | Arc |
| B05-V01~V08-1230 |  | Plaster Work For Villa | 6d | 2024-07-20 | 2024-07-25 | B05-V01~V08-1190, B05-V01~V08-1200, B04-V25~V32-1230 | 13d | 0d | Establishing a plastering GF [8]; Establishing a plastering FF [8]; Plastering GF [8]; Plastering FF [8] | 49,263.81 |  |
| B05-V01~V08-1240 |  | Marbale Stairs & Handrails | 6d | 2024-07-27 | 2024-08-01 | B05-V01~V08-1230, B04-V25~V32-1240 | 35d | 1d | Marbale Stairs [8]; Stairs Handrails SS [8] | 91,494.69 |  |
| B05-V01~V08-1250 |  | Water Proofing Of Bathrooms | 4d | 2024-07-27 | 2024-07-30 | B05-V01~V08-1230, B04-V25~V32-1250 | 13d | 0d | Bathrooms InsulationGF & FF [8] | 134.24 |  |
| B05-V01~V08-1260 |  | Pulling The Elec Wires | 4d | 2024-07-27 | 2024-07-30 | B05-V01~V08-1230, B04-V25~V32-1260 | 23d | 3d | Elec Wires GF [8]; Elec Wires FF [8] | 80,542.4 |  |
| B05-V01~V08-1270 |  | Bathroom Tiles | 4d | 2024-07-31 | 2024-08-04 | B05-V01~V08-1250, B05-V01~V08-1220, B04-V25~V32-1270 | 13d | 0d | Ceramic Walls Kitchen [8]; Ceramic Walls Bathrooms GF [8]; Ceramic Walls Bathrooms FF [8]; Ceramic Tiles Bathrooms GF [8]; Ceramic Tiles Kitchen GF [8]; Ceramic Tiles Store GF [8] | 73,204.08 |  |
| B05-V01~V08-1280 |  | Structure For Gypsum | 6d | 2024-08-05 | 2024-08-11 | B05-V01~V08-1270, B04-V25~V32-1280 | 13d | 0d | Structure For Gypsum GF Rooms [8]; Structure For Gypsum FF Rooms [8]; Structure For Gypsum Bathrooms & Kitchen [8] | 33,550.81 |  |
| B05-V01~V08-1290 |  | Gypsum Board For Room | 4d | 2024-08-12 | 2024-08-15 | B05-V01~V08-1280, B05-V01~V08-1260, B04-V25~V32-1290 | 13d | 0d | Gypsum Board For GF Room [8]; Gypsum Board For FF Room [8] | 35,796.64 |  |
| B05-V01~V08-1300 |  | Installation Of Gypsum Board For Bathroom & Kitchen | 4d | 2024-08-17 | 2024-08-20 | B05-V01~V08-1290, B04-V25~V32-1300 | 13d | 0d | Gypsum Board For Bathrooms & Kitchen [8] | 11,052.24 |  |
| B05-V01~V08-1310 |  | Putty Filler For Gypsm Board Ceiling | 6d | 2024-08-21 | 2024-08-27 | B05-V01~V08-1300, B04-V25~V32-1310 | 13d | 0d | Putty Filler 1st Layer Roof all Rooms [8]; Putty Filler 1st Layer Roof all Bathrooms & Kitchen [8]; Putty Filler1st Layer walls [8] | 62,182.52 |  |
| B05-V01~V08-1320 |  | Fixing Shower Glass | 4d | 2024-08-28 | 2024-09-01 | B05-V01~V08-1310, B04-V25~V32-1320 | 21d | 0d | Shower Glass [8] | 22,372.88 |  |
| B05-V01~V08-1330 |  | Interior Wall Putty Filler | 6d | 2024-08-28 | 2024-09-03 | B05-V01~V08-1310, B05-V01~V08-1240, B04-V25~V32-1330 | 13d | 0d | Putty Filler 2ed Layer Roof & WAlls GF [8]; Putty Filler 2ed Layer Roof & WAlls FF [8] | 62,150.21 |  |
| B05-V01~V08-1340 |  | Installation Of Sanitry Fixture | 7d | 2024-09-02 | 2024-09-09 | B05-V01~V08-1320, B04-V25~V32-1340 | 21d | 0d | Mech Fixtures & Accessories [8] | 98,435.64 |  |
| B05-V01~V08-1350 |  | 1st Face Paint | 6d | 2024-09-04 | 2024-09-10 | B05-V01~V08-1330, B04-V25~V32-1350 | 13d | 0d |  |  |  |
| B05-V01~V08-1360 |  | Installation Of Aluminum Windows | 7d | 2024-09-04 | 2024-09-11 | B05-V01~V08-1330, B04-V25~V32-1360 | 23d | 0d | Aluminum Windows [8] | 84,795.68 |  |
| B05-V01~V08-1370 |  | Installation Of Elec Fixture & Accessories | 7d | 2024-09-04 | 2024-09-11 | B05-V01~V08-1310, B05-V01~V08-1330, B05-V01~V08-1260, B04-V25~V32-1370 | 37d | 0d | Elec Fixtures & Accessories Villa & Yard [8]; Elec Cables GF & FF & Earthing [8] | 53,692.2 |  |
| B05-V01~V08-1380 |  | Installation Of Water Tank-Heater & Pumps | 7d | 2024-09-10 | 2024-09-17 | B05-V01~V08-1340, B04-V25~V32-1380, B05-V01~V08-1220 | 21d | 0d | Water Tank & booster Pump [8]; Lower Pump [8]; Heater [8] | 129,756.23 |  |
| B05-V01~V08-1390 |  | Installation Of Parquet | 4d | 2024-09-11 | 2024-09-15 | B05-V01~V08-1350, B04-V25~V32-1390 | 13d | 0d | Installation Of Parquet [8] | 52,978.96 |  |
| B05-V01~V08-1400 |  | Installation Of Wooden Doors | 7d | 2024-09-16 | 2024-09-23 | B05-V01~V08-1390, B04-V25~V32-1400 | 13d | 0d | Wooden Doors Kitchen & Bathroom without Accessories [8]; Wooden Doors Accessories all Villa [8]; Exterior Wooden Doors [8] | 142,105.45 |  |
| B05-V01~V08-1410 |  | Final Face Paint | 7d | 2024-09-24 | 2024-10-01 | B05-V01~V08-1360, B05-V01~V08-1400, B04-V25~V32-1410 | 13d | 0d | Final Face Paint Villa [8] | 31,096.77 |  |

| ID | WBS | Activity | Duration | Start | Finish | Predecessors | Total float | Free float | Resources | Cost |
| --- | --- | --- | --- | --- | --- | --- | --- | --- | --- | --- |
|  | 3 | **Fence & Courtyard Works** |  | 2024-06-18 | 2024-09-21 |  |  |  |  |  |
| B05-V01~V08-1420 |  | Pouring Bedding Concrete For Fence Fondations | 2d | 2024-06-18 | 2024-06-19 | B05-V01~V08-1120, B04-V25~V32-1420 | 9d | 0d | Excavation Fence Foundations [8] | 4,519.28 |
| B05-V01~V08-1430 |  | RC Concrete For Fence Fondations | 6d | 2024-06-20 | 2024-06-26 | B05-V01~V08-1420, B04-V25~V32-1430 | 9d | 0d | Fence Fondations-Eastern side [8]; Fence Fondations-Westren side [8]; Fence Fondations-Back side [8] | 13,420.32 |
| B05-V01~V08-1440 |  | Steel Fixing & Carpentry For Fence Columns | 6d | 2024-06-27 | 2024-07-03 | B05-V01~V08-1430, B04-V25~V32-1440 | 9d | 0d |  |  |
| B05-V01~V08-1450 |  | Establishing Elec For Fence Columns | 4d | 2024-07-04 | 2024-07-08 | B05-V01~V08-1440, B04-V25~V32-1450 | 9d | 0d |  |  |
| B05-V01~V08-1460 |  | Pouring Concrete For Fence Columns | 1d | 2024-07-09 | 2024-07-09 | B05-V01~V08-1450, B04-V25~V32-1460 | 9d | 0d | Fence Columns-Eastern side [8]; Fence Columns-Westren side [8]; Fence Columns-Back side [8] | 9,665.04 |
| B05-V01~V08-1470 |  | Installation Precast Panel For Fence | 5d | 2024-07-10 | 2024-07-15 | B05-V01~V08-1460, B04-V25~V32-1470 | 9d | 0d | Hollow Core Walls [8] | 71,593.2 |
| B05-V01~V08-1480 |  | Bitumen Coating For Fence Fondations | 4d | 2024-07-16 | 2024-07-20 | B05-V01~V08-1470, B04-V25~V32-1480 | 9d | 0d |  |  |
| B05-V01~V08-1490 |  | Pouring Bedding Concrete For "Front" Fence Fondations | 1d | 2024-07-16 | 2024-07-16 | B05-V01~V08-1470, B04-V25~V32-1490 | 21d | 0d |  |  |
| B05-V01~V08-1500 |  | RC Concrete For "Front" Fence Fondations | 4d | 2024-07-17 | 2024-07-21 | B05-V01~V08-1490, B04-V25~V32-1500 | 21d | 0d | Front Fence Fondations [8] | 8,904.4 |
| B05-V01~V08-1510 |  | Outdoor Drainage & Water Line | 5d | 2024-07-21 | 2024-07-25 | B05-V01~V08-1480, B05-V01~V08-1140, B04-V25~V32-1510 | 9d | 0d | Outdoor Drainage [8]; Outdoor Water Line [8] | 13,423.68 |
| B05-V01~V08-1520 |  | Steel Fixing & Carpentry For "Front" Fence Columns | 4d | 2024-07-22 | 2024-07-25 | B05-V01~V08-1500, B04-V25~V32-1520 | 21d | 0d |  |  |
| B05-V01~V08-1530 |  | Establishing Elec For "Front" Fence Columns | 4d | 2024-07-27 | 2024-07-30 | B05-V01~V08-1520, B04-V25~V32-1530 | 21d | 0d |  |  |
| B05-V01~V08-1540 |  | Establishing Elec For Fence & Yard | 2d | 2024-07-27 | 2024-07-28 | B05-V01~V08-1510, B04-V25~V32-1540 | 9d | 0d | Elec Establishment Fence & Yard [8] | 17,898.32 |
| B05-V01~V08-1550 |  | Backfilling the Yard | 4d | 2024-07-29 | 2024-08-01 | B05-V01~V08-1540, B04-V25~V32-1550 | 9d | 0d | Backfilling the Yard [8] | 10,560 |
| B05-V01~V08-1560 |  | Pouring Concrete Wall Of "Front" Fence Columns | 2d | 2024-07-31 | 2024-08-01 | B05-V01~V08-1530, B04-V25~V32-1560 | 21d | 0d | Front Fence Walls [8] | 17,898.32 |
| B05-V01~V08-1570 |  | Pouring Concrete Crown Of "Front" Fence Columns | 3d | 2024-08-03 | 2024-08-05 | B05-V01~V08-1560, B04-V25~V32-1570 | 21d | 0d | Fence Columns - C Chanel [8] | 3,310.37 |
| B05-V01~V08-1580 |  | Bardoura Works For Yard | 5d | 2024-08-03 | 2024-08-07 | B05-V01~V08-1550, B04-V25~V32-1580 | 9d | 0d | Bardoura Works For Yard [8] | 14,408.16 |
| B05-V01~V08-1590 |  | Pouring Concrete Flower Basin Of "Front" Fence Columns | 4d | 2024-08-06 | 2024-08-10 | B05-V01~V08-1570, B04-V25~V32-1590 | 21d | 0d |  |  |
| B05-V01~V08-1600 |  | Antitermite Treatment For Yard | 1d | 2024-08-08 | 2024-08-08 | B05-V01~V08-1580, B04-V25~V32-1600 | 9d | 0d | Antitermite Treatment For Yard [8] |  |
| B05-V01~V08-1610 |  | Pouring Concrete For Yard | 1d | 2024-08-10 | 2024-08-10 | B05-V01~V08-1600, B04-V25~V32-1610 | 9d | 0d |  |  |
| B05-V01~V08-1620 |  | Block Work For Flower Basin | 5d | 2024-08-11 | 2024-08-15 | B05-V01~V08-1610, B04-V25~V32-1620 | 9d | 0d |  |  |
| B05-V01~V08-1630 |  | Plastering Work For Flower Basin | 4d | 2024-08-17 | 2024-08-20 | B05-V01~V08-1620, B04-V25~V32-1630 | 9d | 0d |  |  |
| B05-V01~V08-1640 |  | Interlock Works For The Yard | 6d | 2024-08-21 | 2024-08-27 | B05-V01~V08-1630, B04-V25~V32-1640 | 9d | 0d | Interlock Works For The Yard [8] | 36,776.32 |
| B05-V01~V08-1650 |  | External Grading Works For The Villa | 4d | 2024-08-28 | 2024-09-01 | B05-V01~V08-1640, B04-V25~V32-1650 | 11d | 0d | External Grading Works For The Villa [8] | 3,221.68 |
| B05-V01~V08-1660 |  | Installation The Exterior Door & Garage Door | 5d | 2024-08-28 | 2024-09-02 | B05-V01~V08-1640, B04-V25~V32-1660 | 14d | 2d | Installation The Exterior Door [8]; Installation The Exterior Garage Door [8] | 40,002.72 |
| B05-V01~V08-1670 |  | Fixing Floor Drain For The Yard | 2d | 2024-08-28 | 2024-08-29 | B05-V01~V08-1640, B04-V25~V32-1670 | 17d | 5d | Floor Drain & Clean Out [8] | 13,423.76 |
| B05-V01~V08-1680 |  | Granite Surronds Around The Villa | 4d | 2024-09-02 | 2024-09-05 | B05-V01~V08-1650, B04-V25~V32-1680 | 11d | 2d | Granite Surronds Around The Villa [8] | 25,818.32 |
| B05-V01~V08-1690 |  | Painting The Base Surface Of The Fence | 2d | 2024-09-02 | 2024-09-03 | B05-V01~V08-1750, B04-V25~V32-1690 | 9d | 0d |  |  |
| B05-V01~V08-1700 |  | Painting The Final Face Of The Fence | 4d | 2024-09-04 | 2024-09-08 | B05-V01~V08-1690, B04-V25~V32-1700 | 9d | 0d | Painting Final Face Of The Fence [8] | 37,586.48 |
| B05-V01~V08-1710 |  | Exterior Painting Of The Villa | 7d | 2024-09-09 | 2024-09-16 | B05-V01~V08-1680, B05-V01~V08-1700, B05-V01~V08-1660, B05-V01~V08-1670, B04-V25~V32-1710 | 9d | 0d | Exterior Painting Of The Villa [8]; Exterior Painting Staircase House [8] | 105,684.16 |
| B05-V01~V08-1720 |  | Installation Elec Fixtures & Accessories For The Yard | 4d | 2024-09-17 | 2024-09-21 | B05-V01~V08-1700, B05-V01~V08-1710, B04-V25~V32-1720 | 68d | 0d | Elec feeding panels GF & FF [8] | 22,372.88 |

| ID | WBS | Activity | Duration | Start | Finish | Predecessors | Total float | Free float | Resources | Cost | Department-1 |
| --- | --- | --- | --- | --- | --- | --- | --- | --- | --- | --- | --- |
|  | 5 | **External Sidewalk Works** |  | 2024-08-11 | 2024-09-25 |  |  |  |  |  |  |
| B05-V01~V08-1730 |  | Connection The Drain To The Piblic Network | 3d | 2024-08-11 | 2024-08-13 | B05-V01~V08-1510, B05-V01~V08-1590, B04-V25~V32-1730 | 21d | 4d | Connection Drain To The Piblic Network [8]; Connection Water To The Piblic Network [8] | 13,420.32 |  |
| B05-V01~V08-1740 |  | Pardora Works For The External Sidewalk | 2d | 2024-08-28 | 2024-08-29 | B05-V01~V08-1640, B05-V01~V08-1730, B04-V25~V32-1740 | 9d | 0d |  |  |  |
| B05-V01~V08-1750 |  | Interlock Works For The Exerrnal Sidewalk | 2d | 2024-08-31 | 2024-09-01 | B05-V01~V08-1740, B04-V25~V32-1750 | 9d | 0d |  |  |  |
| B05-V01~V08-1760 |  | Pulling The Villa's Main Elec Cable | 4d | 2024-09-22 | 2024-09-25 | B05-V01~V08-1750, B05-V01~V08-1720, B04-V25~V32-1760 | 68d | 0d | Elec Work Testing [8] | 22,819.84 |  |
|  | 6 | **Final Testing & Handover** |  | 2024-09-18 | 2024-10-14 |  |  |  |  |  |  |
| B05-V01~V08-1770 |  | Mech Work Testing & Handover | 5d | 2024-09-18 | 2024-09-23 | B05-V01~V08-1730, B05-V01~V08-1340, B05-V01~V08-1380, B04-V25~V32-1770 | 75d | 2d | Mech Work Testing & Handover [8] | 14,318.64 |  |
| B05-V01~V08-1780 |  | Arch Snaglist & Handover | 5d | 2024-09-24 | 2024-09-29 | B05-V01~V08-1750, B05-V01~V08-1710, B05-V01~V08-1400, B04-V25~V32-1780 | 70d | 2d | Arch Snaglist & Handover [8] | 77,320.64 |  |
| B05-V01~V08-1790 |  | ElecWork Testing & Handover | 5d | 2024-09-26 | 2024-10-01 | B05-V01~V08-1760, B05-V01~V08-1370, B04-V25~V32-1790 | 68d | 0d | Elec Work Handover [8] | 23,804.72 |  |
| B05-V01~V08-1800 |  | Final Handover Of The Villa To The Consltant | 5d | 2024-10-02 | 2024-10-07 | B05-V01~V08-1780, B05-V01~V08-1790, B05-V01~V08-1770, B05-V01~V08-1410, B04-V25~V32-1800 | 68d | 0d |  |  |  |
| B05-V01~V08-1810 |  | Customer Delivery | 6d | 2024-10-08 | 2024-10-14 | B05-V01~V08-1800, B04-V25~V32-1810 | 68d | 1d |  |  |  |
|  | 18 | **B05-V09~V16** |  | 2024-04-15 | 2024-10-22 |  |  |  |  |  |  |
|  | 2 | **Under Grond Slap Works** |  | 2024-04-15 | 2024-05-25 |  |  |  |  |  |  |
| B05-V09~V16-1000 |  | Excavation&Compaction of Fondation | 6d | 2024-04-15 | 2024-04-21 | B05-V01~V08-1000 | 20d | 0d | Clearing & Groubbing [8]; Excavation & Leveling [8]; Stone Layer [8]; A3 Layer [8]; A1-a 1st Layer [8]; A1-a 2ed Layer [8] | 163,545.76 | Civil |
| B05-V09~V16-1010 |  | Pouring Concrete For Bedding | 2d | 2024-04-22 | 2024-04-23 | B05-V09~V16-1000, B05-V01~V08-1010 | 20d | 0d | PC Carpentry [8]; PC Concrete [8]; RC 18 MPA [9 M3] | 37,899.68 | Civil |
| B05-V09~V16-1020 |  | Reinforcement Concrete For Foundation | 5d | 2024-04-24 | 2024-04-29 | B05-V09~V16-1010, B05-V01~V08-1020 | 20d | 0d | RC Foundation Carpentry [8]; RC Foundation Steel [8]; RC Foundation Concrete [8] | 201,355.92 | Civil |
| B05-V09~V16-1030 |  | Steel Fixing& Carpenter work for Beams | 4d | 2024-04-30 | 2024-05-04 | B05-V09~V16-1020, B05-V01~V08-1030 | 20d | 0d | RC Grade Beam Carpentry & Steel [8] | 44,745.76 | Civil |
| B05-V09~V16-1040 |  | Mech&Elec Establishment for Beams | 3d | 2024-05-05 | 2024-05-07 | B05-V09~V16-1030, B05-V01~V08-1040 | 20d | 0d |  |  | Mech |
| B05-V09~V16-1050 |  | Pouring Concrete For Beams | 1d | 2024-05-08 | 2024-05-08 | B05-V09~V16-1040, B05-V01~V08-1050 | 20d | 0d | RC Grade Beam Concrete [8] | 77,141.68 | Civil |
| B05-V09~V16-1060 |  | Bitmen Coating For Fondation&Beams | 3d | 2024-05-09 | 2024-05-12 | B05-V09~V16-1050, B05-V01~V08-1060 | 20d | 0d | Bitumen Coating Foundations & Grade Beams [8] | 22,372.32 | Civil |
| B05-V09~V16-1070 |  | Backfilling Inside Fondations | 4d | 2024-05-13 | 2024-05-16 | B05-V09~V16-1060, B05-V01~V08-1070 | 20d | 0d | Backfilling 1st Layer [8]; Backfilling 2ed Layer [8] | 11,186.4 | Civil |
| B05-V09~V16-1080 |  | Mech Works Under Grond Slap | 3d | 2024-05-18 | 2024-05-20 | B05-V09~V16-1070, B05-V01~V08-1080 | 20d | 0d | Mech Establishment Under Ground Slap [8] | 13,423.42 | Mech |
| B05-V09~V16-1090 |  | Steel Fixing& Carpenter work for Ground Slap | 3d | 2024-05-21 | 2024-05-23 | B05-V09~V16-1080, B05-V01~V08-1090 | 20d | 0d | Steel & Carpentry For Ground Slap [8] | 10,246.54 | Civil |
| B05-V09~V16-1100 |  | Anti Termite Treatment For Ground Slap | 1d | 2024-05-25 | 2024-05-25 | B05-V09~V16-1090, B05-V01~V08-1100 | 20d | 0d | Anti Termite Treatment nder Ground Slap [8] | 2,237.28 | Civil |
| B05-V09~V16-1110 |  | Pouring Concrete For Ground Slap | 1d | 2024-05-25 | 2024-05-25 | B05-V09~V16-1100 FF, B05-V09~V16-1090, B05-V01~V08-1110 | 20d | 5d | Concrete For Ground Slap [8] | 58,169.52 | Civil |

| ID | WBS | Activity | Duration | Start | Finish | Predecessors | Total float | Free float | Resources | Cost | Department-1 |
| --- | --- | --- | --- | --- | --- | --- | --- | --- | --- | --- | --- |
|  | 4 | **Precast Works** |  | 2024-06-18 | 2024-06-25 |  |  |  |  |  |  |
| B05-V09~V16-1120 |  | Precast Constrction | 7d | 2024-06-18 | 2024-06-25 | B05-V09~V16-1110, B05-V01~V08-1120 | 0d |  | Precast Walls GF [8]; Hollow Core Slap GF [8]; Precast Stairs & staircase House [8]; Thermal insollation Outside Walls [8]; Concrete structure joints [8]; Precast Walls FF [8]; Hollow Core Slap FF [8] | 1,513,762.87 | Civil |
|  | 1 | **Works Inside The Villa** |  | 2024-06-26 | 2024-10-09 |  |  |  |  |  |  |
| B05-V09~V16-1130 |  | Block Work For GF & Estabishment 1F | 6d | 2024-06-26 | 2024-07-02 | B05-V09~V16-1120, B05-V01~V08-1130 | 13d | 0d | Block GF [8] | 13,647.1 | Arc |
| B05-V09~V16-1140 |  | L.L & H.L Drainage | 6d | 2024-07-03 | 2024-07-09 | B05-V09~V16-1130, B05-V01~V08-1140 | 13d | 0d | HL Drainage [8]; L.L Drainage [8] | 89,489.28 | Mech |
| B05-V09~V16-1150 |  | Elec Establishment For GF & 1F | 3d | 2024-07-03 | 2024-07-06 | B05-V09~V16-1130, B05-V01~V08-1150 | 16d | 3d | Elec Establishment GF [8] | 26,840.73 | Elec |
| B05-V09~V16-1160 |  | Screed Work For 1F & Roof | 6d | 2024-07-10 | 2024-07-16 | B05-V09~V16-1140, B05-V09~V16-1150, B05-V01~V08-1160 | 13d | 0d | Screed 1st Floor [8]; Screed Roof Floor [8]; Leveling Screed 1st Floor [8]; Leveling Screed Roof Floor [8] | 268,467.85 | Civil |
| B05-V09~V16-1170 |  | Water Tank & Heater Foundations | 4d | 2024-07-17 | 2024-07-21 | B05-V09~V16-1160, B05-V01~V08-1170 | 17d | 0d |  |  | Civil |
| B05-V09~V16-1180 |  | Block Works For 1F | 3d | 2024-07-17 | 2024-07-20 | B05-V09~V16-1160, B05-V01~V08-1180 | 13d | 0d | Block FF [8] | 20,537.81 | Arc |
| B05-V09~V16-1190 |  | Water Line Network | 6d | 2024-07-21 | 2024-07-27 | B05-V09~V16-1180, B05-V01~V08-1190 | 13d | 0d | Water Line Network [8] | 40,261.13 | Mech |
| B05-V09~V16-1200 |  | Continue Elec Establishment For GF & 1F | 3d | 2024-07-21 | 2024-07-23 | B05-V09~V16-1180, B05-V01~V08-1200 | 16d | 3d | Elec Establishment FF [8] | 26,840.73 | Elec |
| B05-V09~V16-1210 |  | Thermal Insulation For Roof | 5d | 2024-07-22 | 2024-07-27 | B05-V09~V16-1170, B05-V01~V08-1210 | 17d | 0d | Roof Insulation [8] | 32,530.16 | Arc |
| B05-V09~V16-1220 |  | Roof Floor Tiles | 6d | 2024-07-28 | 2024-08-03 | B05-V09~V16-1210, B05-V01~V08-1220 | 17d | 1d | Roof Tiles [8]; Roof Tiles Joints [8]; Re_Test Roof Insulation [8] | 63,179.38 | Arc |
| B05-V09~V16-1230 |  | Plaster Work For Villa | 6d | 2024-07-28 | 2024-08-03 | B05-V09~V16-1190, B05-V09~V16-1200, B05-V01~V08-1230 | 13d | 0d | Establishing a plastering GF [8]; Establishing a plastering FF [8]; Plastering GF [8]; Plastering FF [8] | 49,263.81 |  |
| B05-V09~V16-1240 |  | Marbale Stairs & Handrails | 6d | 2024-08-04 | 2024-08-10 | B05-V09~V16-1230, B05-V01~V08-1240 | 35d | 1d | Marbale Stairs [8]; Stairs Handrails SS [8] | 91,494.69 |  |
| B05-V09~V16-1250 |  | Water Proofing Of Bathrooms | 4d | 2024-08-04 | 2024-08-07 | B05-V09~V16-1230, B05-V01~V08-1250 | 13d | 0d | Bathrooms InsulationGF & FF [8] | 134.24 |  |
| B05-V09~V16-1260 |  | Pulling The Elec Wires | 4d | 2024-08-04 | 2024-08-07 | B05-V09~V16-1230, B05-V01~V08-1260 | 23d | 3d | Elec Wires GF [8]; Elec Wires FF [8] | 80,542.4 |  |
| B05-V09~V16-1270 |  | Bathroom Tiles | 4d | 2024-08-08 | 2024-08-12 | B05-V09~V16-1250, B05-V09~V16-1220, B05-V01~V08-1270 | 13d | 0d | Ceramic Walls Kitchen [8]; Ceramic Walls Bathrooms GF [8]; Ceramic Walls Bathrooms FF [8]; Ceramic Tiles Bathrooms GF [8]; Ceramic Tiles Kitchen GF [8]; Ceramic Tiles Store GF [8] | 73,204.08 |  |
| B05-V09~V16-1280 |  | Structure For Gypsum | 6d | 2024-08-13 | 2024-08-19 | B05-V09~V16-1270, B05-V01~V08-1280 | 13d | 0d | Structure For Gypsum GF Rooms [8]; Structure For Gypsum FF Rooms [8]; Structure For Gypsum Bathrooms & Kitchen [8] | 33,550.81 |  |
| B05-V09~V16-1290 |  | Gypsum Board For Room | 4d | 2024-08-20 | 2024-08-24 | B05-V09~V16-1280, B05-V09~V16-1260, B05-V01~V08-1290 | 13d | 0d | Gypsum Board For GF Room [8]; Gypsum Board For FF Room [8] | 35,796.64 |  |
| B05-V09~V16-1300 |  | Installation Of Gypsum Board For Bathroom & Kitchen | 4d | 2024-08-25 | 2024-08-28 | B05-V09~V16-1290, B05-V01~V08-1300 | 13d | 0d | Gypsum Board For Bathrooms & Kitchen [8] | 11,052.24 |  |
| B05-V09~V16-1310 |  | Putty Filler For Gypsm Board Ceiling | 6d | 2024-08-29 | 2024-09-04 | B05-V09~V16-1300, B05-V01~V08-1310 | 13d | 0d | Putty Filler 1st Layer Roof all Rooms [8]; Putty Filler 1st Layer Roof all Bathrooms & Kitchen [8]; Putty Filler1st Layer walls [8] | 62,182.52 |  |
| B05-V09~V16-1320 |  | Fixing Shower Glass | 4d | 2024-09-05 | 2024-09-09 | B05-V09~V16-1310, B05-V01~V08-1320 | 21d | 0d | Shower Glass [8] | 22,372.88 |  |
| B05-V09~V16-1330 |  | Interior Wall Putty Filler | 6d | 2024-09-05 | 2024-09-11 | B05-V09~V16-1310, B05-V09~V16-1240, B05-V01~V08-1330 | 13d | 0d | Putty Filler 2ed Layer Roof & WAlls GF [8]; Putty Filler 2ed Layer Roof & WAlls FF [8] | 62,150.21 |  |
| B05-V09~V16-1340 |  | Installation Of Sanitry Fixture | 7d | 2024-09-10 | 2024-09-17 | B05-V09~V16-1320, B05-V01~V08-1340 | 21d | 0d | Mech Fixtures & Accessories [8] | 98,435.64 |  |
| B05-V09~V16-1350 |  | 1st Face Paint | 6d | 2024-09-12 | 2024-09-18 | B05-V09~V16-1330, B05-V01~V08-1350 | 13d | 0d |  |  |  |
| B05-V09~V16-1360 |  | Installation Of Aluminum Windows | 7d | 2024-09-12 | 2024-09-19 | B05-V09~V16-1330, B05-V01~V08-1360 | 23d | 0d | Aluminum Windows [8] | 84,795.68 |  |
| B05-V09~V16-1370 |  | Installation Of Elec Fixture & Accessories | 7d | 2024-09-12 | 2024-09-19 | B05-V09~V16-1310, B05-V09~V16-1330, B05-V09~V16-1260, B05-V01~V08-1370 | 37d | 0d | Elec Fixtures & Accessories Villa & Yard [8]; Elec Cables GF & FF & Earthing [8] | 53,692.2 |  |
| B05-V09~V16-1380 |  | Installation Of Water Tank-Heater & Pumps | 7d | 2024-09-18 | 2024-09-25 | B05-V09~V16-1340, B05-V01~V08-1380, B05-V09~V16-1220 | 21d | 0d | Water Tank & booster Pump [8]; Lower Pump [8]; Heater [8] | 129,756.23 |  |
| B05-V09~V16-1390 |  | Installation Of Parquet | 4d | 2024-09-19 | 2024-09-23 | B05-V09~V16-1350, B05-V01~V08-1390 | 13d | 0d | Installation Of Parquet [8] | 52,978.96 |  |
| B05-V09~V16-1400 |  | Installation Of Wooden Doors | 7d | 2024-09-24 | 2024-10-01 | B05-V09~V16-1390, B05-V01~V08-1400 | 13d | 0d | Wooden Doors Kitchen & Bathroom without Accessories [8]; Wooden Doors Accessories all Villa [8]; Exterior Wooden Doors [8] | 142,105.45 |  |
| B05-V09~V16-1410 |  | Final Face Paint | 7d | 2024-10-02 | 2024-10-09 | B05-V09~V16-1360, B05-V09~V16-1400, B05-V01~V08-1410 | 13d | 0d | Final Face Paint Villa [8] | 31,096.77 |  |

| ID | WBS | Activity | Duration | Start | Finish | Predecessors | Total float | Free float | Resources | Cost |
| --- | --- | --- | --- | --- | --- | --- | --- | --- | --- | --- |
|  | 3 | **Fence & Courtyard Works** |  | 2024-06-26 | 2024-09-29 |  |  |  |  |  |
| B05-V09~V16-1420 |  | Pouring Bedding Concrete For Fence Fondations | 2d | 2024-06-26 | 2024-06-27 | B05-V09~V16-1120, B05-V01~V08-1420 | 9d | 0d | Excavation Fence Foundations [8] | 4,519.28 |
| B05-V09~V16-1430 |  | RC Concrete For Fence Fondations | 6d | 2024-06-29 | 2024-07-04 | B05-V09~V16-1420, B05-V01~V08-1430 | 9d | 0d | Fence Fondations-Eastern side [8]; Fence Fondations-Westren side [8]; Fence Fondations-Back side [8] | 13,420.32 |
| B05-V09~V16-1440 |  | Steel Fixing & Carpentry For Fence Columns | 6d | 2024-07-06 | 2024-07-11 | B05-V09~V16-1430, B05-V01~V08-1440 | 9d | 0d |  |  |
| B05-V09~V16-1450 |  | Establishing Elec For Fence Columns | 4d | 2024-07-13 | 2024-07-16 | B05-V09~V16-1440, B05-V01~V08-1450 | 9d | 0d |  |  |
| B05-V09~V16-1460 |  | Pouring Concrete For Fence Columns | 1d | 2024-07-17 | 2024-07-17 | B05-V09~V16-1450, B05-V01~V08-1460 | 9d | 0d | Fence Columns-Eastern side [8]; Fence Columns-Westren side [8]; Fence Columns-Back side [8] | 9,665.04 |
| B05-V09~V16-1470 |  | Installation Precast Panel For Fence | 5d | 2024-07-18 | 2024-07-23 | B05-V09~V16-1460, B05-V01~V08-1470 | 9d | 0d | Hollow Core Walls [8] | 71,593.2 |
| B05-V09~V16-1480 |  | Bitumen Coating For Fence Fondations | 4d | 2024-07-24 | 2024-07-28 | B05-V09~V16-1470, B05-V01~V08-1480 | 9d | 0d |  |  |
| B05-V09~V16-1490 |  | Pouring Bedding Concrete For "Front" Fence Fondations | 1d | 2024-07-24 | 2024-07-24 | B05-V09~V16-1470, B05-V01~V08-1490 | 21d | 0d |  |  |
| B05-V09~V16-1500 |  | RC Concrete For "Front" Fence Fondations | 4d | 2024-07-25 | 2024-07-29 | B05-V09~V16-1490, B05-V01~V08-1500 | 21d | 0d | Front Fence Fondations [8] | 8,904.4 |
| B05-V09~V16-1510 |  | Outdoor Drainage & Water Line | 5d | 2024-07-29 | 2024-08-03 | B05-V09~V16-1480, B05-V09~V16-1140, B05-V01~V08-1510 | 9d | 0d | Outdoor Drainage [8]; Outdoor Water Line [8] | 13,423.68 |
| B05-V09~V16-1520 |  | Steel Fixing & Carpentry For "Front" Fence Columns | 4d | 2024-07-30 | 2024-08-03 | B05-V09~V16-1500, B05-V01~V08-1520 | 21d | 0d |  |  |
| B05-V09~V16-1530 |  | Establishing Elec For "Front" Fence Columns | 4d | 2024-08-04 | 2024-08-07 | B05-V09~V16-1520, B05-V01~V08-1530 | 21d | 0d |  |  |
| B05-V09~V16-1540 |  | Establishing Elec For Fence & Yard | 2d | 2024-08-04 | 2024-08-05 | B05-V09~V16-1510, B05-V01~V08-1540 | 9d | 0d | Elec Establishment Fence & Yard [8] | 17,898.32 |
| B05-V09~V16-1550 |  | Backfilling the Yard | 4d | 2024-08-06 | 2024-08-10 | B05-V09~V16-1540, B05-V01~V08-1550 | 9d | 0d | Backfilling the Yard [8] | 10,560 |
| B05-V09~V16-1560 |  | Pouring Concrete Wall Of "Front" Fence Columns | 2d | 2024-08-08 | 2024-08-10 | B05-V09~V16-1530, B05-V01~V08-1560 | 21d | 0d | Front Fence Walls [8] | 17,898.32 |
| B05-V09~V16-1570 |  | Pouring Concrete Crown Of "Front" Fence Columns | 3d | 2024-08-11 | 2024-08-13 | B05-V09~V16-1560, B05-V01~V08-1570 | 21d | 0d | Fence Columns - C Chanel [8] | 3,310.37 |
| B05-V09~V16-1580 |  | Bardoura Works For Yard | 5d | 2024-08-11 | 2024-08-15 | B05-V09~V16-1550, B05-V01~V08-1580 | 9d | 0d | Bardoura Works For Yard [8] | 14,408.16 |
| B05-V09~V16-1590 |  | Pouring Concrete Flower Basin Of "Front" Fence Columns | 4d | 2024-08-14 | 2024-08-18 | B05-V09~V16-1570, B05-V01~V08-1590 | 21d | 0d |  |  |
| B05-V09~V16-1600 |  | Antitermite Treatment For Yard | 1d | 2024-08-17 | 2024-08-17 | B05-V09~V16-1580, B05-V01~V08-1600 | 9d | 0d | Antitermite Treatment For Yard [8] |  |
| B05-V09~V16-1610 |  | Pouring Concrete For Yard | 1d | 2024-08-18 | 2024-08-18 | B05-V09~V16-1600, B05-V01~V08-1610 | 9d | 0d |  |  |
| B05-V09~V16-1620 |  | Block Work For Flower Basin | 5d | 2024-08-19 | 2024-08-24 | B05-V09~V16-1610, B05-V01~V08-1620 | 9d | 0d |  |  |
| B05-V09~V16-1630 |  | Plastering Work For Flower Basin | 4d | 2024-08-25 | 2024-08-28 | B05-V09~V16-1620, B05-V01~V08-1630 | 9d | 0d |  |  |
| B05-V09~V16-1640 |  | Interlock Works For The Yard | 6d | 2024-08-29 | 2024-09-04 | B05-V09~V16-1630, B05-V01~V08-1640 | 9d | 0d | Interlock Works For The Yard [8] | 36,776.32 |
| B05-V09~V16-1650 |  | External Grading Works For The Villa | 4d | 2024-09-05 | 2024-09-09 | B05-V09~V16-1640, B05-V01~V08-1650 | 11d | 0d | External Grading Works For The Villa [8] | 3,221.68 |
| B05-V09~V16-1660 |  | Installation The Exterior Door & Garage Door | 5d | 2024-09-05 | 2024-09-10 | B05-V09~V16-1640, B05-V01~V08-1660 | 14d | 2d | Installation The Exterior Door [8]; Installation The Exterior Garage Door [8] | 40,002.72 |
| B05-V09~V16-1670 |  | Fixing Floor Drain For The Yard | 2d | 2024-09-05 | 2024-09-07 | B05-V09~V16-1640, B05-V01~V08-1670 | 17d | 5d | Floor Drain & Clean Out [8] | 13,423.76 |
| B05-V09~V16-1680 |  | Granite Surronds Around The Villa | 4d | 2024-09-10 | 2024-09-14 | B05-V09~V16-1650, B05-V01~V08-1680 | 11d | 2d | Granite Surronds Around The Villa [8] | 25,818.32 |
| B05-V09~V16-1690 |  | Painting The Base Surface Of The Fence | 2d | 2024-09-10 | 2024-09-11 | B05-V09~V16-1750, B05-V01~V08-1690 | 9d | 0d |  |  |
| B05-V09~V16-1700 |  | Painting The Final Face Of The Fence | 4d | 2024-09-12 | 2024-09-16 | B05-V09~V16-1690, B05-V01~V08-1700 | 9d | 0d | Painting Final Face Of The Fence [8] | 37,586.48 |
| B05-V09~V16-1710 |  | Exterior Painting Of The Villa | 7d | 2024-09-17 | 2024-09-24 | B05-V09~V16-1680, B05-V09~V16-1700, B05-V09~V16-1660, B05-V09~V16-1670, B05-V01~V08-1710 | 9d | 0d | Exterior Painting Of The Villa [8]; Exterior Painting Staircase House [8] | 105,684.16 |
| B05-V09~V16-1720 |  | Installation Elec Fixtures & Accessories For The Yard | 4d | 2024-09-25 | 2024-09-29 | B05-V09~V16-1700, B05-V09~V16-1710, B05-V01~V08-1720 | 67d | 0d | Elec feeding panels GF & FF [8] | 22,372.88 |

| ID | WBS | Activity | Duration | Start | Finish | Predecessors | Total float | Free float | Resources | Cost | Department-1 |
| --- | --- | --- | --- | --- | --- | --- | --- | --- | --- | --- | --- |
|  | 5 | **External Sidewalk Works** |  | 2024-08-19 | 2024-10-03 |  |  |  |  |  |  |
| B05-V09~V16-1730 |  | Connection The Drain To The Piblic Network | 3d | 2024-08-19 | 2024-08-21 | B05-V09~V16-1510, B05-V09~V16-1590, B05-V01~V08-1730 | 21d | 4d | Connection Drain To The Piblic Network [8]; Connection Water To The Piblic Network [8] | 13,420.32 |  |
| B05-V09~V16-1740 |  | Pardora Works For The External Sidewalk | 2d | 2024-09-05 | 2024-09-07 | B05-V09~V16-1640, B05-V09~V16-1730, B05-V01~V08-1740 | 9d | 0d |  |  |  |
| B05-V09~V16-1750 |  | Interlock Works For The Exerrnal Sidewalk | 2d | 2024-09-08 | 2024-09-09 | B05-V09~V16-1740, B05-V01~V08-1750 | 9d | 0d |  |  |  |
| B05-V09~V16-1760 |  | Pulling The Villa's Main Elec Cable | 4d | 2024-09-30 | 2024-10-03 | B05-V09~V16-1750, B05-V09~V16-1720, B05-V01~V08-1760 | 67d | 0d | Elec Work Testing [8] | 22,819.84 |  |
|  | 6 | **Final Testing & Handover** |  | 2024-09-26 | 2024-10-22 |  |  |  |  |  |  |
| B05-V09~V16-1770 |  | Mech Work Testing & Handover | 5d | 2024-09-26 | 2024-10-01 | B05-V09~V16-1730, B05-V09~V16-1340, B05-V09~V16-1380, B05-V01~V08-1770 | 74d | 2d | Mech Work Testing & Handover [8] | 14,318.64 |  |
| B05-V09~V16-1780 |  | Arch Snaglist & Handover | 5d | 2024-10-02 | 2024-10-07 | B05-V09~V16-1750, B05-V09~V16-1710, B05-V09~V16-1400, B05-V01~V08-1780 | 69d | 2d | Arch Snaglist & Handover [8] | 77,320.64 |  |
| B05-V09~V16-1790 |  | ElecWork Testing & Handover | 5d | 2024-10-05 | 2024-10-09 | B05-V09~V16-1760, B05-V09~V16-1370, B05-V01~V08-1790 | 67d | 0d | Elec Work Handover [8] | 23,804.72 |  |
| B05-V09~V16-1800 |  | Final Handover Of The Villa To The Consltant | 5d | 2024-10-10 | 2024-10-15 | B05-V09~V16-1780, B05-V09~V16-1790, B05-V09~V16-1770, B05-V09~V16-1410, B05-V01~V08-1800 | 67d | 0d |  |  |  |
| B05-V09~V16-1810 |  | Customer Delivery | 6d | 2024-10-16 | 2024-10-22 | B05-V09~V16-1800, B05-V01~V08-1810 | 67d | 1d |  |  |  |
|  | 19 | **B05-V17~V24** |  | 2024-04-22 | 2024-10-30 |  |  |  |  |  |  |
|  | 2 | **Under Grond Slap Works** |  | 2024-04-22 | 2024-06-01 |  |  |  |  |  |  |
| B05-V17~V24-1000 |  | Excavation&Compaction of Fondation | 6d | 2024-04-22 | 2024-04-28 | B05-V09~V16-1000 | 21d | 0d | Clearing & Groubbing [8]; Excavation & Leveling [8]; Stone Layer [8]; A3 Layer [8]; A1-a 1st Layer [8]; A1-a 2ed Layer [8] | 163,545.76 | Civil |
| B05-V17~V24-1010 |  | Pouring Concrete For Bedding | 2d | 2024-04-29 | 2024-04-30 | B05-V17~V24-1000, B05-V09~V16-1010 | 21d | 0d | PC Carpentry [8]; PC Concrete [8]; RC 18 MPA [9 M3] | 37,899.68 | Civil |
| B05-V17~V24-1020 |  | Reinforcement Concrete For Foundation | 5d | 2024-05-01 | 2024-05-06 | B05-V17~V24-1010, B05-V09~V16-1020 | 21d | 0d | RC Foundation Carpentry [8]; RC Foundation Steel [8]; RC Foundation Concrete [8] | 201,355.92 | Civil |
| B05-V17~V24-1030 |  | Steel Fixing& Carpenter work for Beams | 4d | 2024-05-07 | 2024-05-11 | B05-V17~V24-1020, B05-V09~V16-1030 | 21d | 0d | RC Grade Beam Carpentry & Steel [8] | 44,745.76 | Civil |
| B05-V17~V24-1040 |  | Mech&Elec Establishment for Beams | 3d | 2024-05-12 | 2024-05-14 | B05-V17~V24-1030, B05-V09~V16-1040 | 21d | 0d |  |  | Mech |
| B05-V17~V24-1050 |  | Pouring Concrete For Beams | 1d | 2024-05-15 | 2024-05-15 | B05-V17~V24-1040, B05-V09~V16-1050 | 21d | 0d | RC Grade Beam Concrete [8] | 77,141.68 | Civil |
| B05-V17~V24-1060 |  | Bitmen Coating For Fondation&Beams | 3d | 2024-05-16 | 2024-05-19 | B05-V17~V24-1050, B05-V09~V16-1060 | 21d | 0d | Bitumen Coating Foundations & Grade Beams [8] | 22,372.32 | Civil |
| B05-V17~V24-1070 |  | Backfilling Inside Fondations | 4d | 2024-05-20 | 2024-05-23 | B05-V17~V24-1060, B05-V09~V16-1070 | 21d | 0d | Backfilling 1st Layer [8]; Backfilling 2ed Layer [8] | 11,186.4 | Civil |
| B05-V17~V24-1080 |  | Mech Works Under Grond Slap | 3d | 2024-05-25 | 2024-05-27 | B05-V17~V24-1070, B05-V09~V16-1080 | 21d | 0d | Mech Establishment Under Ground Slap [8] | 13,423.42 | Mech |
| B05-V17~V24-1090 |  | Steel Fixing& Carpenter work for Ground Slap | 3d | 2024-05-28 | 2024-05-30 | B05-V17~V24-1080, B05-V09~V16-1090 | 21d | 0d | Steel & Carpentry For Ground Slap [8] | 10,246.54 | Civil |
| B05-V17~V24-1100 |  | Anti Termite Treatment For Ground Slap | 1d | 2024-06-01 | 2024-06-01 | B05-V17~V24-1090, B05-V09~V16-1100 | 21d | 0d | Anti Termite Treatment nder Ground Slap [8] | 2,237.28 | Civil |
| B05-V17~V24-1110 |  | Pouring Concrete For Ground Slap | 1d | 2024-06-01 | 2024-06-01 | B05-V17~V24-1100 FF, B05-V17~V24-1090, B05-V09~V16-1110 | 21d | 5d | Concrete For Ground Slap [8] | 58,169.52 | Civil |

| ID | WBS | Activity | Duration | Start | Finish | Predecessors | Total float | Free float | Resources | Cost | Department-1 |
| --- | --- | --- | --- | --- | --- | --- | --- | --- | --- | --- | --- |
|  | 4 | **Precast Works** |  | 2024-06-26 | 2024-07-03 |  |  |  |  |  |  |
| B05-V17~V24-1120 |  | Precast Constrction | 7d | 2024-06-26 | 2024-07-03 | B05-V17~V24-1110, B05-V09~V16-1120 | 0d |  | Precast Walls GF [8]; Hollow Core Slap GF [8]; Precast Stairs & staircase House [8]; Thermal insollation Outside Walls [8]; Concrete structure joints [8]; Precast Walls FF [8]; Hollow Core Slap FF [8] | 1,513,762.87 | Civil |
|  | 1 | **Works Inside The Villa** |  | 2024-07-04 | 2024-10-17 |  |  |  |  |  |  |
| B05-V17~V24-1130 |  | Block Work For GF & Estabishment 1F | 6d | 2024-07-04 | 2024-07-10 | B05-V17~V24-1120, B05-V09~V16-1130 | 13d | 0d | Block GF [8] | 13,647.1 | Arc |
| B05-V17~V24-1140 |  | L.L & H.L Drainage | 6d | 2024-07-11 | 2024-07-17 | B05-V17~V24-1130, B05-V09~V16-1140 | 13d | 0d | HL Drainage [8]; L.L Drainage [8] | 89,489.28 | Mech |
| B05-V17~V24-1150 |  | Elec Establishment For GF & 1F | 3d | 2024-07-11 | 2024-07-14 | B05-V17~V24-1130, B05-V09~V16-1150 | 16d | 3d | Elec Establishment GF [8] | 26,840.73 | Elec |
| B05-V17~V24-1160 |  | Screed Work For 1F & Roof | 6d | 2024-07-18 | 2024-07-24 | B05-V17~V24-1140, B05-V17~V24-1150, B05-V09~V16-1160 | 13d | 0d | Screed 1st Floor [8]; Screed Roof Floor [8]; Leveling Screed 1st Floor [8]; Leveling Screed Roof Floor [8] | 268,467.85 | Civil |
| B05-V17~V24-1170 |  | Water Tank & Heater Foundations | 4d | 2024-07-25 | 2024-07-29 | B05-V17~V24-1160, B05-V09~V16-1170 | 17d | 0d |  |  | Civil |
| B05-V17~V24-1180 |  | Block Works For 1F | 3d | 2024-07-25 | 2024-07-28 | B05-V17~V24-1160, B05-V09~V16-1180 | 13d | 0d | Block FF [8] | 20,537.81 | Arc |
| B05-V17~V24-1190 |  | Water Line Network | 6d | 2024-07-29 | 2024-08-04 | B05-V17~V24-1180, B05-V09~V16-1190 | 13d | 0d | Water Line Network [8] | 40,261.13 | Mech |
| B05-V17~V24-1200 |  | Continue Elec Establishment For GF & 1F | 3d | 2024-07-29 | 2024-07-31 | B05-V17~V24-1180, B05-V09~V16-1200 | 16d | 3d | Elec Establishment FF [8] | 26,840.73 | Elec |
| B05-V17~V24-1210 |  | Thermal Insulation For Roof | 5d | 2024-07-30 | 2024-08-04 | B05-V17~V24-1170, B05-V09~V16-1210 | 17d | 0d | Roof Insulation [8] | 32,530.16 | Arc |
| B05-V17~V24-1220 |  | Roof Floor Tiles | 6d | 2024-08-05 | 2024-08-11 | B05-V17~V24-1210, B05-V09~V16-1220 | 17d | 1d | Roof Tiles [8]; Roof Tiles Joints [8]; Re_Test Roof Insulation [8] | 63,179.38 | Arc |
| B05-V17~V24-1230 |  | Plaster Work For Villa | 6d | 2024-08-05 | 2024-08-11 | B05-V17~V24-1190, B05-V17~V24-1200, B05-V09~V16-1230 | 13d | 0d | Establishing a plastering GF [8]; Establishing a plastering FF [8]; Plastering GF [8]; Plastering FF [8] | 49,263.81 |  |
| B05-V17~V24-1240 |  | Marbale Stairs & Handrails | 6d | 2024-08-12 | 2024-08-18 | B05-V17~V24-1230, B05-V09~V16-1240 | 35d | 1d | Marbale Stairs [8]; Stairs Handrails SS [8] | 91,494.69 |  |
| B05-V17~V24-1250 |  | Water Proofing Of Bathrooms | 4d | 2024-08-12 | 2024-08-15 | B05-V17~V24-1230, B05-V09~V16-1250 | 13d | 0d | Bathrooms InsulationGF & FF [8] | 134.24 |  |
| B05-V17~V24-1260 |  | Pulling The Elec Wires | 4d | 2024-08-12 | 2024-08-15 | B05-V17~V24-1230, B05-V09~V16-1260 | 23d | 3d | Elec Wires GF [8]; Elec Wires FF [8] | 80,542.4 |  |
| B05-V17~V24-1270 |  | Bathroom Tiles | 4d | 2024-08-17 | 2024-08-20 | B05-V17~V24-1250, B05-V17~V24-1220, B05-V09~V16-1270 | 13d | 0d | Ceramic Walls Kitchen [8]; Ceramic Walls Bathrooms GF [8]; Ceramic Walls Bathrooms FF [8]; Ceramic Tiles Bathrooms GF [8]; Ceramic Tiles Kitchen GF [8]; Ceramic Tiles Store GF [8] | 73,204.08 |  |
| B05-V17~V24-1280 |  | Structure For Gypsum | 6d | 2024-08-21 | 2024-08-27 | B05-V17~V24-1270, B05-V09~V16-1280 | 13d | 0d | Structure For Gypsum GF Rooms [8]; Structure For Gypsum FF Rooms [8]; Structure For Gypsum Bathrooms & Kitchen [8] | 33,550.81 |  |
| B05-V17~V24-1290 |  | Gypsum Board For Room | 4d | 2024-08-28 | 2024-09-01 | B05-V17~V24-1280, B05-V17~V24-1260, B05-V09~V16-1290 | 13d | 0d | Gypsum Board For GF Room [8]; Gypsum Board For FF Room [8] | 35,796.64 |  |
| B05-V17~V24-1300 |  | Installation Of Gypsum Board For Bathroom & Kitchen | 4d | 2024-09-02 | 2024-09-05 | B05-V17~V24-1290, B05-V09~V16-1300 | 13d | 0d | Gypsum Board For Bathrooms & Kitchen [8] | 11,052.24 |  |
| B05-V17~V24-1310 |  | Putty Filler For Gypsm Board Ceiling | 6d | 2024-09-07 | 2024-09-12 | B05-V17~V24-1300, B05-V09~V16-1310 | 13d | 0d | Putty Filler 1st Layer Roof all Rooms [8]; Putty Filler 1st Layer Roof all Bathrooms & Kitchen [8]; Putty Filler1st Layer walls [8] | 62,182.52 |  |
| B05-V17~V24-1320 |  | Fixing Shower Glass | 4d | 2024-09-14 | 2024-09-17 | B05-V17~V24-1310, B05-V09~V16-1320 | 21d | 0d | Shower Glass [8] | 22,372.88 |  |
| B05-V17~V24-1330 |  | Interior Wall Putty Filler | 6d | 2024-09-14 | 2024-09-19 | B05-V17~V24-1310, B05-V17~V24-1240, B05-V09~V16-1330 | 13d | 0d | Putty Filler 2ed Layer Roof & WAlls GF [8]; Putty Filler 2ed Layer Roof & WAlls FF [8] | 62,150.21 |  |
| B05-V17~V24-1340 |  | Installation Of Sanitry Fixture | 7d | 2024-09-18 | 2024-09-25 | B05-V17~V24-1320, B05-V09~V16-1340 | 21d | 0d | Mech Fixtures & Accessories [8] | 98,435.64 |  |
| B05-V17~V24-1350 |  | 1st Face Paint | 6d | 2024-09-21 | 2024-09-26 | B05-V17~V24-1330, B05-V09~V16-1350 | 13d | 0d |  |  |  |
| B05-V17~V24-1360 |  | Installation Of Aluminum Windows | 7d | 2024-09-21 | 2024-09-28 | B05-V17~V24-1330, B05-V09~V16-1360 | 23d | 0d | Aluminum Windows [8] | 84,795.68 |  |
| B05-V17~V24-1370 |  | Installation Of Elec Fixture & Accessories | 7d | 2024-09-21 | 2024-09-28 | B05-V17~V24-1310, B05-V17~V24-1330, B05-V17~V24-1260, B05-V09~V16-1370 | 37d | 0d | Elec Fixtures & Accessories Villa & Yard [8]; Elec Cables GF & FF & Earthing [8] | 53,692.2 |  |
| B05-V17~V24-1380 |  | Installation Of Water Tank-Heater & Pumps | 7d | 2024-09-26 | 2024-10-03 | B05-V17~V24-1340, B05-V09~V16-1380, B05-V17~V24-1220 | 21d | 0d | Water Tank & booster Pump [8]; Lower Pump [8]; Heater [8] | 129,756.23 |  |
| B05-V17~V24-1390 |  | Installation Of Parquet | 4d | 2024-09-28 | 2024-10-01 | B05-V17~V24-1350, B05-V09~V16-1390 | 13d | 0d | Installation Of Parquet [8] | 52,978.96 |  |
| B05-V17~V24-1400 |  | Installation Of Wooden Doors | 7d | 2024-10-02 | 2024-10-09 | B05-V17~V24-1390, B05-V09~V16-1400 | 13d | 0d | Wooden Doors Kitchen & Bathroom without Accessories [8]; Wooden Doors Accessories all Villa [8]; Exterior Wooden Doors [8] | 142,105.45 |  |
| B05-V17~V24-1410 |  | Final Face Paint | 7d | 2024-10-10 | 2024-10-17 | B05-V17~V24-1360, B05-V17~V24-1400, B05-V09~V16-1410 | 13d | 0d | Final Face Paint Villa [8] | 31,096.77 |  |

| ID | WBS | Activity | Duration | Start | Finish | Predecessors | Total float | Free float | Resources | Cost |
| --- | --- | --- | --- | --- | --- | --- | --- | --- | --- | --- |
|  | 3 | **Fence & Courtyard Works** |  | 2024-07-04 | 2024-10-07 |  |  |  |  |  |
| B05-V17~V24-1420 |  | Pouring Bedding Concrete For Fence Fondations | 2d | 2024-07-04 | 2024-07-06 | B05-V17~V24-1120, B05-V09~V16-1420 | 9d | 0d | Excavation Fence Foundations [8] | 4,519.28 |
| B05-V17~V24-1430 |  | RC Concrete For Fence Fondations | 6d | 2024-07-07 | 2024-07-13 | B05-V17~V24-1420, B05-V09~V16-1430 | 9d | 0d | Fence Fondations-Eastern side [8]; Fence Fondations-Westren side [8]; Fence Fondations-Back side [8] | 13,420.32 |
| B05-V17~V24-1440 |  | Steel Fixing & Carpentry For Fence Columns | 6d | 2024-07-14 | 2024-07-20 | B05-V17~V24-1430, B05-V09~V16-1440 | 9d | 0d |  |  |
| B05-V17~V24-1450 |  | Establishing Elec For Fence Columns | 4d | 2024-07-21 | 2024-07-24 | B05-V17~V24-1440, B05-V09~V16-1450 | 9d | 0d |  |  |
| B05-V17~V24-1460 |  | Pouring Concrete For Fence Columns | 1d | 2024-07-25 | 2024-07-25 | B05-V17~V24-1450, B05-V09~V16-1460 | 9d | 0d | Fence Columns-Eastern side [8]; Fence Columns-Westren side [8]; Fence Columns-Back side [8] | 9,665.04 |
| B05-V17~V24-1470 |  | Installation Precast Panel For Fence | 5d | 2024-07-27 | 2024-07-31 | B05-V17~V24-1460, B05-V09~V16-1470 | 9d | 0d | Hollow Core Walls [8] | 71,593.2 |
| B05-V17~V24-1480 |  | Bitumen Coating For Fence Fondations | 4d | 2024-08-01 | 2024-08-05 | B05-V17~V24-1470, B05-V09~V16-1480 | 9d | 0d |  |  |
| B05-V17~V24-1490 |  | Pouring Bedding Concrete For "Front" Fence Fondations | 1d | 2024-08-01 | 2024-08-01 | B05-V17~V24-1470, B05-V09~V16-1490 | 21d | 0d |  |  |
| B05-V17~V24-1500 |  | RC Concrete For "Front" Fence Fondations | 4d | 2024-08-03 | 2024-08-06 | B05-V17~V24-1490, B05-V09~V16-1500 | 21d | 0d | Front Fence Fondations [8] | 8,904.4 |
| B05-V17~V24-1510 |  | Outdoor Drainage & Water Line | 5d | 2024-08-06 | 2024-08-11 | B05-V17~V24-1480, B05-V17~V24-1140, B05-V09~V16-1510 | 9d | 0d | Outdoor Drainage [8]; Outdoor Water Line [8] | 13,423.68 |
| B05-V17~V24-1520 |  | Steel Fixing & Carpentry For "Front" Fence Columns | 4d | 2024-08-07 | 2024-08-11 | B05-V17~V24-1500, B05-V09~V16-1520 | 21d | 0d |  |  |
| B05-V17~V24-1530 |  | Establishing Elec For "Front" Fence Columns | 4d | 2024-08-12 | 2024-08-15 | B05-V17~V24-1520, B05-V09~V16-1530 | 21d | 0d |  |  |
| B05-V17~V24-1540 |  | Establishing Elec For Fence & Yard | 2d | 2024-08-12 | 2024-08-13 | B05-V17~V24-1510, B05-V09~V16-1540 | 9d | 0d | Elec Establishment Fence & Yard [8] | 17,898.32 |
| B05-V17~V24-1550 |  | Backfilling the Yard | 4d | 2024-08-14 | 2024-08-18 | B05-V17~V24-1540, B05-V09~V16-1550 | 9d | 0d | Backfilling the Yard [8] | 10,560 |
| B05-V17~V24-1560 |  | Pouring Concrete Wall Of "Front" Fence Columns | 2d | 2024-08-17 | 2024-08-18 | B05-V17~V24-1530, B05-V09~V16-1560 | 21d | 0d | Front Fence Walls [8] | 17,898.32 |
| B05-V17~V24-1570 |  | Pouring Concrete Crown Of "Front" Fence Columns | 3d | 2024-08-19 | 2024-08-21 | B05-V17~V24-1560, B05-V09~V16-1570 | 21d | 0d | Fence Columns - C Chanel [8] | 3,310.37 |
| B05-V17~V24-1580 |  | Bardoura Works For Yard | 5d | 2024-08-19 | 2024-08-24 | B05-V17~V24-1550, B05-V09~V16-1580 | 9d | 0d | Bardoura Works For Yard [8] | 14,408.16 |
| B05-V17~V24-1590 |  | Pouring Concrete Flower Basin Of "Front" Fence Columns | 4d | 2024-08-22 | 2024-08-26 | B05-V17~V24-1570, B05-V09~V16-1590 | 21d | 0d |  |  |
| B05-V17~V24-1600 |  | Antitermite Treatment For Yard | 1d | 2024-08-25 | 2024-08-25 | B05-V17~V24-1580, B05-V09~V16-1600 | 9d | 0d | Antitermite Treatment For Yard [8] |  |
| B05-V17~V24-1610 |  | Pouring Concrete For Yard | 1d | 2024-08-26 | 2024-08-26 | B05-V17~V24-1600, B05-V09~V16-1610 | 9d | 0d |  |  |
| B05-V17~V24-1620 |  | Block Work For Flower Basin | 5d | 2024-08-27 | 2024-09-01 | B05-V17~V24-1610, B05-V09~V16-1620 | 9d | 0d |  |  |
| B05-V17~V24-1630 |  | Plastering Work For Flower Basin | 4d | 2024-09-02 | 2024-09-05 | B05-V17~V24-1620, B05-V09~V16-1630 | 9d | 0d |  |  |
| B05-V17~V24-1640 |  | Interlock Works For The Yard | 6d | 2024-09-07 | 2024-09-12 | B05-V17~V24-1630, B05-V09~V16-1640 | 9d | 0d | Interlock Works For The Yard [8] | 36,776.32 |
| B05-V17~V24-1650 |  | External Grading Works For The Villa | 4d | 2024-09-14 | 2024-09-17 | B05-V17~V24-1640, B05-V09~V16-1650 | 11d | 0d | External Grading Works For The Villa [8] | 3,221.68 |
| B05-V17~V24-1660 |  | Installation The Exterior Door & Garage Door | 5d | 2024-09-14 | 2024-09-18 | B05-V17~V24-1640, B05-V09~V16-1660 | 14d | 2d | Installation The Exterior Door [8]; Installation The Exterior Garage Door [8] | 40,002.72 |
| B05-V17~V24-1670 |  | Fixing Floor Drain For The Yard | 2d | 2024-09-14 | 2024-09-15 | B05-V17~V24-1640, B05-V09~V16-1670 | 17d | 5d | Floor Drain & Clean Out [8] | 13,423.76 |
| B05-V17~V24-1680 |  | Granite Surronds Around The Villa | 4d | 2024-09-18 | 2024-09-22 | B05-V17~V24-1650, B05-V09~V16-1680 | 11d | 2d | Granite Surronds Around The Villa [8] | 25,818.32 |
| B05-V17~V24-1690 |  | Painting The Base Surface Of The Fence | 2d | 2024-09-18 | 2024-09-19 | B05-V17~V24-1750, B05-V09~V16-1690 | 9d | 0d |  |  |
| B05-V17~V24-1700 |  | Painting The Final Face Of The Fence | 4d | 2024-09-21 | 2024-09-24 | B05-V17~V24-1690, B05-V09~V16-1700 | 9d | 0d | Painting Final Face Of The Fence [8] | 37,586.48 |
| B05-V17~V24-1710 |  | Exterior Painting Of The Villa | 7d | 2024-09-25 | 2024-10-02 | B05-V17~V24-1680, B05-V17~V24-1700, B05-V17~V24-1660, B05-V17~V24-1670, B05-V09~V16-1710 | 9d | 0d | Exterior Painting Of The Villa [8]; Exterior Painting Staircase House [8] | 105,684.16 |
| B05-V17~V24-1720 |  | Installation Elec Fixtures & Accessories For The Yard | 4d | 2024-10-03 | 2024-10-07 | B05-V17~V24-1700, B05-V17~V24-1710, B05-V09~V16-1720 | 66d | 0d | Elec feeding panels GF & FF [8] | 22,372.88 |

| ID | WBS | Activity | Duration | Start | Finish | Predecessors | Total float | Free float | Resources | Cost | Department-1 |
| --- | --- | --- | --- | --- | --- | --- | --- | --- | --- | --- | --- |
|  | 5 | **External Sidewalk Works** |  | 2024-08-27 | 2024-10-12 |  |  |  |  |  |  |
| B05-V17~V24-1730 |  | Connection The Drain To The Piblic Network | 3d | 2024-08-27 | 2024-08-29 | B05-V17~V24-1510, B05-V17~V24-1590, B05-V09~V16-1730 | 21d | 4d | Connection Drain To The Piblic Network [8]; Connection Water To The Piblic Network [8] | 13,420.32 |  |
| B05-V17~V24-1740 |  | Pardora Works For The External Sidewalk | 2d | 2024-09-14 | 2024-09-15 | B05-V17~V24-1640, B05-V17~V24-1730, B05-V09~V16-1740 | 9d | 0d |  |  |  |
| B05-V17~V24-1750 |  | Interlock Works For The Exerrnal Sidewalk | 2d | 2024-09-16 | 2024-09-17 | B05-V17~V24-1740, B05-V09~V16-1750 | 9d | 0d |  |  |  |
| B05-V17~V24-1760 |  | Pulling The Villa's Main Elec Cable | 4d | 2024-10-08 | 2024-10-12 | B05-V17~V24-1750, B05-V17~V24-1720, B05-V09~V16-1760 | 66d | 0d | Elec Work Testing [8] | 22,819.84 |  |
|  | 6 | **Final Testing & Handover** |  | 2024-10-05 | 2024-10-30 |  |  |  |  |  |  |
| B05-V17~V24-1770 |  | Mech Work Testing & Handover | 5d | 2024-10-05 | 2024-10-09 | B05-V17~V24-1730, B05-V17~V24-1340, B05-V17~V24-1380, B05-V09~V16-1770 | 73d | 2d | Mech Work Testing & Handover [8] | 14,318.64 |  |
| B05-V17~V24-1780 |  | Arch Snaglist & Handover | 5d | 2024-10-10 | 2024-10-15 | B05-V17~V24-1750, B05-V17~V24-1710, B05-V17~V24-1400, B05-V09~V16-1780 | 68d | 2d | Arch Snaglist & Handover [8] | 77,320.64 |  |
| B05-V17~V24-1790 |  | ElecWork Testing & Handover | 5d | 2024-10-13 | 2024-10-17 | B05-V17~V24-1760, B05-V17~V24-1370, B05-V09~V16-1790 | 66d | 0d | Elec Work Handover [8] | 23,804.72 |  |
| B05-V17~V24-1800 |  | Final Handover Of The Villa To The Consltant | 5d | 2024-10-19 | 2024-10-23 | B05-V17~V24-1780, B05-V17~V24-1790, B05-V17~V24-1770, B05-V17~V24-1410, B05-V09~V16-1800 | 66d | 0d |  |  |  |
| B05-V17~V24-1810 |  | Customer Delivery | 6d | 2024-10-24 | 2024-10-30 | B05-V17~V24-1800, B05-V09~V16-1810 | 66d | 1d |  |  |  |
|  | 20 | **B05-V25~V32** |  | 2024-04-29 | 2024-11-07 |  |  |  |  |  |  |
|  | 2 | **Under Grond Slap Works** |  | 2024-04-29 | 2024-06-08 |  |  |  |  |  |  |
| B05-V25~V32-1000 |  | Excavation&Compaction of Fondation | 6d | 2024-04-29 | 2024-05-05 | B05-V17~V24-1000 | 22d | 0d | Clearing & Groubbing [8]; Excavation & Leveling [8]; Stone Layer [8]; A3 Layer [8]; A1-a 1st Layer [8]; A1-a 2ed Layer [8] | 163,545.76 | Civil |
| B05-V25~V32-1010 |  | Pouring Concrete For Bedding | 2d | 2024-05-06 | 2024-05-07 | B05-V25~V32-1000, B05-V17~V24-1010 | 22d | 0d | PC Carpentry [8]; PC Concrete [8]; RC 18 MPA [9 M3] | 37,899.68 | Civil |
| B05-V25~V32-1020 |  | Reinforcement Concrete For Foundation | 5d | 2024-05-08 | 2024-05-13 | B05-V25~V32-1010, B05-V17~V24-1020 | 22d | 0d | RC Foundation Carpentry [8]; RC Foundation Steel [8]; RC Foundation Concrete [8] | 201,355.92 | Civil |
| B05-V25~V32-1030 |  | Steel Fixing& Carpenter work for Beams | 4d | 2024-05-14 | 2024-05-18 | B05-V25~V32-1020, B05-V17~V24-1030 | 22d | 0d | RC Grade Beam Carpentry & Steel [8] | 44,745.76 | Civil |
| B05-V25~V32-1040 |  | Mech&Elec Establishment for Beams | 3d | 2024-05-19 | 2024-05-21 | B05-V25~V32-1030, B05-V17~V24-1040 | 22d | 0d |  |  | Mech |
| B05-V25~V32-1050 |  | Pouring Concrete For Beams | 1d | 2024-05-22 | 2024-05-22 | B05-V25~V32-1040, B05-V17~V24-1050 | 22d | 0d | RC Grade Beam Concrete [8] | 77,141.68 | Civil |
| B05-V25~V32-1060 |  | Bitmen Coating For Fondation&Beams | 3d | 2024-05-23 | 2024-05-26 | B05-V25~V32-1050, B05-V17~V24-1060 | 22d | 0d | Bitumen Coating Foundations & Grade Beams [8] | 22,372.32 | Civil |
| B05-V25~V32-1070 |  | Backfilling Inside Fondations | 4d | 2024-05-27 | 2024-05-30 | B05-V25~V32-1060, B05-V17~V24-1070 | 22d | 0d | Backfilling 1st Layer [8]; Backfilling 2ed Layer [8] | 11,186.4 | Civil |
| B05-V25~V32-1080 |  | Mech Works Under Grond Slap | 3d | 2024-06-01 | 2024-06-03 | B05-V25~V32-1070, B05-V17~V24-1080 | 22d | 0d | Mech Establishment Under Ground Slap [8] | 13,423.42 | Mech |
| B05-V25~V32-1090 |  | Steel Fixing& Carpenter work for Ground Slap | 3d | 2024-06-04 | 2024-06-06 | B05-V25~V32-1080, B05-V17~V24-1090 | 22d | 0d | Steel & Carpentry For Ground Slap [8] | 10,246.54 | Civil |
| B05-V25~V32-1100 |  | Anti Termite Treatment For Ground Slap | 1d | 2024-06-08 | 2024-06-08 | B05-V25~V32-1090, B05-V17~V24-1100 | 22d | 0d | Anti Termite Treatment nder Ground Slap [8] | 2,237.28 | Civil |
| B05-V25~V32-1110 |  | Pouring Concrete For Ground Slap | 1d | 2024-06-08 | 2024-06-08 | B05-V25~V32-1100 FF, B05-V25~V32-1090, B05-V17~V24-1110 | 22d | 5d | Concrete For Ground Slap [8] | 58,169.52 | Civil |

| ID | WBS | Activity | Duration | Start | Finish | Predecessors | Total float | Free float | Resources | Cost | Department-1 |
| --- | --- | --- | --- | --- | --- | --- | --- | --- | --- | --- | --- |
|  | 4 | **Precast Works** |  | 2024-07-04 | 2024-07-11 |  |  |  |  |  |  |
| B05-V25~V32-1120 |  | Precast Constrction | 7d | 2024-07-04 | 2024-07-11 | B05-V25~V32-1110, B05-V17~V24-1120 | 0d |  | Precast Walls GF [8]; Hollow Core Slap GF [8]; Precast Stairs & staircase House [8]; Thermal insollation Outside Walls [8]; Concrete structure joints [8]; Precast Walls FF [8]; Hollow Core Slap FF [8] | 1,513,762.87 | Civil |
|  | 1 | **Works Inside The Villa** |  | 2024-07-13 | 2024-10-26 |  |  |  |  |  |  |
| B05-V25~V32-1130 |  | Block Work For GF & Estabishment 1F | 6d | 2024-07-13 | 2024-07-18 | B05-V25~V32-1120, B05-V17~V24-1130 | 13d | 0d | Block GF [8] | 13,647.1 | Arc |
| B05-V25~V32-1140 |  | L.L & H.L Drainage | 6d | 2024-07-20 | 2024-07-25 | B05-V25~V32-1130, B05-V17~V24-1140 | 13d | 0d | HL Drainage [8]; L.L Drainage [8] | 89,489.28 | Mech |
| B05-V25~V32-1150 |  | Elec Establishment For GF & 1F | 3d | 2024-07-20 | 2024-07-22 | B05-V25~V32-1130, B05-V17~V24-1150 | 16d | 3d | Elec Establishment GF [8] | 26,840.73 | Elec |
| B05-V25~V32-1160 |  | Screed Work For 1F & Roof | 6d | 2024-07-27 | 2024-08-01 | B05-V25~V32-1140, B05-V25~V32-1150, B05-V17~V24-1160 | 13d | 0d | Screed 1st Floor [8]; Screed Roof Floor [8]; Leveling Screed 1st Floor [8]; Leveling Screed Roof Floor [8] | 268,467.85 | Civil |
| B05-V25~V32-1170 |  | Water Tank & Heater Foundations | 4d | 2024-08-03 | 2024-08-06 | B05-V25~V32-1160, B05-V17~V24-1170 | 17d | 0d |  |  | Civil |
| B05-V25~V32-1180 |  | Block Works For 1F | 3d | 2024-08-03 | 2024-08-05 | B05-V25~V32-1160, B05-V17~V24-1180 | 13d | 0d | Block FF [8] | 20,537.81 | Arc |
| B05-V25~V32-1190 |  | Water Line Network | 6d | 2024-08-06 | 2024-08-12 | B05-V25~V32-1180, B05-V17~V24-1190 | 13d | 0d | Water Line Network [8] | 40,261.13 | Mech |
| B05-V25~V32-1200 |  | Continue Elec Establishment For GF & 1F | 3d | 2024-08-06 | 2024-08-08 | B05-V25~V32-1180, B05-V17~V24-1200 | 16d | 3d | Elec Establishment FF [8] | 26,840.73 | Elec |
| B05-V25~V32-1210 |  | Thermal Insulation For Roof | 5d | 2024-08-07 | 2024-08-12 | B05-V25~V32-1170, B05-V17~V24-1210 | 17d | 0d | Roof Insulation [8] | 32,530.16 | Arc |
| B05-V25~V32-1220 |  | Roof Floor Tiles | 6d | 2024-08-13 | 2024-08-19 | B05-V25~V32-1210, B05-V17~V24-1220 | 17d | 1d | Roof Tiles [8]; Roof Tiles Joints [8]; Re_Test Roof Insulation [8] | 63,179.38 | Arc |
| B05-V25~V32-1230 |  | Plaster Work For Villa | 6d | 2024-08-13 | 2024-08-19 | B05-V25~V32-1190, B05-V25~V32-1200, B05-V17~V24-1230 | 13d | 0d | Establishing a plastering GF [8]; Establishing a plastering FF [8]; Plastering GF [8]; Plastering FF [8] | 49,263.81 |  |
| B05-V25~V32-1240 |  | Marbale Stairs & Handrails | 6d | 2024-08-20 | 2024-08-26 | B05-V25~V32-1230, B05-V17~V24-1240 | 35d | 1d | Marbale Stairs [8]; Stairs Handrails SS [8] | 91,494.69 |  |
| B05-V25~V32-1250 |  | Water Proofing Of Bathrooms | 4d | 2024-08-20 | 2024-08-24 | B05-V25~V32-1230, B05-V17~V24-1250 | 13d | 0d | Bathrooms InsulationGF & FF [8] | 134.24 |  |
| B05-V25~V32-1260 |  | Pulling The Elec Wires | 4d | 2024-08-20 | 2024-08-24 | B05-V25~V32-1230, B05-V17~V24-1260 | 23d | 3d | Elec Wires GF [8]; Elec Wires FF [8] | 80,542.4 |  |
| B05-V25~V32-1270 |  | Bathroom Tiles | 4d | 2024-08-25 | 2024-08-28 | B05-V25~V32-1250, B05-V25~V32-1220, B05-V17~V24-1270 | 13d | 0d | Ceramic Walls Kitchen [8]; Ceramic Walls Bathrooms GF [8]; Ceramic Walls Bathrooms FF [8]; Ceramic Tiles Bathrooms GF [8]; Ceramic Tiles Kitchen GF [8]; Ceramic Tiles Store GF [8] | 73,204.08 |  |
| B05-V25~V32-1280 |  | Structure For Gypsum | 6d | 2024-08-29 | 2024-09-04 | B05-V25~V32-1270, B05-V17~V24-1280 | 13d | 0d | Structure For Gypsum GF Rooms [8]; Structure For Gypsum FF Rooms [8]; Structure For Gypsum Bathrooms & Kitchen [8] | 33,550.81 |  |
| B05-V25~V32-1290 |  | Gypsum Board For Room | 4d | 2024-09-05 | 2024-09-09 | B05-V25~V32-1280, B05-V25~V32-1260, B05-V17~V24-1290 | 13d | 0d | Gypsum Board For GF Room [8]; Gypsum Board For FF Room [8] | 35,796.64 |  |
| B05-V25~V32-1300 |  | Installation Of Gypsum Board For Bathroom & Kitchen | 4d | 2024-09-10 | 2024-09-14 | B05-V25~V32-1290, B05-V17~V24-1300 | 13d | 0d | Gypsum Board For Bathrooms & Kitchen [8] | 11,052.24 |  |
| B05-V25~V32-1310 |  | Putty Filler For Gypsm Board Ceiling | 6d | 2024-09-15 | 2024-09-21 | B05-V25~V32-1300, B05-V17~V24-1310 | 13d | 0d | Putty Filler 1st Layer Roof all Rooms [8]; Putty Filler 1st Layer Roof all Bathrooms & Kitchen [8]; Putty Filler1st Layer walls [8] | 62,182.52 |  |
| B05-V25~V32-1320 |  | Fixing Shower Glass | 4d | 2024-09-22 | 2024-09-25 | B05-V25~V32-1310, B05-V17~V24-1320 | 21d | 0d | Shower Glass [8] | 22,372.88 |  |
| B05-V25~V32-1330 |  | Interior Wall Putty Filler | 6d | 2024-09-22 | 2024-09-28 | B05-V25~V32-1310, B05-V25~V32-1240, B05-V17~V24-1330 | 13d | 0d | Putty Filler 2ed Layer Roof & WAlls GF [8]; Putty Filler 2ed Layer Roof & WAlls FF [8] | 62,150.21 |  |
| B05-V25~V32-1340 |  | Installation Of Sanitry Fixture | 7d | 2024-09-26 | 2024-10-03 | B05-V25~V32-1320, B05-V17~V24-1340 | 21d | 0d | Mech Fixtures & Accessories [8] | 98,435.64 |  |
| B05-V25~V32-1350 |  | 1st Face Paint | 6d | 2024-09-29 | 2024-10-05 | B05-V25~V32-1330, B05-V17~V24-1350 | 13d | 0d |  |  |  |
| B05-V25~V32-1360 |  | Installation Of Aluminum Windows | 7d | 2024-09-29 | 2024-10-06 | B05-V25~V32-1330, B05-V17~V24-1360 | 23d | 0d | Aluminum Windows [8] | 84,795.68 |  |
| B05-V25~V32-1370 |  | Installation Of Elec Fixture & Accessories | 7d | 2024-09-29 | 2024-10-06 | B05-V25~V32-1310, B05-V25~V32-1330, B05-V25~V32-1260, B05-V17~V24-1370 | 37d | 0d | Elec Fixtures & Accessories Villa & Yard [8]; Elec Cables GF & FF & Earthing [8] | 53,692.2 |  |
| B05-V25~V32-1380 |  | Installation Of Water Tank-Heater & Pumps | 7d | 2024-10-05 | 2024-10-12 | B05-V25~V32-1340, B05-V17~V24-1380, B05-V25~V32-1220 | 21d | 0d | Water Tank & booster Pump [8]; Lower Pump [8]; Heater [8] | 129,756.23 |  |
| B05-V25~V32-1390 |  | Installation Of Parquet | 4d | 2024-10-06 | 2024-10-09 | B05-V25~V32-1350, B05-V17~V24-1390 | 13d | 0d | Installation Of Parquet [8] | 52,978.96 |  |
| B05-V25~V32-1400 |  | Installation Of Wooden Doors | 7d | 2024-10-10 | 2024-10-17 | B05-V25~V32-1390, B05-V17~V24-1400 | 13d | 0d | Wooden Doors Kitchen & Bathroom without Accessories [8]; Wooden Doors Accessories all Villa [8]; Exterior Wooden Doors [8] | 142,105.45 |  |
| B05-V25~V32-1410 |  | Final Face Paint | 7d | 2024-10-19 | 2024-10-26 | B05-V25~V32-1360, B05-V25~V32-1400, B05-V17~V24-1410 | 13d | 0d | Final Face Paint Villa [8] | 31,096.77 |  |

| ID | WBS | Activity | Duration | Start | Finish | Predecessors | Total float | Free float | Resources | Cost |
| --- | --- | --- | --- | --- | --- | --- | --- | --- | --- | --- |
|  | 3 | **Fence & Courtyard Works** |  | 2024-07-13 | 2024-10-15 |  |  |  |  |  |
| B05-V25~V32-1420 |  | Pouring Bedding Concrete For Fence Fondations | 2d | 2024-07-13 | 2024-07-14 | B05-V25~V32-1120, B05-V17~V24-1420 | 9d | 0d | Excavation Fence Foundations [8] | 4,519.28 |
| B05-V25~V32-1430 |  | RC Concrete For Fence Fondations | 6d | 2024-07-15 | 2024-07-21 | B05-V25~V32-1420, B05-V17~V24-1430 | 9d | 0d | Fence Fondations-Eastern side [8]; Fence Fondations-Westren side [8]; Fence Fondations-Back side [8] | 13,420.32 |
| B05-V25~V32-1440 |  | Steel Fixing & Carpentry For Fence Columns | 6d | 2024-07-22 | 2024-07-28 | B05-V25~V32-1430, B05-V17~V24-1440 | 9d | 0d |  |  |
| B05-V25~V32-1450 |  | Establishing Elec For Fence Columns | 4d | 2024-07-29 | 2024-08-01 | B05-V25~V32-1440, B05-V17~V24-1450 | 9d | 0d |  |  |
| B05-V25~V32-1460 |  | Pouring Concrete For Fence Columns | 1d | 2024-08-03 | 2024-08-03 | B05-V25~V32-1450, B05-V17~V24-1460 | 9d | 0d | Fence Columns-Eastern side [8]; Fence Columns-Westren side [8]; Fence Columns-Back side [8] | 9,665.04 |
| B05-V25~V32-1470 |  | Installation Precast Panel For Fence | 5d | 2024-08-04 | 2024-08-08 | B05-V25~V32-1460, B05-V17~V24-1470 | 9d | 0d | Hollow Core Walls [8] | 71,593.2 |
| B05-V25~V32-1480 |  | Bitumen Coating For Fence Fondations | 4d | 2024-08-10 | 2024-08-13 | B05-V25~V32-1470, B05-V17~V24-1480 | 9d | 0d |  |  |
| B05-V25~V32-1490 |  | Pouring Bedding Concrete For "Front" Fence Fondations | 1d | 2024-08-10 | 2024-08-10 | B05-V25~V32-1470, B05-V17~V24-1490 | 21d | 0d |  |  |
| B05-V25~V32-1500 |  | RC Concrete For "Front" Fence Fondations | 4d | 2024-08-11 | 2024-08-14 | B05-V25~V32-1490, B05-V17~V24-1500 | 21d | 0d | Front Fence Fondations [8] | 8,904.4 |
| B05-V25~V32-1510 |  | Outdoor Drainage & Water Line | 5d | 2024-08-14 | 2024-08-19 | B05-V25~V32-1480, B05-V25~V32-1140, B05-V17~V24-1510 | 9d | 0d | Outdoor Drainage [8]; Outdoor Water Line [8] | 13,423.68 |
| B05-V25~V32-1520 |  | Steel Fixing & Carpentry For "Front" Fence Columns | 4d | 2024-08-15 | 2024-08-19 | B05-V25~V32-1500, B05-V17~V24-1520 | 21d | 0d |  |  |
| B05-V25~V32-1530 |  | Establishing Elec For "Front" Fence Columns | 4d | 2024-08-20 | 2024-08-24 | B05-V25~V32-1520, B05-V17~V24-1530 | 21d | 0d |  |  |
| B05-V25~V32-1540 |  | Establishing Elec For Fence & Yard | 2d | 2024-08-20 | 2024-08-21 | B05-V25~V32-1510, B05-V17~V24-1540 | 9d | 0d | Elec Establishment Fence & Yard [8] | 17,898.32 |
| B05-V25~V32-1550 |  | Backfilling the Yard | 4d | 2024-08-22 | 2024-08-26 | B05-V25~V32-1540, B05-V17~V24-1550 | 9d | 0d | Backfilling the Yard [8] | 10,560 |
| B05-V25~V32-1560 |  | Pouring Concrete Wall Of "Front" Fence Columns | 2d | 2024-08-25 | 2024-08-26 | B05-V25~V32-1530, B05-V17~V24-1560 | 21d | 0d | Front Fence Walls [8] | 17,898.32 |
| B05-V25~V32-1570 |  | Pouring Concrete Crown Of "Front" Fence Columns | 3d | 2024-08-27 | 2024-08-29 | B05-V25~V32-1560, B05-V17~V24-1570 | 21d | 0d | Fence Columns - C Chanel [8] | 3,310.37 |
| B05-V25~V32-1580 |  | Bardoura Works For Yard | 5d | 2024-08-27 | 2024-09-01 | B05-V25~V32-1550, B05-V17~V24-1580 | 9d | 0d | Bardoura Works For Yard [8] | 14,408.16 |
| B05-V25~V32-1590 |  | Pouring Concrete Flower Basin Of "Front" Fence Columns | 4d | 2024-08-31 | 2024-09-03 | B05-V25~V32-1570, B05-V17~V24-1590 | 21d | 0d |  |  |
| B05-V25~V32-1600 |  | Antitermite Treatment For Yard | 1d | 2024-09-02 | 2024-09-02 | B05-V25~V32-1580, B05-V17~V24-1600 | 9d | 0d | Antitermite Treatment For Yard [8] |  |
| B05-V25~V32-1610 |  | Pouring Concrete For Yard | 1d | 2024-09-03 | 2024-09-03 | B05-V25~V32-1600, B05-V17~V24-1610 | 9d | 0d |  |  |
| B05-V25~V32-1620 |  | Block Work For Flower Basin | 5d | 2024-09-04 | 2024-09-09 | B05-V25~V32-1610, B05-V17~V24-1620 | 9d | 0d |  |  |
| B05-V25~V32-1630 |  | Plastering Work For Flower Basin | 4d | 2024-09-10 | 2024-09-14 | B05-V25~V32-1620, B05-V17~V24-1630 | 9d | 0d |  |  |
| B05-V25~V32-1640 |  | Interlock Works For The Yard | 6d | 2024-09-15 | 2024-09-21 | B05-V25~V32-1630, B05-V17~V24-1640 | 9d | 0d | Interlock Works For The Yard [8] | 36,776.32 |
| B05-V25~V32-1650 |  | External Grading Works For The Villa | 4d | 2024-09-22 | 2024-09-25 | B05-V25~V32-1640, B05-V17~V24-1650 | 11d | 0d | External Grading Works For The Villa [8] | 3,221.68 |
| B05-V25~V32-1660 |  | Installation The Exterior Door & Garage Door | 5d | 2024-09-22 | 2024-09-26 | B05-V25~V32-1640, B05-V17~V24-1660 | 14d | 2d | Installation The Exterior Door [8]; Installation The Exterior Garage Door [8] | 40,002.72 |
| B05-V25~V32-1670 |  | Fixing Floor Drain For The Yard | 2d | 2024-09-22 | 2024-09-23 | B05-V25~V32-1640, B05-V17~V24-1670 | 17d | 5d | Floor Drain & Clean Out [8] | 13,423.76 |
| B05-V25~V32-1680 |  | Granite Surronds Around The Villa | 4d | 2024-09-26 | 2024-09-30 | B05-V25~V32-1650, B05-V17~V24-1680 | 11d | 2d | Granite Surronds Around The Villa [8] | 25,818.32 |
| B05-V25~V32-1690 |  | Painting The Base Surface Of The Fence | 2d | 2024-09-26 | 2024-09-28 | B05-V25~V32-1750, B05-V17~V24-1690 | 9d | 0d |  |  |
| B05-V25~V32-1700 |  | Painting The Final Face Of The Fence | 4d | 2024-09-29 | 2024-10-02 | B05-V25~V32-1690, B05-V17~V24-1700 | 9d | 0d | Painting Final Face Of The Fence [8] | 37,586.48 |
| B05-V25~V32-1710 |  | Exterior Painting Of The Villa | 7d | 2024-10-03 | 2024-10-10 | B05-V25~V32-1680, B05-V25~V32-1700, B05-V25~V32-1660, B05-V25~V32-1670, B05-V17~V24-1710 | 9d | 0d | Exterior Painting Of The Villa [8]; Exterior Painting Staircase House [8] | 105,684.16 |
| B05-V25~V32-1720 |  | Installation Elec Fixtures & Accessories For The Yard | 4d | 2024-10-12 | 2024-10-15 | B05-V25~V32-1700, B05-V25~V32-1710, B05-V17~V24-1720 | 65d | 0d | Elec feeding panels GF & FF [8] | 22,372.88 |

| ID | WBS | Activity | Duration | Start | Finish | Predecessors | Total float | Free float | Resources | Cost | Department-1 |
| --- | --- | --- | --- | --- | --- | --- | --- | --- | --- | --- | --- |
|  | 5 | **External Sidewalk Works** |  | 2024-09-04 | 2024-10-20 |  |  |  |  |  |  |
| B05-V25~V32-1730 |  | Connection The Drain To The Piblic Network | 3d | 2024-09-04 | 2024-09-07 | B05-V25~V32-1510, B05-V25~V32-1590, B05-V17~V24-1730 | 21d | 4d | Connection Drain To The Piblic Network [8]; Connection Water To The Piblic Network [8] | 13,420.32 |  |
| B05-V25~V32-1740 |  | Pardora Works For The External Sidewalk | 2d | 2024-09-22 | 2024-09-23 | B05-V25~V32-1640, B05-V25~V32-1730, B05-V17~V24-1740 | 9d | 0d |  |  |  |
| B05-V25~V32-1750 |  | Interlock Works For The Exerrnal Sidewalk | 2d | 2024-09-24 | 2024-09-25 | B05-V25~V32-1740, B05-V17~V24-1750 | 9d | 0d |  |  |  |
| B05-V25~V32-1760 |  | Pulling The Villa's Main Elec Cable | 4d | 2024-10-16 | 2024-10-20 | B05-V25~V32-1750, B05-V25~V32-1720 | 65d | 0d | Elec Work Testing [8] | 22,819.84 |  |
|  | 6 | **Final Testing & Handover** |  | 2024-10-13 | 2024-11-07 |  |  |  |  |  |  |
| B05-V25~V32-1770 |  | Mech Work Testing & Handover | 5d | 2024-10-13 | 2024-10-17 | B05-V25~V32-1730, B05-V25~V32-1340, B05-V25~V32-1380, B05-V17~V24-1770 | 72d | 2d | Mech Work Testing & Handover [8] | 14,318.64 |  |
| B05-V25~V32-1780 |  | Arch Snaglist & Handover | 5d | 2024-10-19 | 2024-10-23 | B05-V25~V32-1750, B05-V25~V32-1710, B05-V25~V32-1400, B05-V17~V24-1780 | 67d | 2d | Arch Snaglist & Handover [8] | 77,320.64 |  |
| B05-V25~V32-1790 |  | ElecWork Testing & Handover | 5d | 2024-10-21 | 2024-10-26 | B05-V25~V32-1760, B05-V25~V32-1370, B05-V17~V24-1790 | 65d | 0d | Elec Work Handover [8] | 23,804.72 |  |
| B05-V25~V32-1800 |  | Final Handover Of The Villa To The Consltant | 5d | 2024-10-27 | 2024-10-31 | B05-V25~V32-1780, B05-V25~V32-1790, B05-V25~V32-1770, B05-V25~V32-1410, B05-V17~V24-1800 | 65d | 0d |  |  |  |
| B05-V25~V32-1810 |  | Customer Delivery | 6d | 2024-11-02 | 2024-11-07 | B05-V25~V32-1800, B05-V17~V24-1810 | 65d | 1d |  |  |  |
|  | 21 | **B06-V01~V08** |  | 2024-05-06 | 2024-11-16 |  |  |  |  |  |  |
|  | 2 | **Under Grond Slap Works** |  | 2024-05-06 | 2024-06-15 |  |  |  |  |  |  |
| B06-V01~V08-1000 |  | Excavation&Compaction of Fondation | 6d | 2024-05-06 | 2024-05-12 | B05-V25~V32-1000 | 23d | 0d | Clearing & Groubbing [8]; Excavation & Leveling [8]; Stone Layer [8]; A3 Layer [8]; A1-a 1st Layer [8]; A1-a 2ed Layer [8] | 163,545.76 | Civil |
| B06-V01~V08-1010 |  | Pouring Concrete For Bedding | 2d | 2024-05-13 | 2024-05-14 | B06-V01~V08-1000, B05-V25~V32-1010 | 23d | 0d | PC Carpentry [8]; PC Concrete [8]; RC 18 MPA [9 M3] | 37,899.68 | Civil |
| B06-V01~V08-1020 |  | Reinforcement Concrete For Foundation | 5d | 2024-05-15 | 2024-05-20 | B06-V01~V08-1010, B05-V25~V32-1020 | 23d | 0d | RC Foundation Carpentry [8]; RC Foundation Steel [8]; RC Foundation Concrete [8] | 201,355.92 | Civil |
| B06-V01~V08-1030 |  | Steel Fixing& Carpenter work for Beams | 4d | 2024-05-21 | 2024-05-25 | B06-V01~V08-1020, B05-V25~V32-1030 | 23d | 0d | RC Grade Beam Carpentry & Steel [8] | 44,745.76 | Civil |
| B06-V01~V08-1040 |  | Mech&Elec Establishment for Beams | 3d | 2024-05-26 | 2024-05-28 | B06-V01~V08-1030, B05-V25~V32-1040 | 23d | 0d |  |  | Mech |
| B06-V01~V08-1050 |  | Pouring Concrete For Beams | 1d | 2024-05-29 | 2024-05-29 | B06-V01~V08-1040, B05-V25~V32-1050 | 23d | 0d | RC Grade Beam Concrete [8] | 77,141.68 | Civil |
| B06-V01~V08-1060 |  | Bitmen Coating For Fondation&Beams | 3d | 2024-05-30 | 2024-06-02 | B06-V01~V08-1050, B05-V25~V32-1060 | 23d | 0d | Bitumen Coating Foundations & Grade Beams [8] | 22,372.32 | Civil |
| B06-V01~V08-1070 |  | Backfilling Inside Fondations | 4d | 2024-06-03 | 2024-06-06 | B06-V01~V08-1060, B05-V25~V32-1070 | 23d | 0d | Backfilling 1st Layer [8]; Backfilling 2ed Layer [8] | 11,186.4 | Civil |
| B06-V01~V08-1080 |  | Mech Works Under Grond Slap | 3d | 2024-06-08 | 2024-06-10 | B06-V01~V08-1070, B05-V25~V32-1080 | 23d | 0d | Mech Establishment Under Ground Slap [8] | 13,423.42 | Mech |
| B06-V01~V08-1090 |  | Steel Fixing& Carpenter work for Ground Slap | 3d | 2024-06-11 | 2024-06-13 | B06-V01~V08-1080, B05-V25~V32-1090 | 23d | 0d | Steel & Carpentry For Ground Slap [8] | 10,246.54 | Civil |
| B06-V01~V08-1100 |  | Anti Termite Treatment For Ground Slap | 1d | 2024-06-15 | 2024-06-15 | B06-V01~V08-1090, B05-V25~V32-1100 | 23d | 0d | Anti Termite Treatment nder Ground Slap [8] | 2,237.28 | Civil |
| B06-V01~V08-1110 |  | Pouring Concrete For Ground Slap | 1d | 2024-06-15 | 2024-06-15 | B06-V01~V08-1100 FF, B06-V01~V08-1090, B05-V25~V32-1110 | 23d | 5d | Concrete For Ground Slap [8] | 58,169.52 | Civil |

| ID | WBS | Activity | Duration | Start | Finish | Predecessors | Total float | Free float | Resources | Cost | Department-1 |
| --- | --- | --- | --- | --- | --- | --- | --- | --- | --- | --- | --- |
|  | 4 | **Precast Works** |  | 2024-07-13 | 2024-07-20 |  |  |  |  |  |  |
| B06-V01~V08-1120 |  | Precast Constrction | 7d | 2024-07-13 | 2024-07-20 | B06-V01~V08-1110, B05-V25~V32-1120 | 0d |  | Precast Walls GF [8]; Hollow Core Slap GF [8]; Precast Stairs & staircase House [8]; Thermal insollation Outside Walls [8]; Concrete structure joints [8]; Precast Walls FF [8]; Hollow Core Slap FF [8] | 1,513,762.87 | Civil |
|  | 1 | **Works Inside The Villa** |  | 2024-07-21 | 2024-11-03 |  |  |  |  |  |  |
| B06-V01~V08-1130 |  | Block Work For GF & Estabishment 1F | 6d | 2024-07-21 | 2024-07-27 | B06-V01~V08-1120, B05-V25~V32-1130 | 13d | 0d | Block GF [8] | 13,647.1 | Arc |
| B06-V01~V08-1140 |  | L.L & H.L Drainage | 6d | 2024-07-28 | 2024-08-03 | B06-V01~V08-1130, B05-V25~V32-1140 | 13d | 0d | HL Drainage [8]; L.L Drainage [8] | 89,489.28 | Mech |
| B06-V01~V08-1150 |  | Elec Establishment For GF & 1F | 3d | 2024-07-28 | 2024-07-30 | B06-V01~V08-1130, B05-V25~V32-1150 | 16d | 3d | Elec Establishment GF [8] | 26,840.73 | Elec |
| B06-V01~V08-1160 |  | Screed Work For 1F & Roof | 6d | 2024-08-04 | 2024-08-10 | B06-V01~V08-1140, B06-V01~V08-1150, B05-V25~V32-1160 | 13d | 0d | Screed 1st Floor [8]; Screed Roof Floor [8]; Leveling Screed 1st Floor [8]; Leveling Screed Roof Floor [8] | 268,467.85 | Civil |
| B06-V01~V08-1170 |  | Water Tank & Heater Foundations | 4d | 2024-08-11 | 2024-08-14 | B06-V01~V08-1160, B05-V25~V32-1170 | 17d | 0d |  |  | Civil |
| B06-V01~V08-1180 |  | Block Works For 1F | 3d | 2024-08-11 | 2024-08-13 | B06-V01~V08-1160, B05-V25~V32-1180 | 13d | 0d | Block FF [8] | 20,537.81 | Arc |
| B06-V01~V08-1190 |  | Water Line Network | 6d | 2024-08-14 | 2024-08-20 | B06-V01~V08-1180, B05-V25~V32-1190 | 13d | 0d | Water Line Network [8] | 40,261.13 | Mech |
| B06-V01~V08-1200 |  | Continue Elec Establishment For GF & 1F | 3d | 2024-08-14 | 2024-08-17 | B06-V01~V08-1180, B05-V25~V32-1200 | 16d | 3d | Elec Establishment FF [8] | 26,840.73 | Elec |
| B06-V01~V08-1210 |  | Thermal Insulation For Roof | 5d | 2024-08-15 | 2024-08-20 | B06-V01~V08-1170, B05-V25~V32-1210 | 17d | 0d | Roof Insulation [8] | 32,530.16 | Arc |
| B06-V01~V08-1220 |  | Roof Floor Tiles | 6d | 2024-08-21 | 2024-08-27 | B06-V01~V08-1210, B05-V25~V32-1220 | 17d | 1d | Roof Tiles [8]; Roof Tiles Joints [8]; Re_Test Roof Insulation [8] | 63,179.38 | Arc |
| B06-V01~V08-1230 |  | Plaster Work For Villa | 6d | 2024-08-21 | 2024-08-27 | B06-V01~V08-1190, B06-V01~V08-1200, B05-V25~V32-1230 | 13d | 0d | Establishing a plastering GF [8]; Establishing a plastering FF [8]; Plastering GF [8]; Plastering FF [8] | 49,263.81 |  |
| B06-V01~V08-1240 |  | Marbale Stairs & Handrails | 6d | 2024-08-28 | 2024-09-03 | B06-V01~V08-1230, B05-V25~V32-1240 | 35d | 1d | Marbale Stairs [8]; Stairs Handrails SS [8] | 91,494.69 |  |
| B06-V01~V08-1250 |  | Water Proofing Of Bathrooms | 4d | 2024-08-28 | 2024-09-01 | B06-V01~V08-1230, B05-V25~V32-1250 | 13d | 0d | Bathrooms InsulationGF & FF [8] | 134.24 |  |
| B06-V01~V08-1260 |  | Pulling The Elec Wires | 4d | 2024-08-28 | 2024-09-01 | B06-V01~V08-1230, B05-V25~V32-1260 | 23d | 3d | Elec Wires GF [8]; Elec Wires FF [8] | 80,542.4 |  |
| B06-V01~V08-1270 |  | Bathroom Tiles | 4d | 2024-09-02 | 2024-09-05 | B06-V01~V08-1250, B06-V01~V08-1220, B05-V25~V32-1270 | 13d | 0d | Ceramic Walls Kitchen [8]; Ceramic Walls Bathrooms GF [8]; Ceramic Walls Bathrooms FF [8]; Ceramic Tiles Bathrooms GF [8]; Ceramic Tiles Kitchen GF [8]; Ceramic Tiles Store GF [8] | 73,204.08 |  |
| B06-V01~V08-1280 |  | Structure For Gypsum | 6d | 2024-09-07 | 2024-09-12 | B06-V01~V08-1270, B05-V25~V32-1280 | 13d | 0d | Structure For Gypsum GF Rooms [8]; Structure For Gypsum FF Rooms [8]; Structure For Gypsum Bathrooms & Kitchen [8] | 33,550.81 |  |
| B06-V01~V08-1290 |  | Gypsum Board For Room | 4d | 2024-09-14 | 2024-09-17 | B06-V01~V08-1280, B06-V01~V08-1260, B05-V25~V32-1290 | 13d | 0d | Gypsum Board For GF Room [8]; Gypsum Board For FF Room [8] | 35,796.64 |  |
| B06-V01~V08-1300 |  | Installation Of Gypsum Board For Bathroom & Kitchen | 4d | 2024-09-18 | 2024-09-22 | B06-V01~V08-1290, B05-V25~V32-1300 | 13d | 0d | Gypsum Board For Bathrooms & Kitchen [8] | 11,052.24 |  |
| B06-V01~V08-1310 |  | Putty Filler For Gypsm Board Ceiling | 6d | 2024-09-23 | 2024-09-29 | B06-V01~V08-1300, B05-V25~V32-1310 | 13d | 0d | Putty Filler 1st Layer Roof all Rooms [8]; Putty Filler 1st Layer Roof all Bathrooms & Kitchen [8]; Putty Filler1st Layer walls [8] | 62,182.52 |  |
| B06-V01~V08-1320 |  | Fixing Shower Glass | 4d | 2024-09-30 | 2024-10-03 | B06-V01~V08-1310, B05-V25~V32-1320 | 21d | 0d | Shower Glass [8] | 22,372.88 |  |
| B06-V01~V08-1330 |  | Interior Wall Putty Filler | 6d | 2024-09-30 | 2024-10-06 | B06-V01~V08-1310, B06-V01~V08-1240, B05-V25~V32-1330 | 13d | 0d | Putty Filler 2ed Layer Roof & WAlls GF [8]; Putty Filler 2ed Layer Roof & WAlls FF [8] | 62,150.21 |  |
| B06-V01~V08-1340 |  | Installation Of Sanitry Fixture | 7d | 2024-10-05 | 2024-10-12 | B06-V01~V08-1320, B05-V25~V32-1340 | 21d | 0d | Mech Fixtures & Accessories [8] | 98,435.64 |  |
| B06-V01~V08-1350 |  | 1st Face Paint | 6d | 2024-10-07 | 2024-10-13 | B06-V01~V08-1330, B05-V25~V32-1350 | 13d | 0d |  |  |  |
| B06-V01~V08-1360 |  | Installation Of Aluminum Windows | 7d | 2024-10-07 | 2024-10-14 | B06-V01~V08-1330, B05-V25~V32-1360 | 23d | 0d | Aluminum Windows [8] | 84,795.68 |  |
| B06-V01~V08-1370 |  | Installation Of Elec Fixture & Accessories | 7d | 2024-10-07 | 2024-10-14 | B06-V01~V08-1310, B06-V01~V08-1330, B06-V01~V08-1260, B05-V25~V32-1370 | 37d | 0d | Elec Fixtures & Accessories Villa & Yard [8]; Elec Cables GF & FF & Earthing [8] | 53,692.2 |  |
| B06-V01~V08-1380 |  | Installation Of Water Tank-Heater & Pumps | 7d | 2024-10-13 | 2024-10-20 | B06-V01~V08-1340, B05-V25~V32-1380, B06-V01~V08-1220 | 21d | 0d | Water Tank & booster Pump [8]; Lower Pump [8]; Heater [8] | 129,756.23 |  |
| B06-V01~V08-1390 |  | Installation Of Parquet | 4d | 2024-10-14 | 2024-10-17 | B06-V01~V08-1350, B05-V25~V32-1390 | 13d | 0d | Installation Of Parquet [8] | 52,978.96 |  |
| B06-V01~V08-1400 |  | Installation Of Wooden Doors | 7d | 2024-10-19 | 2024-10-26 | B06-V01~V08-1390, B05-V25~V32-1400 | 13d | 0d | Wooden Doors Kitchen & Bathroom without Accessories [8]; Wooden Doors Accessories all Villa [8]; Exterior Wooden Doors [8] | 142,105.45 |  |
| B06-V01~V08-1410 |  | Final Face Paint | 7d | 2024-10-27 | 2024-11-03 | B06-V01~V08-1360, B06-V01~V08-1400, B05-V25~V32-1410 | 13d | 0d | Final Face Paint Villa [8] | 31,096.77 |  |

| ID | WBS | Activity | Duration | Start | Finish | Predecessors | Total float | Free float | Resources | Cost |
| --- | --- | --- | --- | --- | --- | --- | --- | --- | --- | --- |
|  | 3 | **Fence & Courtyard Works** |  | 2024-07-21 | 2024-10-23 |  |  |  |  |  |
| B06-V01~V08-1420 |  | Pouring Bedding Concrete For Fence Fondations | 2d | 2024-07-21 | 2024-07-22 | B06-V01~V08-1120, B05-V25~V32-1420 | 9d | 0d | Excavation Fence Foundations [8] | 4,519.28 |
| B06-V01~V08-1430 |  | RC Concrete For Fence Fondations | 6d | 2024-07-23 | 2024-07-29 | B06-V01~V08-1420, B05-V25~V32-1430 | 9d | 0d | Fence Fondations-Eastern side [8]; Fence Fondations-Westren side [8]; Fence Fondations-Back side [8] | 13,420.32 |
| B06-V01~V08-1440 |  | Steel Fixing & Carpentry For Fence Columns | 6d | 2024-07-30 | 2024-08-05 | B06-V01~V08-1430, B05-V25~V32-1440 | 9d | 0d |  |  |
| B06-V01~V08-1450 |  | Establishing Elec For Fence Columns | 4d | 2024-08-06 | 2024-08-10 | B06-V01~V08-1440, B05-V25~V32-1450 | 9d | 0d |  |  |
| B06-V01~V08-1460 |  | Pouring Concrete For Fence Columns | 1d | 2024-08-11 | 2024-08-11 | B06-V01~V08-1450, B05-V25~V32-1460 | 9d | 0d | Fence Columns-Eastern side [8]; Fence Columns-Westren side [8]; Fence Columns-Back side [8] | 9,665.04 |
| B06-V01~V08-1470 |  | Installation Precast Panel For Fence | 5d | 2024-08-12 | 2024-08-17 | B06-V01~V08-1460, B05-V25~V32-1470 | 9d | 0d | Hollow Core Walls [8] | 71,593.2 |
| B06-V01~V08-1480 |  | Bitumen Coating For Fence Fondations | 4d | 2024-08-18 | 2024-08-21 | B06-V01~V08-1470, B05-V25~V32-1480 | 9d | 0d |  |  |
| B06-V01~V08-1490 |  | Pouring Bedding Concrete For "Front" Fence Fondations | 1d | 2024-08-18 | 2024-08-18 | B06-V01~V08-1470, B05-V25~V32-1490 | 21d | 0d |  |  |
| B06-V01~V08-1500 |  | RC Concrete For "Front" Fence Fondations | 4d | 2024-08-19 | 2024-08-22 | B06-V01~V08-1490, B05-V25~V32-1500 | 21d | 0d | Front Fence Fondations [8] | 8,904.4 |
| B06-V01~V08-1510 |  | Outdoor Drainage & Water Line | 5d | 2024-08-22 | 2024-08-27 | B06-V01~V08-1480, B06-V01~V08-1140, B05-V25~V32-1510 | 9d | 0d | Outdoor Drainage [8]; Outdoor Water Line [8] | 13,423.68 |
| B06-V01~V08-1520 |  | Steel Fixing & Carpentry For "Front" Fence Columns | 4d | 2024-08-24 | 2024-08-27 | B06-V01~V08-1500, B05-V25~V32-1520 | 21d | 0d |  |  |
| B06-V01~V08-1530 |  | Establishing Elec For "Front" Fence Columns | 4d | 2024-08-28 | 2024-09-01 | B06-V01~V08-1520, B05-V25~V32-1530 | 21d | 0d |  |  |
| B06-V01~V08-1540 |  | Establishing Elec For Fence & Yard | 2d | 2024-08-28 | 2024-08-29 | B06-V01~V08-1510, B05-V25~V32-1540 | 9d | 0d | Elec Establishment Fence & Yard [8] | 17,898.32 |
| B06-V01~V08-1550 |  | Backfilling the Yard | 4d | 2024-08-31 | 2024-09-03 | B06-V01~V08-1540, B05-V25~V32-1550 | 9d | 0d | Backfilling the Yard [8] | 10,560 |
| B06-V01~V08-1560 |  | Pouring Concrete Wall Of "Front" Fence Columns | 2d | 2024-09-02 | 2024-09-03 | B06-V01~V08-1530, B05-V25~V32-1560 | 21d | 0d | Front Fence Walls [8] | 17,898.32 |
| B06-V01~V08-1570 |  | Pouring Concrete Crown Of "Front" Fence Columns | 3d | 2024-09-04 | 2024-09-07 | B06-V01~V08-1560, B05-V25~V32-1570 | 21d | 0d | Fence Columns - C Chanel [8] | 3,310.37 |
| B06-V01~V08-1580 |  | Bardoura Works For Yard | 5d | 2024-09-04 | 2024-09-09 | B06-V01~V08-1550, B05-V25~V32-1580 | 9d | 0d | Bardoura Works For Yard [8] | 14,408.16 |
| B06-V01~V08-1590 |  | Pouring Concrete Flower Basin Of "Front" Fence Columns | 4d | 2024-09-08 | 2024-09-11 | B06-V01~V08-1570, B05-V25~V32-1590 | 21d | 0d |  |  |
| B06-V01~V08-1600 |  | Antitermite Treatment For Yard | 1d | 2024-09-10 | 2024-09-10 | B06-V01~V08-1580, B05-V25~V32-1600 | 9d | 0d | Antitermite Treatment For Yard [8] |  |
| B06-V01~V08-1610 |  | Pouring Concrete For Yard | 1d | 2024-09-11 | 2024-09-11 | B06-V01~V08-1600, B05-V25~V32-1610 | 9d | 0d |  |  |
| B06-V01~V08-1620 |  | Block Work For Flower Basin | 5d | 2024-09-12 | 2024-09-17 | B06-V01~V08-1610, B05-V25~V32-1620 | 9d | 0d |  |  |
| B06-V01~V08-1630 |  | Plastering Work For Flower Basin | 4d | 2024-09-18 | 2024-09-22 | B06-V01~V08-1620, B05-V25~V32-1630 | 9d | 0d |  |  |
| B06-V01~V08-1640 |  | Interlock Works For The Yard | 6d | 2024-09-23 | 2024-09-29 | B06-V01~V08-1630, B05-V25~V32-1640 | 9d | 0d | Interlock Works For The Yard [8] | 36,776.32 |
| B06-V01~V08-1650 |  | External Grading Works For The Villa | 4d | 2024-09-30 | 2024-10-03 | B06-V01~V08-1640, B05-V25~V32-1650 | 11d | 0d | External Grading Works For The Villa [8] | 3,221.68 |
| B06-V01~V08-1660 |  | Installation The Exterior Door & Garage Door | 5d | 2024-09-30 | 2024-10-05 | B06-V01~V08-1640, B05-V25~V32-1660 | 14d | 2d | Installation The Exterior Door [8]; Installation The Exterior Garage Door [8] | 40,002.72 |
| B06-V01~V08-1670 |  | Fixing Floor Drain For The Yard | 2d | 2024-09-30 | 2024-10-01 | B06-V01~V08-1640, B05-V25~V32-1670 | 17d | 5d | Floor Drain & Clean Out [8] | 13,423.76 |
| B06-V01~V08-1680 |  | Granite Surronds Around The Villa | 4d | 2024-10-05 | 2024-10-08 | B06-V01~V08-1650, B05-V25~V32-1680 | 11d | 2d | Granite Surronds Around The Villa [8] | 25,818.32 |
| B06-V01~V08-1690 |  | Painting The Base Surface Of The Fence | 2d | 2024-10-05 | 2024-10-06 | B06-V01~V08-1750, B05-V25~V32-1690 | 9d | 0d |  |  |
| B06-V01~V08-1700 |  | Painting The Final Face Of The Fence | 4d | 2024-10-07 | 2024-10-10 | B06-V01~V08-1690, B05-V25~V32-1700 | 9d | 0d | Painting Final Face Of The Fence [8] | 37,586.48 |
| B06-V01~V08-1710 |  | Exterior Painting Of The Villa | 7d | 2024-10-12 | 2024-10-19 | B06-V01~V08-1680, B06-V01~V08-1700, B06-V01~V08-1660, B06-V01~V08-1670, B05-V25~V32-1710 | 9d | 0d | Exterior Painting Of The Villa [8]; Exterior Painting Staircase House [8] | 105,684.16 |
| B06-V01~V08-1720 |  | Installation Elec Fixtures & Accessories For The Yard | 4d | 2024-10-20 | 2024-10-23 | B06-V01~V08-1700, B06-V01~V08-1710, B05-V25~V32-1720 | 64d | 0d | Elec feeding panels GF & FF [8] | 22,372.88 |

| ID | WBS | Activity | Duration | Start | Finish | Predecessors | Total float | Free float | Resources | Cost | Department-1 |
| --- | --- | --- | --- | --- | --- | --- | --- | --- | --- | --- | --- |
|  | 5 | **External Sidewalk Works** |  | 2024-09-12 | 2024-10-28 |  |  |  |  |  |  |
| B06-V01~V08-1730 |  | Connection The Drain To The Piblic Network | 3d | 2024-09-12 | 2024-09-15 | B06-V01~V08-1510, B06-V01~V08-1590, B05-V25~V32-1730 | 21d | 4d | Connection Drain To The Piblic Network [8]; Connection Water To The Piblic Network [8] | 13,420.32 |  |
| B06-V01~V08-1740 |  | Pardora Works For The External Sidewalk | 2d | 2024-09-30 | 2024-10-01 | B06-V01~V08-1640, B06-V01~V08-1730, B05-V25~V32-1740 | 9d | 0d |  |  |  |
| B06-V01~V08-1750 |  | Interlock Works For The Exerrnal Sidewalk | 2d | 2024-10-02 | 2024-10-03 | B06-V01~V08-1740, B05-V25~V32-1750 | 9d | 0d |  |  |  |
| B06-V01~V08-1760 |  | Pulling The Villa's Main Elec Cable | 4d | 2024-10-24 | 2024-10-28 | B06-V01~V08-1750, B06-V01~V08-1720, B05-V25~V32-1760 | 64d | 0d | Elec Work Testing [8] | 22,819.84 |  |
|  | 6 | **Final Testing & Handover** |  | 2024-10-21 | 2024-11-16 |  |  |  |  |  |  |
| B06-V01~V08-1770 |  | Mech Work Testing & Handover | 5d | 2024-10-21 | 2024-10-26 | B06-V01~V08-1730, B06-V01~V08-1340, B06-V01~V08-1380, B05-V25~V32-1770 | 71d | 2d | Mech Work Testing & Handover [8] | 14,318.64 |  |
| B06-V01~V08-1780 |  | Arch Snaglist & Handover | 5d | 2024-10-27 | 2024-10-31 | B06-V01~V08-1750, B06-V01~V08-1710, B06-V01~V08-1400, B05-V25~V32-1780 | 66d | 2d | Arch Snaglist & Handover [8] | 77,320.64 |  |
| B06-V01~V08-1790 |  | ElecWork Testing & Handover | 5d | 2024-10-29 | 2024-11-03 | B06-V01~V08-1760, B06-V01~V08-1370, B05-V25~V32-1790 | 64d | 0d | Elec Work Handover [8] | 23,804.72 |  |
| B06-V01~V08-1800 |  | Final Handover Of The Villa To The Consltant | 5d | 2024-11-04 | 2024-11-09 | B06-V01~V08-1780, B06-V01~V08-1790, B06-V01~V08-1770, B06-V01~V08-1410, B05-V25~V32-1800 | 64d | 0d |  |  |  |
| B06-V01~V08-1810 |  | Customer Delivery | 6d | 2024-11-10 | 2024-11-16 | B06-V01~V08-1800, B05-V25~V32-1810 | 64d | 1d |  |  |  |
|  | 22 | **B06-V09~V16** |  | 2024-05-13 | 2024-11-24 |  |  |  |  |  |  |
|  | 2 | **Under Grond Slap Works** |  | 2024-05-13 | 2024-06-22 |  |  |  |  |  |  |
| B06-V09~V16-1000 |  | Excavation&Compaction of Fondation | 6d | 2024-05-13 | 2024-05-19 | B06-V01~V08-1000 | 24d | 0d | Clearing & Groubbing [8]; Excavation & Leveling [8]; Stone Layer [8]; A3 Layer [8]; A1-a 1st Layer [8]; A1-a 2ed Layer [8] | 163,545.76 | Civil |
| B06-V09~V16-1010 |  | Pouring Concrete For Bedding | 2d | 2024-05-20 | 2024-05-21 | B06-V09~V16-1000, B06-V01~V08-1010 | 24d | 0d | PC Carpentry [8]; PC Concrete [8]; RC 18 MPA [9 M3] | 37,899.68 | Civil |
| B06-V09~V16-1020 |  | Reinforcement Concrete For Foundation | 5d | 2024-05-22 | 2024-05-27 | B06-V09~V16-1010, B06-V01~V08-1020 | 24d | 0d | RC Foundation Carpentry [8]; RC Foundation Steel [8]; RC Foundation Concrete [8] | 201,355.92 | Civil |
| B06-V09~V16-1030 |  | Steel Fixing& Carpenter work for Beams | 4d | 2024-05-28 | 2024-06-01 | B06-V09~V16-1020, B06-V01~V08-1030 | 24d | 0d | RC Grade Beam Carpentry & Steel [8] | 44,745.76 | Civil |
| B06-V09~V16-1040 |  | Mech&Elec Establishment for Beams | 3d | 2024-06-02 | 2024-06-04 | B06-V09~V16-1030, B06-V01~V08-1040 | 24d | 0d |  |  | Mech |
| B06-V09~V16-1050 |  | Pouring Concrete For Beams | 1d | 2024-06-05 | 2024-06-05 | B06-V09~V16-1040, B06-V01~V08-1050 | 24d | 0d | RC Grade Beam Concrete [8] | 77,141.68 | Civil |
| B06-V09~V16-1060 |  | Bitmen Coating For Fondation&Beams | 3d | 2024-06-06 | 2024-06-09 | B06-V09~V16-1050, B06-V01~V08-1060 | 24d | 0d | Bitumen Coating Foundations & Grade Beams [8] | 22,372.32 | Civil |
| B06-V09~V16-1070 |  | Backfilling Inside Fondations | 4d | 2024-06-10 | 2024-06-13 | B06-V09~V16-1060, B06-V01~V08-1070 | 24d | 0d | Backfilling 1st Layer [8]; Backfilling 2ed Layer [8] | 11,186.4 | Civil |
| B06-V09~V16-1080 |  | Mech Works Under Grond Slap | 3d | 2024-06-15 | 2024-06-17 | B06-V09~V16-1070, B06-V01~V08-1080 | 24d | 0d | Mech Establishment Under Ground Slap [8] | 13,423.42 | Mech |
| B06-V09~V16-1090 |  | Steel Fixing& Carpenter work for Ground Slap | 3d | 2024-06-18 | 2024-06-20 | B06-V09~V16-1080, B06-V01~V08-1090 | 24d | 0d | Steel & Carpentry For Ground Slap [8] | 10,246.54 | Civil |
| B06-V09~V16-1100 |  | Anti Termite Treatment For Ground Slap | 1d | 2024-06-22 | 2024-06-22 | B06-V09~V16-1090, B06-V01~V08-1100 | 24d | 0d | Anti Termite Treatment nder Ground Slap [8] | 2,237.28 | Civil |
| B06-V09~V16-1110 |  | Pouring Concrete For Ground Slap | 1d | 2024-06-22 | 2024-06-22 | B06-V09~V16-1100 FF, B06-V09~V16-1090, B06-V01~V08-1110 | 24d | 5d | Concrete For Ground Slap [8] | 58,169.52 | Civil |

| ID | WBS | Activity | Duration | Start | Finish | Predecessors | Total float | Free float | Resources | Cost | Department-1 |
| --- | --- | --- | --- | --- | --- | --- | --- | --- | --- | --- | --- |
|  | 4 | **Precast Works** |  | 2024-07-21 | 2024-07-28 |  |  |  |  |  |  |
| B06-V09~V16-1120 |  | Precast Constrction | 7d | 2024-07-21 | 2024-07-28 | B06-V09~V16-1110, B06-V01~V08-1120 | 0d |  | Precast Walls GF [8]; Hollow Core Slap GF [8]; Precast Stairs & staircase House [8]; Thermal insollation Outside Walls [8]; Concrete structure joints [8]; Precast Walls FF [8]; Hollow Core Slap FF [8] | 1,513,762.87 | Civil |
|  | 1 | **Works Inside The Villa** |  | 2024-07-29 | 2024-11-11 |  |  |  |  |  |  |
| B06-V09~V16-1130 |  | Block Work For GF & Estabishment 1F | 6d | 2024-07-29 | 2024-08-04 | B06-V09~V16-1120, B06-V01~V08-1130 | 13d | 0d | Block GF [8] | 13,647.1 | Arc |
| B06-V09~V16-1140 |  | L.L & H.L Drainage | 6d | 2024-08-05 | 2024-08-11 | B06-V09~V16-1130, B06-V01~V08-1140 | 13d | 0d | HL Drainage [8]; L.L Drainage [8] | 89,489.28 | Mech |
| B06-V09~V16-1150 |  | Elec Establishment For GF & 1F | 3d | 2024-08-05 | 2024-08-07 | B06-V09~V16-1130, B06-V01~V08-1150 | 16d | 3d | Elec Establishment GF [8] | 26,840.73 | Elec |
| B06-V09~V16-1160 |  | Screed Work For 1F & Roof | 6d | 2024-08-12 | 2024-08-18 | B06-V09~V16-1140, B06-V09~V16-1150, B06-V01~V08-1160 | 13d | 0d | Screed 1st Floor [8]; Screed Roof Floor [8]; Leveling Screed 1st Floor [8]; Leveling Screed Roof Floor [8] | 268,467.85 | Civil |
| B06-V09~V16-1170 |  | Water Tank & Heater Foundations | 4d | 2024-08-19 | 2024-08-22 | B06-V09~V16-1160, B06-V01~V08-1170 | 17d | 0d |  |  | Civil |
| B06-V09~V16-1180 |  | Block Works For 1F | 3d | 2024-08-19 | 2024-08-21 | B06-V09~V16-1160, B06-V01~V08-1180 | 13d | 0d | Block FF [8] | 20,537.81 | Arc |
| B06-V09~V16-1190 |  | Water Line Network | 6d | 2024-08-22 | 2024-08-28 | B06-V09~V16-1180, B06-V01~V08-1190 | 13d | 0d | Water Line Network [8] | 40,261.13 | Mech |
| B06-V09~V16-1200 |  | Continue Elec Establishment For GF & 1F | 3d | 2024-08-22 | 2024-08-25 | B06-V09~V16-1180, B06-V01~V08-1200 | 16d | 3d | Elec Establishment FF [8] | 26,840.73 | Elec |
| B06-V09~V16-1210 |  | Thermal Insulation For Roof | 5d | 2024-08-24 | 2024-08-28 | B06-V09~V16-1170, B06-V01~V08-1210 | 17d | 0d | Roof Insulation [8] | 32,530.16 | Arc |
| B06-V09~V16-1220 |  | Roof Floor Tiles | 6d | 2024-08-29 | 2024-09-04 | B06-V09~V16-1210, B06-V01~V08-1220 | 17d | 1d | Roof Tiles [8]; Roof Tiles Joints [8]; Re_Test Roof Insulation [8] | 63,179.38 | Arc |
| B06-V09~V16-1230 |  | Plaster Work For Villa | 6d | 2024-08-29 | 2024-09-04 | B06-V09~V16-1190, B06-V09~V16-1200, B06-V01~V08-1230 | 13d | 0d | Establishing a plastering GF [8]; Establishing a plastering FF [8]; Plastering GF [8]; Plastering FF [8] | 49,263.81 |  |
| B06-V09~V16-1240 |  | Marbale Stairs & Handrails | 6d | 2024-09-05 | 2024-09-11 | B06-V09~V16-1230, B06-V01~V08-1240 | 35d | 1d | Marbale Stairs [8]; Stairs Handrails SS [8] | 91,494.69 |  |
| B06-V09~V16-1250 |  | Water Proofing Of Bathrooms | 4d | 2024-09-05 | 2024-09-09 | B06-V09~V16-1230, B06-V01~V08-1250 | 13d | 0d | Bathrooms InsulationGF & FF [8] | 134.24 |  |
| B06-V09~V16-1260 |  | Pulling The Elec Wires | 4d | 2024-09-05 | 2024-09-09 | B06-V09~V16-1230, B06-V01~V08-1260 | 23d | 3d | Elec Wires GF [8]; Elec Wires FF [8] | 80,542.4 |  |
| B06-V09~V16-1270 |  | Bathroom Tiles | 4d | 2024-09-10 | 2024-09-14 | B06-V09~V16-1250, B06-V09~V16-1220, B06-V01~V08-1270 | 13d | 0d | Ceramic Walls Kitchen [8]; Ceramic Walls Bathrooms GF [8]; Ceramic Walls Bathrooms FF [8]; Ceramic Tiles Bathrooms GF [8]; Ceramic Tiles Kitchen GF [8]; Ceramic Tiles Store GF [8] | 73,204.08 |  |
| B06-V09~V16-1280 |  | Structure For Gypsum | 6d | 2024-09-15 | 2024-09-21 | B06-V09~V16-1270, B06-V01~V08-1280 | 13d | 0d | Structure For Gypsum GF Rooms [8]; Structure For Gypsum FF Rooms [8]; Structure For Gypsum Bathrooms & Kitchen [8] | 33,550.81 |  |
| B06-V09~V16-1290 |  | Gypsum Board For Room | 4d | 2024-09-22 | 2024-09-25 | B06-V09~V16-1280, B06-V09~V16-1260, B06-V01~V08-1290 | 13d | 0d | Gypsum Board For GF Room [8]; Gypsum Board For FF Room [8] | 35,796.64 |  |
| B06-V09~V16-1300 |  | Installation Of Gypsum Board For Bathroom & Kitchen | 4d | 2024-09-26 | 2024-09-30 | B06-V09~V16-1290, B06-V01~V08-1300 | 13d | 0d | Gypsum Board For Bathrooms & Kitchen [8] | 11,052.24 |  |
| B06-V09~V16-1310 |  | Putty Filler For Gypsm Board Ceiling | 6d | 2024-10-01 | 2024-10-07 | B06-V09~V16-1300, B06-V01~V08-1310 | 13d | 0d | Putty Filler 1st Layer Roof all Rooms [8]; Putty Filler 1st Layer Roof all Bathrooms & Kitchen [8]; Putty Filler1st Layer walls [8] | 62,182.52 |  |
| B06-V09~V16-1320 |  | Fixing Shower Glass | 4d | 2024-10-08 | 2024-10-12 | B06-V09~V16-1310, B06-V01~V08-1320 | 21d | 0d | Shower Glass [8] | 22,372.88 |  |
| B06-V09~V16-1330 |  | Interior Wall Putty Filler | 6d | 2024-10-08 | 2024-10-14 | B06-V09~V16-1310, B06-V09~V16-1240, B06-V01~V08-1330 | 13d | 0d | Putty Filler 2ed Layer Roof & WAlls GF [8]; Putty Filler 2ed Layer Roof & WAlls FF [8] | 62,150.21 |  |
| B06-V09~V16-1340 |  | Installation Of Sanitry Fixture | 7d | 2024-10-13 | 2024-10-20 | B06-V09~V16-1320, B06-V01~V08-1340 | 21d | 0d | Mech Fixtures & Accessories [8] | 98,435.64 |  |
| B06-V09~V16-1350 |  | 1st Face Paint | 6d | 2024-10-15 | 2024-10-21 | B06-V09~V16-1330, B06-V01~V08-1350 | 13d | 0d |  |  |  |
| B06-V09~V16-1360 |  | Installation Of Aluminum Windows | 7d | 2024-10-15 | 2024-10-22 | B06-V09~V16-1330, B06-V01~V08-1360 | 23d | 0d | Aluminum Windows [8] | 84,795.68 |  |
| B06-V09~V16-1370 |  | Installation Of Elec Fixture & Accessories | 7d | 2024-10-15 | 2024-10-22 | B06-V09~V16-1310, B06-V09~V16-1330, B06-V09~V16-1260, B06-V01~V08-1370 | 37d | 0d | Elec Fixtures & Accessories Villa & Yard [8]; Elec Cables GF & FF & Earthing [8] | 53,692.2 |  |
| B06-V09~V16-1380 |  | Installation Of Water Tank-Heater & Pumps | 7d | 2024-10-21 | 2024-10-28 | B06-V09~V16-1340, B06-V01~V08-1380, B06-V09~V16-1220 | 21d | 0d | Water Tank & booster Pump [8]; Lower Pump [8]; Heater [8] | 129,756.23 |  |
| B06-V09~V16-1390 |  | Installation Of Parquet | 4d | 2024-10-22 | 2024-10-26 | B06-V09~V16-1350, B06-V01~V08-1390 | 13d | 0d | Installation Of Parquet [8] | 52,978.96 |  |
| B06-V09~V16-1400 |  | Installation Of Wooden Doors | 7d | 2024-10-27 | 2024-11-03 | B06-V09~V16-1390, B06-V01~V08-1400 | 13d | 0d | Wooden Doors Kitchen & Bathroom without Accessories [8]; Wooden Doors Accessories all Villa [8]; Exterior Wooden Doors [8] | 142,105.45 |  |
| B06-V09~V16-1410 |  | Final Face Paint | 7d | 2024-11-04 | 2024-11-11 | B06-V09~V16-1360, B06-V09~V16-1400, B06-V01~V08-1410 | 13d | 0d | Final Face Paint Villa [8] | 31,096.77 |  |

| ID | WBS | Activity | Duration | Start | Finish | Predecessors | Total float | Free float | Resources | Cost |
| --- | --- | --- | --- | --- | --- | --- | --- | --- | --- | --- |
|  | 3 | **Fence & Courtyard Works** |  | 2024-07-29 | 2024-10-31 |  |  |  |  |  |
| B06-V09~V16-1420 |  | Pouring Bedding Concrete For Fence Fondations | 2d | 2024-07-29 | 2024-07-30 | B06-V09~V16-1120, B06-V01~V08-1420 | 9d | 0d | Excavation Fence Foundations [8] | 4,519.28 |
| B06-V09~V16-1430 |  | RC Concrete For Fence Fondations | 6d | 2024-07-31 | 2024-08-06 | B06-V09~V16-1420, B06-V01~V08-1430 | 9d | 0d | Fence Fondations-Eastern side [8]; Fence Fondations-Westren side [8]; Fence Fondations-Back side [8] | 13,420.32 |
| B06-V09~V16-1440 |  | Steel Fixing & Carpentry For Fence Columns | 6d | 2024-08-07 | 2024-08-13 | B06-V09~V16-1430, B06-V01~V08-1440 | 9d | 0d |  |  |
| B06-V09~V16-1450 |  | Establishing Elec For Fence Columns | 4d | 2024-08-14 | 2024-08-18 | B06-V09~V16-1440, B06-V01~V08-1450 | 9d | 0d |  |  |
| B06-V09~V16-1460 |  | Pouring Concrete For Fence Columns | 1d | 2024-08-19 | 2024-08-19 | B06-V09~V16-1450, B06-V01~V08-1460 | 9d | 0d | Fence Columns-Eastern side [8]; Fence Columns-Westren side [8]; Fence Columns-Back side [8] | 9,665.04 |
| B06-V09~V16-1470 |  | Installation Precast Panel For Fence | 5d | 2024-08-20 | 2024-08-25 | B06-V09~V16-1460, B06-V01~V08-1470 | 9d | 0d | Hollow Core Walls [8] | 71,593.2 |
| B06-V09~V16-1480 |  | Bitumen Coating For Fence Fondations | 4d | 2024-08-26 | 2024-08-29 | B06-V09~V16-1470, B06-V01~V08-1480 | 9d | 0d |  |  |
| B06-V09~V16-1490 |  | Pouring Bedding Concrete For "Front" Fence Fondations | 1d | 2024-08-26 | 2024-08-26 | B06-V09~V16-1470, B06-V01~V08-1490 | 21d | 0d |  |  |
| B06-V09~V16-1500 |  | RC Concrete For "Front" Fence Fondations | 4d | 2024-08-27 | 2024-08-31 | B06-V09~V16-1490, B06-V01~V08-1500 | 21d | 0d | Front Fence Fondations [8] | 8,904.4 |
| B06-V09~V16-1510 |  | Outdoor Drainage & Water Line | 5d | 2024-08-31 | 2024-09-04 | B06-V09~V16-1480, B06-V09~V16-1140, B06-V01~V08-1510 | 9d | 0d | Outdoor Drainage [8]; Outdoor Water Line [8] | 13,423.68 |
| B06-V09~V16-1520 |  | Steel Fixing & Carpentry For "Front" Fence Columns | 4d | 2024-09-01 | 2024-09-04 | B06-V09~V16-1500, B06-V01~V08-1520 | 21d | 0d |  |  |
| B06-V09~V16-1530 |  | Establishing Elec For "Front" Fence Columns | 4d | 2024-09-05 | 2024-09-09 | B06-V09~V16-1520, B06-V01~V08-1530 | 21d | 0d |  |  |
| B06-V09~V16-1540 |  | Establishing Elec For Fence & Yard | 2d | 2024-09-05 | 2024-09-07 | B06-V09~V16-1510, B06-V01~V08-1540 | 9d | 0d | Elec Establishment Fence & Yard [8] | 17,898.32 |
| B06-V09~V16-1550 |  | Backfilling the Yard | 4d | 2024-09-08 | 2024-09-11 | B06-V09~V16-1540, B06-V01~V08-1550 | 9d | 0d | Backfilling the Yard [8] | 10,560 |
| B06-V09~V16-1560 |  | Pouring Concrete Wall Of "Front" Fence Columns | 2d | 2024-09-10 | 2024-09-11 | B06-V09~V16-1530, B06-V01~V08-1560 | 21d | 0d | Front Fence Walls [8] | 17,898.32 |
| B06-V09~V16-1570 |  | Pouring Concrete Crown Of "Front" Fence Columns | 3d | 2024-09-12 | 2024-09-15 | B06-V09~V16-1560, B06-V01~V08-1570 | 21d | 0d | Fence Columns - C Chanel [8] | 3,310.37 |
| B06-V09~V16-1580 |  | Bardoura Works For Yard | 5d | 2024-09-12 | 2024-09-17 | B06-V09~V16-1550, B06-V01~V08-1580 | 9d | 0d | Bardoura Works For Yard [8] | 14,408.16 |
| B06-V09~V16-1590 |  | Pouring Concrete Flower Basin Of "Front" Fence Columns | 4d | 2024-09-16 | 2024-09-19 | B06-V09~V16-1570, B06-V01~V08-1590 | 21d | 0d |  |  |
| B06-V09~V16-1600 |  | Antitermite Treatment For Yard | 1d | 2024-09-18 | 2024-09-18 | B06-V09~V16-1580, B06-V01~V08-1600 | 9d | 0d | Antitermite Treatment For Yard [8] |  |
| B06-V09~V16-1610 |  | Pouring Concrete For Yard | 1d | 2024-09-19 | 2024-09-19 | B06-V09~V16-1600, B06-V01~V08-1610 | 9d | 0d |  |  |
| B06-V09~V16-1620 |  | Block Work For Flower Basin | 5d | 2024-09-21 | 2024-09-25 | B06-V09~V16-1610, B06-V01~V08-1620 | 9d | 0d |  |  |
| B06-V09~V16-1630 |  | Plastering Work For Flower Basin | 4d | 2024-09-26 | 2024-09-30 | B06-V09~V16-1620, B06-V01~V08-1630 | 9d | 0d |  |  |
| B06-V09~V16-1640 |  | Interlock Works For The Yard | 6d | 2024-10-01 | 2024-10-07 | B06-V09~V16-1630, B06-V01~V08-1640 | 9d | 0d | Interlock Works For The Yard [8] | 36,776.32 |
| B06-V09~V16-1650 |  | External Grading Works For The Villa | 4d | 2024-10-08 | 2024-10-12 | B06-V09~V16-1640, B06-V01~V08-1650 | 11d | 0d | External Grading Works For The Villa [8] | 3,221.68 |
| B06-V09~V16-1660 |  | Installation The Exterior Door & Garage Door | 5d | 2024-10-08 | 2024-10-13 | B06-V09~V16-1640, B06-V01~V08-1660 | 14d | 2d | Installation The Exterior Door [8]; Installation The Exterior Garage Door [8] | 40,002.72 |
| B06-V09~V16-1670 |  | Fixing Floor Drain For The Yard | 2d | 2024-10-08 | 2024-10-09 | B06-V09~V16-1640, B06-V01~V08-1670 | 17d | 5d | Floor Drain & Clean Out [8] | 13,423.76 |
| B06-V09~V16-1680 |  | Granite Surronds Around The Villa | 4d | 2024-10-13 | 2024-10-16 | B06-V09~V16-1650, B06-V01~V08-1680 | 11d | 2d | Granite Surronds Around The Villa [8] | 25,818.32 |
| B06-V09~V16-1690 |  | Painting The Base Surface Of The Fence | 2d | 2024-10-13 | 2024-10-14 | B06-V09~V16-1750, B06-V01~V08-1690 | 9d | 0d |  |  |
| B06-V09~V16-1700 |  | Painting The Final Face Of The Fence | 4d | 2024-10-15 | 2024-10-19 | B06-V09~V16-1690, B06-V01~V08-1700 | 9d | 0d | Painting Final Face Of The Fence [8] | 37,586.48 |
| B06-V09~V16-1710 |  | Exterior Painting Of The Villa | 7d | 2024-10-20 | 2024-10-27 | B06-V09~V16-1680, B06-V09~V16-1700, B06-V09~V16-1660, B06-V09~V16-1670, B06-V01~V08-1710 | 9d | 0d | Exterior Painting Of The Villa [8]; Exterior Painting Staircase House [8] | 105,684.16 |
| B06-V09~V16-1720 |  | Installation Elec Fixtures & Accessories For The Yard | 4d | 2024-10-28 | 2024-10-31 | B06-V09~V16-1700, B06-V09~V16-1710, B06-V01~V08-1720 | 63d | 0d | Elec feeding panels GF & FF [8] | 22,372.88 |

| ID | WBS | Activity | Duration | Start | Finish | Predecessors | Total float | Free float | Resources | Cost | Department-1 |
| --- | --- | --- | --- | --- | --- | --- | --- | --- | --- | --- | --- |
|  | 5 | **External Sidewalk Works** |  | 2024-09-21 | 2024-11-05 |  |  |  |  |  |  |
| B06-V09~V16-1730 |  | Connection The Drain To The Piblic Network | 3d | 2024-09-21 | 2024-09-23 | B06-V09~V16-1510, B06-V09~V16-1590, B06-V01~V08-1730 | 21d | 4d | Connection Drain To The Piblic Network [8]; Connection Water To The Piblic Network [8] | 13,420.32 |  |
| B06-V09~V16-1740 |  | Pardora Works For The External Sidewalk | 2d | 2024-10-08 | 2024-10-09 | B06-V09~V16-1640, B06-V09~V16-1730, B06-V01~V08-1740 | 9d | 0d |  |  |  |
| B06-V09~V16-1750 |  | Interlock Works For The Exerrnal Sidewalk | 2d | 2024-10-10 | 2024-10-12 | B06-V09~V16-1740, B06-V01~V08-1750 | 9d | 0d |  |  |  |
| B06-V09~V16-1760 |  | Pulling The Villa's Main Elec Cable | 4d | 2024-11-02 | 2024-11-05 | B06-V09~V16-1750, B06-V09~V16-1720, B06-V01~V08-1760 | 63d | 0d | Elec Work Testing [8] | 22,819.84 |  |
|  | 6 | **Final Testing & Handover** |  | 2024-10-29 | 2024-11-24 |  |  |  |  |  |  |
| B06-V09~V16-1770 |  | Mech Work Testing & Handover | 5d | 2024-10-29 | 2024-11-03 | B06-V09~V16-1730, B06-V09~V16-1340, B06-V09~V16-1380, B06-V01~V08-1770 | 70d | 2d | Mech Work Testing & Handover [8] | 14,318.64 |  |
| B06-V09~V16-1780 |  | Arch Snaglist & Handover | 5d | 2024-11-04 | 2024-11-09 | B06-V09~V16-1750, B06-V09~V16-1710, B06-V09~V16-1400, B06-V01~V08-1780 | 65d | 2d | Arch Snaglist & Handover [8] | 77,320.64 |  |
| B06-V09~V16-1790 |  | ElecWork Testing & Handover | 5d | 2024-11-06 | 2024-11-11 | B06-V09~V16-1760, B06-V09~V16-1370, B06-V01~V08-1790 | 63d | 0d | Elec Work Handover [8] | 23,804.72 |  |
| B06-V09~V16-1800 |  | Final Handover Of The Villa To The Consltant | 5d | 2024-11-12 | 2024-11-17 | B06-V09~V16-1780, B06-V09~V16-1790, B06-V09~V16-1770, B06-V09~V16-1410, B06-V01~V08-1800 | 63d | 0d |  |  |  |
| B06-V09~V16-1810 |  | Customer Delivery | 6d | 2024-11-18 | 2024-11-24 | B06-V09~V16-1800, B06-V01~V08-1810 | 63d | 1d |  |  |  |
|  | 23 | **B06-V17~V24** |  | 2024-05-20 | 2024-12-02 |  |  |  |  |  |  |
|  | 2 | **Under Grond Slap Works** |  | 2024-05-20 | 2024-06-29 |  |  |  |  |  |  |
| B06-V17~V24-1000 |  | Excavation&Compaction of Fondation | 6d | 2024-05-20 | 2024-05-26 | B06-V09~V16-1000 | 25d | 0d | Clearing & Groubbing [8]; Excavation & Leveling [8]; Stone Layer [8]; A3 Layer [8]; A1-a 1st Layer [8]; A1-a 2ed Layer [8] | 163,545.76 | Civil |
| B06-V17~V24-1010 |  | Pouring Concrete For Bedding | 2d | 2024-05-27 | 2024-05-28 | B06-V17~V24-1000, B06-V09~V16-1010 | 25d | 0d | PC Carpentry [8]; PC Concrete [8]; RC 18 MPA [9 M3] | 37,899.68 | Civil |
| B06-V17~V24-1020 |  | Reinforcement Concrete For Foundation | 5d | 2024-05-29 | 2024-06-03 | B06-V17~V24-1010, B06-V09~V16-1020 | 25d | 0d | RC Foundation Carpentry [8]; RC Foundation Steel [8]; RC Foundation Concrete [8] | 201,355.92 | Civil |
| B06-V17~V24-1030 |  | Steel Fixing& Carpenter work for Beams | 4d | 2024-06-04 | 2024-06-08 | B06-V17~V24-1020, B06-V09~V16-1030 | 25d | 0d | RC Grade Beam Carpentry & Steel [8] | 44,745.76 | Civil |
| B06-V17~V24-1040 |  | Mech&Elec Establishment for Beams | 3d | 2024-06-09 | 2024-06-11 | B06-V17~V24-1030, B06-V09~V16-1040 | 25d | 0d |  |  | Mech |
| B06-V17~V24-1050 |  | Pouring Concrete For Beams | 1d | 2024-06-12 | 2024-06-12 | B06-V17~V24-1040, B06-V09~V16-1050 | 25d | 0d | RC Grade Beam Concrete [8] | 77,141.68 | Civil |
| B06-V17~V24-1060 |  | Bitmen Coating For Fondation&Beams | 3d | 2024-06-13 | 2024-06-16 | B06-V17~V24-1050, B06-V09~V16-1060 | 25d | 0d | Bitumen Coating Foundations & Grade Beams [8] | 22,372.32 | Civil |
| B06-V17~V24-1070 |  | Backfilling Inside Fondations | 4d | 2024-06-17 | 2024-06-20 | B06-V17~V24-1060, B06-V09~V16-1070 | 25d | 0d | Backfilling 1st Layer [8]; Backfilling 2ed Layer [8] | 11,186.4 | Civil |
| B06-V17~V24-1080 |  | Mech Works Under Grond Slap | 3d | 2024-06-22 | 2024-06-24 | B06-V17~V24-1070, B06-V09~V16-1080 | 25d | 0d | Mech Establishment Under Ground Slap [8] | 13,423.42 | Mech |
| B06-V17~V24-1090 |  | Steel Fixing& Carpenter work for Ground Slap | 3d | 2024-06-25 | 2024-06-27 | B06-V17~V24-1080, B06-V09~V16-1090 | 25d | 0d | Steel & Carpentry For Ground Slap [8] | 10,246.54 | Civil |
| B06-V17~V24-1100 |  | Anti Termite Treatment For Ground Slap | 1d | 2024-06-29 | 2024-06-29 | B06-V17~V24-1090, B06-V09~V16-1100 | 25d | 0d | Anti Termite Treatment nder Ground Slap [8] | 2,237.28 | Civil |
| B06-V17~V24-1110 |  | Pouring Concrete For Ground Slap | 1d | 2024-06-29 | 2024-06-29 | B06-V17~V24-1100 FF, B06-V17~V24-1090, B06-V09~V16-1110 | 25d | 5d | Concrete For Ground Slap [8] | 58,169.52 | Civil |

| ID | WBS | Activity | Duration | Start | Finish | Predecessors | Total float | Free float | Resources | Cost | Department-1 |
| --- | --- | --- | --- | --- | --- | --- | --- | --- | --- | --- | --- |
|  | 4 | **Precast Works** |  | 2024-07-29 | 2024-08-05 |  |  |  |  |  |  |
| B06-V17~V24-1120 |  | Precast Constrction | 7d | 2024-07-29 | 2024-08-05 | B06-V17~V24-1110, B06-V09~V16-1120 | 0d |  | Precast Walls GF [8]; Hollow Core Slap GF [8]; Precast Stairs & staircase House [8]; Thermal insollation Outside Walls [8]; Concrete structure joints [8]; Precast Walls FF [8]; Hollow Core Slap FF [8] | 1,513,762.87 | Civil |
|  | 1 | **Works Inside The Villa** |  | 2024-08-06 | 2024-11-19 |  |  |  |  |  |  |
| B06-V17~V24-1130 |  | Block Work For GF & Estabishment 1F | 6d | 2024-08-06 | 2024-08-12 | B06-V17~V24-1120, B06-V09~V16-1130 | 13d | 0d | Block GF [8] | 13,647.1 | Arc |
| B06-V17~V24-1140 |  | L.L & H.L Drainage | 6d | 2024-08-13 | 2024-08-19 | B06-V17~V24-1130, B06-V09~V16-1140 | 13d | 0d | HL Drainage [8]; L.L Drainage [8] | 89,489.28 | Mech |
| B06-V17~V24-1150 |  | Elec Establishment For GF & 1F | 3d | 2024-08-13 | 2024-08-15 | B06-V17~V24-1130, B06-V09~V16-1150 | 16d | 3d | Elec Establishment GF [8] | 26,840.73 | Elec |
| B06-V17~V24-1160 |  | Screed Work For 1F & Roof | 6d | 2024-08-20 | 2024-08-26 | B06-V17~V24-1140, B06-V17~V24-1150, B06-V09~V16-1160 | 13d | 0d | Screed 1st Floor [8]; Screed Roof Floor [8]; Leveling Screed 1st Floor [8]; Leveling Screed Roof Floor [8] | 268,467.85 | Civil |
| B06-V17~V24-1170 |  | Water Tank & Heater Foundations | 4d | 2024-08-27 | 2024-08-31 | B06-V17~V24-1160, B06-V09~V16-1170 | 17d | 0d |  |  | Civil |
| B06-V17~V24-1180 |  | Block Works For 1F | 3d | 2024-08-27 | 2024-08-29 | B06-V17~V24-1160, B06-V09~V16-1180 | 13d | 0d | Block FF [8] | 20,537.81 | Arc |
| B06-V17~V24-1190 |  | Water Line Network | 6d | 2024-08-31 | 2024-09-05 | B06-V17~V24-1180, B06-V09~V16-1190 | 13d | 0d | Water Line Network [8] | 40,261.13 | Mech |
| B06-V17~V24-1200 |  | Continue Elec Establishment For GF & 1F | 3d | 2024-08-31 | 2024-09-02 | B06-V17~V24-1180, B06-V09~V16-1200 | 16d | 3d | Elec Establishment FF [8] | 26,840.73 | Elec |
| B06-V17~V24-1210 |  | Thermal Insulation For Roof | 5d | 2024-09-01 | 2024-09-05 | B06-V17~V24-1170, B06-V09~V16-1210 | 17d | 0d | Roof Insulation [8] | 32,530.16 | Arc |
| B06-V17~V24-1220 |  | Roof Floor Tiles | 6d | 2024-09-07 | 2024-09-12 | B06-V17~V24-1210, B06-V09~V16-1220 | 17d | 1d | Roof Tiles [8]; Roof Tiles Joints [8]; Re_Test Roof Insulation [8] | 63,179.38 | Arc |
| B06-V17~V24-1230 |  | Plaster Work For Villa | 6d | 2024-09-07 | 2024-09-12 | B06-V17~V24-1190, B06-V17~V24-1200, B06-V09~V16-1230 | 13d | 0d | Establishing a plastering GF [8]; Establishing a plastering FF [8]; Plastering GF [8]; Plastering FF [8] | 49,263.81 |  |
| B06-V17~V24-1240 |  | Marbale Stairs & Handrails | 6d | 2024-09-14 | 2024-09-19 | B06-V17~V24-1230, B06-V09~V16-1240 | 35d | 1d | Marbale Stairs [8]; Stairs Handrails SS [8] | 91,494.69 |  |
| B06-V17~V24-1250 |  | Water Proofing Of Bathrooms | 4d | 2024-09-14 | 2024-09-17 | B06-V17~V24-1230, B06-V09~V16-1250 | 13d | 0d | Bathrooms InsulationGF & FF [8] | 134.24 |  |
| B06-V17~V24-1260 |  | Pulling The Elec Wires | 4d | 2024-09-14 | 2024-09-17 | B06-V17~V24-1230, B06-V09~V16-1260 | 23d | 3d | Elec Wires GF [8]; Elec Wires FF [8] | 80,542.4 |  |
| B06-V17~V24-1270 |  | Bathroom Tiles | 4d | 2024-09-18 | 2024-09-22 | B06-V17~V24-1250, B06-V17~V24-1220, B06-V09~V16-1270 | 13d | 0d | Ceramic Walls Kitchen [8]; Ceramic Walls Bathrooms GF [8]; Ceramic Walls Bathrooms FF [8]; Ceramic Tiles Bathrooms GF [8]; Ceramic Tiles Kitchen GF [8]; Ceramic Tiles Store GF [8] | 73,204.08 |  |
| B06-V17~V24-1280 |  | Structure For Gypsum | 6d | 2024-09-23 | 2024-09-29 | B06-V17~V24-1270, B06-V09~V16-1280 | 13d | 0d | Structure For Gypsum GF Rooms [8]; Structure For Gypsum FF Rooms [8]; Structure For Gypsum Bathrooms & Kitchen [8] | 33,550.81 |  |
| B06-V17~V24-1290 |  | Gypsum Board For Room | 4d | 2024-09-30 | 2024-10-03 | B06-V17~V24-1280, B06-V17~V24-1260, B06-V09~V16-1290 | 13d | 0d | Gypsum Board For GF Room [8]; Gypsum Board For FF Room [8] | 35,796.64 |  |
| B06-V17~V24-1300 |  | Installation Of Gypsum Board For Bathroom & Kitchen | 4d | 2024-10-05 | 2024-10-08 | B06-V17~V24-1290, B06-V09~V16-1300 | 13d | 0d | Gypsum Board For Bathrooms & Kitchen [8] | 11,052.24 |  |
| B06-V17~V24-1310 |  | Putty Filler For Gypsm Board Ceiling | 6d | 2024-10-09 | 2024-10-15 | B06-V17~V24-1300, B06-V09~V16-1310 | 13d | 0d | Putty Filler 1st Layer Roof all Rooms [8]; Putty Filler 1st Layer Roof all Bathrooms & Kitchen [8]; Putty Filler1st Layer walls [8] | 62,182.52 |  |
| B06-V17~V24-1320 |  | Fixing Shower Glass | 4d | 2024-10-16 | 2024-10-20 | B06-V17~V24-1310, B06-V09~V16-1320 | 21d | 0d | Shower Glass [8] | 22,372.88 |  |
| B06-V17~V24-1330 |  | Interior Wall Putty Filler | 6d | 2024-10-16 | 2024-10-22 | B06-V17~V24-1310, B06-V17~V24-1240, B06-V09~V16-1330 | 13d | 0d | Putty Filler 2ed Layer Roof & WAlls GF [8]; Putty Filler 2ed Layer Roof & WAlls FF [8] | 62,150.21 |  |
| B06-V17~V24-1340 |  | Installation Of Sanitry Fixture | 7d | 2024-10-21 | 2024-10-28 | B06-V17~V24-1320, B06-V09~V16-1340 | 21d | 0d | Mech Fixtures & Accessories [8] | 98,435.64 |  |
| B06-V17~V24-1350 |  | 1st Face Paint | 6d | 2024-10-23 | 2024-10-29 | B06-V17~V24-1330, B06-V09~V16-1350 | 13d | 0d |  |  |  |
| B06-V17~V24-1360 |  | Installation Of Aluminum Windows | 7d | 2024-10-23 | 2024-10-30 | B06-V17~V24-1330, B06-V09~V16-1360 | 23d | 0d | Aluminum Windows [8] | 84,795.68 |  |
| B06-V17~V24-1370 |  | Installation Of Elec Fixture & Accessories | 7d | 2024-10-23 | 2024-10-30 | B06-V17~V24-1310, B06-V17~V24-1330, B06-V17~V24-1260, B06-V09~V16-1370 | 37d | 0d | Elec Fixtures & Accessories Villa & Yard [8]; Elec Cables GF & FF & Earthing [8] | 53,692.2 |  |
| B06-V17~V24-1380 |  | Installation Of Water Tank-Heater & Pumps | 7d | 2024-10-29 | 2024-11-05 | B06-V17~V24-1340, B06-V09~V16-1380, B06-V17~V24-1220 | 21d | 0d | Water Tank & booster Pump [8]; Lower Pump [8]; Heater [8] | 129,756.23 |  |
| B06-V17~V24-1390 |  | Installation Of Parquet | 4d | 2024-10-30 | 2024-11-03 | B06-V17~V24-1350, B06-V09~V16-1390 | 13d | 0d | Installation Of Parquet [8] | 52,978.96 |  |
| B06-V17~V24-1400 |  | Installation Of Wooden Doors | 7d | 2024-11-04 | 2024-11-11 | B06-V17~V24-1390, B06-V09~V16-1400 | 13d | 0d | Wooden Doors Kitchen & Bathroom without Accessories [8]; Wooden Doors Accessories all Villa [8]; Exterior Wooden Doors [8] | 142,105.45 |  |
| B06-V17~V24-1410 |  | Final Face Paint | 7d | 2024-11-12 | 2024-11-19 | B06-V17~V24-1360, B06-V17~V24-1400, B06-V09~V16-1410 | 13d | 0d | Final Face Paint Villa [8] | 31,096.77 |  |

| ID | WBS | Activity | Duration | Start | Finish | Predecessors | Total float | Free float | Resources | Cost |
| --- | --- | --- | --- | --- | --- | --- | --- | --- | --- | --- |
|  | 3 | **Fence & Courtyard Works** |  | 2024-08-06 | 2024-11-09 |  |  |  |  |  |
| B06-V17~V24-1420 |  | Pouring Bedding Concrete For Fence Fondations | 2d | 2024-08-06 | 2024-08-07 | B06-V17~V24-1120, B06-V09~V16-1420 | 9d | 0d | Excavation Fence Foundations [8] | 4,519.28 |
| B06-V17~V24-1430 |  | RC Concrete For Fence Fondations | 6d | 2024-08-08 | 2024-08-14 | B06-V17~V24-1420, B06-V09~V16-1430 | 9d | 0d | Fence Fondations-Eastern side [8]; Fence Fondations-Westren side [8]; Fence Fondations-Back side [8] | 13,420.32 |
| B06-V17~V24-1440 |  | Steel Fixing & Carpentry For Fence Columns | 6d | 2024-08-15 | 2024-08-21 | B06-V17~V24-1430, B06-V09~V16-1440 | 9d | 0d |  |  |
| B06-V17~V24-1450 |  | Establishing Elec For Fence Columns | 4d | 2024-08-22 | 2024-08-26 | B06-V17~V24-1440, B06-V09~V16-1450 | 9d | 0d |  |  |
| B06-V17~V24-1460 |  | Pouring Concrete For Fence Columns | 1d | 2024-08-27 | 2024-08-27 | B06-V17~V24-1450, B06-V09~V16-1460 | 9d | 0d | Fence Columns-Eastern side [8]; Fence Columns-Westren side [8]; Fence Columns-Back side [8] | 9,665.04 |
| B06-V17~V24-1470 |  | Installation Precast Panel For Fence | 5d | 2024-08-28 | 2024-09-02 | B06-V17~V24-1460, B06-V09~V16-1470 | 9d | 0d | Hollow Core Walls [8] | 71,593.2 |
| B06-V17~V24-1480 |  | Bitumen Coating For Fence Fondations | 4d | 2024-09-03 | 2024-09-07 | B06-V17~V24-1470, B06-V09~V16-1480 | 9d | 0d |  |  |
| B06-V17~V24-1490 |  | Pouring Bedding Concrete For "Front" Fence Fondations | 1d | 2024-09-03 | 2024-09-03 | B06-V17~V24-1470, B06-V09~V16-1490 | 21d | 0d |  |  |
| B06-V17~V24-1500 |  | RC Concrete For "Front" Fence Fondations | 4d | 2024-09-04 | 2024-09-08 | B06-V17~V24-1490, B06-V09~V16-1500 | 21d | 0d | Front Fence Fondations [8] | 8,904.4 |
| B06-V17~V24-1510 |  | Outdoor Drainage & Water Line | 5d | 2024-09-08 | 2024-09-12 | B06-V17~V24-1480, B06-V17~V24-1140, B06-V09~V16-1510 | 9d | 0d | Outdoor Drainage [8]; Outdoor Water Line [8] | 13,423.68 |
| B06-V17~V24-1520 |  | Steel Fixing & Carpentry For "Front" Fence Columns | 4d | 2024-09-09 | 2024-09-12 | B06-V17~V24-1500, B06-V09~V16-1520 | 21d | 0d |  |  |
| B06-V17~V24-1530 |  | Establishing Elec For "Front" Fence Columns | 4d | 2024-09-14 | 2024-09-17 | B06-V17~V24-1520, B06-V09~V16-1530 | 21d | 0d |  |  |
| B06-V17~V24-1540 |  | Establishing Elec For Fence & Yard | 2d | 2024-09-14 | 2024-09-15 | B06-V17~V24-1510, B06-V09~V16-1540 | 9d | 0d | Elec Establishment Fence & Yard [8] | 17,898.32 |
| B06-V17~V24-1550 |  | Backfilling the Yard | 4d | 2024-09-16 | 2024-09-19 | B06-V17~V24-1540, B06-V09~V16-1550 | 9d | 0d | Backfilling the Yard [8] | 10,560 |
| B06-V17~V24-1560 |  | Pouring Concrete Wall Of "Front" Fence Columns | 2d | 2024-09-18 | 2024-09-19 | B06-V17~V24-1530, B06-V09~V16-1560 | 21d | 0d | Front Fence Walls [8] | 17,898.32 |
| B06-V17~V24-1570 |  | Pouring Concrete Crown Of "Front" Fence Columns | 3d | 2024-09-21 | 2024-09-23 | B06-V17~V24-1560, B06-V09~V16-1570 | 21d | 0d | Fence Columns - C Chanel [8] | 3,310.37 |
| B06-V17~V24-1580 |  | Bardoura Works For Yard | 5d | 2024-09-21 | 2024-09-25 | B06-V17~V24-1550, B06-V09~V16-1580 | 9d | 0d | Bardoura Works For Yard [8] | 14,408.16 |
| B06-V17~V24-1590 |  | Pouring Concrete Flower Basin Of "Front" Fence Columns | 4d | 2024-09-24 | 2024-09-28 | B06-V17~V24-1570, B06-V09~V16-1590 | 21d | 0d |  |  |
| B06-V17~V24-1600 |  | Antitermite Treatment For Yard | 1d | 2024-09-26 | 2024-09-26 | B06-V17~V24-1580, B06-V09~V16-1600 | 9d | 0d | Antitermite Treatment For Yard [8] |  |
| B06-V17~V24-1610 |  | Pouring Concrete For Yard | 1d | 2024-09-28 | 2024-09-28 | B06-V17~V24-1600, B06-V09~V16-1610 | 9d | 0d |  |  |
| B06-V17~V24-1620 |  | Block Work For Flower Basin | 5d | 2024-09-29 | 2024-10-03 | B06-V17~V24-1610, B06-V09~V16-1620 | 9d | 0d |  |  |
| B06-V17~V24-1630 |  | Plastering Work For Flower Basin | 4d | 2024-10-05 | 2024-10-08 | B06-V17~V24-1620, B06-V09~V16-1630 | 9d | 0d |  |  |
| B06-V17~V24-1640 |  | Interlock Works For The Yard | 6d | 2024-10-09 | 2024-10-15 | B06-V17~V24-1630, B06-V09~V16-1640 | 9d | 0d | Interlock Works For The Yard [8] | 36,776.32 |
| B06-V17~V24-1650 |  | External Grading Works For The Villa | 4d | 2024-10-16 | 2024-10-20 | B06-V17~V24-1640, B06-V09~V16-1650 | 11d | 0d | External Grading Works For The Villa [8] | 3,221.68 |
| B06-V17~V24-1660 |  | Installation The Exterior Door & Garage Door | 5d | 2024-10-16 | 2024-10-21 | B06-V17~V24-1640, B06-V09~V16-1660 | 14d | 2d | Installation The Exterior Door [8]; Installation The Exterior Garage Door [8] | 40,002.72 |
| B06-V17~V24-1670 |  | Fixing Floor Drain For The Yard | 2d | 2024-10-16 | 2024-10-17 | B06-V17~V24-1640, B06-V09~V16-1670 | 17d | 5d | Floor Drain & Clean Out [8] | 13,423.76 |
| B06-V17~V24-1680 |  | Granite Surronds Around The Villa | 4d | 2024-10-21 | 2024-10-24 | B06-V17~V24-1650, B06-V09~V16-1680 | 11d | 2d | Granite Surronds Around The Villa [8] | 25,818.32 |
| B06-V17~V24-1690 |  | Painting The Base Surface Of The Fence | 2d | 2024-10-21 | 2024-10-22 | B06-V17~V24-1750, B06-V09~V16-1690 | 9d | 0d |  |  |
| B06-V17~V24-1700 |  | Painting The Final Face Of The Fence | 4d | 2024-10-23 | 2024-10-27 | B06-V17~V24-1690, B06-V09~V16-1700 | 9d | 0d | Painting Final Face Of The Fence [8] | 37,586.48 |
| B06-V17~V24-1710 |  | Exterior Painting Of The Villa | 7d | 2024-10-28 | 2024-11-04 | B06-V17~V24-1680, B06-V17~V24-1700, B06-V17~V24-1660, B06-V17~V24-1670, B06-V09~V16-1710 | 9d | 0d | Exterior Painting Of The Villa [8]; Exterior Painting Staircase House [8] | 105,684.16 |
| B06-V17~V24-1720 |  | Installation Elec Fixtures & Accessories For The Yard | 4d | 2024-11-05 | 2024-11-09 | B06-V17~V24-1700, B06-V17~V24-1710, B06-V09~V16-1720 | 62d | 0d | Elec feeding panels GF & FF [8] | 22,372.88 |

| ID | WBS | Activity | Duration | Start | Finish | Predecessors | Total float | Free float | Resources | Cost | Department-1 |
| --- | --- | --- | --- | --- | --- | --- | --- | --- | --- | --- | --- |
|  | 5 | **External Sidewalk Works** |  | 2024-09-29 | 2024-11-13 |  |  |  |  |  |  |
| B06-V17~V24-1730 |  | Connection The Drain To The Piblic Network | 3d | 2024-09-29 | 2024-10-01 | B06-V17~V24-1510, B06-V17~V24-1590, B06-V09~V16-1730 | 21d | 4d | Connection Drain To The Piblic Network [8]; Connection Water To The Piblic Network [8] | 13,420.32 |  |
| B06-V17~V24-1740 |  | Pardora Works For The External Sidewalk | 2d | 2024-10-16 | 2024-10-17 | B06-V17~V24-1640, B06-V17~V24-1730, B06-V09~V16-1740 | 9d | 0d |  |  |  |
| B06-V17~V24-1750 |  | Interlock Works For The Exerrnal Sidewalk | 2d | 2024-10-19 | 2024-10-20 | B06-V17~V24-1740, B06-V09~V16-1750 | 9d | 0d |  |  |  |
| B06-V17~V24-1760 |  | Pulling The Villa's Main Elec Cable | 4d | 2024-11-10 | 2024-11-13 | B06-V17~V24-1750, B06-V17~V24-1720, B06-V09~V16-1760 | 62d | 0d | Elec Work Testing [8] | 22,819.84 |  |
|  | 6 | **Final Testing & Handover** |  | 2024-11-06 | 2024-12-02 |  |  |  |  |  |  |
| B06-V17~V24-1770 |  | Mech Work Testing & Handover | 5d | 2024-11-06 | 2024-11-11 | B06-V17~V24-1730, B06-V17~V24-1340, B06-V17~V24-1380, B06-V09~V16-1770 | 69d | 2d | Mech Work Testing & Handover [8] | 14,318.64 |  |
| B06-V17~V24-1780 |  | Arch Snaglist & Handover | 5d | 2024-11-12 | 2024-11-17 | B06-V17~V24-1750, B06-V17~V24-1710, B06-V17~V24-1400, B06-V09~V16-1780 | 64d | 2d | Arch Snaglist & Handover [8] | 77,320.64 |  |
| B06-V17~V24-1790 |  | ElecWork Testing & Handover | 5d | 2024-11-14 | 2024-11-19 | B06-V17~V24-1760, B06-V17~V24-1370, B06-V09~V16-1790 | 62d | 0d | Elec Work Handover [8] | 23,804.72 |  |
| B06-V17~V24-1800 |  | Final Handover Of The Villa To The Consltant | 5d | 2024-11-20 | 2024-11-25 | B06-V17~V24-1780, B06-V17~V24-1790, B06-V17~V24-1770, B06-V17~V24-1410, B06-V09~V16-1800 | 62d | 0d |  |  |  |
| B06-V17~V24-1810 |  | Customer Delivery | 6d | 2024-11-26 | 2024-12-02 | B06-V17~V24-1800, B06-V09~V16-1810 | 62d | 1d |  |  |  |
|  | 24 | **B06-V25~V32** |  | 2024-05-27 | 2024-12-10 |  |  |  |  |  |  |
|  | 2 | **Under Grond Slap Works** |  | 2024-05-27 | 2024-07-06 |  |  |  |  |  |  |
| B06-V25~V32-1000 |  | Excavation&Compaction of Fondation | 6d | 2024-05-27 | 2024-06-02 | B06-V17~V24-1000 | 26d | 0d | Clearing & Groubbing [8]; Excavation & Leveling [8]; Stone Layer [8]; A3 Layer [8]; A1-a 1st Layer [8]; A1-a 2ed Layer [8] | 163,545.76 | Civil |
| B06-V25~V32-1010 |  | Pouring Concrete For Bedding | 2d | 2024-06-03 | 2024-06-04 | B06-V25~V32-1000, B06-V17~V24-1010 | 26d | 0d | PC Carpentry [8]; PC Concrete [8]; RC 18 MPA [9 M3] | 37,899.68 | Civil |
| B06-V25~V32-1020 |  | Reinforcement Concrete For Foundation | 5d | 2024-06-05 | 2024-06-10 | B06-V25~V32-1010, B06-V17~V24-1020 | 26d | 0d | RC Foundation Carpentry [8]; RC Foundation Steel [8]; RC Foundation Concrete [8] | 201,355.92 | Civil |
| B06-V25~V32-1030 |  | Steel Fixing& Carpenter work for Beams | 4d | 2024-06-11 | 2024-06-15 | B06-V25~V32-1020, B06-V17~V24-1030 | 26d | 0d | RC Grade Beam Carpentry & Steel [8] | 44,745.76 | Civil |
| B06-V25~V32-1040 |  | Mech&Elec Establishment for Beams | 3d | 2024-06-16 | 2024-06-18 | B06-V25~V32-1030, B06-V17~V24-1040 | 26d | 0d |  |  | Mech |
| B06-V25~V32-1050 |  | Pouring Concrete For Beams | 1d | 2024-06-19 | 2024-06-19 | B06-V25~V32-1040, B06-V17~V24-1050 | 26d | 0d | RC Grade Beam Concrete [8] | 77,141.68 | Civil |
| B06-V25~V32-1060 |  | Bitmen Coating For Fondation&Beams | 3d | 2024-06-20 | 2024-06-23 | B06-V25~V32-1050, B06-V17~V24-1060 | 26d | 0d | Bitumen Coating Foundations & Grade Beams [8] | 22,372.32 | Civil |
| B06-V25~V32-1070 |  | Backfilling Inside Fondations | 4d | 2024-06-24 | 2024-06-27 | B06-V25~V32-1060, B06-V17~V24-1070 | 26d | 0d | Backfilling 1st Layer [8]; Backfilling 2ed Layer [8] | 11,186.4 | Civil |
| B06-V25~V32-1080 |  | Mech Works Under Grond Slap | 3d | 2024-06-29 | 2024-07-01 | B06-V25~V32-1070, B06-V17~V24-1080 | 26d | 0d | Mech Establishment Under Ground Slap [8] | 13,423.42 | Mech |
| B06-V25~V32-1090 |  | Steel Fixing& Carpenter work for Ground Slap | 3d | 2024-07-02 | 2024-07-04 | B06-V25~V32-1080, B06-V17~V24-1090 | 26d | 0d | Steel & Carpentry For Ground Slap [8] | 10,246.54 | Civil |
| B06-V25~V32-1100 |  | Anti Termite Treatment For Ground Slap | 1d | 2024-07-06 | 2024-07-06 | B06-V25~V32-1090, B06-V17~V24-1100 | 26d | 0d | Anti Termite Treatment nder Ground Slap [8] | 2,237.28 | Civil |
| B06-V25~V32-1110 |  | Pouring Concrete For Ground Slap | 1d | 2024-07-06 | 2024-07-06 | B06-V25~V32-1100 FF, B06-V25~V32-1090, B06-V17~V24-1110 | 26d | 5d | Concrete For Ground Slap [8] | 58,169.52 | Civil |

| ID | WBS | Activity | Duration | Start | Finish | Predecessors | Total float | Free float | Resources | Cost | Department-1 |
| --- | --- | --- | --- | --- | --- | --- | --- | --- | --- | --- | --- |
|  | 4 | **Precast Works** |  | 2024-08-06 | 2024-08-13 |  |  |  |  |  |  |
| B06-V25~V32-1120 |  | Precast Constrction | 7d | 2024-08-06 | 2024-08-13 | B06-V25~V32-1110, B06-V17~V24-1120 | 0d |  | Precast Walls GF [8]; Hollow Core Slap GF [8]; Precast Stairs & staircase House [8]; Thermal insollation Outside Walls [8]; Concrete structure joints [8]; Precast Walls FF [8]; Hollow Core Slap FF [8] | 1,513,762.87 | Civil |
|  | 1 | **Works Inside The Villa** |  | 2024-08-14 | 2024-11-27 |  |  |  |  |  |  |
| B06-V25~V32-1130 |  | Block Work For GF & Estabishment 1F | 6d | 2024-08-14 | 2024-08-20 | B06-V25~V32-1120, B06-V17~V24-1130 | 13d | 0d | Block GF [8] | 13,647.1 | Arc |
| B06-V25~V32-1140 |  | L.L & H.L Drainage | 6d | 2024-08-21 | 2024-08-27 | B06-V25~V32-1130, B06-V17~V24-1140 | 13d | 0d | HL Drainage [8]; L.L Drainage [8] | 89,489.28 | Mech |
| B06-V25~V32-1150 |  | Elec Establishment For GF & 1F | 3d | 2024-08-21 | 2024-08-24 | B06-V25~V32-1130, B06-V17~V24-1150 | 16d | 3d | Elec Establishment GF [8] | 26,840.73 | Elec |
| B06-V25~V32-1160 |  | Screed Work For 1F & Roof | 6d | 2024-08-28 | 2024-09-03 | B06-V25~V32-1140, B06-V25~V32-1150, B06-V17~V24-1160 | 13d | 0d | Screed 1st Floor [8]; Screed Roof Floor [8]; Leveling Screed 1st Floor [8]; Leveling Screed Roof Floor [8] | 268,467.85 | Civil |
| B06-V25~V32-1170 |  | Water Tank & Heater Foundations | 4d | 2024-09-04 | 2024-09-08 | B06-V25~V32-1160, B06-V17~V24-1170 | 17d | 0d |  |  | Civil |
| B06-V25~V32-1180 |  | Block Works For 1F | 3d | 2024-09-04 | 2024-09-07 | B06-V25~V32-1160, B06-V17~V24-1180 | 13d | 0d | Block FF [8] | 20,537.81 | Arc |
| B06-V25~V32-1190 |  | Water Line Network | 6d | 2024-09-08 | 2024-09-14 | B06-V25~V32-1180, B06-V17~V24-1190 | 13d | 0d | Water Line Network [8] | 40,261.13 | Mech |
| B06-V25~V32-1200 |  | Continue Elec Establishment For GF & 1F | 3d | 2024-09-08 | 2024-09-10 | B06-V25~V32-1180, B06-V17~V24-1200 | 16d | 3d | Elec Establishment FF [8] | 26,840.73 | Elec |
| B06-V25~V32-1210 |  | Thermal Insulation For Roof | 5d | 2024-09-09 | 2024-09-14 | B06-V25~V32-1170, B06-V17~V24-1210 | 17d | 0d | Roof Insulation [8] | 32,530.16 | Arc |
| B06-V25~V32-1220 |  | Roof Floor Tiles | 6d | 2024-09-15 | 2024-09-21 | B06-V25~V32-1210, B06-V17~V24-1220 | 17d | 1d | Roof Tiles [8]; Roof Tiles Joints [8]; Re_Test Roof Insulation [8] | 63,179.38 | Arc |
| B06-V25~V32-1230 |  | Plaster Work For Villa | 6d | 2024-09-15 | 2024-09-21 | B06-V25~V32-1190, B06-V25~V32-1200, B06-V17~V24-1230 | 13d | 0d | Establishing a plastering GF [8]; Establishing a plastering FF [8]; Plastering GF [8]; Plastering FF [8] | 49,263.81 |  |
| B06-V25~V32-1240 |  | Marbale Stairs & Handrails | 6d | 2024-09-22 | 2024-09-28 | B06-V25~V32-1230, B06-V17~V24-1240 | 35d | 1d | Marbale Stairs [8]; Stairs Handrails SS [8] | 91,494.69 |  |
| B06-V25~V32-1250 |  | Water Proofing Of Bathrooms | 4d | 2024-09-22 | 2024-09-25 | B06-V25~V32-1230, B06-V17~V24-1250 | 13d | 0d | Bathrooms InsulationGF & FF [8] | 134.24 |  |
| B06-V25~V32-1260 |  | Pulling The Elec Wires | 4d | 2024-09-22 | 2024-09-25 | B06-V25~V32-1230, B06-V17~V24-1260 | 23d | 3d | Elec Wires GF [8]; Elec Wires FF [8] | 80,542.4 |  |
| B06-V25~V32-1270 |  | Bathroom Tiles | 4d | 2024-09-26 | 2024-09-30 | B06-V25~V32-1250, B06-V25~V32-1220, B06-V17~V24-1270 | 13d | 0d | Ceramic Walls Kitchen [8]; Ceramic Walls Bathrooms GF [8]; Ceramic Walls Bathrooms FF [8]; Ceramic Tiles Bathrooms GF [8]; Ceramic Tiles Kitchen GF [8]; Ceramic Tiles Store GF [8] | 73,204.08 |  |
| B06-V25~V32-1280 |  | Structure For Gypsum | 6d | 2024-10-01 | 2024-10-07 | B06-V25~V32-1270, B06-V17~V24-1280 | 13d | 0d | Structure For Gypsum GF Rooms [8]; Structure For Gypsum FF Rooms [8]; Structure For Gypsum Bathrooms & Kitchen [8] | 33,550.81 |  |
| B06-V25~V32-1290 |  | Gypsum Board For Room | 4d | 2024-10-08 | 2024-10-12 | B06-V25~V32-1280, B06-V25~V32-1260, B06-V17~V24-1290 | 13d | 0d | Gypsum Board For GF Room [8]; Gypsum Board For FF Room [8] | 35,796.64 |  |
| B06-V25~V32-1300 |  | Installation Of Gypsum Board For Bathroom & Kitchen | 4d | 2024-10-13 | 2024-10-16 | B06-V25~V32-1290, B06-V17~V24-1300 | 13d | 0d | Gypsum Board For Bathrooms & Kitchen [8] | 11,052.24 |  |
| B06-V25~V32-1310 |  | Putty Filler For Gypsm Board Ceiling | 6d | 2024-10-17 | 2024-10-23 | B06-V25~V32-1300, B06-V17~V24-1310 | 13d | 0d | Putty Filler 1st Layer Roof all Rooms [8]; Putty Filler 1st Layer Roof all Bathrooms & Kitchen [8]; Putty Filler1st Layer walls [8] | 62,182.52 |  |
| B06-V25~V32-1320 |  | Fixing Shower Glass | 4d | 2024-10-24 | 2024-10-28 | B06-V25~V32-1310, B06-V17~V24-1320 | 21d | 0d | Shower Glass [8] | 22,372.88 |  |
| B06-V25~V32-1330 |  | Interior Wall Putty Filler | 6d | 2024-10-24 | 2024-10-30 | B06-V25~V32-1310, B06-V25~V32-1240, B06-V17~V24-1330 | 13d | 0d | Putty Filler 2ed Layer Roof & WAlls GF [8]; Putty Filler 2ed Layer Roof & WAlls FF [8] | 62,150.21 |  |
| B06-V25~V32-1340 |  | Installation Of Sanitry Fixture | 7d | 2024-10-29 | 2024-11-05 | B06-V25~V32-1320, B06-V17~V24-1340 | 21d | 0d | Mech Fixtures & Accessories [8] | 98,435.64 |  |
| B06-V25~V32-1350 |  | 1st Face Paint | 6d | 2024-10-31 | 2024-11-06 | B06-V25~V32-1330, B06-V17~V24-1350 | 13d | 0d |  |  |  |
| B06-V25~V32-1360 |  | Installation Of Aluminum Windows | 7d | 2024-10-31 | 2024-11-07 | B06-V25~V32-1330, B06-V17~V24-1360 | 23d | 0d | Aluminum Windows [8] | 84,795.68 |  |
| B06-V25~V32-1370 |  | Installation Of Elec Fixture & Accessories | 7d | 2024-10-31 | 2024-11-07 | B06-V25~V32-1310, B06-V25~V32-1330, B06-V25~V32-1260, B06-V17~V24-1370 | 37d | 0d | Elec Fixtures & Accessories Villa & Yard [8]; Elec Cables GF & FF & Earthing [8] | 53,692.2 |  |
| B06-V25~V32-1380 |  | Installation Of Water Tank-Heater & Pumps | 7d | 2024-11-06 | 2024-11-13 | B06-V25~V32-1340, B06-V17~V24-1380, B06-V25~V32-1220 | 21d | 0d | Water Tank & booster Pump [8]; Lower Pump [8]; Heater [8] | 129,756.23 |  |
| B06-V25~V32-1390 |  | Installation Of Parquet | 4d | 2024-11-07 | 2024-11-11 | B06-V25~V32-1350, B06-V17~V24-1390 | 13d | 0d | Installation Of Parquet [8] | 52,978.96 |  |
| B06-V25~V32-1400 |  | Installation Of Wooden Doors | 7d | 2024-11-12 | 2024-11-19 | B06-V25~V32-1390, B06-V17~V24-1400 | 13d | 0d | Wooden Doors Kitchen & Bathroom without Accessories [8]; Wooden Doors Accessories all Villa [8]; Exterior Wooden Doors [8] | 142,105.45 |  |
| B06-V25~V32-1410 |  | Final Face Paint | 7d | 2024-11-20 | 2024-11-27 | B06-V25~V32-1360, B06-V25~V32-1400, B06-V17~V24-1410 | 13d | 0d | Final Face Paint Villa [8] | 31,096.77 |  |

| ID | WBS | Activity | Duration | Start | Finish | Predecessors | Total float | Free float | Resources | Cost |
| --- | --- | --- | --- | --- | --- | --- | --- | --- | --- | --- |
|  | 3 | **Fence & Courtyard Works** |  | 2024-08-14 | 2024-11-17 |  |  |  |  |  |
| B06-V25~V32-1420 |  | Pouring Bedding Concrete For Fence Fondations | 2d | 2024-08-14 | 2024-08-15 | B06-V25~V32-1120, B06-V17~V24-1420 | 9d | 0d | Excavation Fence Foundations [8] | 4,519.28 |
| B06-V25~V32-1430 |  | RC Concrete For Fence Fondations | 6d | 2024-08-17 | 2024-08-22 | B06-V25~V32-1420, B06-V17~V24-1430 | 9d | 0d | Fence Fondations-Eastern side [8]; Fence Fondations-Westren side [8]; Fence Fondations-Back side [8] | 13,420.32 |
| B06-V25~V32-1440 |  | Steel Fixing & Carpentry For Fence Columns | 6d | 2024-08-24 | 2024-08-29 | B06-V25~V32-1430, B06-V17~V24-1440 | 9d | 0d |  |  |
| B06-V25~V32-1450 |  | Establishing Elec For Fence Columns | 4d | 2024-08-31 | 2024-09-03 | B06-V25~V32-1440, B06-V17~V24-1450 | 9d | 0d |  |  |
| B06-V25~V32-1460 |  | Pouring Concrete For Fence Columns | 1d | 2024-09-04 | 2024-09-04 | B06-V25~V32-1450, B06-V17~V24-1460 | 9d | 0d | Fence Columns-Eastern side [8]; Fence Columns-Westren side [8]; Fence Columns-Back side [8] | 9,665.04 |
| B06-V25~V32-1470 |  | Installation Precast Panel For Fence | 5d | 2024-09-05 | 2024-09-10 | B06-V25~V32-1460, B06-V17~V24-1470 | 9d | 0d | Hollow Core Walls [8] | 71,593.2 |
| B06-V25~V32-1480 |  | Bitumen Coating For Fence Fondations | 4d | 2024-09-11 | 2024-09-15 | B06-V25~V32-1470, B06-V17~V24-1480 | 9d | 0d |  |  |
| B06-V25~V32-1490 |  | Pouring Bedding Concrete For "Front" Fence Fondations | 1d | 2024-09-11 | 2024-09-11 | B06-V25~V32-1470, B06-V17~V24-1490 | 21d | 0d |  |  |
| B06-V25~V32-1500 |  | RC Concrete For "Front" Fence Fondations | 4d | 2024-09-12 | 2024-09-16 | B06-V25~V32-1490, B06-V17~V24-1500 | 21d | 0d | Front Fence Fondations [8] | 8,904.4 |
| B06-V25~V32-1510 |  | Outdoor Drainage & Water Line | 5d | 2024-09-16 | 2024-09-21 | B06-V25~V32-1480, B06-V25~V32-1140, B06-V17~V24-1510 | 9d | 0d | Outdoor Drainage [8]; Outdoor Water Line [8] | 13,423.68 |
| B06-V25~V32-1520 |  | Steel Fixing & Carpentry For "Front" Fence Columns | 4d | 2024-09-17 | 2024-09-21 | B06-V25~V32-1500, B06-V17~V24-1520 | 21d | 0d |  |  |
| B06-V25~V32-1530 |  | Establishing Elec For "Front" Fence Columns | 4d | 2024-09-22 | 2024-09-25 | B06-V25~V32-1520, B06-V17~V24-1530 | 21d | 0d |  |  |
| B06-V25~V32-1540 |  | Establishing Elec For Fence & Yard | 2d | 2024-09-22 | 2024-09-23 | B06-V25~V32-1510, B06-V17~V24-1540 | 9d | 0d | Elec Establishment Fence & Yard [8] | 17,898.32 |
| B06-V25~V32-1550 |  | Backfilling the Yard | 4d | 2024-09-24 | 2024-09-28 | B06-V25~V32-1540, B06-V17~V24-1550 | 9d | 0d | Backfilling the Yard [8] | 10,560 |
| B06-V25~V32-1560 |  | Pouring Concrete Wall Of "Front" Fence Columns | 2d | 2024-09-26 | 2024-09-28 | B06-V25~V32-1530, B06-V17~V24-1560 | 21d | 0d | Front Fence Walls [8] | 17,898.32 |
| B06-V25~V32-1570 |  | Pouring Concrete Crown Of "Front" Fence Columns | 3d | 2024-09-29 | 2024-10-01 | B06-V25~V32-1560, B06-V17~V24-1570 | 21d | 0d | Fence Columns - C Chanel [8] | 3,310.37 |
| B06-V25~V32-1580 |  | Bardoura Works For Yard | 5d | 2024-09-29 | 2024-10-03 | B06-V25~V32-1550, B06-V17~V24-1580 | 9d | 0d | Bardoura Works For Yard [8] | 14,408.16 |
| B06-V25~V32-1590 |  | Pouring Concrete Flower Basin Of "Front" Fence Columns | 4d | 2024-10-02 | 2024-10-06 | B06-V25~V32-1570, B06-V17~V24-1590 | 21d | 0d |  |  |
| B06-V25~V32-1600 |  | Antitermite Treatment For Yard | 1d | 2024-10-05 | 2024-10-05 | B06-V25~V32-1580, B06-V17~V24-1600 | 9d | 0d | Antitermite Treatment For Yard [8] |  |
| B06-V25~V32-1610 |  | Pouring Concrete For Yard | 1d | 2024-10-06 | 2024-10-06 | B06-V25~V32-1600, B06-V17~V24-1610 | 9d | 0d |  |  |
| B06-V25~V32-1620 |  | Block Work For Flower Basin | 5d | 2024-10-07 | 2024-10-12 | B06-V25~V32-1610, B06-V17~V24-1620 | 9d | 0d |  |  |
| B06-V25~V32-1630 |  | Plastering Work For Flower Basin | 4d | 2024-10-13 | 2024-10-16 | B06-V25~V32-1620, B06-V17~V24-1630 | 9d | 0d |  |  |
| B06-V25~V32-1640 |  | Interlock Works For The Yard | 6d | 2024-10-17 | 2024-10-23 | B06-V25~V32-1630, B06-V17~V24-1640 | 9d | 0d | Interlock Works For The Yard [8] | 36,776.32 |
| B06-V25~V32-1650 |  | External Grading Works For The Villa | 4d | 2024-10-24 | 2024-10-28 | B06-V25~V32-1640, B06-V17~V24-1650 | 11d | 0d | External Grading Works For The Villa [8] | 3,221.68 |
| B06-V25~V32-1660 |  | Installation The Exterior Door & Garage Door | 5d | 2024-10-24 | 2024-10-29 | B06-V25~V32-1640, B06-V17~V24-1660 | 14d | 2d | Installation The Exterior Door [8]; Installation The Exterior Garage Door [8] | 40,002.72 |
| B06-V25~V32-1670 |  | Fixing Floor Drain For The Yard | 2d | 2024-10-24 | 2024-10-26 | B06-V25~V32-1640, B06-V17~V24-1670 | 17d | 5d | Floor Drain & Clean Out [8] | 13,423.76 |
| B06-V25~V32-1680 |  | Granite Surronds Around The Villa | 4d | 2024-10-29 | 2024-11-02 | B06-V25~V32-1650, B06-V17~V24-1680 | 11d | 2d | Granite Surronds Around The Villa [8] | 25,818.32 |
| B06-V25~V32-1690 |  | Painting The Base Surface Of The Fence | 2d | 2024-10-29 | 2024-10-30 | B06-V25~V32-1750, B06-V17~V24-1690 | 9d | 0d |  |  |
| B06-V25~V32-1700 |  | Painting The Final Face Of The Fence | 4d | 2024-10-31 | 2024-11-04 | B06-V25~V32-1690, B06-V17~V24-1700 | 9d | 0d | Painting Final Face Of The Fence [8] | 37,586.48 |
| B06-V25~V32-1710 |  | Exterior Painting Of The Villa | 7d | 2024-11-05 | 2024-11-12 | B06-V25~V32-1680, B06-V25~V32-1700, B06-V25~V32-1660, B06-V25~V32-1670, B06-V17~V24-1710 | 9d | 0d | Exterior Painting Of The Villa [8]; Exterior Painting Staircase House [8] | 105,684.16 |
| B06-V25~V32-1720 |  | Installation Elec Fixtures & Accessories For The Yard | 4d | 2024-11-13 | 2024-11-17 | B06-V25~V32-1700, B06-V25~V32-1710, B06-V17~V24-1720 | 61d | 0d | Elec feeding panels GF & FF [8] | 22,372.88 |

| ID | WBS | Activity | Duration | Start | Finish | Predecessors | Total float | Free float | Resources | Cost | Department-1 |
| --- | --- | --- | --- | --- | --- | --- | --- | --- | --- | --- | --- |
|  | 5 | **External Sidewalk Works** |  | 2024-10-07 | 2024-11-21 |  |  |  |  |  |  |
| B06-V25~V32-1730 |  | Connection The Drain To The Piblic Network | 3d | 2024-10-07 | 2024-10-09 | B06-V25~V32-1510, B06-V25~V32-1590, B06-V17~V24-1730 | 21d | 4d | Connection Drain To The Piblic Network [8]; Connection Water To The Piblic Network [8] | 13,420.32 |  |
| B06-V25~V32-1740 |  | Pardora Works For The External Sidewalk | 2d | 2024-10-24 | 2024-10-26 | B06-V25~V32-1640, B06-V25~V32-1730, B06-V17~V24-1740 | 9d | 0d |  |  |  |
| B06-V25~V32-1750 |  | Interlock Works For The Exerrnal Sidewalk | 2d | 2024-10-27 | 2024-10-28 | B06-V25~V32-1740, B06-V17~V24-1750 | 9d | 0d |  |  |  |
| B06-V25~V32-1760 |  | Pulling The Villa's Main Elec Cable | 4d | 2024-11-18 | 2024-11-21 | B06-V25~V32-1750, B06-V25~V32-1720, B06-V17~V24-1760 | 61d | 0d | Elec Work Testing [8] | 22,819.84 |  |
|  | 6 | **Final Testing & Handover** |  | 2024-11-14 | 2024-12-10 |  |  |  |  |  |  |
| B06-V25~V32-1770 |  | Mech Work Testing & Handover | 5d | 2024-11-14 | 2024-11-19 | B06-V25~V32-1730, B06-V25~V32-1340, B06-V25~V32-1380, B06-V17~V24-1770 | 68d | 2d | Mech Work Testing & Handover [8] | 14,318.64 |  |
| B06-V25~V32-1780 |  | Arch Snaglist & Handover | 5d | 2024-11-20 | 2024-11-25 | B06-V25~V32-1750, B06-V25~V32-1710, B06-V25~V32-1400, B06-V17~V24-1780 | 63d | 2d | Arch Snaglist & Handover [8] | 77,320.64 |  |
| B06-V25~V32-1790 |  | ElecWork Testing & Handover | 5d | 2024-11-23 | 2024-11-27 | B06-V25~V32-1760, B06-V25~V32-1370, B06-V17~V24-1790 | 61d | 0d | Elec Work Handover [8] | 23,804.72 |  |
| B06-V25~V32-1800 |  | Final Handover Of The Villa To The Consltant | 5d | 2024-11-28 | 2024-12-03 | B06-V25~V32-1780, B06-V25~V32-1790, B06-V25~V32-1770, B06-V25~V32-1410, B06-V17~V24-1800 | 61d | 0d |  |  |  |
| B06-V25~V32-1810 |  | Customer Delivery | 6d | 2024-12-04 | 2024-12-10 | B06-V25~V32-1800, B06-V17~V24-1810 | 61d | 1d |  |  |  |
|  | 25 | **B07-V01~V08** |  | 2024-06-03 | 2024-12-18 |  |  |  |  |  |  |
|  | 2 | **Under Grond Slap Works** |  | 2024-06-03 | 2024-07-13 |  |  |  |  |  |  |
| B07-V01~V08-1000 |  | Excavation&Compaction of Fondation | 6d | 2024-06-03 | 2024-06-09 | B06-V25~V32-1000 | 27d | 0d | Clearing & Groubbing [8]; Excavation & Leveling [8]; Stone Layer [8]; A3 Layer [8]; A1-a 1st Layer [8]; A1-a 2ed Layer [8] | 163,545.76 | Civil |
| B07-V01~V08-1010 |  | Pouring Concrete For Bedding | 2d | 2024-06-10 | 2024-06-11 | B07-V01~V08-1000, B06-V25~V32-1010 | 27d | 0d | PC Carpentry [8]; PC Concrete [8]; RC 18 MPA [9 M3] | 37,899.68 | Civil |
| B07-V01~V08-1020 |  | Reinforcement Concrete For Foundation | 5d | 2024-06-12 | 2024-06-17 | B07-V01~V08-1010, B06-V25~V32-1020 | 27d | 0d | RC Foundation Carpentry [8]; RC Foundation Steel [8]; RC Foundation Concrete [8] | 201,355.92 | Civil |
| B07-V01~V08-1030 |  | Steel Fixing& Carpenter work for Beams | 4d | 2024-06-18 | 2024-06-22 | B07-V01~V08-1020, B06-V25~V32-1030 | 27d | 0d | RC Grade Beam Carpentry & Steel [8] | 44,745.76 | Civil |
| B07-V01~V08-1040 |  | Mech&Elec Establishment for Beams | 3d | 2024-06-23 | 2024-06-25 | B07-V01~V08-1030, B06-V25~V32-1040 | 27d | 0d |  |  | Mech |
| B07-V01~V08-1050 |  | Pouring Concrete For Beams | 1d | 2024-06-26 | 2024-06-26 | B07-V01~V08-1040, B06-V25~V32-1050 | 27d | 0d | RC Grade Beam Concrete [8] | 77,141.68 | Civil |
| B07-V01~V08-1060 |  | Bitmen Coating For Fondation&Beams | 3d | 2024-06-27 | 2024-06-30 | B07-V01~V08-1050, B06-V25~V32-1060 | 27d | 0d | Bitumen Coating Foundations & Grade Beams [8] | 22,372.32 | Civil |
| B07-V01~V08-1070 |  | Backfilling Inside Fondations | 4d | 2024-07-01 | 2024-07-04 | B07-V01~V08-1060, B06-V25~V32-1070 | 27d | 0d | Backfilling 1st Layer [8]; Backfilling 2ed Layer [8] | 11,186.4 | Civil |
| B07-V01~V08-1080 |  | Mech Works Under Grond Slap | 3d | 2024-07-06 | 2024-07-08 | B07-V01~V08-1070, B06-V25~V32-1080 | 27d | 0d | Mech Establishment Under Ground Slap [8] | 13,423.42 | Mech |
| B07-V01~V08-1090 |  | Steel Fixing& Carpenter work for Ground Slap | 3d | 2024-07-09 | 2024-07-11 | B07-V01~V08-1080, B06-V25~V32-1090 | 27d | 0d | Steel & Carpentry For Ground Slap [8] | 10,246.54 | Civil |
| B07-V01~V08-1100 |  | Anti Termite Treatment For Ground Slap | 1d | 2024-07-13 | 2024-07-13 | B07-V01~V08-1090, B06-V25~V32-1100 | 27d | 0d | Anti Termite Treatment nder Ground Slap [8] | 2,237.28 | Civil |
| B07-V01~V08-1110 |  | Pouring Concrete For Ground Slap | 1d | 2024-07-13 | 2024-07-13 | B07-V01~V08-1100 FF, B07-V01~V08-1090, B06-V25~V32-1110 | 27d | 5d | Concrete For Ground Slap [8] | 58,169.52 | Civil |

| ID | WBS | Activity | Duration | Start | Finish | Predecessors | Total float | Free float | Resources | Cost | Department-1 |
| --- | --- | --- | --- | --- | --- | --- | --- | --- | --- | --- | --- |
|  | 4 | **Precast Works** |  | 2024-08-14 | 2024-08-21 |  |  |  |  |  |  |
| B07-V01~V08-1120 |  | Precast Constrction | 7d | 2024-08-14 | 2024-08-21 | B07-V01~V08-1110, B06-V25~V32-1120 | 0d |  | Precast Walls GF [8]; Hollow Core Slap GF [8]; Precast Stairs & staircase House [8]; Thermal insollation Outside Walls [8]; Concrete structure joints [8]; Precast Walls FF [8]; Hollow Core Slap FF [8] | 1,513,762.87 | Civil |
|  | 1 | **Works Inside The Villa** |  | 2024-08-22 | 2024-12-05 |  |  |  |  |  |  |
| B07-V01~V08-1130 |  | Block Work For GF & Estabishment 1F | 6d | 2024-08-22 | 2024-08-28 | B07-V01~V08-1120, B06-V25~V32-1130 | 13d | 0d | Block GF [8] | 13,647.1 | Arc |
| B07-V01~V08-1140 |  | L.L & H.L Drainage | 6d | 2024-08-29 | 2024-09-04 | B07-V01~V08-1130, B06-V25~V32-1140 | 13d | 0d | HL Drainage [8]; L.L Drainage [8] | 89,489.28 | Mech |
| B07-V01~V08-1150 |  | Elec Establishment For GF & 1F | 3d | 2024-08-29 | 2024-09-01 | B07-V01~V08-1130, B06-V25~V32-1150 | 16d | 3d | Elec Establishment GF [8] | 26,840.73 | Elec |
| B07-V01~V08-1160 |  | Screed Work For 1F & Roof | 6d | 2024-09-05 | 2024-09-11 | B07-V01~V08-1140, B07-V01~V08-1150, B06-V25~V32-1160 | 13d | 0d | Screed 1st Floor [8]; Screed Roof Floor [8]; Leveling Screed 1st Floor [8]; Leveling Screed Roof Floor [8] | 268,467.85 | Civil |
| B07-V01~V08-1170 |  | Water Tank & Heater Foundations | 4d | 2024-09-12 | 2024-09-16 | B07-V01~V08-1160, B06-V25~V32-1170 | 17d | 0d |  |  | Civil |
| B07-V01~V08-1180 |  | Block Works For 1F | 3d | 2024-09-12 | 2024-09-15 | B07-V01~V08-1160, B06-V25~V32-1180 | 13d | 0d | Block FF [8] | 20,537.81 | Arc |
| B07-V01~V08-1190 |  | Water Line Network | 6d | 2024-09-16 | 2024-09-22 | B07-V01~V08-1180, B06-V25~V32-1190 | 13d | 0d | Water Line Network [8] | 40,261.13 | Mech |
| B07-V01~V08-1200 |  | Continue Elec Establishment For GF & 1F | 3d | 2024-09-16 | 2024-09-18 | B07-V01~V08-1180, B06-V25~V32-1200 | 16d | 3d | Elec Establishment FF [8] | 26,840.73 | Elec |
| B07-V01~V08-1210 |  | Thermal Insulation For Roof | 5d | 2024-09-17 | 2024-09-22 | B07-V01~V08-1170, B06-V25~V32-1210 | 17d | 0d | Roof Insulation [8] | 32,530.16 | Arc |
| B07-V01~V08-1220 |  | Roof Floor Tiles | 6d | 2024-09-23 | 2024-09-29 | B07-V01~V08-1210, B06-V25~V32-1220 | 17d | 1d | Roof Tiles [8]; Roof Tiles Joints [8]; Re_Test Roof Insulation [8] | 63,179.38 | Arc |
| B07-V01~V08-1230 |  | Plaster Work For Villa | 6d | 2024-09-23 | 2024-09-29 | B07-V01~V08-1190, B07-V01~V08-1200, B06-V25~V32-1230 | 13d | 0d | Establishing a plastering GF [8]; Establishing a plastering FF [8]; Plastering GF [8]; Plastering FF [8] | 49,263.81 |  |
| B07-V01~V08-1240 |  | Marbale Stairs & Handrails | 6d | 2024-09-30 | 2024-10-06 | B07-V01~V08-1230, B06-V25~V32-1240 | 35d | 1d | Marbale Stairs [8]; Stairs Handrails SS [8] | 91,494.69 |  |
| B07-V01~V08-1250 |  | Water Proofing Of Bathrooms | 4d | 2024-09-30 | 2024-10-03 | B07-V01~V08-1230, B06-V25~V32-1250 | 13d | 0d | Bathrooms InsulationGF & FF [8] | 134.24 |  |
| B07-V01~V08-1260 |  | Pulling The Elec Wires | 4d | 2024-09-30 | 2024-10-03 | B07-V01~V08-1230, B06-V25~V32-1260 | 23d | 3d | Elec Wires GF [8]; Elec Wires FF [8] | 80,542.4 |  |
| B07-V01~V08-1270 |  | Bathroom Tiles | 4d | 2024-10-05 | 2024-10-08 | B07-V01~V08-1250, B07-V01~V08-1220, B06-V25~V32-1270 | 13d | 0d | Ceramic Walls Kitchen [8]; Ceramic Walls Bathrooms GF [8]; Ceramic Walls Bathrooms FF [8]; Ceramic Tiles Bathrooms GF [8]; Ceramic Tiles Kitchen GF [8]; Ceramic Tiles Store GF [8] | 73,204.08 |  |
| B07-V01~V08-1280 |  | Structure For Gypsum | 6d | 2024-10-09 | 2024-10-15 | B07-V01~V08-1270, B06-V25~V32-1280 | 13d | 0d | Structure For Gypsum GF Rooms [8]; Structure For Gypsum FF Rooms [8]; Structure For Gypsum Bathrooms & Kitchen [8] | 33,550.81 |  |
| B07-V01~V08-1290 |  | Gypsum Board For Room | 4d | 2024-10-16 | 2024-10-20 | B07-V01~V08-1280, B07-V01~V08-1260, B06-V25~V32-1290 | 13d | 0d | Gypsum Board For GF Room [8]; Gypsum Board For FF Room [8] | 35,796.64 |  |
| B07-V01~V08-1300 |  | Installation Of Gypsum Board For Bathroom & Kitchen | 4d | 2024-10-21 | 2024-10-24 | B07-V01~V08-1290, B06-V25~V32-1300 | 13d | 0d | Gypsum Board For Bathrooms & Kitchen [8] | 11,052.24 |  |
| B07-V01~V08-1310 |  | Putty Filler For Gypsm Board Ceiling | 6d | 2024-10-26 | 2024-10-31 | B07-V01~V08-1300, B06-V25~V32-1310 | 13d | 0d | Putty Filler 1st Layer Roof all Rooms [8]; Putty Filler 1st Layer Roof all Bathrooms & Kitchen [8]; Putty Filler1st Layer walls [8] | 62,182.52 |  |
| B07-V01~V08-1320 |  | Fixing Shower Glass | 4d | 2024-11-02 | 2024-11-05 | B07-V01~V08-1310, B06-V25~V32-1320 | 21d | 0d | Shower Glass [8] | 22,372.88 |  |
| B07-V01~V08-1330 |  | Interior Wall Putty Filler | 6d | 2024-11-02 | 2024-11-07 | B07-V01~V08-1310, B07-V01~V08-1240, B06-V25~V32-1330 | 13d | 0d | Putty Filler 2ed Layer Roof & WAlls GF [8]; Putty Filler 2ed Layer Roof & WAlls FF [8] | 62,150.21 |  |
| B07-V01~V08-1340 |  | Installation Of Sanitry Fixture | 7d | 2024-11-06 | 2024-11-13 | B07-V01~V08-1320, B06-V25~V32-1340 | 21d | 0d | Mech Fixtures & Accessories [8] | 98,435.64 |  |
| B07-V01~V08-1350 |  | 1st Face Paint | 6d | 2024-11-09 | 2024-11-14 | B07-V01~V08-1330, B06-V25~V32-1350 | 13d | 0d |  |  |  |
| B07-V01~V08-1360 |  | Installation Of Aluminum Windows | 7d | 2024-11-09 | 2024-11-16 | B07-V01~V08-1330, B06-V25~V32-1360 | 23d | 0d | Aluminum Windows [8] | 84,795.68 |  |
| B07-V01~V08-1370 |  | Installation Of Elec Fixture & Accessories | 7d | 2024-11-09 | 2024-11-16 | B07-V01~V08-1310, B07-V01~V08-1330, B07-V01~V08-1260, B06-V25~V32-1370 | 37d | 0d | Elec Fixtures & Accessories Villa & Yard [8]; Elec Cables GF & FF & Earthing [8] | 53,692.2 |  |
| B07-V01~V08-1380 |  | Installation Of Water Tank-Heater & Pumps | 7d | 2024-11-14 | 2024-11-21 | B07-V01~V08-1340, B06-V25~V32-1380, B07-V01~V08-1220 | 21d | 0d | Water Tank & booster Pump [8]; Lower Pump [8]; Heater [8] | 129,756.23 |  |
| B07-V01~V08-1390 |  | Installation Of Parquet | 4d | 2024-11-16 | 2024-11-19 | B07-V01~V08-1350, B06-V25~V32-1390 | 13d | 0d | Installation Of Parquet [8] | 52,978.96 |  |
| B07-V01~V08-1400 |  | Installation Of Wooden Doors | 7d | 2024-11-20 | 2024-11-27 | B07-V01~V08-1390, B06-V25~V32-1400 | 13d | 0d | Wooden Doors Kitchen & Bathroom without Accessories [8]; Wooden Doors Accessories all Villa [8]; Exterior Wooden Doors [8] | 142,105.45 |  |
| B07-V01~V08-1410 |  | Final Face Paint | 7d | 2024-11-28 | 2024-12-05 | B07-V01~V08-1360, B07-V01~V08-1400, B06-V25~V32-1410 | 13d | 0d | Final Face Paint Villa [8] | 31,096.77 |  |

| ID | WBS | Activity | Duration | Start | Finish | Predecessors | Total float | Free float | Resources | Cost |
| --- | --- | --- | --- | --- | --- | --- | --- | --- | --- | --- |
|  | 3 | **Fence & Courtyard Works** |  | 2024-08-22 | 2024-11-25 |  |  |  |  |  |
| B07-V01~V08-1420 |  | Pouring Bedding Concrete For Fence Fondations | 2d | 2024-08-22 | 2024-08-24 | B07-V01~V08-1120, B06-V25~V32-1420 | 9d | 0d | Excavation Fence Foundations [8] | 4,519.28 |
| B07-V01~V08-1430 |  | RC Concrete For Fence Fondations | 6d | 2024-08-25 | 2024-08-31 | B07-V01~V08-1420, B06-V25~V32-1430 | 9d | 0d | Fence Fondations-Eastern side [8]; Fence Fondations-Westren side [8]; Fence Fondations-Back side [8] | 13,420.32 |
| B07-V01~V08-1440 |  | Steel Fixing & Carpentry For Fence Columns | 6d | 2024-09-01 | 2024-09-07 | B07-V01~V08-1430, B06-V25~V32-1440 | 9d | 0d |  |  |
| B07-V01~V08-1450 |  | Establishing Elec For Fence Columns | 4d | 2024-09-08 | 2024-09-11 | B07-V01~V08-1440, B06-V25~V32-1450 | 9d | 0d |  |  |
| B07-V01~V08-1460 |  | Pouring Concrete For Fence Columns | 1d | 2024-09-12 | 2024-09-12 | B07-V01~V08-1450, B06-V25~V32-1460 | 9d | 0d | Fence Columns-Eastern side [8]; Fence Columns-Westren side [8]; Fence Columns-Back side [8] | 9,665.04 |
| B07-V01~V08-1470 |  | Installation Precast Panel For Fence | 5d | 2024-09-14 | 2024-09-18 | B07-V01~V08-1460, B06-V25~V32-1470 | 9d | 0d | Hollow Core Walls [8] | 71,593.2 |
| B07-V01~V08-1480 |  | Bitumen Coating For Fence Fondations | 4d | 2024-09-19 | 2024-09-23 | B07-V01~V08-1470, B06-V25~V32-1480 | 9d | 0d |  |  |
| B07-V01~V08-1490 |  | Pouring Bedding Concrete For "Front" Fence Fondations | 1d | 2024-09-19 | 2024-09-19 | B07-V01~V08-1470, B06-V25~V32-1490 | 21d | 0d |  |  |
| B07-V01~V08-1500 |  | RC Concrete For "Front" Fence Fondations | 4d | 2024-09-21 | 2024-09-24 | B07-V01~V08-1490, B06-V25~V32-1500 | 21d | 0d | Front Fence Fondations [8] | 8,904.4 |
| B07-V01~V08-1510 |  | Outdoor Drainage & Water Line | 5d | 2024-09-24 | 2024-09-29 | B07-V01~V08-1480, B07-V01~V08-1140, B06-V25~V32-1510 | 9d | 0d | Outdoor Drainage [8]; Outdoor Water Line [8] | 13,423.68 |
| B07-V01~V08-1520 |  | Steel Fixing & Carpentry For "Front" Fence Columns | 4d | 2024-09-25 | 2024-09-29 | B07-V01~V08-1500, B06-V25~V32-1520 | 21d | 0d |  |  |
| B07-V01~V08-1530 |  | Establishing Elec For "Front" Fence Columns | 4d | 2024-09-30 | 2024-10-03 | B07-V01~V08-1520, B06-V25~V32-1530 | 21d | 0d |  |  |
| B07-V01~V08-1540 |  | Establishing Elec For Fence & Yard | 2d | 2024-09-30 | 2024-10-01 | B07-V01~V08-1510, B06-V25~V32-1540 | 9d | 0d | Elec Establishment Fence & Yard [8] | 17,898.32 |
| B07-V01~V08-1550 |  | Backfilling the Yard | 4d | 2024-10-02 | 2024-10-06 | B07-V01~V08-1540, B06-V25~V32-1550 | 9d | 0d | Backfilling the Yard [8] | 10,560 |
| B07-V01~V08-1560 |  | Pouring Concrete Wall Of "Front" Fence Columns | 2d | 2024-10-05 | 2024-10-06 | B07-V01~V08-1530, B06-V25~V32-1560 | 21d | 0d | Front Fence Walls [8] | 17,898.32 |
| B07-V01~V08-1570 |  | Pouring Concrete Crown Of "Front" Fence Columns | 3d | 2024-10-07 | 2024-10-09 | B07-V01~V08-1560, B06-V25~V32-1570 | 21d | 0d | Fence Columns - C Chanel [8] | 3,310.37 |
| B07-V01~V08-1580 |  | Bardoura Works For Yard | 5d | 2024-10-07 | 2024-10-12 | B07-V01~V08-1550, B06-V25~V32-1580 | 9d | 0d | Bardoura Works For Yard [8] | 14,408.16 |
| B07-V01~V08-1590 |  | Pouring Concrete Flower Basin Of "Front" Fence Columns | 4d | 2024-10-10 | 2024-10-14 | B07-V01~V08-1570, B06-V25~V32-1590 | 21d | 0d |  |  |
| B07-V01~V08-1600 |  | Antitermite Treatment For Yard | 1d | 2024-10-13 | 2024-10-13 | B07-V01~V08-1580, B06-V25~V32-1600 | 9d | 0d | Antitermite Treatment For Yard [8] |  |
| B07-V01~V08-1610 |  | Pouring Concrete For Yard | 1d | 2024-10-14 | 2024-10-14 | B07-V01~V08-1600, B06-V25~V32-1610 | 9d | 0d |  |  |
| B07-V01~V08-1620 |  | Block Work For Flower Basin | 5d | 2024-10-15 | 2024-10-20 | B07-V01~V08-1610, B06-V25~V32-1620 | 9d | 0d |  |  |
| B07-V01~V08-1630 |  | Plastering Work For Flower Basin | 4d | 2024-10-21 | 2024-10-24 | B07-V01~V08-1620, B06-V25~V32-1630 | 9d | 0d |  |  |
| B07-V01~V08-1640 |  | Interlock Works For The Yard | 6d | 2024-10-26 | 2024-10-31 | B07-V01~V08-1630, B06-V25~V32-1640 | 9d | 0d | Interlock Works For The Yard [8] | 36,776.32 |
| B07-V01~V08-1650 |  | External Grading Works For The Villa | 4d | 2024-11-02 | 2024-11-05 | B07-V01~V08-1640, B06-V25~V32-1650 | 11d | 0d | External Grading Works For The Villa [8] | 3,221.68 |
| B07-V01~V08-1660 |  | Installation The Exterior Door & Garage Door | 5d | 2024-11-02 | 2024-11-06 | B07-V01~V08-1640, B06-V25~V32-1660 | 14d | 2d | Installation The Exterior Door [8]; Installation The Exterior Garage Door [8] | 40,002.72 |
| B07-V01~V08-1670 |  | Fixing Floor Drain For The Yard | 2d | 2024-11-02 | 2024-11-03 | B07-V01~V08-1640, B06-V25~V32-1670 | 17d | 5d | Floor Drain & Clean Out [8] | 13,423.76 |
| B07-V01~V08-1680 |  | Granite Surronds Around The Villa | 4d | 2024-11-06 | 2024-11-10 | B07-V01~V08-1650, B06-V25~V32-1680 | 11d | 2d | Granite Surronds Around The Villa [8] | 25,818.32 |
| B07-V01~V08-1690 |  | Painting The Base Surface Of The Fence | 2d | 2024-11-06 | 2024-11-07 | B07-V01~V08-1750, B06-V25~V32-1690 | 9d | 0d |  |  |
| B07-V01~V08-1700 |  | Painting The Final Face Of The Fence | 4d | 2024-11-09 | 2024-11-12 | B07-V01~V08-1690, B06-V25~V32-1700 | 9d | 0d | Painting Final Face Of The Fence [8] | 37,586.48 |
| B07-V01~V08-1710 |  | Exterior Painting Of The Villa | 7d | 2024-11-13 | 2024-11-20 | B07-V01~V08-1680, B07-V01~V08-1700, B07-V01~V08-1660, B07-V01~V08-1670, B06-V25~V32-1710 | 9d | 0d | Exterior Painting Of The Villa [8]; Exterior Painting Staircase House [8] | 105,684.16 |
| B07-V01~V08-1720 |  | Installation Elec Fixtures & Accessories For The Yard | 4d | 2024-11-21 | 2024-11-25 | B07-V01~V08-1700, B07-V01~V08-1710, B06-V25~V32-1720 | 60d | 0d | Elec feeding panels GF & FF [8] | 22,372.88 |

| ID | WBS | Activity | Duration | Start | Finish | Predecessors | Total float | Free float | Resources | Cost | Department-1 |
| --- | --- | --- | --- | --- | --- | --- | --- | --- | --- | --- | --- |
|  | 5 | **External Sidewalk Works** |  | 2024-10-15 | 2024-11-30 |  |  |  |  |  |  |
| B07-V01~V08-1730 |  | Connection The Drain To The Piblic Network | 3d | 2024-10-15 | 2024-10-17 | B07-V01~V08-1510, B07-V01~V08-1590, B06-V25~V32-1730 | 21d | 4d | Connection Drain To The Piblic Network [8]; Connection Water To The Piblic Network [8] | 13,420.32 |  |
| B07-V01~V08-1740 |  | Pardora Works For The External Sidewalk | 2d | 2024-11-02 | 2024-11-03 | B07-V01~V08-1640, B07-V01~V08-1730, B06-V25~V32-1740 | 9d | 0d |  |  |  |
| B07-V01~V08-1750 |  | Interlock Works For The Exerrnal Sidewalk | 2d | 2024-11-04 | 2024-11-05 | B07-V01~V08-1740, B06-V25~V32-1750 | 9d | 0d |  |  |  |
| B07-V01~V08-1760 |  | Pulling The Villa's Main Elec Cable | 4d | 2024-11-26 | 2024-11-30 | B07-V01~V08-1750, B07-V01~V08-1720, B06-V25~V32-1760 | 60d | 0d | Elec Work Testing [8] | 22,819.84 |  |
|  | 6 | **Final Testing & Handover** |  | 2024-11-23 | 2024-12-18 |  |  |  |  |  |  |
| B07-V01~V08-1770 |  | Mech Work Testing & Handover | 5d | 2024-11-23 | 2024-11-27 | B07-V01~V08-1730, B07-V01~V08-1340, B07-V01~V08-1380, B06-V25~V32-1770 | 67d | 2d | Mech Work Testing & Handover [8] | 14,318.64 |  |
| B07-V01~V08-1780 |  | Arch Snaglist & Handover | 5d | 2024-11-28 | 2024-12-03 | B07-V01~V08-1750, B07-V01~V08-1710, B07-V01~V08-1400, B06-V25~V32-1780 | 62d | 2d | Arch Snaglist & Handover [8] | 77,320.64 |  |
| B07-V01~V08-1790 |  | ElecWork Testing & Handover | 5d | 2024-12-01 | 2024-12-05 | B07-V01~V08-1760, B07-V01~V08-1370, B06-V25~V32-1790 | 60d | 0d | Elec Work Handover [8] | 23,804.72 |  |
| B07-V01~V08-1800 |  | Final Handover Of The Villa To The Consltant | 5d | 2024-12-07 | 2024-12-11 | B07-V01~V08-1780, B07-V01~V08-1790, B07-V01~V08-1770, B07-V01~V08-1410, B06-V25~V32-1800 | 60d | 0d |  |  |  |
| B07-V01~V08-1810 |  | Customer Delivery | 6d | 2024-12-12 | 2024-12-18 | B07-V01~V08-1800, B06-V25~V32-1810 | 60d | 1d |  |  |  |
|  | 26 | **B07-V09~V16** |  | 2024-06-10 | 2024-12-26 |  |  |  |  |  |  |
|  | 2 | **Under Grond Slap Works** |  | 2024-06-10 | 2024-07-20 |  |  |  |  |  |  |
| B07-V09~V16-1000 |  | Excavation&Compaction of Fondation | 6d | 2024-06-10 | 2024-06-16 | B07-V01~V08-1000 | 28d | 0d | Clearing & Groubbing [8]; Excavation & Leveling [8]; Stone Layer [8]; A3 Layer [8]; A1-a 1st Layer [8]; A1-a 2ed Layer [8] | 163,545.76 | Civil |
| B07-V09~V16-1010 |  | Pouring Concrete For Bedding | 2d | 2024-06-17 | 2024-06-18 | B07-V09~V16-1000, B07-V01~V08-1010 | 28d | 0d | PC Carpentry [8]; PC Concrete [8]; RC 18 MPA [9 M3] | 37,899.68 | Civil |
| B07-V09~V16-1020 |  | Reinforcement Concrete For Foundation | 5d | 2024-06-19 | 2024-06-24 | B07-V09~V16-1010, B07-V01~V08-1020 | 28d | 0d | RC Foundation Carpentry [8]; RC Foundation Steel [8]; RC Foundation Concrete [8] | 201,355.92 | Civil |
| B07-V09~V16-1030 |  | Steel Fixing& Carpenter work for Beams | 4d | 2024-06-25 | 2024-06-29 | B07-V09~V16-1020, B07-V01~V08-1030 | 28d | 0d | RC Grade Beam Carpentry & Steel [8] | 44,745.76 | Civil |
| B07-V09~V16-1040 |  | Mech&Elec Establishment for Beams | 3d | 2024-06-30 | 2024-07-02 | B07-V09~V16-1030, B07-V01~V08-1040 | 28d | 0d |  |  | Mech |
| B07-V09~V16-1050 |  | Pouring Concrete For Beams | 1d | 2024-07-03 | 2024-07-03 | B07-V09~V16-1040, B07-V01~V08-1050 | 28d | 0d | RC Grade Beam Concrete [8] | 77,141.68 | Civil |
| B07-V09~V16-1060 |  | Bitmen Coating For Fondation&Beams | 3d | 2024-07-04 | 2024-07-07 | B07-V09~V16-1050, B07-V01~V08-1060 | 28d | 0d | Bitumen Coating Foundations & Grade Beams [8] | 22,372.32 | Civil |
| B07-V09~V16-1070 |  | Backfilling Inside Fondations | 4d | 2024-07-08 | 2024-07-11 | B07-V09~V16-1060, B07-V01~V08-1070 | 28d | 0d | Backfilling 1st Layer [8]; Backfilling 2ed Layer [8] | 11,186.4 | Civil |
| B07-V09~V16-1080 |  | Mech Works Under Grond Slap | 3d | 2024-07-13 | 2024-07-15 | B07-V09~V16-1070, B07-V01~V08-1080 | 28d | 0d | Mech Establishment Under Ground Slap [8] | 13,423.42 | Mech |
| B07-V09~V16-1090 |  | Steel Fixing& Carpenter work for Ground Slap | 3d | 2024-07-16 | 2024-07-18 | B07-V09~V16-1080, B07-V01~V08-1090 | 28d | 0d | Steel & Carpentry For Ground Slap [8] | 10,246.54 | Civil |
| B07-V09~V16-1100 |  | Anti Termite Treatment For Ground Slap | 1d | 2024-07-20 | 2024-07-20 | B07-V09~V16-1090, B07-V01~V08-1100 | 28d | 0d | Anti Termite Treatment nder Ground Slap [8] | 2,237.28 | Civil |
| B07-V09~V16-1110 |  | Pouring Concrete For Ground Slap | 1d | 2024-07-20 | 2024-07-20 | B07-V09~V16-1100 FF, B07-V09~V16-1090, B07-V01~V08-1110 | 28d | 5d | Concrete For Ground Slap [8] | 58,169.52 | Civil |

| ID | WBS | Activity | Duration | Start | Finish | Predecessors | Total float | Free float | Resources | Cost | Department-1 |
| --- | --- | --- | --- | --- | --- | --- | --- | --- | --- | --- | --- |
|  | 4 | **Precast Works** |  | 2024-08-22 | 2024-08-29 |  |  |  |  |  |  |
| B07-V09~V16-1120 |  | Precast Constrction | 7d | 2024-08-22 | 2024-08-29 | B07-V09~V16-1110, B07-V01~V08-1120 | 0d |  | Precast Walls GF [8]; Hollow Core Slap GF [8]; Precast Stairs & staircase House [8]; Thermal insollation Outside Walls [8]; Concrete structure joints [8]; Precast Walls FF [8]; Hollow Core Slap FF [8] | 1,513,762.87 | Civil |
|  | 1 | **Works Inside The Villa** |  | 2024-08-31 | 2024-12-14 |  |  |  |  |  |  |
| B07-V09~V16-1130 |  | Block Work For GF & Estabishment 1F | 6d | 2024-08-31 | 2024-09-05 | B07-V09~V16-1120, B07-V01~V08-1130 | 13d | 0d | Block GF [8] | 13,647.1 | Arc |
| B07-V09~V16-1140 |  | L.L & H.L Drainage | 6d | 2024-09-07 | 2024-09-12 | B07-V09~V16-1130, B07-V01~V08-1140 | 13d | 0d | HL Drainage [8]; L.L Drainage [8] | 89,489.28 | Mech |
| B07-V09~V16-1150 |  | Elec Establishment For GF & 1F | 3d | 2024-09-07 | 2024-09-09 | B07-V09~V16-1130, B07-V01~V08-1150 | 16d | 3d | Elec Establishment GF [8] | 26,840.73 | Elec |
| B07-V09~V16-1160 |  | Screed Work For 1F & Roof | 6d | 2024-09-14 | 2024-09-19 | B07-V09~V16-1140, B07-V09~V16-1150, B07-V01~V08-1160 | 13d | 0d | Screed 1st Floor [8]; Screed Roof Floor [8]; Leveling Screed 1st Floor [8]; Leveling Screed Roof Floor [8] | 268,467.85 | Civil |
| B07-V09~V16-1170 |  | Water Tank & Heater Foundations | 4d | 2024-09-21 | 2024-09-24 | B07-V09~V16-1160, B07-V01~V08-1170 | 17d | 0d |  |  | Civil |
| B07-V09~V16-1180 |  | Block Works For 1F | 3d | 2024-09-21 | 2024-09-23 | B07-V09~V16-1160, B07-V01~V08-1180 | 13d | 0d | Block FF [8] | 20,537.81 | Arc |
| B07-V09~V16-1190 |  | Water Line Network | 6d | 2024-09-24 | 2024-09-30 | B07-V09~V16-1180, B07-V01~V08-1190 | 13d | 0d | Water Line Network [8] | 40,261.13 | Mech |
| B07-V09~V16-1200 |  | Continue Elec Establishment For GF & 1F | 3d | 2024-09-24 | 2024-09-26 | B07-V09~V16-1180, B07-V01~V08-1200 | 16d | 3d | Elec Establishment FF [8] | 26,840.73 | Elec |
| B07-V09~V16-1210 |  | Thermal Insulation For Roof | 5d | 2024-09-25 | 2024-09-30 | B07-V09~V16-1170, B07-V01~V08-1210 | 17d | 0d | Roof Insulation [8] | 32,530.16 | Arc |
| B07-V09~V16-1220 |  | Roof Floor Tiles | 6d | 2024-10-01 | 2024-10-07 | B07-V09~V16-1210, B07-V01~V08-1220 | 17d | 1d | Roof Tiles [8]; Roof Tiles Joints [8]; Re_Test Roof Insulation [8] | 63,179.38 | Arc |
| B07-V09~V16-1230 |  | Plaster Work For Villa | 6d | 2024-10-01 | 2024-10-07 | B07-V09~V16-1190, B07-V09~V16-1200, B07-V01~V08-1230 | 13d | 0d | Establishing a plastering GF [8]; Establishing a plastering FF [8]; Plastering GF [8]; Plastering FF [8] | 49,263.81 |  |
| B07-V09~V16-1240 |  | Marbale Stairs & Handrails | 6d | 2024-10-08 | 2024-10-14 | B07-V09~V16-1230, B07-V01~V08-1240 | 35d | 1d | Marbale Stairs [8]; Stairs Handrails SS [8] | 91,494.69 |  |
| B07-V09~V16-1250 |  | Water Proofing Of Bathrooms | 4d | 2024-10-08 | 2024-10-12 | B07-V09~V16-1230, B07-V01~V08-1250 | 13d | 0d | Bathrooms InsulationGF & FF [8] | 134.24 |  |
| B07-V09~V16-1260 |  | Pulling The Elec Wires | 4d | 2024-10-08 | 2024-10-12 | B07-V09~V16-1230, B07-V01~V08-1260 | 23d | 3d | Elec Wires GF [8]; Elec Wires FF [8] | 80,542.4 |  |
| B07-V09~V16-1270 |  | Bathroom Tiles | 4d | 2024-10-13 | 2024-10-16 | B07-V09~V16-1250, B07-V09~V16-1220, B07-V01~V08-1270 | 13d | 0d | Ceramic Walls Kitchen [8]; Ceramic Walls Bathrooms GF [8]; Ceramic Walls Bathrooms FF [8]; Ceramic Tiles Bathrooms GF [8]; Ceramic Tiles Kitchen GF [8]; Ceramic Tiles Store GF [8] | 73,204.08 |  |
| B07-V09~V16-1280 |  | Structure For Gypsum | 6d | 2024-10-17 | 2024-10-23 | B07-V09~V16-1270, B07-V01~V08-1280 | 13d | 0d | Structure For Gypsum GF Rooms [8]; Structure For Gypsum FF Rooms [8]; Structure For Gypsum Bathrooms & Kitchen [8] | 33,550.81 |  |
| B07-V09~V16-1290 |  | Gypsum Board For Room | 4d | 2024-10-24 | 2024-10-28 | B07-V09~V16-1280, B07-V09~V16-1260, B07-V01~V08-1290 | 13d | 0d | Gypsum Board For GF Room [8]; Gypsum Board For FF Room [8] | 35,796.64 |  |
| B07-V09~V16-1300 |  | Installation Of Gypsum Board For Bathroom & Kitchen | 4d | 2024-10-29 | 2024-11-02 | B07-V09~V16-1290, B07-V01~V08-1300 | 13d | 0d | Gypsum Board For Bathrooms & Kitchen [8] | 11,052.24 |  |
| B07-V09~V16-1310 |  | Putty Filler For Gypsm Board Ceiling | 6d | 2024-11-03 | 2024-11-09 | B07-V09~V16-1300, B07-V01~V08-1310 | 13d | 0d | Putty Filler 1st Layer Roof all Rooms [8]; Putty Filler 1st Layer Roof all Bathrooms & Kitchen [8]; Putty Filler1st Layer walls [8] | 62,182.52 |  |
| B07-V09~V16-1320 |  | Fixing Shower Glass | 4d | 2024-11-10 | 2024-11-13 | B07-V09~V16-1310, B07-V01~V08-1320 | 21d | 0d | Shower Glass [8] | 22,372.88 |  |
| B07-V09~V16-1330 |  | Interior Wall Putty Filler | 6d | 2024-11-10 | 2024-11-16 | B07-V09~V16-1310, B07-V09~V16-1240, B07-V01~V08-1330 | 13d | 0d | Putty Filler 2ed Layer Roof & WAlls GF [8]; Putty Filler 2ed Layer Roof & WAlls FF [8] | 62,150.21 |  |
| B07-V09~V16-1340 |  | Installation Of Sanitry Fixture | 7d | 2024-11-14 | 2024-11-21 | B07-V09~V16-1320, B07-V01~V08-1340 | 21d | 0d | Mech Fixtures & Accessories [8] | 98,435.64 |  |
| B07-V09~V16-1350 |  | 1st Face Paint | 6d | 2024-11-17 | 2024-11-23 | B07-V09~V16-1330, B07-V01~V08-1350 | 13d | 0d |  |  |  |
| B07-V09~V16-1360 |  | Installation Of Aluminum Windows | 7d | 2024-11-17 | 2024-11-24 | B07-V09~V16-1330, B07-V01~V08-1360 | 23d | 0d | Aluminum Windows [8] | 84,795.68 |  |
| B07-V09~V16-1370 |  | Installation Of Elec Fixture & Accessories | 7d | 2024-11-17 | 2024-11-24 | B07-V09~V16-1310, B07-V09~V16-1330, B07-V09~V16-1260, B07-V01~V08-1370 | 37d | 0d | Elec Fixtures & Accessories Villa & Yard [8]; Elec Cables GF & FF & Earthing [8] | 53,692.2 |  |
| B07-V09~V16-1380 |  | Installation Of Water Tank-Heater & Pumps | 7d | 2024-11-23 | 2024-11-30 | B07-V09~V16-1340, B07-V01~V08-1380, B07-V09~V16-1220 | 21d | 0d | Water Tank & booster Pump [8]; Lower Pump [8]; Heater [8] | 129,756.23 |  |
| B07-V09~V16-1390 |  | Installation Of Parquet | 4d | 2024-11-24 | 2024-11-27 | B07-V09~V16-1350, B07-V01~V08-1390 | 13d | 0d | Installation Of Parquet [8] | 52,978.96 |  |
| B07-V09~V16-1400 |  | Installation Of Wooden Doors | 7d | 2024-11-28 | 2024-12-05 | B07-V09~V16-1390, B07-V01~V08-1400 | 13d | 0d | Wooden Doors Kitchen & Bathroom without Accessories [8]; Wooden Doors Accessories all Villa [8]; Exterior Wooden Doors [8] | 142,105.45 |  |
| B07-V09~V16-1410 |  | Final Face Paint | 7d | 2024-12-07 | 2024-12-14 | B07-V09~V16-1360, B07-V09~V16-1400, B07-V01~V08-1410 | 13d | 0d | Final Face Paint Villa [8] | 31,096.77 |  |

| ID | WBS | Activity | Duration | Start | Finish | Predecessors | Total float | Free float | Resources | Cost |
| --- | --- | --- | --- | --- | --- | --- | --- | --- | --- | --- |
|  | 3 | **Fence & Courtyard Works** |  | 2024-08-31 | 2024-12-03 |  |  |  |  |  |
| B07-V09~V16-1420 |  | Pouring Bedding Concrete For Fence Fondations | 2d | 2024-08-31 | 2024-09-01 | B07-V09~V16-1120, B07-V01~V08-1420 | 9d | 0d | Excavation Fence Foundations [8] | 4,519.28 |
| B07-V09~V16-1430 |  | RC Concrete For Fence Fondations | 6d | 2024-09-02 | 2024-09-08 | B07-V09~V16-1420, B07-V01~V08-1430 | 9d | 0d | Fence Fondations-Eastern side [8]; Fence Fondations-Westren side [8]; Fence Fondations-Back side [8] | 13,420.32 |
| B07-V09~V16-1440 |  | Steel Fixing & Carpentry For Fence Columns | 6d | 2024-09-09 | 2024-09-15 | B07-V09~V16-1430, B07-V01~V08-1440 | 9d | 0d |  |  |
| B07-V09~V16-1450 |  | Establishing Elec For Fence Columns | 4d | 2024-09-16 | 2024-09-19 | B07-V09~V16-1440, B07-V01~V08-1450 | 9d | 0d |  |  |
| B07-V09~V16-1460 |  | Pouring Concrete For Fence Columns | 1d | 2024-09-21 | 2024-09-21 | B07-V09~V16-1450, B07-V01~V08-1460 | 9d | 0d | Fence Columns-Eastern side [8]; Fence Columns-Westren side [8]; Fence Columns-Back side [8] | 9,665.04 |
| B07-V09~V16-1470 |  | Installation Precast Panel For Fence | 5d | 2024-09-22 | 2024-09-26 | B07-V09~V16-1460, B07-V01~V08-1470 | 9d | 0d | Hollow Core Walls [8] | 71,593.2 |
| B07-V09~V16-1480 |  | Bitumen Coating For Fence Fondations | 4d | 2024-09-28 | 2024-10-01 | B07-V09~V16-1470, B07-V01~V08-1480 | 9d | 0d |  |  |
| B07-V09~V16-1490 |  | Pouring Bedding Concrete For "Front" Fence Fondations | 1d | 2024-09-28 | 2024-09-28 | B07-V09~V16-1470, B07-V01~V08-1490 | 21d | 0d |  |  |
| B07-V09~V16-1500 |  | RC Concrete For "Front" Fence Fondations | 4d | 2024-09-29 | 2024-10-02 | B07-V09~V16-1490, B07-V01~V08-1500 | 21d | 0d | Front Fence Fondations [8] | 8,904.4 |
| B07-V09~V16-1510 |  | Outdoor Drainage & Water Line | 5d | 2024-10-02 | 2024-10-07 | B07-V09~V16-1480, B07-V09~V16-1140, B07-V01~V08-1510 | 9d | 0d | Outdoor Drainage [8]; Outdoor Water Line [8] | 13,423.68 |
| B07-V09~V16-1520 |  | Steel Fixing & Carpentry For "Front" Fence Columns | 4d | 2024-10-03 | 2024-10-07 | B07-V09~V16-1500, B07-V01~V08-1520 | 21d | 0d |  |  |
| B07-V09~V16-1530 |  | Establishing Elec For "Front" Fence Columns | 4d | 2024-10-08 | 2024-10-12 | B07-V09~V16-1520, B07-V01~V08-1530 | 21d | 0d |  |  |
| B07-V09~V16-1540 |  | Establishing Elec For Fence & Yard | 2d | 2024-10-08 | 2024-10-09 | B07-V09~V16-1510, B07-V01~V08-1540 | 9d | 0d | Elec Establishment Fence & Yard [8] | 17,898.32 |
| B07-V09~V16-1550 |  | Backfilling the Yard | 4d | 2024-10-10 | 2024-10-14 | B07-V09~V16-1540, B07-V01~V08-1550 | 9d | 0d | Backfilling the Yard [8] | 10,560 |
| B07-V09~V16-1560 |  | Pouring Concrete Wall Of "Front" Fence Columns | 2d | 2024-10-13 | 2024-10-14 | B07-V09~V16-1530, B07-V01~V08-1560 | 21d | 0d | Front Fence Walls [8] | 17,898.32 |
| B07-V09~V16-1570 |  | Pouring Concrete Crown Of "Front" Fence Columns | 3d | 2024-10-15 | 2024-10-17 | B07-V09~V16-1560, B07-V01~V08-1570 | 21d | 0d | Fence Columns - C Chanel [8] | 3,310.37 |
| B07-V09~V16-1580 |  | Bardoura Works For Yard | 5d | 2024-10-15 | 2024-10-20 | B07-V09~V16-1550, B07-V01~V08-1580 | 9d | 0d | Bardoura Works For Yard [8] | 14,408.16 |
| B07-V09~V16-1590 |  | Pouring Concrete Flower Basin Of "Front" Fence Columns | 4d | 2024-10-19 | 2024-10-22 | B07-V09~V16-1570, B07-V01~V08-1590 | 21d | 0d |  |  |
| B07-V09~V16-1600 |  | Antitermite Treatment For Yard | 1d | 2024-10-21 | 2024-10-21 | B07-V09~V16-1580, B07-V01~V08-1600 | 9d | 0d | Antitermite Treatment For Yard [8] |  |
| B07-V09~V16-1610 |  | Pouring Concrete For Yard | 1d | 2024-10-22 | 2024-10-22 | B07-V09~V16-1600, B07-V01~V08-1610 | 9d | 0d |  |  |
| B07-V09~V16-1620 |  | Block Work For Flower Basin | 5d | 2024-10-23 | 2024-10-28 | B07-V09~V16-1610, B07-V01~V08-1620 | 9d | 0d |  |  |
| B07-V09~V16-1630 |  | Plastering Work For Flower Basin | 4d | 2024-10-29 | 2024-11-02 | B07-V09~V16-1620, B07-V01~V08-1630 | 9d | 0d |  |  |
| B07-V09~V16-1640 |  | Interlock Works For The Yard | 6d | 2024-11-03 | 2024-11-09 | B07-V09~V16-1630, B07-V01~V08-1640 | 9d | 0d | Interlock Works For The Yard [8] | 36,776.32 |
| B07-V09~V16-1650 |  | External Grading Works For The Villa | 4d | 2024-11-10 | 2024-11-13 | B07-V09~V16-1640, B07-V01~V08-1650 | 11d | 0d | External Grading Works For The Villa [8] | 3,221.68 |
| B07-V09~V16-1660 |  | Installation The Exterior Door & Garage Door | 5d | 2024-11-10 | 2024-11-14 | B07-V09~V16-1640, B07-V01~V08-1660 | 14d | 2d | Installation The Exterior Door [8]; Installation The Exterior Garage Door [8] | 40,002.72 |
| B07-V09~V16-1670 |  | Fixing Floor Drain For The Yard | 2d | 2024-11-10 | 2024-11-11 | B07-V09~V16-1640, B07-V01~V08-1670 | 17d | 5d | Floor Drain & Clean Out [8] | 13,423.76 |
| B07-V09~V16-1680 |  | Granite Surronds Around The Villa | 4d | 2024-11-14 | 2024-11-18 | B07-V09~V16-1650, B07-V01~V08-1680 | 11d | 2d | Granite Surronds Around The Villa [8] | 25,818.32 |
| B07-V09~V16-1690 |  | Painting The Base Surface Of The Fence | 2d | 2024-11-14 | 2024-11-16 | B07-V09~V16-1750, B07-V01~V08-1690 | 9d | 0d |  |  |
| B07-V09~V16-1700 |  | Painting The Final Face Of The Fence | 4d | 2024-11-17 | 2024-11-20 | B07-V09~V16-1690, B07-V01~V08-1700 | 9d | 0d | Painting Final Face Of The Fence [8] | 37,586.48 |
| B07-V09~V16-1710 |  | Exterior Painting Of The Villa | 7d | 2024-11-21 | 2024-11-28 | B07-V09~V16-1680, B07-V09~V16-1700, B07-V09~V16-1660, B07-V09~V16-1670, B07-V01~V08-1710 | 9d | 0d | Exterior Painting Of The Villa [8]; Exterior Painting Staircase House [8] | 105,684.16 |
| B07-V09~V16-1720 |  | Installation Elec Fixtures & Accessories For The Yard | 4d | 2024-11-30 | 2024-12-03 | B07-V09~V16-1700, B07-V09~V16-1710, B07-V01~V08-1720 | 59d | 0d | Elec feeding panels GF & FF [8] | 22,372.88 |

| ID | WBS | Activity | Duration | Start | Finish | Predecessors | Total float | Free float | Resources | Cost | Department-1 |
| --- | --- | --- | --- | --- | --- | --- | --- | --- | --- | --- | --- |
|  | 5 | **External Sidewalk Works** |  | 2024-10-23 | 2024-12-08 |  |  |  |  |  |  |
| B07-V09~V16-1730 |  | Connection The Drain To The Piblic Network | 3d | 2024-10-23 | 2024-10-26 | B07-V09~V16-1510, B07-V09~V16-1590, B07-V01~V08-1730 | 21d | 4d | Connection Drain To The Piblic Network [8]; Connection Water To The Piblic Network [8] | 13,420.32 |  |
| B07-V09~V16-1740 |  | Pardora Works For The External Sidewalk | 2d | 2024-11-10 | 2024-11-11 | B07-V09~V16-1640, B07-V09~V16-1730, B07-V01~V08-1740 | 9d | 0d |  |  |  |
| B07-V09~V16-1750 |  | Interlock Works For The Exerrnal Sidewalk | 2d | 2024-11-12 | 2024-11-13 | B07-V09~V16-1740, B07-V01~V08-1750 | 9d | 0d |  |  |  |
| B07-V09~V16-1760 |  | Pulling The Villa's Main Elec Cable | 4d | 2024-12-04 | 2024-12-08 | B07-V09~V16-1750, B07-V09~V16-1720, B07-V01~V08-1760 | 59d | 0d | Elec Work Testing [8] | 22,819.84 |  |
|  | 6 | **Final Testing & Handover** |  | 2024-12-01 | 2024-12-26 |  |  |  |  |  |  |
| B07-V09~V16-1770 |  | Mech Work Testing & Handover | 5d | 2024-12-01 | 2024-12-05 | B07-V09~V16-1730, B07-V09~V16-1340, B07-V09~V16-1380, B07-V01~V08-1770 | 66d | 2d | Mech Work Testing & Handover [8] | 14,318.64 |  |
| B07-V09~V16-1780 |  | Arch Snaglist & Handover | 5d | 2024-12-07 | 2024-12-11 | B07-V09~V16-1750, B07-V09~V16-1710, B07-V09~V16-1400, B07-V01~V08-1780 | 61d | 2d | Arch Snaglist & Handover [8] | 77,320.64 |  |
| B07-V09~V16-1790 |  | ElecWork Testing & Handover | 5d | 2024-12-09 | 2024-12-14 | B07-V09~V16-1760, B07-V09~V16-1370, B07-V01~V08-1790 | 59d | 0d | Elec Work Handover [8] | 23,804.72 |  |
| B07-V09~V16-1800 |  | Final Handover Of The Villa To The Consltant | 5d | 2024-12-15 | 2024-12-19 | B07-V09~V16-1780, B07-V09~V16-1790, B07-V09~V16-1770, B07-V09~V16-1410, B07-V01~V08-1800 | 59d | 0d |  |  |  |
| B07-V09~V16-1810 |  | Customer Delivery | 6d | 2024-12-21 | 2024-12-26 | B07-V09~V16-1800, B07-V01~V08-1810 | 59d | 1d |  |  |  |
|  | 27 | **B07-V17~V24** |  | 2024-06-17 | 2025-01-04 |  |  |  |  |  |  |
|  | 2 | **Under Grond Slap Works** |  | 2024-06-17 | 2024-07-27 |  |  |  |  |  |  |
| B07-V17~V24-1000 |  | Excavation&Compaction of Fondation | 6d | 2024-06-17 | 2024-06-23 | B07-V09~V16-1000 | 29d | 0d | Clearing & Groubbing [8]; Excavation & Leveling [8]; Stone Layer [8]; A3 Layer [8]; A1-a 1st Layer [8]; A1-a 2ed Layer [8] | 163,545.76 | Civil |
| B07-V17~V24-1010 |  | Pouring Concrete For Bedding | 2d | 2024-06-24 | 2024-06-25 | B07-V17~V24-1000, B07-V09~V16-1010 | 29d | 0d | PC Carpentry [8]; PC Concrete [8]; RC 18 MPA [9 M3] | 37,899.68 | Civil |
| B07-V17~V24-1020 |  | Reinforcement Concrete For Foundation | 5d | 2024-06-26 | 2024-07-01 | B07-V17~V24-1010, B07-V09~V16-1020 | 29d | 0d | RC Foundation Carpentry [8]; RC Foundation Steel [8]; RC Foundation Concrete [8] | 201,355.92 | Civil |
| B07-V17~V24-1030 |  | Steel Fixing& Carpenter work for Beams | 4d | 2024-07-02 | 2024-07-06 | B07-V17~V24-1020, B07-V09~V16-1030 | 29d | 0d | RC Grade Beam Carpentry & Steel [8] | 44,745.76 | Civil |
| B07-V17~V24-1040 |  | Mech&Elec Establishment for Beams | 3d | 2024-07-07 | 2024-07-09 | B07-V17~V24-1030, B07-V09~V16-1040 | 29d | 0d |  |  | Mech |
| B07-V17~V24-1050 |  | Pouring Concrete For Beams | 1d | 2024-07-10 | 2024-07-10 | B07-V17~V24-1040, B07-V09~V16-1050 | 29d | 0d | RC Grade Beam Concrete [8] | 77,141.68 | Civil |
| B07-V17~V24-1060 |  | Bitmen Coating For Fondation&Beams | 3d | 2024-07-11 | 2024-07-14 | B07-V17~V24-1050, B07-V09~V16-1060 | 29d | 0d | Bitumen Coating Foundations & Grade Beams [8] | 22,372.32 | Civil |
| B07-V17~V24-1070 |  | Backfilling Inside Fondations | 4d | 2024-07-15 | 2024-07-18 | B07-V17~V24-1060, B07-V09~V16-1070 | 29d | 0d | Backfilling 1st Layer [8]; Backfilling 2ed Layer [8] | 11,186.4 | Civil |
| B07-V17~V24-1080 |  | Mech Works Under Grond Slap | 3d | 2024-07-20 | 2024-07-22 | B07-V17~V24-1070, B07-V09~V16-1080 | 29d | 0d | Mech Establishment Under Ground Slap [8] | 13,423.42 | Mech |
| B07-V17~V24-1090 |  | Steel Fixing& Carpenter work for Ground Slap | 3d | 2024-07-23 | 2024-07-25 | B07-V17~V24-1080, B07-V09~V16-1090 | 29d | 0d | Steel & Carpentry For Ground Slap [8] | 10,246.54 | Civil |
| B07-V17~V24-1100 |  | Anti Termite Treatment For Ground Slap | 1d | 2024-07-27 | 2024-07-27 | B07-V17~V24-1090, B07-V09~V16-1100 | 29d | 0d | Anti Termite Treatment nder Ground Slap [8] | 2,237.28 | Civil |
| B07-V17~V24-1110 |  | Pouring Concrete For Ground Slap | 1d | 2024-07-27 | 2024-07-27 | B07-V17~V24-1100 FF, B07-V17~V24-1090, B07-V09~V16-1110 | 29d | 5d | Concrete For Ground Slap [8] | 58,169.52 | Civil |

| ID | WBS | Activity | Duration | Start | Finish | Predecessors | Total float | Free float | Resources | Cost | Department-1 |
| --- | --- | --- | --- | --- | --- | --- | --- | --- | --- | --- | --- |
|  | 4 | **Precast Works** |  | 2024-08-31 | 2024-09-07 |  |  |  |  |  |  |
| B07-V17~V24-1120 |  | Precast Constrction | 7d | 2024-08-31 | 2024-09-07 | B07-V17~V24-1110, B07-V09~V16-1120 | 0d |  | Precast Walls GF [8]; Hollow Core Slap GF [8]; Precast Stairs & staircase House [8]; Thermal insollation Outside Walls [8]; Concrete structure joints [8]; Precast Walls FF [8]; Hollow Core Slap FF [8] | 1,513,762.87 | Civil |
|  | 1 | **Works Inside The Villa** |  | 2024-09-08 | 2024-12-22 |  |  |  |  |  |  |
| B07-V17~V24-1130 |  | Block Work For GF & Estabishment 1F | 6d | 2024-09-08 | 2024-09-14 | B07-V17~V24-1120, B07-V09~V16-1130 | 13d | 0d | Block GF [8] | 13,647.1 | Arc |
| B07-V17~V24-1140 |  | L.L & H.L Drainage | 6d | 2024-09-15 | 2024-09-21 | B07-V17~V24-1130, B07-V09~V16-1140 | 13d | 0d | HL Drainage [8]; L.L Drainage [8] | 89,489.28 | Mech |
| B07-V17~V24-1150 |  | Elec Establishment For GF & 1F | 3d | 2024-09-15 | 2024-09-17 | B07-V17~V24-1130, B07-V09~V16-1150 | 16d | 3d | Elec Establishment GF [8] | 26,840.73 | Elec |
| B07-V17~V24-1160 |  | Screed Work For 1F & Roof | 6d | 2024-09-22 | 2024-09-28 | B07-V17~V24-1140, B07-V17~V24-1150, B07-V09~V16-1160 | 13d | 0d | Screed 1st Floor [8]; Screed Roof Floor [8]; Leveling Screed 1st Floor [8]; Leveling Screed Roof Floor [8] | 268,467.85 | Civil |
| B07-V17~V24-1170 |  | Water Tank & Heater Foundations | 4d | 2024-09-29 | 2024-10-02 | B07-V17~V24-1160, B07-V09~V16-1170 | 17d | 0d |  |  | Civil |
| B07-V17~V24-1180 |  | Block Works For 1F | 3d | 2024-09-29 | 2024-10-01 | B07-V17~V24-1160, B07-V09~V16-1180 | 13d | 0d | Block FF [8] | 20,537.81 | Arc |
| B07-V17~V24-1190 |  | Water Line Network | 6d | 2024-10-02 | 2024-10-08 | B07-V17~V24-1180, B07-V09~V16-1190 | 13d | 0d | Water Line Network [8] | 40,261.13 | Mech |
| B07-V17~V24-1200 |  | Continue Elec Establishment For GF & 1F | 3d | 2024-10-02 | 2024-10-05 | B07-V17~V24-1180, B07-V09~V16-1200 | 16d | 3d | Elec Establishment FF [8] | 26,840.73 | Elec |
| B07-V17~V24-1210 |  | Thermal Insulation For Roof | 5d | 2024-10-03 | 2024-10-08 | B07-V17~V24-1170, B07-V09~V16-1210 | 17d | 0d | Roof Insulation [8] | 32,530.16 | Arc |
| B07-V17~V24-1220 |  | Roof Floor Tiles | 6d | 2024-10-09 | 2024-10-15 | B07-V17~V24-1210, B07-V09~V16-1220 | 17d | 1d | Roof Tiles [8]; Roof Tiles Joints [8]; Re_Test Roof Insulation [8] | 63,179.38 | Arc |
| B07-V17~V24-1230 |  | Plaster Work For Villa | 6d | 2024-10-09 | 2024-10-15 | B07-V17~V24-1190, B07-V17~V24-1200, B07-V09~V16-1230 | 13d | 0d | Establishing a plastering GF [8]; Establishing a plastering FF [8]; Plastering GF [8]; Plastering FF [8] | 49,263.81 |  |
| B07-V17~V24-1240 |  | Marbale Stairs & Handrails | 6d | 2024-10-16 | 2024-10-22 | B07-V17~V24-1230, B07-V09~V16-1240 | 35d | 1d | Marbale Stairs [8]; Stairs Handrails SS [8] | 91,494.69 |  |
| B07-V17~V24-1250 |  | Water Proofing Of Bathrooms | 4d | 2024-10-16 | 2024-10-20 | B07-V17~V24-1230, B07-V09~V16-1250 | 13d | 0d | Bathrooms InsulationGF & FF [8] | 134.24 |  |
| B07-V17~V24-1260 |  | Pulling The Elec Wires | 4d | 2024-10-16 | 2024-10-20 | B07-V17~V24-1230, B07-V09~V16-1260 | 23d | 3d | Elec Wires GF [8]; Elec Wires FF [8] | 80,542.4 |  |
| B07-V17~V24-1270 |  | Bathroom Tiles | 4d | 2024-10-21 | 2024-10-24 | B07-V17~V24-1250, B07-V17~V24-1220, B07-V09~V16-1270 | 13d | 0d | Ceramic Walls Kitchen [8]; Ceramic Walls Bathrooms GF [8]; Ceramic Walls Bathrooms FF [8]; Ceramic Tiles Bathrooms GF [8]; Ceramic Tiles Kitchen GF [8]; Ceramic Tiles Store GF [8] | 73,204.08 |  |
| B07-V17~V24-1280 |  | Structure For Gypsum | 6d | 2024-10-26 | 2024-10-31 | B07-V17~V24-1270, B07-V09~V16-1280 | 13d | 0d | Structure For Gypsum GF Rooms [8]; Structure For Gypsum FF Rooms [8]; Structure For Gypsum Bathrooms & Kitchen [8] | 33,550.81 |  |
| B07-V17~V24-1290 |  | Gypsum Board For Room | 4d | 2024-11-02 | 2024-11-05 | B07-V17~V24-1280, B07-V17~V24-1260, B07-V09~V16-1290 | 13d | 0d | Gypsum Board For GF Room [8]; Gypsum Board For FF Room [8] | 35,796.64 |  |
| B07-V17~V24-1300 |  | Installation Of Gypsum Board For Bathroom & Kitchen | 4d | 2024-11-06 | 2024-11-10 | B07-V17~V24-1290, B07-V09~V16-1300 | 13d | 0d | Gypsum Board For Bathrooms & Kitchen [8] | 11,052.24 |  |
| B07-V17~V24-1310 |  | Putty Filler For Gypsm Board Ceiling | 6d | 2024-11-11 | 2024-11-17 | B07-V17~V24-1300, B07-V09~V16-1310 | 13d | 0d | Putty Filler 1st Layer Roof all Rooms [8]; Putty Filler 1st Layer Roof all Bathrooms & Kitchen [8]; Putty Filler1st Layer walls [8] | 62,182.52 |  |
| B07-V17~V24-1320 |  | Fixing Shower Glass | 4d | 2024-11-18 | 2024-11-21 | B07-V17~V24-1310, B07-V09~V16-1320 | 21d | 0d | Shower Glass [8] | 22,372.88 |  |
| B07-V17~V24-1330 |  | Interior Wall Putty Filler | 6d | 2024-11-18 | 2024-11-24 | B07-V17~V24-1310, B07-V17~V24-1240, B07-V09~V16-1330 | 13d | 0d | Putty Filler 2ed Layer Roof & WAlls GF [8]; Putty Filler 2ed Layer Roof & WAlls FF [8] | 62,150.21 |  |
| B07-V17~V24-1340 |  | Installation Of Sanitry Fixture | 7d | 2024-11-23 | 2024-11-30 | B07-V17~V24-1320, B07-V09~V16-1340 | 21d | 0d | Mech Fixtures & Accessories [8] | 98,435.64 |  |
| B07-V17~V24-1350 |  | 1st Face Paint | 6d | 2024-11-25 | 2024-12-01 | B07-V17~V24-1330, B07-V09~V16-1350 | 13d | 0d |  |  |  |
| B07-V17~V24-1360 |  | Installation Of Aluminum Windows | 7d | 2024-11-25 | 2024-12-02 | B07-V17~V24-1330, B07-V09~V16-1360 | 23d | 0d | Aluminum Windows [8] | 84,795.68 |  |
| B07-V17~V24-1370 |  | Installation Of Elec Fixture & Accessories | 7d | 2024-11-25 | 2024-12-02 | B07-V17~V24-1310, B07-V17~V24-1330, B07-V17~V24-1260, B07-V09~V16-1370 | 37d | 0d | Elec Fixtures & Accessories Villa & Yard [8]; Elec Cables GF & FF & Earthing [8] | 53,692.2 |  |
| B07-V17~V24-1380 |  | Installation Of Water Tank-Heater & Pumps | 7d | 2024-12-01 | 2024-12-08 | B07-V17~V24-1340, B07-V09~V16-1380, B07-V17~V24-1220 | 21d | 0d | Water Tank & booster Pump [8]; Lower Pump [8]; Heater [8] | 129,756.23 |  |
| B07-V17~V24-1390 |  | Installation Of Parquet | 4d | 2024-12-02 | 2024-12-05 | B07-V17~V24-1350, B07-V09~V16-1390 | 13d | 0d | Installation Of Parquet [8] | 52,978.96 |  |
| B07-V17~V24-1400 |  | Installation Of Wooden Doors | 7d | 2024-12-07 | 2024-12-14 | B07-V17~V24-1390, B07-V09~V16-1400 | 13d | 0d | Wooden Doors Kitchen & Bathroom without Accessories [8]; Wooden Doors Accessories all Villa [8]; Exterior Wooden Doors [8] | 142,105.45 |  |
| B07-V17~V24-1410 |  | Final Face Paint | 7d | 2024-12-15 | 2024-12-22 | B07-V17~V24-1360, B07-V17~V24-1400, B07-V09~V16-1410 | 13d | 0d | Final Face Paint Villa [8] | 31,096.77 |  |

| ID | WBS | Activity | Duration | Start | Finish | Predecessors | Total float | Free float | Resources | Cost |
| --- | --- | --- | --- | --- | --- | --- | --- | --- | --- | --- |
|  | 3 | **Fence & Courtyard Works** |  | 2024-09-08 | 2024-12-11 |  |  |  |  |  |
| B07-V17~V24-1420 |  | Pouring Bedding Concrete For Fence Fondations | 2d | 2024-09-08 | 2024-09-09 | B07-V17~V24-1120, B07-V09~V16-1420 | 9d | 0d | Excavation Fence Foundations [8] | 4,519.28 |
| B07-V17~V24-1430 |  | RC Concrete For Fence Fondations | 6d | 2024-09-10 | 2024-09-16 | B07-V17~V24-1420, B07-V09~V16-1430 | 9d | 0d | Fence Fondations-Eastern side [8]; Fence Fondations-Westren side [8]; Fence Fondations-Back side [8] | 13,420.32 |
| B07-V17~V24-1440 |  | Steel Fixing & Carpentry For Fence Columns | 6d | 2024-09-17 | 2024-09-23 | B07-V17~V24-1430, B07-V09~V16-1440 | 9d | 0d |  |  |
| B07-V17~V24-1450 |  | Establishing Elec For Fence Columns | 4d | 2024-09-24 | 2024-09-28 | B07-V17~V24-1440, B07-V09~V16-1450 | 9d | 0d |  |  |
| B07-V17~V24-1460 |  | Pouring Concrete For Fence Columns | 1d | 2024-09-29 | 2024-09-29 | B07-V17~V24-1450, B07-V09~V16-1460 | 9d | 0d | Fence Columns-Eastern side [8]; Fence Columns-Westren side [8]; Fence Columns-Back side [8] | 9,665.04 |
| B07-V17~V24-1470 |  | Installation Precast Panel For Fence | 5d | 2024-09-30 | 2024-10-05 | B07-V17~V24-1460, B07-V09~V16-1470 | 9d | 0d | Hollow Core Walls [8] | 71,593.2 |
| B07-V17~V24-1480 |  | Bitumen Coating For Fence Fondations | 4d | 2024-10-06 | 2024-10-09 | B07-V17~V24-1470, B07-V09~V16-1480 | 9d | 0d |  |  |
| B07-V17~V24-1490 |  | Pouring Bedding Concrete For "Front" Fence Fondations | 1d | 2024-10-06 | 2024-10-06 | B07-V17~V24-1470, B07-V09~V16-1490 | 21d | 0d |  |  |
| B07-V17~V24-1500 |  | RC Concrete For "Front" Fence Fondations | 4d | 2024-10-07 | 2024-10-10 | B07-V17~V24-1490, B07-V09~V16-1500 | 21d | 0d | Front Fence Fondations [8] | 8,904.4 |
| B07-V17~V24-1510 |  | Outdoor Drainage & Water Line | 5d | 2024-10-10 | 2024-10-15 | B07-V17~V24-1480, B07-V17~V24-1140, B07-V09~V16-1510 | 9d | 0d | Outdoor Drainage [8]; Outdoor Water Line [8] | 13,423.68 |
| B07-V17~V24-1520 |  | Steel Fixing & Carpentry For "Front" Fence Columns | 4d | 2024-10-12 | 2024-10-15 | B07-V17~V24-1500, B07-V09~V16-1520 | 21d | 0d |  |  |
| B07-V17~V24-1530 |  | Establishing Elec For "Front" Fence Columns | 4d | 2024-10-16 | 2024-10-20 | B07-V17~V24-1520, B07-V09~V16-1530 | 21d | 0d |  |  |
| B07-V17~V24-1540 |  | Establishing Elec For Fence & Yard | 2d | 2024-10-16 | 2024-10-17 | B07-V17~V24-1510, B07-V09~V16-1540 | 9d | 0d | Elec Establishment Fence & Yard [8] | 17,898.32 |
| B07-V17~V24-1550 |  | Backfilling the Yard | 4d | 2024-10-19 | 2024-10-22 | B07-V17~V24-1540, B07-V09~V16-1550 | 9d | 0d | Backfilling the Yard [8] | 10,560 |
| B07-V17~V24-1560 |  | Pouring Concrete Wall Of "Front" Fence Columns | 2d | 2024-10-21 | 2024-10-22 | B07-V17~V24-1530, B07-V09~V16-1560 | 21d | 0d | Front Fence Walls [8] | 17,898.32 |
| B07-V17~V24-1570 |  | Pouring Concrete Crown Of "Front" Fence Columns | 3d | 2024-10-23 | 2024-10-26 | B07-V17~V24-1560, B07-V09~V16-1570 | 21d | 0d | Fence Columns - C Chanel [8] | 3,310.37 |
| B07-V17~V24-1580 |  | Bardoura Works For Yard | 5d | 2024-10-23 | 2024-10-28 | B07-V17~V24-1550, B07-V09~V16-1580 | 9d | 0d | Bardoura Works For Yard [8] | 14,408.16 |
| B07-V17~V24-1590 |  | Pouring Concrete Flower Basin Of "Front" Fence Columns | 4d | 2024-10-27 | 2024-10-30 | B07-V17~V24-1570, B07-V09~V16-1590 | 21d | 0d |  |  |
| B07-V17~V24-1600 |  | Antitermite Treatment For Yard | 1d | 2024-10-29 | 2024-10-29 | B07-V17~V24-1580, B07-V09~V16-1600 | 9d | 0d | Antitermite Treatment For Yard [8] |  |
| B07-V17~V24-1610 |  | Pouring Concrete For Yard | 1d | 2024-10-30 | 2024-10-30 | B07-V17~V24-1600, B07-V09~V16-1610 | 9d | 0d |  |  |
| B07-V17~V24-1620 |  | Block Work For Flower Basin | 5d | 2024-10-31 | 2024-11-05 | B07-V17~V24-1610, B07-V09~V16-1620 | 9d | 0d |  |  |
| B07-V17~V24-1630 |  | Plastering Work For Flower Basin | 4d | 2024-11-06 | 2024-11-10 | B07-V17~V24-1620, B07-V09~V16-1630 | 9d | 0d |  |  |
| B07-V17~V24-1640 |  | Interlock Works For The Yard | 6d | 2024-11-11 | 2024-11-17 | B07-V17~V24-1630, B07-V09~V16-1640 | 9d | 0d | Interlock Works For The Yard [8] | 36,776.32 |
| B07-V17~V24-1650 |  | External Grading Works For The Villa | 4d | 2024-11-18 | 2024-11-21 | B07-V17~V24-1640, B07-V09~V16-1650 | 11d | 0d | External Grading Works For The Villa [8] | 3,221.68 |
| B07-V17~V24-1660 |  | Installation The Exterior Door & Garage Door | 5d | 2024-11-18 | 2024-11-23 | B07-V17~V24-1640, B07-V09~V16-1660 | 14d | 2d | Installation The Exterior Door [8]; Installation The Exterior Garage Door [8] | 40,002.72 |
| B07-V17~V24-1670 |  | Fixing Floor Drain For The Yard | 2d | 2024-11-18 | 2024-11-19 | B07-V17~V24-1640, B07-V09~V16-1670 | 17d | 5d | Floor Drain & Clean Out [8] | 13,423.76 |
| B07-V17~V24-1680 |  | Granite Surronds Around The Villa | 4d | 2024-11-23 | 2024-11-26 | B07-V17~V24-1650, B07-V09~V16-1680 | 11d | 2d | Granite Surronds Around The Villa [8] | 25,818.32 |
| B07-V17~V24-1690 |  | Painting The Base Surface Of The Fence | 2d | 2024-11-23 | 2024-11-24 | B07-V17~V24-1750, B07-V09~V16-1690 | 9d | 0d |  |  |
| B07-V17~V24-1700 |  | Painting The Final Face Of The Fence | 4d | 2024-11-25 | 2024-11-28 | B07-V17~V24-1690, B07-V09~V16-1700 | 9d | 0d | Painting Final Face Of The Fence [8] | 37,586.48 |
| B07-V17~V24-1710 |  | Exterior Painting Of The Villa | 7d | 2024-11-30 | 2024-12-07 | B07-V17~V24-1680, B07-V17~V24-1700, B07-V17~V24-1660, B07-V17~V24-1670, B07-V09~V16-1710 | 9d | 0d | Exterior Painting Of The Villa [8]; Exterior Painting Staircase House [8] | 105,684.16 |
| B07-V17~V24-1720 |  | Installation Elec Fixtures & Accessories For The Yard | 4d | 2024-12-08 | 2024-12-11 | B07-V17~V24-1700, B07-V17~V24-1710, B07-V09~V16-1720 | 58d | 0d | Elec feeding panels GF & FF [8] | 22,372.88 |

| ID | WBS | Activity | Duration | Start | Finish | Predecessors | Total float | Free float | Resources | Cost | Department-1 |
| --- | --- | --- | --- | --- | --- | --- | --- | --- | --- | --- | --- |
|  | 5 | **External Sidewalk Works** |  | 2024-10-31 | 2024-12-16 |  |  |  |  |  |  |
| B07-V17~V24-1730 |  | Connection The Drain To The Piblic Network | 3d | 2024-10-31 | 2024-11-03 | B07-V17~V24-1510, B07-V17~V24-1590, B07-V09~V16-1730 | 21d | 4d | Connection Drain To The Piblic Network [8]; Connection Water To The Piblic Network [8] | 13,420.32 |  |
| B07-V17~V24-1740 |  | Pardora Works For The External Sidewalk | 2d | 2024-11-18 | 2024-11-19 | B07-V17~V24-1640, B07-V17~V24-1730, B07-V09~V16-1740 | 9d | 0d |  |  |  |
| B07-V17~V24-1750 |  | Interlock Works For The Exerrnal Sidewalk | 2d | 2024-11-20 | 2024-11-21 | B07-V17~V24-1740, B07-V09~V16-1750 | 9d | 0d |  |  |  |
| B07-V17~V24-1760 |  | Pulling The Villa's Main Elec Cable | 4d | 2024-12-12 | 2024-12-16 | B07-V17~V24-1750, B07-V17~V24-1720, B07-V09~V16-1760 | 58d | 0d | Elec Work Testing [8] | 22,819.84 |  |
|  | 6 | **Final Testing & Handover** |  | 2024-12-09 | 2025-01-04 |  |  |  |  |  |  |
| B07-V17~V24-1770 |  | Mech Work Testing & Handover | 5d | 2024-12-09 | 2024-12-14 | B07-V17~V24-1730, B07-V17~V24-1340, B07-V17~V24-1380, B07-V09~V16-1770 | 65d | 2d | Mech Work Testing & Handover [8] | 14,318.64 |  |
| B07-V17~V24-1780 |  | Arch Snaglist & Handover | 5d | 2024-12-15 | 2024-12-19 | B07-V17~V24-1750, B07-V17~V24-1710, B07-V17~V24-1400, B07-V09~V16-1780 | 60d | 2d | Arch Snaglist & Handover [8] | 77,320.64 |  |
| B07-V17~V24-1790 |  | ElecWork Testing & Handover | 5d | 2024-12-17 | 2024-12-22 | B07-V17~V24-1760, B07-V17~V24-1370, B07-V09~V16-1790 | 58d | 0d | Elec Work Handover [8] | 23,804.72 |  |
| B07-V17~V24-1800 |  | Final Handover Of The Villa To The Consltant | 5d | 2024-12-23 | 2024-12-28 | B07-V17~V24-1780, B07-V17~V24-1790, B07-V17~V24-1770, B07-V17~V24-1410, B07-V09~V16-1800 | 58d | 0d |  |  |  |
| B07-V17~V24-1810 |  | Customer Delivery | 6d | 2024-12-29 | 2025-01-04 | B07-V17~V24-1800, B07-V09~V16-1810 | 58d | 1d |  |  |  |
|  | 28 | **B07-V25~V32** |  | 2024-06-24 | 2025-01-12 |  |  |  |  |  |  |
|  | 2 | **Under Grond Slap Works** |  | 2024-06-24 | 2024-08-03 |  |  |  |  |  |  |
| B07-V25~V32-1000 |  | Excavation&Compaction of Fondation | 6d | 2024-06-24 | 2024-06-30 | B07-V17~V24-1000 | 30d | 0d | Clearing & Groubbing [8]; Excavation & Leveling [8]; Stone Layer [8]; A3 Layer [8]; A1-a 1st Layer [8]; A1-a 2ed Layer [8] | 163,545.76 | Civil |
| B07-V25~V32-1010 |  | Pouring Concrete For Bedding | 2d | 2024-07-01 | 2024-07-02 | B07-V25~V32-1000, B07-V17~V24-1010 | 30d | 0d | PC Carpentry [8]; PC Concrete [8]; RC 18 MPA [9 M3] | 37,899.68 | Civil |
| B07-V25~V32-1020 |  | Reinforcement Concrete For Foundation | 5d | 2024-07-03 | 2024-07-08 | B07-V25~V32-1010, B07-V17~V24-1020 | 30d | 0d | RC Foundation Carpentry [8]; RC Foundation Steel [8]; RC Foundation Concrete [8] | 201,355.92 | Civil |
| B07-V25~V32-1030 |  | Steel Fixing& Carpenter work for Beams | 4d | 2024-07-09 | 2024-07-13 | B07-V25~V32-1020, B07-V17~V24-1030 | 30d | 0d | RC Grade Beam Carpentry & Steel [8] | 44,745.76 | Civil |
| B07-V25~V32-1040 |  | Mech&Elec Establishment for Beams | 3d | 2024-07-14 | 2024-07-16 | B07-V25~V32-1030, B07-V17~V24-1040 | 30d | 0d |  |  | Mech |
| B07-V25~V32-1050 |  | Pouring Concrete For Beams | 1d | 2024-07-17 | 2024-07-17 | B07-V25~V32-1040, B07-V17~V24-1050 | 30d | 0d | RC Grade Beam Concrete [8] | 77,141.68 | Civil |
| B07-V25~V32-1060 |  | Bitmen Coating For Fondation&Beams | 3d | 2024-07-18 | 2024-07-21 | B07-V25~V32-1050, B07-V17~V24-1060 | 30d | 0d | Bitumen Coating Foundations & Grade Beams [8] | 22,372.32 | Civil |
| B07-V25~V32-1070 |  | Backfilling Inside Fondations | 4d | 2024-07-22 | 2024-07-25 | B07-V25~V32-1060, B07-V17~V24-1070 | 30d | 0d | Backfilling 1st Layer [8]; Backfilling 2ed Layer [8] | 11,186.4 | Civil |
| B07-V25~V32-1080 |  | Mech Works Under Grond Slap | 3d | 2024-07-27 | 2024-07-29 | B07-V25~V32-1070, B07-V17~V24-1080 | 30d | 0d | Mech Establishment Under Ground Slap [8] | 13,423.42 | Mech |
| B07-V25~V32-1090 |  | Steel Fixing& Carpenter work for Ground Slap | 3d | 2024-07-30 | 2024-08-01 | B07-V25~V32-1080, B07-V17~V24-1090 | 30d | 0d | Steel & Carpentry For Ground Slap [8] | 10,246.54 | Civil |
| B07-V25~V32-1100 |  | Anti Termite Treatment For Ground Slap | 1d | 2024-08-03 | 2024-08-03 | B07-V25~V32-1090, B07-V17~V24-1100 | 30d | 0d | Anti Termite Treatment nder Ground Slap [8] | 2,237.28 | Civil |
| B07-V25~V32-1110 |  | Pouring Concrete For Ground Slap | 1d | 2024-08-03 | 2024-08-03 | B07-V25~V32-1100 FF, B07-V25~V32-1090, B07-V17~V24-1110 | 30d | 5d | Concrete For Ground Slap [8] | 58,169.52 | Civil |

| ID | WBS | Activity | Duration | Start | Finish | Predecessors | Total float | Free float | Resources | Cost | Department-1 |
| --- | --- | --- | --- | --- | --- | --- | --- | --- | --- | --- | --- |
|  | 4 | **Precast Works** |  | 2024-09-08 | 2024-09-15 |  |  |  |  |  |  |
| B07-V25~V32-1120 |  | Precast Constrction | 7d | 2024-09-08 | 2024-09-15 | B07-V25~V32-1110, B07-V17~V24-1120 | 0d |  | Precast Walls GF [8]; Hollow Core Slap GF [8]; Precast Stairs & staircase House [8]; Thermal insollation Outside Walls [8]; Concrete structure joints [8]; Precast Walls FF [8]; Hollow Core Slap FF [8] | 1,513,762.87 | Civil |
|  | 1 | **Works Inside The Villa** |  | 2024-09-16 | 2024-12-30 |  |  |  |  |  |  |
| B07-V25~V32-1130 |  | Block Work For GF & Estabishment 1F | 6d | 2024-09-16 | 2024-09-22 | B07-V25~V32-1120, B07-V17~V24-1130 | 13d | 0d | Block GF [8] | 13,647.1 | Arc |
| B07-V25~V32-1140 |  | L.L & H.L Drainage | 6d | 2024-09-23 | 2024-09-29 | B07-V25~V32-1130, B07-V17~V24-1140 | 13d | 0d | HL Drainage [8]; L.L Drainage [8] | 89,489.28 | Mech |
| B07-V25~V32-1150 |  | Elec Establishment For GF & 1F | 3d | 2024-09-23 | 2024-09-25 | B07-V25~V32-1130, B07-V17~V24-1150 | 16d | 3d | Elec Establishment GF [8] | 26,840.73 | Elec |
| B07-V25~V32-1160 |  | Screed Work For 1F & Roof | 6d | 2024-09-30 | 2024-10-06 | B07-V25~V32-1140, B07-V25~V32-1150, B07-V17~V24-1160 | 13d | 0d | Screed 1st Floor [8]; Screed Roof Floor [8]; Leveling Screed 1st Floor [8]; Leveling Screed Roof Floor [8] | 268,467.85 | Civil |
| B07-V25~V32-1170 |  | Water Tank & Heater Foundations | 4d | 2024-10-07 | 2024-10-10 | B07-V25~V32-1160, B07-V17~V24-1170 | 17d | 0d |  |  | Civil |
| B07-V25~V32-1180 |  | Block Works For 1F | 3d | 2024-10-07 | 2024-10-09 | B07-V25~V32-1160, B07-V17~V24-1180 | 13d | 0d | Block FF [8] | 20,537.81 | Arc |
| B07-V25~V32-1190 |  | Water Line Network | 6d | 2024-10-10 | 2024-10-16 | B07-V25~V32-1180, B07-V17~V24-1190 | 13d | 0d | Water Line Network [8] | 40,261.13 | Mech |
| B07-V25~V32-1200 |  | Continue Elec Establishment For GF & 1F | 3d | 2024-10-10 | 2024-10-13 | B07-V25~V32-1180, B07-V17~V24-1200 | 16d | 3d | Elec Establishment FF [8] | 26,840.73 | Elec |
| B07-V25~V32-1210 |  | Thermal Insulation For Roof | 5d | 2024-10-12 | 2024-10-16 | B07-V25~V32-1170, B07-V17~V24-1210 | 17d | 0d | Roof Insulation [8] | 32,530.16 | Arc |
| B07-V25~V32-1220 |  | Roof Floor Tiles | 6d | 2024-10-17 | 2024-10-23 | B07-V25~V32-1210, B07-V17~V24-1220 | 17d | 1d | Roof Tiles [8]; Roof Tiles Joints [8]; Re_Test Roof Insulation [8] | 63,179.38 | Arc |
| B07-V25~V32-1230 |  | Plaster Work For Villa | 6d | 2024-10-17 | 2024-10-23 | B07-V25~V32-1190, B07-V25~V32-1200, B07-V17~V24-1230 | 13d | 0d | Establishing a plastering GF [8]; Establishing a plastering FF [8]; Plastering GF [8]; Plastering FF [8] | 49,263.81 |  |
| B07-V25~V32-1240 |  | Marbale Stairs & Handrails | 6d | 2024-10-24 | 2024-10-30 | B07-V25~V32-1230, B07-V17~V24-1240 | 35d | 1d | Marbale Stairs [8]; Stairs Handrails SS [8] | 91,494.69 |  |
| B07-V25~V32-1250 |  | Water Proofing Of Bathrooms | 4d | 2024-10-24 | 2024-10-28 | B07-V25~V32-1230, B07-V17~V24-1250 | 13d | 0d | Bathrooms InsulationGF & FF [8] | 134.24 |  |
| B07-V25~V32-1260 |  | Pulling The Elec Wires | 4d | 2024-10-24 | 2024-10-28 | B07-V25~V32-1230, B07-V17~V24-1260 | 23d | 3d | Elec Wires GF [8]; Elec Wires FF [8] | 80,542.4 |  |
| B07-V25~V32-1270 |  | Bathroom Tiles | 4d | 2024-10-29 | 2024-11-02 | B07-V25~V32-1250, B07-V25~V32-1220, B07-V17~V24-1270 | 13d | 0d | Ceramic Walls Kitchen [8]; Ceramic Walls Bathrooms GF [8]; Ceramic Walls Bathrooms FF [8]; Ceramic Tiles Bathrooms GF [8]; Ceramic Tiles Kitchen GF [8]; Ceramic Tiles Store GF [8] | 73,204.08 |  |
| B07-V25~V32-1280 |  | Structure For Gypsum | 6d | 2024-11-03 | 2024-11-09 | B07-V25~V32-1270, B07-V17~V24-1280 | 13d | 0d | Structure For Gypsum GF Rooms [8]; Structure For Gypsum FF Rooms [8]; Structure For Gypsum Bathrooms & Kitchen [8] | 33,550.81 |  |
| B07-V25~V32-1290 |  | Gypsum Board For Room | 4d | 2024-11-10 | 2024-11-13 | B07-V25~V32-1280, B07-V25~V32-1260, B07-V17~V24-1290 | 13d | 0d | Gypsum Board For GF Room [8]; Gypsum Board For FF Room [8] | 35,796.64 |  |
| B07-V25~V32-1300 |  | Installation Of Gypsum Board For Bathroom & Kitchen | 4d | 2024-11-14 | 2024-11-18 | B07-V25~V32-1290, B07-V17~V24-1300 | 13d | 0d | Gypsum Board For Bathrooms & Kitchen [8] | 11,052.24 |  |
| B07-V25~V32-1310 |  | Putty Filler For Gypsm Board Ceiling | 6d | 2024-11-19 | 2024-11-25 | B07-V25~V32-1300, B07-V17~V24-1310 | 13d | 0d | Putty Filler 1st Layer Roof all Rooms [8]; Putty Filler 1st Layer Roof all Bathrooms & Kitchen [8]; Putty Filler1st Layer walls [8] | 62,182.52 |  |
| B07-V25~V32-1320 |  | Fixing Shower Glass | 4d | 2024-11-26 | 2024-11-30 | B07-V25~V32-1310, B07-V17~V24-1320 | 21d | 0d | Shower Glass [8] | 22,372.88 |  |
| B07-V25~V32-1330 |  | Interior Wall Putty Filler | 6d | 2024-11-26 | 2024-12-02 | B07-V25~V32-1310, B07-V25~V32-1240, B07-V17~V24-1330 | 13d | 0d | Putty Filler 2ed Layer Roof & WAlls GF [8]; Putty Filler 2ed Layer Roof & WAlls FF [8] | 62,150.21 |  |
| B07-V25~V32-1340 |  | Installation Of Sanitry Fixture | 7d | 2024-12-01 | 2024-12-08 | B07-V25~V32-1320, B07-V17~V24-1340 | 21d | 0d | Mech Fixtures & Accessories [8] | 98,435.64 |  |
| B07-V25~V32-1350 |  | 1st Face Paint | 6d | 2024-12-03 | 2024-12-09 | B07-V25~V32-1330, B07-V17~V24-1350 | 13d | 0d |  |  |  |
| B07-V25~V32-1360 |  | Installation Of Aluminum Windows | 7d | 2024-12-03 | 2024-12-10 | B07-V25~V32-1330, B07-V17~V24-1360 | 23d | 0d | Aluminum Windows [8] | 84,795.68 |  |
| B07-V25~V32-1370 |  | Installation Of Elec Fixture & Accessories | 7d | 2024-12-03 | 2024-12-10 | B07-V25~V32-1310, B07-V25~V32-1330, B07-V25~V32-1260, B07-V17~V24-1370 | 37d | 0d | Elec Fixtures & Accessories Villa & Yard [8]; Elec Cables GF & FF & Earthing [8] | 53,692.2 |  |
| B07-V25~V32-1380 |  | Installation Of Water Tank-Heater & Pumps | 7d | 2024-12-09 | 2024-12-16 | B07-V25~V32-1340, B07-V17~V24-1380, B07-V25~V32-1220 | 21d | 0d | Water Tank & booster Pump [8]; Lower Pump [8]; Heater [8] | 129,756.23 |  |
| B07-V25~V32-1390 |  | Installation Of Parquet | 4d | 2024-12-10 | 2024-12-14 | B07-V25~V32-1350, B07-V17~V24-1390 | 13d | 0d | Installation Of Parquet [8] | 52,978.96 |  |
| B07-V25~V32-1400 |  | Installation Of Wooden Doors | 7d | 2024-12-15 | 2024-12-22 | B07-V25~V32-1390, B07-V17~V24-1400 | 13d | 0d | Wooden Doors Kitchen & Bathroom without Accessories [8]; Wooden Doors Accessories all Villa [8]; Exterior Wooden Doors [8] | 142,105.45 |  |
| B07-V25~V32-1410 |  | Final Face Paint | 7d | 2024-12-23 | 2024-12-30 | B07-V25~V32-1360, B07-V25~V32-1400, B07-V17~V24-1410 | 13d | 0d | Final Face Paint Villa [8] | 31,096.77 |  |

| ID | WBS | Activity | Duration | Start | Finish | Predecessors | Total float | Free float | Resources | Cost |
| --- | --- | --- | --- | --- | --- | --- | --- | --- | --- | --- |
|  | 3 | **Fence & Courtyard Works** |  | 2024-09-16 | 2024-12-19 |  |  |  |  |  |
| B07-V25~V32-1420 |  | Pouring Bedding Concrete For Fence Fondations | 2d | 2024-09-16 | 2024-09-17 | B07-V25~V32-1120, B07-V17~V24-1420 | 9d | 0d | Excavation Fence Foundations [8] | 4,519.28 |
| B07-V25~V32-1430 |  | RC Concrete For Fence Fondations | 6d | 2024-09-18 | 2024-09-24 | B07-V25~V32-1420, B07-V17~V24-1430 | 9d | 0d | Fence Fondations-Eastern side [8]; Fence Fondations-Westren side [8]; Fence Fondations-Back side [8] | 13,420.32 |
| B07-V25~V32-1440 |  | Steel Fixing & Carpentry For Fence Columns | 6d | 2024-09-25 | 2024-10-01 | B07-V25~V32-1430, B07-V17~V24-1440 | 9d | 0d |  |  |
| B07-V25~V32-1450 |  | Establishing Elec For Fence Columns | 4d | 2024-10-02 | 2024-10-06 | B07-V25~V32-1440, B07-V17~V24-1450 | 9d | 0d |  |  |
| B07-V25~V32-1460 |  | Pouring Concrete For Fence Columns | 1d | 2024-10-07 | 2024-10-07 | B07-V25~V32-1450, B07-V17~V24-1460 | 9d | 0d | Fence Columns-Eastern side [8]; Fence Columns-Westren side [8]; Fence Columns-Back side [8] | 9,665.04 |
| B07-V25~V32-1470 |  | Installation Precast Panel For Fence | 5d | 2024-10-08 | 2024-10-13 | B07-V25~V32-1460, B07-V17~V24-1470 | 9d | 0d | Hollow Core Walls [8] | 71,593.2 |
| B07-V25~V32-1480 |  | Bitumen Coating For Fence Fondations | 4d | 2024-10-14 | 2024-10-17 | B07-V25~V32-1470, B07-V17~V24-1480 | 9d | 0d |  |  |
| B07-V25~V32-1490 |  | Pouring Bedding Concrete For "Front" Fence Fondations | 1d | 2024-10-14 | 2024-10-14 | B07-V25~V32-1470, B07-V17~V24-1490 | 21d | 0d |  |  |
| B07-V25~V32-1500 |  | RC Concrete For "Front" Fence Fondations | 4d | 2024-10-15 | 2024-10-19 | B07-V25~V32-1490, B07-V17~V24-1500 | 21d | 0d | Front Fence Fondations [8] | 8,904.4 |
| B07-V25~V32-1510 |  | Outdoor Drainage & Water Line | 5d | 2024-10-19 | 2024-10-23 | B07-V25~V32-1480, B07-V25~V32-1140, B07-V17~V24-1510 | 9d | 0d | Outdoor Drainage [8]; Outdoor Water Line [8] | 13,423.68 |
| B07-V25~V32-1520 |  | Steel Fixing & Carpentry For "Front" Fence Columns | 4d | 2024-10-20 | 2024-10-23 | B07-V25~V32-1500, B07-V17~V24-1520 | 21d | 0d |  |  |
| B07-V25~V32-1530 |  | Establishing Elec For "Front" Fence Columns | 4d | 2024-10-24 | 2024-10-28 | B07-V25~V32-1520, B07-V17~V24-1530 | 21d | 0d |  |  |
| B07-V25~V32-1540 |  | Establishing Elec For Fence & Yard | 2d | 2024-10-24 | 2024-10-26 | B07-V25~V32-1510, B07-V17~V24-1540 | 9d | 0d | Elec Establishment Fence & Yard [8] | 17,898.32 |
| B07-V25~V32-1550 |  | Backfilling the Yard | 4d | 2024-10-27 | 2024-10-30 | B07-V25~V32-1540, B07-V17~V24-1550 | 9d | 0d | Backfilling the Yard [8] | 10,560 |
| B07-V25~V32-1560 |  | Pouring Concrete Wall Of "Front" Fence Columns | 2d | 2024-10-29 | 2024-10-30 | B07-V25~V32-1530, B07-V17~V24-1560 | 21d | 0d | Front Fence Walls [8] | 17,898.32 |
| B07-V25~V32-1570 |  | Pouring Concrete Crown Of "Front" Fence Columns | 3d | 2024-10-31 | 2024-11-03 | B07-V25~V32-1560, B07-V17~V24-1570 | 21d | 0d | Fence Columns - C Chanel [8] | 3,310.37 |
| B07-V25~V32-1580 |  | Bardoura Works For Yard | 5d | 2024-10-31 | 2024-11-05 | B07-V25~V32-1550, B07-V17~V24-1580 | 9d | 0d | Bardoura Works For Yard [8] | 14,408.16 |
| B07-V25~V32-1590 |  | Pouring Concrete Flower Basin Of "Front" Fence Columns | 4d | 2024-11-04 | 2024-11-07 | B07-V25~V32-1570, B07-V17~V24-1590 | 21d | 0d |  |  |
| B07-V25~V32-1600 |  | Antitermite Treatment For Yard | 1d | 2024-11-06 | 2024-11-06 | B07-V25~V32-1580, B07-V17~V24-1600 | 9d | 0d | Antitermite Treatment For Yard [8] |  |
| B07-V25~V32-1610 |  | Pouring Concrete For Yard | 1d | 2024-11-07 | 2024-11-07 | B07-V25~V32-1600, B07-V17~V24-1610 | 9d | 0d |  |  |
| B07-V25~V32-1620 |  | Block Work For Flower Basin | 5d | 2024-11-09 | 2024-11-13 | B07-V25~V32-1610, B07-V17~V24-1620 | 9d | 0d |  |  |
| B07-V25~V32-1630 |  | Plastering Work For Flower Basin | 4d | 2024-11-14 | 2024-11-18 | B07-V25~V32-1620, B07-V17~V24-1630 | 9d | 0d |  |  |
| B07-V25~V32-1640 |  | Interlock Works For The Yard | 6d | 2024-11-19 | 2024-11-25 | B07-V25~V32-1630, B07-V17~V24-1640 | 9d | 0d | Interlock Works For The Yard [8] | 36,776.32 |
| B07-V25~V32-1650 |  | External Grading Works For The Villa | 4d | 2024-11-26 | 2024-11-30 | B07-V25~V32-1640, B07-V17~V24-1650 | 11d | 0d | External Grading Works For The Villa [8] | 3,221.68 |
| B07-V25~V32-1660 |  | Installation The Exterior Door & Garage Door | 5d | 2024-11-26 | 2024-12-01 | B07-V25~V32-1640, B07-V17~V24-1660 | 14d | 2d | Installation The Exterior Door [8]; Installation The Exterior Garage Door [8] | 40,002.72 |
| B07-V25~V32-1670 |  | Fixing Floor Drain For The Yard | 2d | 2024-11-26 | 2024-11-27 | B07-V25~V32-1640, B07-V17~V24-1670 | 17d | 5d | Floor Drain & Clean Out [8] | 13,423.76 |
| B07-V25~V32-1680 |  | Granite Surronds Around The Villa | 4d | 2024-12-01 | 2024-12-04 | B07-V25~V32-1650, B07-V17~V24-1680 | 11d | 2d | Granite Surronds Around The Villa [8] | 25,818.32 |
| B07-V25~V32-1690 |  | Painting The Base Surface Of The Fence | 2d | 2024-12-01 | 2024-12-02 | B07-V25~V32-1750, B07-V17~V24-1690 | 9d | 0d |  |  |
| B07-V25~V32-1700 |  | Painting The Final Face Of The Fence | 4d | 2024-12-03 | 2024-12-07 | B07-V25~V32-1690, B07-V17~V24-1700 | 9d | 0d | Painting Final Face Of The Fence [8] | 37,586.48 |
| B07-V25~V32-1710 |  | Exterior Painting Of The Villa | 7d | 2024-12-08 | 2024-12-15 | B07-V25~V32-1680, B07-V25~V32-1700, B07-V25~V32-1660, B07-V25~V32-1670, B07-V17~V24-1710 | 9d | 0d | Exterior Painting Of The Villa [8]; Exterior Painting Staircase House [8] | 105,684.16 |
| B07-V25~V32-1720 |  | Installation Elec Fixtures & Accessories For The Yard | 4d | 2024-12-16 | 2024-12-19 | B07-V25~V32-1700, B07-V25~V32-1710, B07-V17~V24-1720 | 57d | 0d | Elec feeding panels GF & FF [8] | 22,372.88 |

| ID | WBS | Activity | Duration | Start | Finish | Predecessors | Total float | Free float | Resources | Cost | Department-1 |
| --- | --- | --- | --- | --- | --- | --- | --- | --- | --- | --- | --- |
|  | 5 | **External Sidewalk Works** |  | 2024-11-09 | 2024-12-24 |  |  |  |  |  |  |
| B07-V25~V32-1730 |  | Connection The Drain To The Piblic Network | 3d | 2024-11-09 | 2024-11-11 | B07-V25~V32-1510, B07-V25~V32-1590, B07-V17~V24-1730 | 21d | 4d | Connection Drain To The Piblic Network [8]; Connection Water To The Piblic Network [8] | 13,420.32 |  |
| B07-V25~V32-1740 |  | Pardora Works For The External Sidewalk | 2d | 2024-11-26 | 2024-11-27 | B07-V25~V32-1640, B07-V25~V32-1730, B07-V17~V24-1740 | 9d | 0d |  |  |  |
| B07-V25~V32-1750 |  | Interlock Works For The Exerrnal Sidewalk | 2d | 2024-11-28 | 2024-11-30 | B07-V25~V32-1740, B07-V17~V24-1750 | 9d | 0d |  |  |  |
| B07-V25~V32-1760 |  | Pulling The Villa's Main Elec Cable | 4d | 2024-12-21 | 2024-12-24 | B07-V25~V32-1750, B07-V25~V32-1720, B07-V17~V24-1760 | 57d | 0d | Elec Work Testing [8] | 22,819.84 |  |
|  | 6 | **Final Testing & Handover** |  | 2024-12-17 | 2025-01-12 |  |  |  |  |  |  |
| B07-V25~V32-1770 |  | Mech Work Testing & Handover | 5d | 2024-12-17 | 2024-12-22 | B07-V25~V32-1730, B07-V25~V32-1340, B07-V25~V32-1380, B07-V17~V24-1770 | 64d | 2d | Mech Work Testing & Handover [8] | 14,318.64 |  |
| B07-V25~V32-1780 |  | Arch Snaglist & Handover | 5d | 2024-12-23 | 2024-12-28 | B07-V25~V32-1750, B07-V25~V32-1710, B07-V25~V32-1400, B07-V17~V24-1780 | 59d | 2d | Arch Snaglist & Handover [8] | 77,320.64 |  |
| B07-V25~V32-1790 |  | ElecWork Testing & Handover | 5d | 2024-12-25 | 2024-12-30 | B07-V25~V32-1760, B07-V25~V32-1370, B07-V17~V24-1790 | 57d | 0d | Elec Work Handover [8] | 23,804.72 |  |
| B07-V25~V32-1800 |  | Final Handover Of The Villa To The Consltant | 5d | 2024-12-31 | 2025-01-05 | B07-V25~V32-1780, B07-V25~V32-1790, B07-V25~V32-1770, B07-V25~V32-1410, B07-V17~V24-1800 | 57d | 0d |  |  |  |
| B07-V25~V32-1810 |  | Customer Delivery | 6d | 2025-01-06 | 2025-01-12 | B07-V25~V32-1800, B07-V17~V24-1810 | 57d | 1d |  |  |  |
|  | 29 | **B08-V01~V08** |  | 2024-07-01 | 2025-01-20 |  |  |  |  |  |  |
|  | 2 | **Under Grond Slap Works** |  | 2024-07-01 | 2024-08-10 |  |  |  |  |  |  |
| B08-V01~V08-1000 |  | Excavation&Compaction of Fondation | 6d | 2024-07-01 | 2024-07-07 | B07-V25~V32-1000 | 31d | 0d | Clearing & Groubbing [8]; Excavation & Leveling [8]; Stone Layer [8]; A3 Layer [8]; A1-a 1st Layer [8]; A1-a 2ed Layer [8] | 163,545.76 | Civil |
| B08-V01~V08-1010 |  | Pouring Concrete For Bedding | 2d | 2024-07-08 | 2024-07-09 | B08-V01~V08-1000, B07-V25~V32-1010 | 31d | 0d | PC Carpentry [8]; PC Concrete [8]; RC 18 MPA [9 M3] | 37,899.68 | Civil |
| B08-V01~V08-1020 |  | Reinforcement Concrete For Foundation | 5d | 2024-07-10 | 2024-07-15 | B08-V01~V08-1010, B07-V25~V32-1020 | 31d | 0d | RC Foundation Carpentry [8]; RC Foundation Steel [8]; RC Foundation Concrete [8] | 201,355.92 | Civil |
| B08-V01~V08-1030 |  | Steel Fixing& Carpenter work for Beams | 4d | 2024-07-16 | 2024-07-20 | B08-V01~V08-1020, B07-V25~V32-1030 | 31d | 0d | RC Grade Beam Carpentry & Steel [8] | 44,745.76 | Civil |
| B08-V01~V08-1040 |  | Mech&Elec Establishment for Beams | 3d | 2024-07-21 | 2024-07-23 | B08-V01~V08-1030, B07-V25~V32-1040 | 31d | 0d |  |  | Mech |
| B08-V01~V08-1050 |  | Pouring Concrete For Beams | 1d | 2024-07-24 | 2024-07-24 | B08-V01~V08-1040, B07-V25~V32-1050 | 31d | 0d | RC Grade Beam Concrete [8] | 77,141.68 | Civil |
| B08-V01~V08-1060 |  | Bitmen Coating For Fondation&Beams | 3d | 2024-07-25 | 2024-07-28 | B08-V01~V08-1050, B07-V25~V32-1060 | 31d | 0d | Bitumen Coating Foundations & Grade Beams [8] | 22,372.32 | Civil |
| B08-V01~V08-1070 |  | Backfilling Inside Fondations | 4d | 2024-07-29 | 2024-08-01 | B08-V01~V08-1060, B07-V25~V32-1070 | 31d | 0d | Backfilling 1st Layer [8]; Backfilling 2ed Layer [8] | 11,186.4 | Civil |
| B08-V01~V08-1080 |  | Mech Works Under Grond Slap | 3d | 2024-08-03 | 2024-08-05 | B08-V01~V08-1070, B07-V25~V32-1080 | 31d | 0d | Mech Establishment Under Ground Slap [8] | 13,423.42 | Mech |
| B08-V01~V08-1090 |  | Steel Fixing& Carpenter work for Ground Slap | 3d | 2024-08-06 | 2024-08-08 | B08-V01~V08-1080, B07-V25~V32-1090 | 31d | 0d | Steel & Carpentry For Ground Slap [8] | 10,246.54 | Civil |
| B08-V01~V08-1100 |  | Anti Termite Treatment For Ground Slap | 1d | 2024-08-10 | 2024-08-10 | B08-V01~V08-1090, B07-V25~V32-1100 | 31d | 0d | Anti Termite Treatment nder Ground Slap [8] | 2,237.28 | Civil |
| B08-V01~V08-1110 |  | Pouring Concrete For Ground Slap | 1d | 2024-08-10 | 2024-08-10 | B08-V01~V08-1100 FF, B08-V01~V08-1090, B07-V25~V32-1110 | 31d | 5d | Concrete For Ground Slap [8] | 58,169.52 | Civil |

| ID | WBS | Activity | Duration | Start | Finish | Predecessors | Total float | Free float | Resources | Cost | Department-1 |
| --- | --- | --- | --- | --- | --- | --- | --- | --- | --- | --- | --- |
|  | 4 | **Precast Works** |  | 2024-09-16 | 2024-09-23 |  |  |  |  |  |  |
| B08-V01~V08-1120 |  | Precast Constrction | 7d | 2024-09-16 | 2024-09-23 | B08-V01~V08-1110, B07-V25~V32-1120 | 0d |  | Precast Walls GF [8]; Hollow Core Slap GF [8]; Precast Stairs & staircase House [8]; Thermal insollation Outside Walls [8]; Concrete structure joints [8]; Precast Walls FF [8]; Hollow Core Slap FF [8] | 1,513,762.87 | Civil |
|  | 1 | **Works Inside The Villa** |  | 2024-09-24 | 2025-01-07 |  |  |  |  |  |  |
| B08-V01~V08-1130 |  | Block Work For GF & Estabishment 1F | 6d | 2024-09-24 | 2024-09-30 | B08-V01~V08-1120, B07-V25~V32-1130 | 13d | 0d | Block GF [8] | 13,647.1 | Arc |
| B08-V01~V08-1140 |  | L.L & H.L Drainage | 6d | 2024-10-01 | 2024-10-07 | B08-V01~V08-1130, B07-V25~V32-1140 | 13d | 0d | HL Drainage [8]; L.L Drainage [8] | 89,489.28 | Mech |
| B08-V01~V08-1150 |  | Elec Establishment For GF & 1F | 3d | 2024-10-01 | 2024-10-03 | B08-V01~V08-1130, B07-V25~V32-1150 | 16d | 3d | Elec Establishment GF [8] | 26,840.73 | Elec |
| B08-V01~V08-1160 |  | Screed Work For 1F & Roof | 6d | 2024-10-08 | 2024-10-14 | B08-V01~V08-1140, B08-V01~V08-1150, B07-V25~V32-1160 | 13d | 0d | Screed 1st Floor [8]; Screed Roof Floor [8]; Leveling Screed 1st Floor [8]; Leveling Screed Roof Floor [8] | 268,467.85 | Civil |
| B08-V01~V08-1170 |  | Water Tank & Heater Foundations | 4d | 2024-10-15 | 2024-10-19 | B08-V01~V08-1160, B07-V25~V32-1170 | 17d | 0d |  |  | Civil |
| B08-V01~V08-1180 |  | Block Works For 1F | 3d | 2024-10-15 | 2024-10-17 | B08-V01~V08-1160, B07-V25~V32-1180 | 13d | 0d | Block FF [8] | 20,537.81 | Arc |
| B08-V01~V08-1190 |  | Water Line Network | 6d | 2024-10-19 | 2024-10-24 | B08-V01~V08-1180, B07-V25~V32-1190 | 13d | 0d | Water Line Network [8] | 40,261.13 | Mech |
| B08-V01~V08-1200 |  | Continue Elec Establishment For GF & 1F | 3d | 2024-10-19 | 2024-10-21 | B08-V01~V08-1180, B07-V25~V32-1200 | 16d | 3d | Elec Establishment FF [8] | 26,840.73 | Elec |
| B08-V01~V08-1210 |  | Thermal Insulation For Roof | 5d | 2024-10-20 | 2024-10-24 | B08-V01~V08-1170, B07-V25~V32-1210 | 17d | 0d | Roof Insulation [8] | 32,530.16 | Arc |
| B08-V01~V08-1220 |  | Roof Floor Tiles | 6d | 2024-10-26 | 2024-10-31 | B08-V01~V08-1210, B07-V25~V32-1220 | 17d | 1d | Roof Tiles [8]; Roof Tiles Joints [8]; Re_Test Roof Insulation [8] | 63,179.38 | Arc |
| B08-V01~V08-1230 |  | Plaster Work For Villa | 6d | 2024-10-26 | 2024-10-31 | B08-V01~V08-1190, B08-V01~V08-1200, B07-V25~V32-1230 | 13d | 0d | Establishing a plastering GF [8]; Establishing a plastering FF [8]; Plastering GF [8]; Plastering FF [8] | 49,263.81 |  |
| B08-V01~V08-1240 |  | Marbale Stairs & Handrails | 6d | 2024-11-02 | 2024-11-07 | B08-V01~V08-1230, B07-V25~V32-1240 | 35d | 1d | Marbale Stairs [8]; Stairs Handrails SS [8] | 91,494.69 |  |
| B08-V01~V08-1250 |  | Water Proofing Of Bathrooms | 4d | 2024-11-02 | 2024-11-05 | B08-V01~V08-1230, B07-V25~V32-1250 | 13d | 0d | Bathrooms InsulationGF & FF [8] | 134.24 |  |
| B08-V01~V08-1260 |  | Pulling The Elec Wires | 4d | 2024-11-02 | 2024-11-05 | B08-V01~V08-1230, B07-V25~V32-1260 | 23d | 3d | Elec Wires GF [8]; Elec Wires FF [8] | 80,542.4 |  |
| B08-V01~V08-1270 |  | Bathroom Tiles | 4d | 2024-11-06 | 2024-11-10 | B08-V01~V08-1250, B08-V01~V08-1220, B07-V25~V32-1270 | 13d | 0d | Ceramic Walls Kitchen [8]; Ceramic Walls Bathrooms GF [8]; Ceramic Walls Bathrooms FF [8]; Ceramic Tiles Bathrooms GF [8]; Ceramic Tiles Kitchen GF [8]; Ceramic Tiles Store GF [8] | 73,204.08 |  |
| B08-V01~V08-1280 |  | Structure For Gypsum | 6d | 2024-11-11 | 2024-11-17 | B08-V01~V08-1270, B07-V25~V32-1280 | 13d | 0d | Structure For Gypsum GF Rooms [8]; Structure For Gypsum FF Rooms [8]; Structure For Gypsum Bathrooms & Kitchen [8] | 33,550.81 |  |
| B08-V01~V08-1290 |  | Gypsum Board For Room | 4d | 2024-11-18 | 2024-11-21 | B08-V01~V08-1280, B08-V01~V08-1260, B07-V25~V32-1290 | 13d | 0d | Gypsum Board For GF Room [8]; Gypsum Board For FF Room [8] | 35,796.64 |  |
| B08-V01~V08-1300 |  | Installation Of Gypsum Board For Bathroom & Kitchen | 4d | 2024-11-23 | 2024-11-26 | B08-V01~V08-1290, B07-V25~V32-1300 | 13d | 0d | Gypsum Board For Bathrooms & Kitchen [8] | 11,052.24 |  |
| B08-V01~V08-1310 |  | Putty Filler For Gypsm Board Ceiling | 6d | 2024-11-27 | 2024-12-03 | B08-V01~V08-1300, B07-V25~V32-1310 | 13d | 0d | Putty Filler 1st Layer Roof all Rooms [8]; Putty Filler 1st Layer Roof all Bathrooms & Kitchen [8]; Putty Filler1st Layer walls [8] | 62,182.52 |  |
| B08-V01~V08-1320 |  | Fixing Shower Glass | 4d | 2024-12-04 | 2024-12-08 | B08-V01~V08-1310, B07-V25~V32-1320 | 21d | 0d | Shower Glass [8] | 22,372.88 |  |
| B08-V01~V08-1330 |  | Interior Wall Putty Filler | 6d | 2024-12-04 | 2024-12-10 | B08-V01~V08-1310, B08-V01~V08-1240, B07-V25~V32-1330 | 13d | 0d | Putty Filler 2ed Layer Roof & WAlls GF [8]; Putty Filler 2ed Layer Roof & WAlls FF [8] | 62,150.21 |  |
| B08-V01~V08-1340 |  | Installation Of Sanitry Fixture | 7d | 2024-12-09 | 2024-12-16 | B08-V01~V08-1320, B07-V25~V32-1340 | 21d | 0d | Mech Fixtures & Accessories [8] | 98,435.64 |  |
| B08-V01~V08-1350 |  | 1st Face Paint | 6d | 2024-12-11 | 2024-12-17 | B08-V01~V08-1330, B07-V25~V32-1350 | 13d | 0d |  |  |  |
| B08-V01~V08-1360 |  | Installation Of Aluminum Windows | 7d | 2024-12-11 | 2024-12-18 | B08-V01~V08-1330, B07-V25~V32-1360 | 23d | 0d | Aluminum Windows [8] | 84,795.68 |  |
| B08-V01~V08-1370 |  | Installation Of Elec Fixture & Accessories | 7d | 2024-12-11 | 2024-12-18 | B08-V01~V08-1310, B08-V01~V08-1330, B08-V01~V08-1260, B07-V25~V32-1370 | 37d | 0d | Elec Fixtures & Accessories Villa & Yard [8]; Elec Cables GF & FF & Earthing [8] | 53,692.2 |  |
| B08-V01~V08-1380 |  | Installation Of Water Tank-Heater & Pumps | 7d | 2024-12-17 | 2024-12-24 | B08-V01~V08-1340, B07-V25~V32-1380, B08-V01~V08-1220 | 21d | 0d | Water Tank & booster Pump [8]; Lower Pump [8]; Heater [8] | 129,756.23 |  |
| B08-V01~V08-1390 |  | Installation Of Parquet | 4d | 2024-12-18 | 2024-12-22 | B08-V01~V08-1350, B07-V25~V32-1390 | 13d | 0d | Installation Of Parquet [8] | 52,978.96 |  |
| B08-V01~V08-1400 |  | Installation Of Wooden Doors | 7d | 2024-12-23 | 2024-12-30 | B08-V01~V08-1390, B07-V25~V32-1400 | 13d | 0d | Wooden Doors Kitchen & Bathroom without Accessories [8]; Wooden Doors Accessories all Villa [8]; Exterior Wooden Doors [8] | 142,105.45 |  |
| B08-V01~V08-1410 |  | Final Face Paint | 7d | 2024-12-31 | 2025-01-07 | B08-V01~V08-1360, B08-V01~V08-1400, B07-V25~V32-1410 | 13d | 0d | Final Face Paint Villa [8] | 31,096.77 |  |

| ID | WBS | Activity | Duration | Start | Finish | Predecessors | Total float | Free float | Resources | Cost |
| --- | --- | --- | --- | --- | --- | --- | --- | --- | --- | --- |
|  | 3 | **Fence & Courtyard Works** |  | 2024-09-24 | 2024-12-28 |  |  |  |  |  |
| B08-V01~V08-1420 |  | Pouring Bedding Concrete For Fence Fondations | 2d | 2024-09-24 | 2024-09-25 | B08-V01~V08-1120, B07-V25~V32-1420 | 9d | 0d | Excavation Fence Foundations [8] | 4,519.28 |
| B08-V01~V08-1430 |  | RC Concrete For Fence Fondations | 6d | 2024-09-26 | 2024-10-02 | B08-V01~V08-1420, B07-V25~V32-1430 | 9d | 0d | Fence Fondations-Eastern side [8]; Fence Fondations-Westren side [8]; Fence Fondations-Back side [8] | 13,420.32 |
| B08-V01~V08-1440 |  | Steel Fixing & Carpentry For Fence Columns | 6d | 2024-10-03 | 2024-10-09 | B08-V01~V08-1430, B07-V25~V32-1440 | 9d | 0d |  |  |
| B08-V01~V08-1450 |  | Establishing Elec For Fence Columns | 4d | 2024-10-10 | 2024-10-14 | B08-V01~V08-1440, B07-V25~V32-1450 | 9d | 0d |  |  |
| B08-V01~V08-1460 |  | Pouring Concrete For Fence Columns | 1d | 2024-10-15 | 2024-10-15 | B08-V01~V08-1450, B07-V25~V32-1460 | 9d | 0d | Fence Columns-Eastern side [8]; Fence Columns-Westren side [8]; Fence Columns-Back side [8] | 9,665.04 |
| B08-V01~V08-1470 |  | Installation Precast Panel For Fence | 5d | 2024-10-16 | 2024-10-21 | B08-V01~V08-1460, B07-V25~V32-1470 | 9d | 0d | Hollow Core Walls [8] | 71,593.2 |
| B08-V01~V08-1480 |  | Bitumen Coating For Fence Fondations | 4d | 2024-10-22 | 2024-10-26 | B08-V01~V08-1470, B07-V25~V32-1480 | 9d | 0d |  |  |
| B08-V01~V08-1490 |  | Pouring Bedding Concrete For "Front" Fence Fondations | 1d | 2024-10-22 | 2024-10-22 | B08-V01~V08-1470, B07-V25~V32-1490 | 21d | 0d |  |  |
| B08-V01~V08-1500 |  | RC Concrete For "Front" Fence Fondations | 4d | 2024-10-23 | 2024-10-27 | B08-V01~V08-1490, B07-V25~V32-1500 | 21d | 0d | Front Fence Fondations [8] | 8,904.4 |
| B08-V01~V08-1510 |  | Outdoor Drainage & Water Line | 5d | 2024-10-27 | 2024-10-31 | B08-V01~V08-1480, B08-V01~V08-1140, B07-V25~V32-1510 | 9d | 0d | Outdoor Drainage [8]; Outdoor Water Line [8] | 13,423.68 |
| B08-V01~V08-1520 |  | Steel Fixing & Carpentry For "Front" Fence Columns | 4d | 2024-10-28 | 2024-10-31 | B08-V01~V08-1500, B07-V25~V32-1520 | 21d | 0d |  |  |
| B08-V01~V08-1530 |  | Establishing Elec For "Front" Fence Columns | 4d | 2024-11-02 | 2024-11-05 | B08-V01~V08-1520, B07-V25~V32-1530 | 21d | 0d |  |  |
| B08-V01~V08-1540 |  | Establishing Elec For Fence & Yard | 2d | 2024-11-02 | 2024-11-03 | B08-V01~V08-1510, B07-V25~V32-1540 | 9d | 0d | Elec Establishment Fence & Yard [8] | 17,898.32 |
| B08-V01~V08-1550 |  | Backfilling the Yard | 4d | 2024-11-04 | 2024-11-07 | B08-V01~V08-1540, B07-V25~V32-1550 | 9d | 0d | Backfilling the Yard [8] | 10,560 |
| B08-V01~V08-1560 |  | Pouring Concrete Wall Of "Front" Fence Columns | 2d | 2024-11-06 | 2024-11-07 | B08-V01~V08-1530, B07-V25~V32-1560 | 21d | 0d | Front Fence Walls [8] | 17,898.32 |
| B08-V01~V08-1570 |  | Pouring Concrete Crown Of "Front" Fence Columns | 3d | 2024-11-09 | 2024-11-11 | B08-V01~V08-1560, B07-V25~V32-1570 | 21d | 0d | Fence Columns - C Chanel [8] | 3,310.37 |
| B08-V01~V08-1580 |  | Bardoura Works For Yard | 5d | 2024-11-09 | 2024-11-13 | B08-V01~V08-1550, B07-V25~V32-1580 | 9d | 0d | Bardoura Works For Yard [8] | 14,408.16 |
| B08-V01~V08-1590 |  | Pouring Concrete Flower Basin Of "Front" Fence Columns | 4d | 2024-11-12 | 2024-11-16 | B08-V01~V08-1570, B07-V25~V32-1590 | 21d | 0d |  |  |
| B08-V01~V08-1600 |  | Antitermite Treatment For Yard | 1d | 2024-11-14 | 2024-11-14 | B08-V01~V08-1580, B07-V25~V32-1600 | 9d | 0d | Antitermite Treatment For Yard [8] |  |
| B08-V01~V08-1610 |  | Pouring Concrete For Yard | 1d | 2024-11-16 | 2024-11-16 | B08-V01~V08-1600, B07-V25~V32-1610 | 9d | 0d |  |  |
| B08-V01~V08-1620 |  | Block Work For Flower Basin | 5d | 2024-11-17 | 2024-11-21 | B08-V01~V08-1610, B07-V25~V32-1620 | 9d | 0d |  |  |
| B08-V01~V08-1630 |  | Plastering Work For Flower Basin | 4d | 2024-11-23 | 2024-11-26 | B08-V01~V08-1620, B07-V25~V32-1630 | 9d | 0d |  |  |
| B08-V01~V08-1640 |  | Interlock Works For The Yard | 6d | 2024-11-27 | 2024-12-03 | B08-V01~V08-1630, B07-V25~V32-1640 | 9d | 0d | Interlock Works For The Yard [8] | 36,776.32 |
| B08-V01~V08-1650 |  | External Grading Works For The Villa | 4d | 2024-12-04 | 2024-12-08 | B08-V01~V08-1640, B07-V25~V32-1650 | 11d | 0d | External Grading Works For The Villa [8] | 3,221.68 |
| B08-V01~V08-1660 |  | Installation The Exterior Door & Garage Door | 5d | 2024-12-04 | 2024-12-09 | B08-V01~V08-1640, B07-V25~V32-1660 | 14d | 2d | Installation The Exterior Door [8]; Installation The Exterior Garage Door [8] | 40,002.72 |
| B08-V01~V08-1670 |  | Fixing Floor Drain For The Yard | 2d | 2024-12-04 | 2024-12-05 | B08-V01~V08-1640, B07-V25~V32-1670 | 17d | 5d | Floor Drain & Clean Out [8] | 13,423.76 |
| B08-V01~V08-1680 |  | Granite Surronds Around The Villa | 4d | 2024-12-09 | 2024-12-12 | B08-V01~V08-1650, B07-V25~V32-1680 | 11d | 2d | Granite Surronds Around The Villa [8] | 25,818.32 |
| B08-V01~V08-1690 |  | Painting The Base Surface Of The Fence | 2d | 2024-12-09 | 2024-12-10 | B08-V01~V08-1750, B07-V25~V32-1690 | 9d | 0d |  |  |
| B08-V01~V08-1700 |  | Painting The Final Face Of The Fence | 4d | 2024-12-11 | 2024-12-15 | B08-V01~V08-1690, B07-V25~V32-1700 | 9d | 0d | Painting Final Face Of The Fence [8] | 37,586.48 |
| B08-V01~V08-1710 |  | Exterior Painting Of The Villa | 7d | 2024-12-16 | 2024-12-23 | B08-V01~V08-1680, B08-V01~V08-1700, B08-V01~V08-1660, B08-V01~V08-1670, B07-V25~V32-1710 | 9d | 0d | Exterior Painting Of The Villa [8]; Exterior Painting Staircase House [8] | 105,684.16 |
| B08-V01~V08-1720 |  | Installation Elec Fixtures & Accessories For The Yard | 4d | 2024-12-24 | 2024-12-28 | B08-V01~V08-1700, B08-V01~V08-1710, B07-V25~V32-1720 | 56d | 0d | Elec feeding panels GF & FF [8] | 22,372.88 |

| ID | WBS | Activity | Duration | Start | Finish | Predecessors | Total float | Free float | Resources | Cost | Department-1 |
| --- | --- | --- | --- | --- | --- | --- | --- | --- | --- | --- | --- |
|  | 5 | **External Sidewalk Works** |  | 2024-11-17 | 2025-01-01 |  |  |  |  |  |  |
| B08-V01~V08-1730 |  | Connection The Drain To The Piblic Network | 3d | 2024-11-17 | 2024-11-19 | B08-V01~V08-1510, B08-V01~V08-1590, B07-V25~V32-1730 | 21d | 4d | Connection Drain To The Piblic Network [8]; Connection Water To The Piblic Network [8] | 13,420.32 |  |
| B08-V01~V08-1740 |  | Pardora Works For The External Sidewalk | 2d | 2024-12-04 | 2024-12-05 | B08-V01~V08-1640, B08-V01~V08-1730, B07-V25~V32-1740 | 9d | 0d |  |  |  |
| B08-V01~V08-1750 |  | Interlock Works For The Exerrnal Sidewalk | 2d | 2024-12-07 | 2024-12-08 | B08-V01~V08-1740, B07-V25~V32-1750 | 9d | 0d |  |  |  |
| B08-V01~V08-1760 |  | Pulling The Villa's Main Elec Cable | 4d | 2024-12-29 | 2025-01-01 | B08-V01~V08-1750, B08-V01~V08-1720, B07-V25~V32-1760 | 56d | 0d | Elec Work Testing [8] | 22,819.84 |  |
|  | 6 | **Final Testing & Handover** |  | 2024-12-25 | 2025-01-20 |  |  |  |  |  |  |
| B08-V01~V08-1770 |  | Mech Work Testing & Handover | 5d | 2024-12-25 | 2024-12-30 | B08-V01~V08-1730, B08-V01~V08-1340, B08-V01~V08-1380, B07-V25~V32-1770 | 63d | 2d | Mech Work Testing & Handover [8] | 14,318.64 |  |
| B08-V01~V08-1780 |  | Arch Snaglist & Handover | 5d | 2024-12-31 | 2025-01-05 | B08-V01~V08-1750, B08-V01~V08-1710, B08-V01~V08-1400, B07-V25~V32-1780 | 58d | 2d | Arch Snaglist & Handover [8] | 77,320.64 |  |
| B08-V01~V08-1790 |  | ElecWork Testing & Handover | 5d | 2025-01-02 | 2025-01-07 | B08-V01~V08-1760, B08-V01~V08-1370, B07-V25~V32-1790 | 56d | 0d | Elec Work Handover [8] | 23,804.72 |  |
| B08-V01~V08-1800 |  | Final Handover Of The Villa To The Consltant | 5d | 2025-01-08 | 2025-01-13 | B08-V01~V08-1780, B08-V01~V08-1790, B08-V01~V08-1770, B08-V01~V08-1410, B07-V25~V32-1800 | 56d | 0d |  |  |  |
| B08-V01~V08-1810 |  | Customer Delivery | 6d | 2025-01-14 | 2025-01-20 | B08-V01~V08-1800, B07-V25~V32-1810 | 56d | 1d |  |  |  |
|  | 30 | **B08-V09~V16** |  | 2024-07-08 | 2025-01-28 |  |  |  |  |  |  |
|  | 2 | **Under Grond Slap Works** |  | 2024-07-08 | 2024-08-17 |  |  |  |  |  |  |
| B08-V09~V16-1000 |  | Excavation&Compaction of Fondation | 6d | 2024-07-08 | 2024-07-14 | B08-V01~V08-1000 | 32d | 0d | Clearing & Groubbing [8]; Excavation & Leveling [8]; Stone Layer [8]; A3 Layer [8]; A1-a 1st Layer [8]; A1-a 2ed Layer [8] | 163,545.76 | Civil |
| B08-V09~V16-1010 |  | Pouring Concrete For Bedding | 2d | 2024-07-15 | 2024-07-16 | B08-V09~V16-1000, B08-V01~V08-1010 | 32d | 0d | PC Carpentry [8]; PC Concrete [8]; RC 18 MPA [9 M3] | 37,899.68 | Civil |
| B08-V09~V16-1020 |  | Reinforcement Concrete For Foundation | 5d | 2024-07-17 | 2024-07-22 | B08-V09~V16-1010, B08-V01~V08-1020 | 32d | 0d | RC Foundation Carpentry [8]; RC Foundation Steel [8]; RC Foundation Concrete [8] | 201,355.92 | Civil |
| B08-V09~V16-1030 |  | Steel Fixing& Carpenter work for Beams | 4d | 2024-07-23 | 2024-07-27 | B08-V09~V16-1020, B08-V01~V08-1030 | 32d | 0d | RC Grade Beam Carpentry & Steel [8] | 44,745.76 | Civil |
| B08-V09~V16-1040 |  | Mech&Elec Establishment for Beams | 3d | 2024-07-28 | 2024-07-30 | B08-V09~V16-1030, B08-V01~V08-1040 | 32d | 0d |  |  | Mech |
| B08-V09~V16-1050 |  | Pouring Concrete For Beams | 1d | 2024-07-31 | 2024-07-31 | B08-V09~V16-1040, B08-V01~V08-1050 | 32d | 0d | RC Grade Beam Concrete [8] | 77,141.68 | Civil |
| B08-V09~V16-1060 |  | Bitmen Coating For Fondation&Beams | 3d | 2024-08-01 | 2024-08-04 | B08-V09~V16-1050, B08-V01~V08-1060 | 32d | 0d | Bitumen Coating Foundations & Grade Beams [8] | 22,372.32 | Civil |
| B08-V09~V16-1070 |  | Backfilling Inside Fondations | 4d | 2024-08-05 | 2024-08-08 | B08-V09~V16-1060, B08-V01~V08-1070 | 32d | 0d | Backfilling 1st Layer [8]; Backfilling 2ed Layer [8] | 11,186.4 | Civil |
| B08-V09~V16-1080 |  | Mech Works Under Grond Slap | 3d | 2024-08-10 | 2024-08-12 | B08-V09~V16-1070, B08-V01~V08-1080 | 32d | 0d | Mech Establishment Under Ground Slap [8] | 13,423.42 | Mech |
| B08-V09~V16-1090 |  | Steel Fixing& Carpenter work for Ground Slap | 3d | 2024-08-13 | 2024-08-15 | B08-V09~V16-1080, B08-V01~V08-1090 | 32d | 0d | Steel & Carpentry For Ground Slap [8] | 10,246.54 | Civil |
| B08-V09~V16-1100 |  | Anti Termite Treatment For Ground Slap | 1d | 2024-08-17 | 2024-08-17 | B08-V09~V16-1090, B08-V01~V08-1100 | 32d | 0d | Anti Termite Treatment nder Ground Slap [8] | 2,237.28 | Civil |
| B08-V09~V16-1110 |  | Pouring Concrete For Ground Slap | 1d | 2024-08-17 | 2024-08-17 | B08-V09~V16-1100 FF, B08-V09~V16-1090, B08-V01~V08-1110 | 32d | 5d | Concrete For Ground Slap [8] | 58,169.52 | Civil |

| ID | WBS | Activity | Duration | Start | Finish | Predecessors | Total float | Free float | Resources | Cost | Department-1 |
| --- | --- | --- | --- | --- | --- | --- | --- | --- | --- | --- | --- |
|  | 4 | **Precast Works** |  | 2024-09-24 | 2024-10-01 |  |  |  |  |  |  |
| B08-V09~V16-1120 |  | Precast Constrction | 7d | 2024-09-24 | 2024-10-01 | B08-V09~V16-1110, B08-V01~V08-1120 | 0d |  | Precast Walls GF [8]; Hollow Core Slap GF [8]; Precast Stairs & staircase House [8]; Thermal insollation Outside Walls [8]; Concrete structure joints [8]; Precast Walls FF [8]; Hollow Core Slap FF [8] | 1,513,762.87 | Civil |
|  | 1 | **Works Inside The Villa** |  | 2024-10-02 | 2025-01-15 |  |  |  |  |  |  |
| B08-V09~V16-1130 |  | Block Work For GF & Estabishment 1F | 6d | 2024-10-02 | 2024-10-08 | B08-V09~V16-1120, B08-V01~V08-1130 | 13d | 0d | Block GF [8] | 13,647.1 | Arc |
| B08-V09~V16-1140 |  | L.L & H.L Drainage | 6d | 2024-10-09 | 2024-10-15 | B08-V09~V16-1130, B08-V01~V08-1140 | 13d | 0d | HL Drainage [8]; L.L Drainage [8] | 89,489.28 | Mech |
| B08-V09~V16-1150 |  | Elec Establishment For GF & 1F | 3d | 2024-10-09 | 2024-10-12 | B08-V09~V16-1130, B08-V01~V08-1150 | 16d | 3d | Elec Establishment GF [8] | 26,840.73 | Elec |
| B08-V09~V16-1160 |  | Screed Work For 1F & Roof | 6d | 2024-10-16 | 2024-10-22 | B08-V09~V16-1140, B08-V09~V16-1150, B08-V01~V08-1160 | 13d | 0d | Screed 1st Floor [8]; Screed Roof Floor [8]; Leveling Screed 1st Floor [8]; Leveling Screed Roof Floor [8] | 268,467.85 | Civil |
| B08-V09~V16-1170 |  | Water Tank & Heater Foundations | 4d | 2024-10-23 | 2024-10-27 | B08-V09~V16-1160, B08-V01~V08-1170 | 17d | 0d |  |  | Civil |
| B08-V09~V16-1180 |  | Block Works For 1F | 3d | 2024-10-23 | 2024-10-26 | B08-V09~V16-1160, B08-V01~V08-1180 | 13d | 0d | Block FF [8] | 20,537.81 | Arc |
| B08-V09~V16-1190 |  | Water Line Network | 6d | 2024-10-27 | 2024-11-02 | B08-V09~V16-1180, B08-V01~V08-1190 | 13d | 0d | Water Line Network [8] | 40,261.13 | Mech |
| B08-V09~V16-1200 |  | Continue Elec Establishment For GF & 1F | 3d | 2024-10-27 | 2024-10-29 | B08-V09~V16-1180, B08-V01~V08-1200 | 16d | 3d | Elec Establishment FF [8] | 26,840.73 | Elec |
| B08-V09~V16-1210 |  | Thermal Insulation For Roof | 5d | 2024-10-28 | 2024-11-02 | B08-V09~V16-1170, B08-V01~V08-1210 | 17d | 0d | Roof Insulation [8] | 32,530.16 | Arc |
| B08-V09~V16-1220 |  | Roof Floor Tiles | 6d | 2024-11-03 | 2024-11-09 | B08-V09~V16-1210, B08-V01~V08-1220 | 17d | 1d | Roof Tiles [8]; Roof Tiles Joints [8]; Re_Test Roof Insulation [8] | 63,179.38 | Arc |
| B08-V09~V16-1230 |  | Plaster Work For Villa | 6d | 2024-11-03 | 2024-11-09 | B08-V09~V16-1190, B08-V09~V16-1200, B08-V01~V08-1230 | 13d | 0d | Establishing a plastering GF [8]; Establishing a plastering FF [8]; Plastering GF [8]; Plastering FF [8] | 49,263.81 |  |
| B08-V09~V16-1240 |  | Marbale Stairs & Handrails | 6d | 2024-11-10 | 2024-11-16 | B08-V09~V16-1230, B08-V01~V08-1240 | 35d | 1d | Marbale Stairs [8]; Stairs Handrails SS [8] | 91,494.69 |  |
| B08-V09~V16-1250 |  | Water Proofing Of Bathrooms | 4d | 2024-11-10 | 2024-11-13 | B08-V09~V16-1230, B08-V01~V08-1250 | 13d | 0d | Bathrooms InsulationGF & FF [8] | 134.24 |  |
| B08-V09~V16-1260 |  | Pulling The Elec Wires | 4d | 2024-11-10 | 2024-11-13 | B08-V09~V16-1230, B08-V01~V08-1260 | 23d | 3d | Elec Wires GF [8]; Elec Wires FF [8] | 80,542.4 |  |
| B08-V09~V16-1270 |  | Bathroom Tiles | 4d | 2024-11-14 | 2024-11-18 | B08-V09~V16-1250, B08-V09~V16-1220, B08-V01~V08-1270 | 13d | 0d | Ceramic Walls Kitchen [8]; Ceramic Walls Bathrooms GF [8]; Ceramic Walls Bathrooms FF [8]; Ceramic Tiles Bathrooms GF [8]; Ceramic Tiles Kitchen GF [8]; Ceramic Tiles Store GF [8] | 73,204.08 |  |
| B08-V09~V16-1280 |  | Structure For Gypsum | 6d | 2024-11-19 | 2024-11-25 | B08-V09~V16-1270, B08-V01~V08-1280 | 13d | 0d | Structure For Gypsum GF Rooms [8]; Structure For Gypsum FF Rooms [8]; Structure For Gypsum Bathrooms & Kitchen [8] | 33,550.81 |  |
| B08-V09~V16-1290 |  | Gypsum Board For Room | 4d | 2024-11-26 | 2024-11-30 | B08-V09~V16-1280, B08-V09~V16-1260, B08-V01~V08-1290 | 13d | 0d | Gypsum Board For GF Room [8]; Gypsum Board For FF Room [8] | 35,796.64 |  |
| B08-V09~V16-1300 |  | Installation Of Gypsum Board For Bathroom & Kitchen | 4d | 2024-12-01 | 2024-12-04 | B08-V09~V16-1290, B08-V01~V08-1300 | 13d | 0d | Gypsum Board For Bathrooms & Kitchen [8] | 11,052.24 |  |
| B08-V09~V16-1310 |  | Putty Filler For Gypsm Board Ceiling | 6d | 2024-12-05 | 2024-12-11 | B08-V09~V16-1300, B08-V01~V08-1310 | 13d | 0d | Putty Filler 1st Layer Roof all Rooms [8]; Putty Filler 1st Layer Roof all Bathrooms & Kitchen [8]; Putty Filler1st Layer walls [8] | 62,182.52 |  |
| B08-V09~V16-1320 |  | Fixing Shower Glass | 4d | 2024-12-12 | 2024-12-16 | B08-V09~V16-1310, B08-V01~V08-1320 | 21d | 0d | Shower Glass [8] | 22,372.88 |  |
| B08-V09~V16-1330 |  | Interior Wall Putty Filler | 6d | 2024-12-12 | 2024-12-18 | B08-V09~V16-1310, B08-V09~V16-1240, B08-V01~V08-1330 | 13d | 0d | Putty Filler 2ed Layer Roof & WAlls GF [8]; Putty Filler 2ed Layer Roof & WAlls FF [8] | 62,150.21 |  |
| B08-V09~V16-1340 |  | Installation Of Sanitry Fixture | 7d | 2024-12-17 | 2024-12-24 | B08-V09~V16-1320, B08-V01~V08-1340 | 21d | 0d | Mech Fixtures & Accessories [8] | 98,435.64 |  |
| B08-V09~V16-1350 |  | 1st Face Paint | 6d | 2024-12-19 | 2024-12-25 | B08-V09~V16-1330, B08-V01~V08-1350 | 13d | 0d |  |  |  |
| B08-V09~V16-1360 |  | Installation Of Aluminum Windows | 7d | 2024-12-19 | 2024-12-26 | B08-V09~V16-1330, B08-V01~V08-1360 | 23d | 0d | Aluminum Windows [8] | 84,795.68 |  |
| B08-V09~V16-1370 |  | Installation Of Elec Fixture & Accessories | 7d | 2024-12-19 | 2024-12-26 | B08-V09~V16-1310, B08-V09~V16-1330, B08-V09~V16-1260, B08-V01~V08-1370 | 37d | 0d | Elec Fixtures & Accessories Villa & Yard [8]; Elec Cables GF & FF & Earthing [8] | 53,692.2 |  |
| B08-V09~V16-1380 |  | Installation Of Water Tank-Heater & Pumps | 7d | 2024-12-25 | 2025-01-01 | B08-V09~V16-1340, B08-V01~V08-1380, B08-V09~V16-1220 | 21d | 0d | Water Tank & booster Pump [8]; Lower Pump [8]; Heater [8] | 129,756.23 |  |
| B08-V09~V16-1390 |  | Installation Of Parquet | 4d | 2024-12-26 | 2024-12-30 | B08-V09~V16-1350, B08-V01~V08-1390 | 13d | 0d | Installation Of Parquet [8] | 52,978.96 |  |
| B08-V09~V16-1400 |  | Installation Of Wooden Doors | 7d | 2024-12-31 | 2025-01-07 | B08-V09~V16-1390, B08-V01~V08-1400 | 13d | 0d | Wooden Doors Kitchen & Bathroom without Accessories [8]; Wooden Doors Accessories all Villa [8]; Exterior Wooden Doors [8] | 142,105.45 |  |
| B08-V09~V16-1410 |  | Final Face Paint | 7d | 2025-01-08 | 2025-01-15 | B08-V09~V16-1360, B08-V09~V16-1400, B08-V01~V08-1410 | 13d | 0d | Final Face Paint Villa [8] | 31,096.77 |  |

| ID | WBS | Activity | Duration | Start | Finish | Predecessors | Total float | Free float | Resources | Cost |
| --- | --- | --- | --- | --- | --- | --- | --- | --- | --- | --- |
|  | 3 | **Fence & Courtyard Works** |  | 2024-10-02 | 2025-01-05 |  |  |  |  |  |
| B08-V09~V16-1420 |  | Pouring Bedding Concrete For Fence Fondations | 2d | 2024-10-02 | 2024-10-03 | B08-V09~V16-1120, B08-V01~V08-1420 | 9d | 0d | Excavation Fence Foundations [8] | 4,519.28 |
| B08-V09~V16-1430 |  | RC Concrete For Fence Fondations | 6d | 2024-10-05 | 2024-10-10 | B08-V09~V16-1420, B08-V01~V08-1430 | 9d | 0d | Fence Fondations-Eastern side [8]; Fence Fondations-Westren side [8]; Fence Fondations-Back side [8] | 13,420.32 |
| B08-V09~V16-1440 |  | Steel Fixing & Carpentry For Fence Columns | 6d | 2024-10-12 | 2024-10-17 | B08-V09~V16-1430, B08-V01~V08-1440 | 9d | 0d |  |  |
| B08-V09~V16-1450 |  | Establishing Elec For Fence Columns | 4d | 2024-10-19 | 2024-10-22 | B08-V09~V16-1440, B08-V01~V08-1450 | 9d | 0d |  |  |
| B08-V09~V16-1460 |  | Pouring Concrete For Fence Columns | 1d | 2024-10-23 | 2024-10-23 | B08-V09~V16-1450, B08-V01~V08-1460 | 9d | 0d | Fence Columns-Eastern side [8]; Fence Columns-Westren side [8]; Fence Columns-Back side [8] | 9,665.04 |
| B08-V09~V16-1470 |  | Installation Precast Panel For Fence | 5d | 2024-10-24 | 2024-10-29 | B08-V09~V16-1460, B08-V01~V08-1470 | 9d | 0d | Hollow Core Walls [8] | 71,593.2 |
| B08-V09~V16-1480 |  | Bitumen Coating For Fence Fondations | 4d | 2024-10-30 | 2024-11-03 | B08-V09~V16-1470, B08-V01~V08-1480 | 9d | 0d |  |  |
| B08-V09~V16-1490 |  | Pouring Bedding Concrete For "Front" Fence Fondations | 1d | 2024-10-30 | 2024-10-30 | B08-V09~V16-1470, B08-V01~V08-1490 | 21d | 0d |  |  |
| B08-V09~V16-1500 |  | RC Concrete For "Front" Fence Fondations | 4d | 2024-10-31 | 2024-11-04 | B08-V09~V16-1490, B08-V01~V08-1500 | 21d | 0d | Front Fence Fondations [8] | 8,904.4 |
| B08-V09~V16-1510 |  | Outdoor Drainage & Water Line | 5d | 2024-11-04 | 2024-11-09 | B08-V09~V16-1480, B08-V09~V16-1140, B08-V01~V08-1510 | 9d | 0d | Outdoor Drainage [8]; Outdoor Water Line [8] | 13,423.68 |
| B08-V09~V16-1520 |  | Steel Fixing & Carpentry For "Front" Fence Columns | 4d | 2024-11-05 | 2024-11-09 | B08-V09~V16-1500, B08-V01~V08-1520 | 21d | 0d |  |  |
| B08-V09~V16-1530 |  | Establishing Elec For "Front" Fence Columns | 4d | 2024-11-10 | 2024-11-13 | B08-V09~V16-1520, B08-V01~V08-1530 | 21d | 0d |  |  |
| B08-V09~V16-1540 |  | Establishing Elec For Fence & Yard | 2d | 2024-11-10 | 2024-11-11 | B08-V09~V16-1510, B08-V01~V08-1540 | 9d | 0d | Elec Establishment Fence & Yard [8] | 17,898.32 |
| B08-V09~V16-1550 |  | Backfilling the Yard | 4d | 2024-11-12 | 2024-11-16 | B08-V09~V16-1540, B08-V01~V08-1550 | 9d | 0d | Backfilling the Yard [8] | 10,560 |
| B08-V09~V16-1560 |  | Pouring Concrete Wall Of "Front" Fence Columns | 2d | 2024-11-14 | 2024-11-16 | B08-V09~V16-1530, B08-V01~V08-1560 | 21d | 0d | Front Fence Walls [8] | 17,898.32 |
| B08-V09~V16-1570 |  | Pouring Concrete Crown Of "Front" Fence Columns | 3d | 2024-11-17 | 2024-11-19 | B08-V09~V16-1560, B08-V01~V08-1570 | 21d | 0d | Fence Columns - C Chanel [8] | 3,310.37 |
| B08-V09~V16-1580 |  | Bardoura Works For Yard | 5d | 2024-11-17 | 2024-11-21 | B08-V09~V16-1550, B08-V01~V08-1580 | 9d | 0d | Bardoura Works For Yard [8] | 14,408.16 |
| B08-V09~V16-1590 |  | Pouring Concrete Flower Basin Of "Front" Fence Columns | 4d | 2024-11-20 | 2024-11-24 | B08-V09~V16-1570, B08-V01~V08-1590 | 21d | 0d |  |  |
| B08-V09~V16-1600 |  | Antitermite Treatment For Yard | 1d | 2024-11-23 | 2024-11-23 | B08-V09~V16-1580, B08-V01~V08-1600 | 9d | 0d | Antitermite Treatment For Yard [8] |  |
| B08-V09~V16-1610 |  | Pouring Concrete For Yard | 1d | 2024-11-24 | 2024-11-24 | B08-V09~V16-1600, B08-V01~V08-1610 | 9d | 0d |  |  |
| B08-V09~V16-1620 |  | Block Work For Flower Basin | 5d | 2024-11-25 | 2024-11-30 | B08-V09~V16-1610, B08-V01~V08-1620 | 9d | 0d |  |  |
| B08-V09~V16-1630 |  | Plastering Work For Flower Basin | 4d | 2024-12-01 | 2024-12-04 | B08-V09~V16-1620, B08-V01~V08-1630 | 9d | 0d |  |  |
| B08-V09~V16-1640 |  | Interlock Works For The Yard | 6d | 2024-12-05 | 2024-12-11 | B08-V09~V16-1630, B08-V01~V08-1640 | 9d | 0d | Interlock Works For The Yard [8] | 36,776.32 |
| B08-V09~V16-1650 |  | External Grading Works For The Villa | 4d | 2024-12-12 | 2024-12-16 | B08-V09~V16-1640, B08-V01~V08-1650 | 11d | 0d | External Grading Works For The Villa [8] | 3,221.68 |
| B08-V09~V16-1660 |  | Installation The Exterior Door & Garage Door | 5d | 2024-12-12 | 2024-12-17 | B08-V09~V16-1640, B08-V01~V08-1660 | 14d | 2d | Installation The Exterior Door [8]; Installation The Exterior Garage Door [8] | 40,002.72 |
| B08-V09~V16-1670 |  | Fixing Floor Drain For The Yard | 2d | 2024-12-12 | 2024-12-14 | B08-V09~V16-1640, B08-V01~V08-1670 | 17d | 5d | Floor Drain & Clean Out [8] | 13,423.76 |
| B08-V09~V16-1680 |  | Granite Surronds Around The Villa | 4d | 2024-12-17 | 2024-12-21 | B08-V09~V16-1650, B08-V01~V08-1680 | 11d | 2d | Granite Surronds Around The Villa [8] | 25,818.32 |
| B08-V09~V16-1690 |  | Painting The Base Surface Of The Fence | 2d | 2024-12-17 | 2024-12-18 | B08-V09~V16-1750, B08-V01~V08-1690 | 9d | 0d |  |  |
| B08-V09~V16-1700 |  | Painting The Final Face Of The Fence | 4d | 2024-12-19 | 2024-12-23 | B08-V09~V16-1690, B08-V01~V08-1700 | 9d | 0d | Painting Final Face Of The Fence [8] | 37,586.48 |
| B08-V09~V16-1710 |  | Exterior Painting Of The Villa | 7d | 2024-12-24 | 2024-12-31 | B08-V09~V16-1680, B08-V09~V16-1700, B08-V09~V16-1660, B08-V09~V16-1670, B08-V01~V08-1710 | 9d | 0d | Exterior Painting Of The Villa [8]; Exterior Painting Staircase House [8] | 105,684.16 |
| B08-V09~V16-1720 |  | Installation Elec Fixtures & Accessories For The Yard | 4d | 2025-01-01 | 2025-01-05 | B08-V09~V16-1700, B08-V09~V16-1710, B08-V01~V08-1720 | 55d | 0d | Elec feeding panels GF & FF [8] | 22,372.88 |

| ID | WBS | Activity | Duration | Start | Finish | Predecessors | Total float | Free float | Resources | Cost | Department-1 |
| --- | --- | --- | --- | --- | --- | --- | --- | --- | --- | --- | --- |
|  | 5 | **External Sidewalk Works** |  | 2024-11-25 | 2025-01-09 |  |  |  |  |  |  |
| B08-V09~V16-1730 |  | Connection The Drain To The Piblic Network | 3d | 2024-11-25 | 2024-11-27 | B08-V09~V16-1510, B08-V09~V16-1590, B08-V01~V08-1730 | 21d | 4d | Connection Drain To The Piblic Network [8]; Connection Water To The Piblic Network [8] | 13,420.32 |  |
| B08-V09~V16-1740 |  | Pardora Works For The External Sidewalk | 2d | 2024-12-12 | 2024-12-14 | B08-V09~V16-1640, B08-V09~V16-1730, B08-V01~V08-1740 | 9d | 0d |  |  |  |
| B08-V09~V16-1750 |  | Interlock Works For The Exerrnal Sidewalk | 2d | 2024-12-15 | 2024-12-16 | B08-V09~V16-1740, B08-V01~V08-1750 | 9d | 0d |  |  |  |
| B08-V09~V16-1760 |  | Pulling The Villa's Main Elec Cable | 4d | 2025-01-06 | 2025-01-09 | B08-V09~V16-1750, B08-V09~V16-1720, B08-V01~V08-1760 | 55d | 0d | Elec Work Testing [8] | 22,819.84 |  |
|  | 6 | **Final Testing & Handover** |  | 2025-01-02 | 2025-01-28 |  |  |  |  |  |  |
| B08-V09~V16-1770 |  | Mech Work Testing & Handover | 5d | 2025-01-02 | 2025-01-07 | B08-V09~V16-1730, B08-V09~V16-1340, B08-V09~V16-1380, B08-V01~V08-1770 | 62d | 2d | Mech Work Testing & Handover [8] | 14,318.64 |  |
| B08-V09~V16-1780 |  | Arch Snaglist & Handover | 5d | 2025-01-08 | 2025-01-13 | B08-V09~V16-1750, B08-V09~V16-1710, B08-V09~V16-1400, B08-V01~V08-1780 | 57d | 2d | Arch Snaglist & Handover [8] | 77,320.64 |  |
| B08-V09~V16-1790 |  | ElecWork Testing & Handover | 5d | 2025-01-11 | 2025-01-15 | B08-V09~V16-1760, B08-V09~V16-1370, B08-V01~V08-1790 | 55d | 0d | Elec Work Handover [8] | 23,804.72 |  |
| B08-V09~V16-1800 |  | Final Handover Of The Villa To The Consltant | 5d | 2025-01-16 | 2025-01-21 | B08-V09~V16-1780, B08-V09~V16-1790, B08-V09~V16-1770, B08-V09~V16-1410, B08-V01~V08-1800 | 55d | 0d |  |  |  |
| B08-V09~V16-1810 |  | Customer Delivery | 6d | 2025-01-22 | 2025-01-28 | B08-V09~V16-1800, B08-V01~V08-1810 | 55d | 1d |  |  |  |
|  | 31 | **B08-V17~V24** |  | 2024-07-15 | 2025-02-05 |  |  |  |  |  |  |
|  | 2 | **Under Grond Slap Works** |  | 2024-07-15 | 2024-08-24 |  |  |  |  |  |  |
| B08-V17~V24-1000 |  | Excavation&Compaction of Fondation | 6d | 2024-07-15 | 2024-07-21 | B08-V09~V16-1000 | 33d | 0d | Clearing & Groubbing [8]; Excavation & Leveling [8]; Stone Layer [8]; A3 Layer [8]; A1-a 1st Layer [8]; A1-a 2ed Layer [8] | 163,545.76 | Civil |
| B08-V17~V24-1010 |  | Pouring Concrete For Bedding | 2d | 2024-07-22 | 2024-07-23 | B08-V17~V24-1000, B08-V09~V16-1010 | 33d | 0d | PC Carpentry [8]; PC Concrete [8]; RC 18 MPA [9 M3] | 37,899.68 | Civil |
| B08-V17~V24-1020 |  | Reinforcement Concrete For Foundation | 5d | 2024-07-24 | 2024-07-29 | B08-V17~V24-1010, B08-V09~V16-1020 | 33d | 0d | RC Foundation Carpentry [8]; RC Foundation Steel [8]; RC Foundation Concrete [8] | 201,355.92 | Civil |
| B08-V17~V24-1030 |  | Steel Fixing& Carpenter work for Beams | 4d | 2024-07-30 | 2024-08-03 | B08-V17~V24-1020, B08-V09~V16-1030 | 33d | 0d | RC Grade Beam Carpentry & Steel [8] | 44,745.76 | Civil |
| B08-V17~V24-1040 |  | Mech&Elec Establishment for Beams | 3d | 2024-08-04 | 2024-08-06 | B08-V17~V24-1030, B08-V09~V16-1040 | 33d | 0d |  |  | Mech |
| B08-V17~V24-1050 |  | Pouring Concrete For Beams | 1d | 2024-08-07 | 2024-08-07 | B08-V17~V24-1040, B08-V09~V16-1050 | 33d | 0d | RC Grade Beam Concrete [8] | 77,141.68 | Civil |
| B08-V17~V24-1060 |  | Bitmen Coating For Fondation&Beams | 3d | 2024-08-08 | 2024-08-11 | B08-V17~V24-1050, B08-V09~V16-1060 | 33d | 0d | Bitumen Coating Foundations & Grade Beams [8] | 22,372.32 | Civil |
| B08-V17~V24-1070 |  | Backfilling Inside Fondations | 4d | 2024-08-12 | 2024-08-15 | B08-V17~V24-1060, B08-V09~V16-1070 | 33d | 0d | Backfilling 1st Layer [8]; Backfilling 2ed Layer [8] | 11,186.4 | Civil |
| B08-V17~V24-1080 |  | Mech Works Under Grond Slap | 3d | 2024-08-17 | 2024-08-19 | B08-V17~V24-1070, B08-V09~V16-1080 | 33d | 0d | Mech Establishment Under Ground Slap [8] | 13,423.42 | Mech |
| B08-V17~V24-1090 |  | Steel Fixing& Carpenter work for Ground Slap | 3d | 2024-08-20 | 2024-08-22 | B08-V17~V24-1080, B08-V09~V16-1090 | 33d | 0d | Steel & Carpentry For Ground Slap [8] | 10,246.54 | Civil |
| B08-V17~V24-1100 |  | Anti Termite Treatment For Ground Slap | 1d | 2024-08-24 | 2024-08-24 | B08-V17~V24-1090, B08-V09~V16-1100 | 33d | 0d | Anti Termite Treatment nder Ground Slap [8] | 2,237.28 | Civil |
| B08-V17~V24-1110 |  | Pouring Concrete For Ground Slap | 1d | 2024-08-24 | 2024-08-24 | B08-V17~V24-1100 FF, B08-V17~V24-1090, B08-V09~V16-1110 | 33d | 5d | Concrete For Ground Slap [8] | 58,169.52 | Civil |

| ID | WBS | Activity | Duration | Start | Finish | Predecessors | Total float | Free float | Resources | Cost | Department-1 |
| --- | --- | --- | --- | --- | --- | --- | --- | --- | --- | --- | --- |
|  | 4 | **Precast Works** |  | 2024-10-02 | 2024-10-09 |  |  |  |  |  |  |
| B08-V17~V24-1120 |  | Precast Constrction | 7d | 2024-10-02 | 2024-10-09 | B08-V17~V24-1110, B08-V09~V16-1120 | 0d |  | Precast Walls GF [8]; Hollow Core Slap GF [8]; Precast Stairs & staircase House [8]; Thermal insollation Outside Walls [8]; Concrete structure joints [8]; Precast Walls FF [8]; Hollow Core Slap FF [8] | 1,513,762.87 | Civil |
|  | 1 | **Works Inside The Villa** |  | 2024-10-10 | 2025-01-23 |  |  |  |  |  |  |
| B08-V17~V24-1130 |  | Block Work For GF & Estabishment 1F | 6d | 2024-10-10 | 2024-10-16 | B08-V17~V24-1120, B08-V09~V16-1130 | 13d | 0d | Block GF [8] | 13,647.1 | Arc |
| B08-V17~V24-1140 |  | L.L & H.L Drainage | 6d | 2024-10-17 | 2024-10-23 | B08-V17~V24-1130, B08-V09~V16-1140 | 13d | 0d | HL Drainage [8]; L.L Drainage [8] | 89,489.28 | Mech |
| B08-V17~V24-1150 |  | Elec Establishment For GF & 1F | 3d | 2024-10-17 | 2024-10-20 | B08-V17~V24-1130, B08-V09~V16-1150 | 16d | 3d | Elec Establishment GF [8] | 26,840.73 | Elec |
| B08-V17~V24-1160 |  | Screed Work For 1F & Roof | 6d | 2024-10-24 | 2024-10-30 | B08-V17~V24-1140, B08-V17~V24-1150, B08-V09~V16-1160 | 13d | 0d | Screed 1st Floor [8]; Screed Roof Floor [8]; Leveling Screed 1st Floor [8]; Leveling Screed Roof Floor [8] | 268,467.85 | Civil |
| B08-V17~V24-1170 |  | Water Tank & Heater Foundations | 4d | 2024-10-31 | 2024-11-04 | B08-V17~V24-1160, B08-V09~V16-1170 | 17d | 0d |  |  | Civil |
| B08-V17~V24-1180 |  | Block Works For 1F | 3d | 2024-10-31 | 2024-11-03 | B08-V17~V24-1160, B08-V09~V16-1180 | 13d | 0d | Block FF [8] | 20,537.81 | Arc |
| B08-V17~V24-1190 |  | Water Line Network | 6d | 2024-11-04 | 2024-11-10 | B08-V17~V24-1180, B08-V09~V16-1190 | 13d | 0d | Water Line Network [8] | 40,261.13 | Mech |
| B08-V17~V24-1200 |  | Continue Elec Establishment For GF & 1F | 3d | 2024-11-04 | 2024-11-06 | B08-V17~V24-1180, B08-V09~V16-1200 | 16d | 3d | Elec Establishment FF [8] | 26,840.73 | Elec |
| B08-V17~V24-1210 |  | Thermal Insulation For Roof | 5d | 2024-11-05 | 2024-11-10 | B08-V17~V24-1170, B08-V09~V16-1210 | 17d | 0d | Roof Insulation [8] | 32,530.16 | Arc |
| B08-V17~V24-1220 |  | Roof Floor Tiles | 6d | 2024-11-11 | 2024-11-17 | B08-V17~V24-1210, B08-V09~V16-1220 | 17d | 1d | Roof Tiles [8]; Roof Tiles Joints [8]; Re_Test Roof Insulation [8] | 63,179.38 | Arc |
| B08-V17~V24-1230 |  | Plaster Work For Villa | 6d | 2024-11-11 | 2024-11-17 | B08-V17~V24-1190, B08-V17~V24-1200, B08-V09~V16-1230 | 13d | 0d | Establishing a plastering GF [8]; Establishing a plastering FF [8]; Plastering GF [8]; Plastering FF [8] | 49,263.81 |  |
| B08-V17~V24-1240 |  | Marbale Stairs & Handrails | 6d | 2024-11-18 | 2024-11-24 | B08-V17~V24-1230, B08-V09~V16-1240 | 35d | 1d | Marbale Stairs [8]; Stairs Handrails SS [8] | 91,494.69 |  |
| B08-V17~V24-1250 |  | Water Proofing Of Bathrooms | 4d | 2024-11-18 | 2024-11-21 | B08-V17~V24-1230, B08-V09~V16-1250 | 13d | 0d | Bathrooms InsulationGF & FF [8] | 134.24 |  |
| B08-V17~V24-1260 |  | Pulling The Elec Wires | 4d | 2024-11-18 | 2024-11-21 | B08-V17~V24-1230, B08-V09~V16-1260 | 23d | 3d | Elec Wires GF [8]; Elec Wires FF [8] | 80,542.4 |  |
| B08-V17~V24-1270 |  | Bathroom Tiles | 4d | 2024-11-23 | 2024-11-26 | B08-V17~V24-1250, B08-V17~V24-1220, B08-V09~V16-1270 | 13d | 0d | Ceramic Walls Kitchen [8]; Ceramic Walls Bathrooms GF [8]; Ceramic Walls Bathrooms FF [8]; Ceramic Tiles Bathrooms GF [8]; Ceramic Tiles Kitchen GF [8]; Ceramic Tiles Store GF [8] | 73,204.08 |  |
| B08-V17~V24-1280 |  | Structure For Gypsum | 6d | 2024-11-27 | 2024-12-03 | B08-V17~V24-1270, B08-V09~V16-1280 | 13d | 0d | Structure For Gypsum GF Rooms [8]; Structure For Gypsum FF Rooms [8]; Structure For Gypsum Bathrooms & Kitchen [8] | 33,550.81 |  |
| B08-V17~V24-1290 |  | Gypsum Board For Room | 4d | 2024-12-04 | 2024-12-08 | B08-V17~V24-1280, B08-V17~V24-1260, B08-V09~V16-1290 | 13d | 0d | Gypsum Board For GF Room [8]; Gypsum Board For FF Room [8] | 35,796.64 |  |
| B08-V17~V24-1300 |  | Installation Of Gypsum Board For Bathroom & Kitchen | 4d | 2024-12-09 | 2024-12-12 | B08-V17~V24-1290, B08-V09~V16-1300 | 13d | 0d | Gypsum Board For Bathrooms & Kitchen [8] | 11,052.24 |  |
| B08-V17~V24-1310 |  | Putty Filler For Gypsm Board Ceiling | 6d | 2024-12-14 | 2024-12-19 | B08-V17~V24-1300, B08-V09~V16-1310 | 13d | 0d | Putty Filler 1st Layer Roof all Rooms [8]; Putty Filler 1st Layer Roof all Bathrooms & Kitchen [8]; Putty Filler1st Layer walls [8] | 62,182.52 |  |
| B08-V17~V24-1320 |  | Fixing Shower Glass | 4d | 2024-12-21 | 2024-12-24 | B08-V17~V24-1310, B08-V09~V16-1320 | 21d | 0d | Shower Glass [8] | 22,372.88 |  |
| B08-V17~V24-1330 |  | Interior Wall Putty Filler | 6d | 2024-12-21 | 2024-12-26 | B08-V17~V24-1310, B08-V17~V24-1240, B08-V09~V16-1330 | 13d | 0d | Putty Filler 2ed Layer Roof & WAlls GF [8]; Putty Filler 2ed Layer Roof & WAlls FF [8] | 62,150.21 |  |
| B08-V17~V24-1340 |  | Installation Of Sanitry Fixture | 7d | 2024-12-25 | 2025-01-01 | B08-V17~V24-1320, B08-V09~V16-1340 | 21d | 0d | Mech Fixtures & Accessories [8] | 98,435.64 |  |
| B08-V17~V24-1350 |  | 1st Face Paint | 6d | 2024-12-28 | 2025-01-02 | B08-V17~V24-1330, B08-V09~V16-1350 | 13d | 0d |  |  |  |
| B08-V17~V24-1360 |  | Installation Of Aluminum Windows | 7d | 2024-12-28 | 2025-01-04 | B08-V17~V24-1330, B08-V09~V16-1360 | 23d | 0d | Aluminum Windows [8] | 84,795.68 |  |
| B08-V17~V24-1370 |  | Installation Of Elec Fixture & Accessories | 7d | 2024-12-28 | 2025-01-04 | B08-V17~V24-1310, B08-V17~V24-1330, B08-V17~V24-1260, B08-V09~V16-1370 | 37d | 0d | Elec Fixtures & Accessories Villa & Yard [8]; Elec Cables GF & FF & Earthing [8] | 53,692.2 |  |
| B08-V17~V24-1380 |  | Installation Of Water Tank-Heater & Pumps | 7d | 2025-01-02 | 2025-01-09 | B08-V17~V24-1340, B08-V09~V16-1380, B08-V17~V24-1220 | 21d | 0d | Water Tank & booster Pump [8]; Lower Pump [8]; Heater [8] | 129,756.23 |  |
| B08-V17~V24-1390 |  | Installation Of Parquet | 4d | 2025-01-04 | 2025-01-07 | B08-V17~V24-1350, B08-V09~V16-1390 | 13d | 0d | Installation Of Parquet [8] | 52,978.96 |  |
| B08-V17~V24-1400 |  | Installation Of Wooden Doors | 7d | 2025-01-08 | 2025-01-15 | B08-V17~V24-1390, B08-V09~V16-1400 | 13d | 0d | Wooden Doors Kitchen & Bathroom without Accessories [8]; Wooden Doors Accessories all Villa [8]; Exterior Wooden Doors [8] | 142,105.45 |  |
| B08-V17~V24-1410 |  | Final Face Paint | 7d | 2025-01-16 | 2025-01-23 | B08-V17~V24-1360, B08-V17~V24-1400, B08-V09~V16-1410 | 13d | 0d | Final Face Paint Villa [8] | 31,096.77 |  |

| ID | WBS | Activity | Duration | Start | Finish | Predecessors | Total float | Free float | Resources | Cost |
| --- | --- | --- | --- | --- | --- | --- | --- | --- | --- | --- |
|  | 3 | **Fence & Courtyard Works** |  | 2024-10-10 | 2025-01-13 |  |  |  |  |  |
| B08-V17~V24-1420 |  | Pouring Bedding Concrete For Fence Fondations | 2d | 2024-10-10 | 2024-10-12 | B08-V17~V24-1120, B08-V09~V16-1420 | 9d | 0d | Excavation Fence Foundations [8] | 4,519.28 |
| B08-V17~V24-1430 |  | RC Concrete For Fence Fondations | 6d | 2024-10-13 | 2024-10-19 | B08-V17~V24-1420, B08-V09~V16-1430 | 9d | 0d | Fence Fondations-Eastern side [8]; Fence Fondations-Westren side [8]; Fence Fondations-Back side [8] | 13,420.32 |
| B08-V17~V24-1440 |  | Steel Fixing & Carpentry For Fence Columns | 6d | 2024-10-20 | 2024-10-26 | B08-V17~V24-1430, B08-V09~V16-1440 | 9d | 0d |  |  |
| B08-V17~V24-1450 |  | Establishing Elec For Fence Columns | 4d | 2024-10-27 | 2024-10-30 | B08-V17~V24-1440, B08-V09~V16-1450 | 9d | 0d |  |  |
| B08-V17~V24-1460 |  | Pouring Concrete For Fence Columns | 1d | 2024-10-31 | 2024-10-31 | B08-V17~V24-1450, B08-V09~V16-1460 | 9d | 0d | Fence Columns-Eastern side [8]; Fence Columns-Westren side [8]; Fence Columns-Back side [8] | 9,665.04 |
| B08-V17~V24-1470 |  | Installation Precast Panel For Fence | 5d | 2024-11-02 | 2024-11-06 | B08-V17~V24-1460, B08-V09~V16-1470 | 9d | 0d | Hollow Core Walls [8] | 71,593.2 |
| B08-V17~V24-1480 |  | Bitumen Coating For Fence Fondations | 4d | 2024-11-07 | 2024-11-11 | B08-V17~V24-1470, B08-V09~V16-1480 | 9d | 0d |  |  |
| B08-V17~V24-1490 |  | Pouring Bedding Concrete For "Front" Fence Fondations | 1d | 2024-11-07 | 2024-11-07 | B08-V17~V24-1470, B08-V09~V16-1490 | 21d | 0d |  |  |
| B08-V17~V24-1500 |  | RC Concrete For "Front" Fence Fondations | 4d | 2024-11-09 | 2024-11-12 | B08-V17~V24-1490, B08-V09~V16-1500 | 21d | 0d | Front Fence Fondations [8] | 8,904.4 |
| B08-V17~V24-1510 |  | Outdoor Drainage & Water Line | 5d | 2024-11-12 | 2024-11-17 | B08-V17~V24-1480, B08-V17~V24-1140, B08-V09~V16-1510 | 9d | 0d | Outdoor Drainage [8]; Outdoor Water Line [8] | 13,423.68 |
| B08-V17~V24-1520 |  | Steel Fixing & Carpentry For "Front" Fence Columns | 4d | 2024-11-13 | 2024-11-17 | B08-V17~V24-1500, B08-V09~V16-1520 | 21d | 0d |  |  |
| B08-V17~V24-1530 |  | Establishing Elec For "Front" Fence Columns | 4d | 2024-11-18 | 2024-11-21 | B08-V17~V24-1520, B08-V09~V16-1530 | 21d | 0d |  |  |
| B08-V17~V24-1540 |  | Establishing Elec For Fence & Yard | 2d | 2024-11-18 | 2024-11-19 | B08-V17~V24-1510, B08-V09~V16-1540 | 9d | 0d | Elec Establishment Fence & Yard [8] | 17,898.32 |
| B08-V17~V24-1550 |  | Backfilling the Yard | 4d | 2024-11-20 | 2024-11-24 | B08-V17~V24-1540, B08-V09~V16-1550 | 9d | 0d | Backfilling the Yard [8] | 10,560 |
| B08-V17~V24-1560 |  | Pouring Concrete Wall Of "Front" Fence Columns | 2d | 2024-11-23 | 2024-11-24 | B08-V17~V24-1530, B08-V09~V16-1560 | 21d | 0d | Front Fence Walls [8] | 17,898.32 |
| B08-V17~V24-1570 |  | Pouring Concrete Crown Of "Front" Fence Columns | 3d | 2024-11-25 | 2024-11-27 | B08-V17~V24-1560, B08-V09~V16-1570 | 21d | 0d | Fence Columns - C Chanel [8] | 3,310.37 |
| B08-V17~V24-1580 |  | Bardoura Works For Yard | 5d | 2024-11-25 | 2024-11-30 | B08-V17~V24-1550, B08-V09~V16-1580 | 9d | 0d | Bardoura Works For Yard [8] | 14,408.16 |
| B08-V17~V24-1590 |  | Pouring Concrete Flower Basin Of "Front" Fence Columns | 4d | 2024-11-28 | 2024-12-02 | B08-V17~V24-1570, B08-V09~V16-1590 | 21d | 0d |  |  |
| B08-V17~V24-1600 |  | Antitermite Treatment For Yard | 1d | 2024-12-01 | 2024-12-01 | B08-V17~V24-1580, B08-V09~V16-1600 | 9d | 0d | Antitermite Treatment For Yard [8] |  |
| B08-V17~V24-1610 |  | Pouring Concrete For Yard | 1d | 2024-12-02 | 2024-12-02 | B08-V17~V24-1600, B08-V09~V16-1610 | 9d | 0d |  |  |
| B08-V17~V24-1620 |  | Block Work For Flower Basin | 5d | 2024-12-03 | 2024-12-08 | B08-V17~V24-1610, B08-V09~V16-1620 | 9d | 0d |  |  |
| B08-V17~V24-1630 |  | Plastering Work For Flower Basin | 4d | 2024-12-09 | 2024-12-12 | B08-V17~V24-1620, B08-V09~V16-1630 | 9d | 0d |  |  |
| B08-V17~V24-1640 |  | Interlock Works For The Yard | 6d | 2024-12-14 | 2024-12-19 | B08-V17~V24-1630, B08-V09~V16-1640 | 9d | 0d | Interlock Works For The Yard [8] | 36,776.32 |
| B08-V17~V24-1650 |  | External Grading Works For The Villa | 4d | 2024-12-21 | 2024-12-24 | B08-V17~V24-1640, B08-V09~V16-1650 | 11d | 0d | External Grading Works For The Villa [8] | 3,221.68 |
| B08-V17~V24-1660 |  | Installation The Exterior Door & Garage Door | 5d | 2024-12-21 | 2024-12-25 | B08-V17~V24-1640, B08-V09~V16-1660 | 14d | 2d | Installation The Exterior Door [8]; Installation The Exterior Garage Door [8] | 40,002.72 |
| B08-V17~V24-1670 |  | Fixing Floor Drain For The Yard | 2d | 2024-12-21 | 2024-12-22 | B08-V17~V24-1640, B08-V09~V16-1670 | 17d | 5d | Floor Drain & Clean Out [8] | 13,423.76 |
| B08-V17~V24-1680 |  | Granite Surronds Around The Villa | 4d | 2024-12-25 | 2024-12-29 | B08-V17~V24-1650, B08-V09~V16-1680 | 11d | 2d | Granite Surronds Around The Villa [8] | 25,818.32 |
| B08-V17~V24-1690 |  | Painting The Base Surface Of The Fence | 2d | 2024-12-25 | 2024-12-26 | B08-V17~V24-1750, B08-V09~V16-1690 | 9d | 0d |  |  |
| B08-V17~V24-1700 |  | Painting The Final Face Of The Fence | 4d | 2024-12-28 | 2024-12-31 | B08-V17~V24-1690, B08-V09~V16-1700 | 9d | 0d | Painting Final Face Of The Fence [8] | 37,586.48 |
| B08-V17~V24-1710 |  | Exterior Painting Of The Villa | 7d | 2025-01-01 | 2025-01-08 | B08-V17~V24-1680, B08-V17~V24-1700, B08-V17~V24-1660, B08-V17~V24-1670, B08-V09~V16-1710 | 9d | 0d | Exterior Painting Of The Villa [8]; Exterior Painting Staircase House [8] | 105,684.16 |
| B08-V17~V24-1720 |  | Installation Elec Fixtures & Accessories For The Yard | 4d | 2025-01-09 | 2025-01-13 | B08-V17~V24-1700, B08-V17~V24-1710, B08-V09~V16-1720 | 54d | 0d | Elec feeding panels GF & FF [8] | 22,372.88 |

| ID | WBS | Activity | Duration | Start | Finish | Predecessors | Total float | Free float | Resources | Cost | Department-1 |
| --- | --- | --- | --- | --- | --- | --- | --- | --- | --- | --- | --- |
|  | 5 | **External Sidewalk Works** |  | 2024-12-03 | 2025-01-18 |  |  |  |  |  |  |
| B08-V17~V24-1730 |  | Connection The Drain To The Piblic Network | 3d | 2024-12-03 | 2024-12-05 | B08-V17~V24-1510, B08-V17~V24-1590, B08-V09~V16-1730 | 21d | 4d | Connection Drain To The Piblic Network [8]; Connection Water To The Piblic Network [8] | 13,420.32 |  |
| B08-V17~V24-1740 |  | Pardora Works For The External Sidewalk | 2d | 2024-12-21 | 2024-12-22 | B08-V17~V24-1640, B08-V17~V24-1730, B08-V09~V16-1740 | 9d | 0d |  |  |  |
| B08-V17~V24-1750 |  | Interlock Works For The Exerrnal Sidewalk | 2d | 2024-12-23 | 2024-12-24 | B08-V17~V24-1740, B08-V09~V16-1750 | 9d | 0d |  |  |  |
| B08-V17~V24-1760 |  | Pulling The Villa's Main Elec Cable | 4d | 2025-01-14 | 2025-01-18 | B08-V17~V24-1750, B08-V17~V24-1720, B08-V09~V16-1760 | 54d | 0d | Elec Work Testing [8] | 22,819.84 |  |
|  | 6 | **Final Testing & Handover** |  | 2025-01-11 | 2025-02-05 |  |  |  |  |  |  |
| B08-V17~V24-1770 |  | Mech Work Testing & Handover | 5d | 2025-01-11 | 2025-01-15 | B08-V17~V24-1730, B08-V17~V24-1340, B08-V17~V24-1380, B08-V09~V16-1770 | 61d | 2d | Mech Work Testing & Handover [8] | 14,318.64 |  |
| B08-V17~V24-1780 |  | Arch Snaglist & Handover | 5d | 2025-01-16 | 2025-01-21 | B08-V17~V24-1750, B08-V17~V24-1710, B08-V17~V24-1400, B08-V09~V16-1780 | 56d | 2d | Arch Snaglist & Handover [8] | 77,320.64 |  |
| B08-V17~V24-1790 |  | ElecWork Testing & Handover | 5d | 2025-01-19 | 2025-01-23 | B08-V17~V24-1760, B08-V17~V24-1370, B08-V09~V16-1790 | 54d | 0d | Elec Work Handover [8] | 23,804.72 |  |
| B08-V17~V24-1800 |  | Final Handover Of The Villa To The Consltant | 5d | 2025-01-25 | 2025-01-29 | B08-V17~V24-1780, B08-V17~V24-1790, B08-V17~V24-1770, B08-V17~V24-1410, B08-V09~V16-1800 | 54d | 0d |  |  |  |
| B08-V17~V24-1810 |  | Customer Delivery | 6d | 2025-01-30 | 2025-02-05 | B08-V17~V24-1800, B08-V09~V16-1810 | 54d | 1d |  |  |  |
|  | 32 | **B08-V25~V32** |  | 2024-07-22 | 2025-02-13 |  |  |  |  |  |  |
|  | 2 | **Under Grond Slap Works** |  | 2024-07-22 | 2024-08-31 |  |  |  |  |  |  |
| B08-V25~V32-1000 |  | Excavation&Compaction of Fondation | 6d | 2024-07-22 | 2024-07-28 | B08-V17~V24-1000 | 34d | 0d | Clearing & Groubbing [8]; Excavation & Leveling [8]; Stone Layer [8]; A3 Layer [8]; A1-a 1st Layer [8]; A1-a 2ed Layer [8] | 163,545.76 | Civil |
| B08-V25~V32-1010 |  | Pouring Concrete For Bedding | 2d | 2024-07-29 | 2024-07-30 | B08-V25~V32-1000, B08-V17~V24-1010 | 34d | 0d | PC Carpentry [8]; PC Concrete [8]; RC 18 MPA [9 M3] | 37,899.68 | Civil |
| B08-V25~V32-1020 |  | Reinforcement Concrete For Foundation | 5d | 2024-07-31 | 2024-08-05 | B08-V25~V32-1010, B08-V17~V24-1020 | 34d | 0d | RC Foundation Carpentry [8]; RC Foundation Steel [8]; RC Foundation Concrete [8] | 201,355.92 | Civil |
| B08-V25~V32-1030 |  | Steel Fixing& Carpenter work for Beams | 4d | 2024-08-06 | 2024-08-10 | B08-V25~V32-1020, B08-V17~V24-1030 | 34d | 0d | RC Grade Beam Carpentry & Steel [8] | 44,745.76 | Civil |
| B08-V25~V32-1040 |  | Mech&Elec Establishment for Beams | 3d | 2024-08-11 | 2024-08-13 | B08-V25~V32-1030, B08-V17~V24-1040 | 34d | 0d |  |  | Mech |
| B08-V25~V32-1050 |  | Pouring Concrete For Beams | 1d | 2024-08-14 | 2024-08-14 | B08-V25~V32-1040, B08-V17~V24-1050 | 34d | 0d | RC Grade Beam Concrete [8] | 77,141.68 | Civil |
| B08-V25~V32-1060 |  | Bitmen Coating For Fondation&Beams | 3d | 2024-08-15 | 2024-08-18 | B08-V25~V32-1050, B08-V17~V24-1060 | 34d | 0d | Bitumen Coating Foundations & Grade Beams [8] | 22,372.32 | Civil |
| B08-V25~V32-1070 |  | Backfilling Inside Fondations | 4d | 2024-08-19 | 2024-08-22 | B08-V25~V32-1060, B08-V17~V24-1070 | 34d | 0d | Backfilling 1st Layer [8]; Backfilling 2ed Layer [8] | 11,186.4 | Civil |
| B08-V25~V32-1080 |  | Mech Works Under Grond Slap | 3d | 2024-08-24 | 2024-08-26 | B08-V25~V32-1070, B08-V17~V24-1080 | 34d | 0d | Mech Establishment Under Ground Slap [8] | 13,423.42 | Mech |
| B08-V25~V32-1090 |  | Steel Fixing& Carpenter work for Ground Slap | 3d | 2024-08-27 | 2024-08-29 | B08-V25~V32-1080, B08-V17~V24-1090 | 34d | 0d | Steel & Carpentry For Ground Slap [8] | 10,246.54 | Civil |
| B08-V25~V32-1100 |  | Anti Termite Treatment For Ground Slap | 1d | 2024-08-31 | 2024-08-31 | B08-V25~V32-1090, B08-V17~V24-1100 | 34d | 0d | Anti Termite Treatment nder Ground Slap [8] | 2,237.28 | Civil |
| B08-V25~V32-1110 |  | Pouring Concrete For Ground Slap | 1d | 2024-08-31 | 2024-08-31 | B08-V25~V32-1100 FF, B08-V25~V32-1090, B08-V17~V24-1110 | 34d | 5d | Concrete For Ground Slap [8] | 58,169.52 | Civil |

| ID | WBS | Activity | Duration | Start | Finish | Predecessors | Total float | Free float | Resources | Cost | Department-1 |
| --- | --- | --- | --- | --- | --- | --- | --- | --- | --- | --- | --- |
|  | 4 | **Precast Works** |  | 2024-10-10 | 2024-10-17 |  |  |  |  |  |  |
| B08-V25~V32-1120 |  | Precast Constrction | 7d | 2024-10-10 | 2024-10-17 | B08-V25~V32-1110, B08-V17~V24-1120 | 0d |  | Precast Walls GF [8]; Hollow Core Slap GF [8]; Precast Stairs & staircase House [8]; Thermal insollation Outside Walls [8]; Concrete structure joints [8]; Precast Walls FF [8]; Hollow Core Slap FF [8] | 1,513,762.87 | Civil |
|  | 1 | **Works Inside The Villa** |  | 2024-10-19 | 2025-02-01 |  |  |  |  |  |  |
| B08-V25~V32-1130 |  | Block Work For GF & Estabishment 1F | 6d | 2024-10-19 | 2024-10-24 | B08-V25~V32-1120, B08-V17~V24-1130 | 13d | 0d | Block GF [8] | 13,647.1 | Arc |
| B08-V25~V32-1140 |  | L.L & H.L Drainage | 6d | 2024-10-26 | 2024-10-31 | B08-V25~V32-1130, B08-V17~V24-1140 | 13d | 0d | HL Drainage [8]; L.L Drainage [8] | 89,489.28 | Mech |
| B08-V25~V32-1150 |  | Elec Establishment For GF & 1F | 3d | 2024-10-26 | 2024-10-28 | B08-V25~V32-1130, B08-V17~V24-1150 | 16d | 3d | Elec Establishment GF [8] | 26,840.73 | Elec |
| B08-V25~V32-1160 |  | Screed Work For 1F & Roof | 6d | 2024-11-02 | 2024-11-07 | B08-V25~V32-1140, B08-V25~V32-1150, B08-V17~V24-1160 | 13d | 0d | Screed 1st Floor [8]; Screed Roof Floor [8]; Leveling Screed 1st Floor [8]; Leveling Screed Roof Floor [8] | 268,467.85 | Civil |
| B08-V25~V32-1170 |  | Water Tank & Heater Foundations | 4d | 2024-11-09 | 2024-11-12 | B08-V25~V32-1160, B08-V17~V24-1170 | 17d | 0d |  |  | Civil |
| B08-V25~V32-1180 |  | Block Works For 1F | 3d | 2024-11-09 | 2024-11-11 | B08-V25~V32-1160, B08-V17~V24-1180 | 13d | 0d | Block FF [8] | 20,537.81 | Arc |
| B08-V25~V32-1190 |  | Water Line Network | 6d | 2024-11-12 | 2024-11-18 | B08-V25~V32-1180, B08-V17~V24-1190 | 13d | 0d | Water Line Network [8] | 40,261.13 | Mech |
| B08-V25~V32-1200 |  | Continue Elec Establishment For GF & 1F | 3d | 2024-11-12 | 2024-11-14 | B08-V25~V32-1180, B08-V17~V24-1200 | 16d | 3d | Elec Establishment FF [8] | 26,840.73 | Elec |
| B08-V25~V32-1210 |  | Thermal Insulation For Roof | 5d | 2024-11-13 | 2024-11-18 | B08-V25~V32-1170, B08-V17~V24-1210 | 17d | 0d | Roof Insulation [8] | 32,530.16 | Arc |
| B08-V25~V32-1220 |  | Roof Floor Tiles | 6d | 2024-11-19 | 2024-11-25 | B08-V25~V32-1210, B08-V17~V24-1220 | 17d | 1d | Roof Tiles [8]; Roof Tiles Joints [8]; Re_Test Roof Insulation [8] | 63,179.38 | Arc |
| B08-V25~V32-1230 |  | Plaster Work For Villa | 6d | 2024-11-19 | 2024-11-25 | B08-V25~V32-1190, B08-V25~V32-1200, B08-V17~V24-1230 | 13d | 0d | Establishing a plastering GF [8]; Establishing a plastering FF [8]; Plastering GF [8]; Plastering FF [8] | 49,263.81 |  |
| B08-V25~V32-1240 |  | Marbale Stairs & Handrails | 6d | 2024-11-26 | 2024-12-02 | B08-V25~V32-1230, B08-V17~V24-1240 | 35d | 1d | Marbale Stairs [8]; Stairs Handrails SS [8] | 91,494.69 |  |
| B08-V25~V32-1250 |  | Water Proofing Of Bathrooms | 4d | 2024-11-26 | 2024-11-30 | B08-V25~V32-1230, B08-V17~V24-1250 | 13d | 0d | Bathrooms InsulationGF & FF [8] | 134.24 |  |
| B08-V25~V32-1260 |  | Pulling The Elec Wires | 4d | 2024-11-26 | 2024-11-30 | B08-V25~V32-1230, B08-V17~V24-1260 | 23d | 3d | Elec Wires GF [8]; Elec Wires FF [8] | 80,542.4 |  |
| B08-V25~V32-1270 |  | Bathroom Tiles | 4d | 2024-12-01 | 2024-12-04 | B08-V25~V32-1250, B08-V25~V32-1220, B08-V17~V24-1270 | 13d | 0d | Ceramic Walls Kitchen [8]; Ceramic Walls Bathrooms GF [8]; Ceramic Walls Bathrooms FF [8]; Ceramic Tiles Bathrooms GF [8]; Ceramic Tiles Kitchen GF [8]; Ceramic Tiles Store GF [8] | 73,204.08 |  |
| B08-V25~V32-1280 |  | Structure For Gypsum | 6d | 2024-12-05 | 2024-12-11 | B08-V25~V32-1270, B08-V17~V24-1280 | 13d | 0d | Structure For Gypsum GF Rooms [8]; Structure For Gypsum FF Rooms [8]; Structure For Gypsum Bathrooms & Kitchen [8] | 33,550.81 |  |
| B08-V25~V32-1290 |  | Gypsum Board For Room | 4d | 2024-12-12 | 2024-12-16 | B08-V25~V32-1280, B08-V25~V32-1260, B08-V17~V24-1290 | 13d | 0d | Gypsum Board For GF Room [8]; Gypsum Board For FF Room [8] | 35,796.64 |  |
| B08-V25~V32-1300 |  | Installation Of Gypsum Board For Bathroom & Kitchen | 4d | 2024-12-17 | 2024-12-21 | B08-V25~V32-1290, B08-V17~V24-1300 | 13d | 0d | Gypsum Board For Bathrooms & Kitchen [8] | 11,052.24 |  |
| B08-V25~V32-1310 |  | Putty Filler For Gypsm Board Ceiling | 6d | 2024-12-22 | 2024-12-28 | B08-V25~V32-1300, B08-V17~V24-1310 | 13d | 0d | Putty Filler 1st Layer Roof all Rooms [8]; Putty Filler 1st Layer Roof all Bathrooms & Kitchen [8]; Putty Filler1st Layer walls [8] | 62,182.52 |  |
| B08-V25~V32-1320 |  | Fixing Shower Glass | 4d | 2024-12-29 | 2025-01-01 | B08-V25~V32-1310, B08-V17~V24-1320 | 21d | 0d | Shower Glass [8] | 22,372.88 |  |
| B08-V25~V32-1330 |  | Interior Wall Putty Filler | 6d | 2024-12-29 | 2025-01-04 | B08-V25~V32-1310, B08-V25~V32-1240, B08-V17~V24-1330 | 13d | 0d | Putty Filler 2ed Layer Roof & WAlls GF [8]; Putty Filler 2ed Layer Roof & WAlls FF [8] | 62,150.21 |  |
| B08-V25~V32-1340 |  | Installation Of Sanitry Fixture | 7d | 2025-01-02 | 2025-01-09 | B08-V25~V32-1320, B08-V17~V24-1340 | 21d | 0d | Mech Fixtures & Accessories [8] | 98,435.64 |  |
| B08-V25~V32-1350 |  | 1st Face Paint | 6d | 2025-01-05 | 2025-01-11 | B08-V25~V32-1330, B08-V17~V24-1350 | 13d | 0d |  |  |  |
| B08-V25~V32-1360 |  | Installation Of Aluminum Windows | 7d | 2025-01-05 | 2025-01-12 | B08-V25~V32-1330, B08-V17~V24-1360 | 23d | 0d | Aluminum Windows [8] | 84,795.68 |  |
| B08-V25~V32-1370 |  | Installation Of Elec Fixture & Accessories | 7d | 2025-01-05 | 2025-01-12 | B08-V25~V32-1310, B08-V25~V32-1330, B08-V25~V32-1260, B08-V17~V24-1370 | 37d | 0d | Elec Fixtures & Accessories Villa & Yard [8]; Elec Cables GF & FF & Earthing [8] | 53,692.2 |  |
| B08-V25~V32-1380 |  | Installation Of Water Tank-Heater & Pumps | 7d | 2025-01-11 | 2025-01-18 | B08-V25~V32-1340, B08-V17~V24-1380, B08-V25~V32-1220 | 21d | 0d | Water Tank & booster Pump [8]; Lower Pump [8]; Heater [8] | 129,756.23 |  |
| B08-V25~V32-1390 |  | Installation Of Parquet | 4d | 2025-01-12 | 2025-01-15 | B08-V25~V32-1350, B08-V17~V24-1390 | 13d | 0d | Installation Of Parquet [8] | 52,978.96 |  |
| B08-V25~V32-1400 |  | Installation Of Wooden Doors | 7d | 2025-01-16 | 2025-01-23 | B08-V25~V32-1390, B08-V17~V24-1400 | 13d | 0d | Wooden Doors Kitchen & Bathroom without Accessories [8]; Wooden Doors Accessories all Villa [8]; Exterior Wooden Doors [8] | 142,105.45 |  |
| B08-V25~V32-1410 |  | Final Face Paint | 7d | 2025-01-25 | 2025-02-01 | B08-V25~V32-1360, B08-V25~V32-1400, B08-V17~V24-1410 | 13d | 0d | Final Face Paint Villa [8] | 31,096.77 |  |

| ID | WBS | Activity | Duration | Start | Finish | Predecessors | Total float | Free float | Resources | Cost |
| --- | --- | --- | --- | --- | --- | --- | --- | --- | --- | --- |
|  | 3 | **Fence & Courtyard Works** |  | 2024-10-19 | 2025-01-21 |  |  |  |  |  |
| B08-V25~V32-1420 |  | Pouring Bedding Concrete For Fence Fondations | 2d | 2024-10-19 | 2024-10-20 | B08-V25~V32-1120, B08-V17~V24-1420 | 9d | 0d | Excavation Fence Foundations [8] | 4,519.28 |
| B08-V25~V32-1430 |  | RC Concrete For Fence Fondations | 6d | 2024-10-21 | 2024-10-27 | B08-V25~V32-1420, B08-V17~V24-1430 | 9d | 0d | Fence Fondations-Eastern side [8]; Fence Fondations-Westren side [8]; Fence Fondations-Back side [8] | 13,420.32 |
| B08-V25~V32-1440 |  | Steel Fixing & Carpentry For Fence Columns | 6d | 2024-10-28 | 2024-11-03 | B08-V25~V32-1430, B08-V17~V24-1440 | 9d | 0d |  |  |
| B08-V25~V32-1450 |  | Establishing Elec For Fence Columns | 4d | 2024-11-04 | 2024-11-07 | B08-V25~V32-1440, B08-V17~V24-1450 | 9d | 0d |  |  |
| B08-V25~V32-1460 |  | Pouring Concrete For Fence Columns | 1d | 2024-11-09 | 2024-11-09 | B08-V25~V32-1450, B08-V17~V24-1460 | 9d | 0d | Fence Columns-Eastern side [8]; Fence Columns-Westren side [8]; Fence Columns-Back side [8] | 9,665.04 |
| B08-V25~V32-1470 |  | Installation Precast Panel For Fence | 5d | 2024-11-10 | 2024-11-14 | B08-V25~V32-1460, B08-V17~V24-1470 | 9d | 0d | Hollow Core Walls [8] | 71,593.2 |
| B08-V25~V32-1480 |  | Bitumen Coating For Fence Fondations | 4d | 2024-11-16 | 2024-11-19 | B08-V25~V32-1470, B08-V17~V24-1480 | 9d | 0d |  |  |
| B08-V25~V32-1490 |  | Pouring Bedding Concrete For "Front" Fence Fondations | 1d | 2024-11-16 | 2024-11-16 | B08-V25~V32-1470, B08-V17~V24-1490 | 21d | 0d |  |  |
| B08-V25~V32-1500 |  | RC Concrete For "Front" Fence Fondations | 4d | 2024-11-17 | 2024-11-20 | B08-V25~V32-1490, B08-V17~V24-1500 | 21d | 0d | Front Fence Fondations [8] | 8,904.4 |
| B08-V25~V32-1510 |  | Outdoor Drainage & Water Line | 5d | 2024-11-20 | 2024-11-25 | B08-V25~V32-1480, B08-V25~V32-1140, B08-V17~V24-1510 | 9d | 0d | Outdoor Drainage [8]; Outdoor Water Line [8] | 13,423.68 |
| B08-V25~V32-1520 |  | Steel Fixing & Carpentry For "Front" Fence Columns | 4d | 2024-11-21 | 2024-11-25 | B08-V25~V32-1500, B08-V17~V24-1520 | 21d | 0d |  |  |
| B08-V25~V32-1530 |  | Establishing Elec For "Front" Fence Columns | 4d | 2024-11-26 | 2024-11-30 | B08-V25~V32-1520, B08-V17~V24-1530 | 21d | 0d |  |  |
| B08-V25~V32-1540 |  | Establishing Elec For Fence & Yard | 2d | 2024-11-26 | 2024-11-27 | B08-V25~V32-1510, B08-V17~V24-1540 | 9d | 0d | Elec Establishment Fence & Yard [8] | 17,898.32 |
| B08-V25~V32-1550 |  | Backfilling the Yard | 4d | 2024-11-28 | 2024-12-02 | B08-V25~V32-1540, B08-V17~V24-1550 | 9d | 0d | Backfilling the Yard [8] | 10,560 |
| B08-V25~V32-1560 |  | Pouring Concrete Wall Of "Front" Fence Columns | 2d | 2024-12-01 | 2024-12-02 | B08-V25~V32-1530, B08-V17~V24-1560 | 21d | 0d | Front Fence Walls [8] | 17,898.32 |
| B08-V25~V32-1570 |  | Pouring Concrete Crown Of "Front" Fence Columns | 3d | 2024-12-03 | 2024-12-05 | B08-V25~V32-1560, B08-V17~V24-1570 | 21d | 0d | Fence Columns - C Chanel [8] | 3,310.37 |
| B08-V25~V32-1580 |  | Bardoura Works For Yard | 5d | 2024-12-03 | 2024-12-08 | B08-V25~V32-1550, B08-V17~V24-1580 | 9d | 0d | Bardoura Works For Yard [8] | 14,408.16 |
| B08-V25~V32-1590 |  | Pouring Concrete Flower Basin Of "Front" Fence Columns | 4d | 2024-12-07 | 2024-12-10 | B08-V25~V32-1570, B08-V17~V24-1590 | 21d | 0d |  |  |
| B08-V25~V32-1600 |  | Antitermite Treatment For Yard | 1d | 2024-12-09 | 2024-12-09 | B08-V25~V32-1580, B08-V17~V24-1600 | 9d | 0d | Antitermite Treatment For Yard [8] |  |
| B08-V25~V32-1610 |  | Pouring Concrete For Yard | 1d | 2024-12-10 | 2024-12-10 | B08-V25~V32-1600, B08-V17~V24-1610 | 9d | 0d |  |  |
| B08-V25~V32-1620 |  | Block Work For Flower Basin | 5d | 2024-12-11 | 2024-12-16 | B08-V25~V32-1610, B08-V17~V24-1620 | 9d | 0d |  |  |
| B08-V25~V32-1630 |  | Plastering Work For Flower Basin | 4d | 2024-12-17 | 2024-12-21 | B08-V25~V32-1620, B08-V17~V24-1630 | 9d | 0d |  |  |
| B08-V25~V32-1640 |  | Interlock Works For The Yard | 6d | 2024-12-22 | 2024-12-28 | B08-V25~V32-1630, B08-V17~V24-1640 | 9d | 0d | Interlock Works For The Yard [8] | 36,776.32 |
| B08-V25~V32-1650 |  | External Grading Works For The Villa | 4d | 2024-12-29 | 2025-01-01 | B08-V25~V32-1640, B08-V17~V24-1650 | 11d | 0d | External Grading Works For The Villa [8] | 3,221.68 |
| B08-V25~V32-1660 |  | Installation The Exterior Door & Garage Door | 5d | 2024-12-29 | 2025-01-02 | B08-V25~V32-1640, B08-V17~V24-1660 | 14d | 2d | Installation The Exterior Door [8]; Installation The Exterior Garage Door [8] | 40,002.72 |
| B08-V25~V32-1670 |  | Fixing Floor Drain For The Yard | 2d | 2024-12-29 | 2024-12-30 | B08-V25~V32-1640, B08-V17~V24-1670 | 17d | 5d | Floor Drain & Clean Out [8] | 13,423.76 |
| B08-V25~V32-1680 |  | Granite Surronds Around The Villa | 4d | 2025-01-02 | 2025-01-06 | B08-V25~V32-1650, B08-V17~V24-1680 | 11d | 2d | Granite Surronds Around The Villa [8] | 25,818.32 |
| B08-V25~V32-1690 |  | Painting The Base Surface Of The Fence | 2d | 2025-01-02 | 2025-01-04 | B08-V25~V32-1750, B08-V17~V24-1690 | 9d | 0d |  |  |
| B08-V25~V32-1700 |  | Painting The Final Face Of The Fence | 4d | 2025-01-05 | 2025-01-08 | B08-V25~V32-1690, B08-V17~V24-1700 | 9d | 0d | Painting Final Face Of The Fence [8] | 37,586.48 |
| B08-V25~V32-1710 |  | Exterior Painting Of The Villa | 7d | 2025-01-09 | 2025-01-16 | B08-V25~V32-1680, B08-V25~V32-1700, B08-V25~V32-1660, B08-V25~V32-1670, B08-V17~V24-1710 | 9d | 0d | Exterior Painting Of The Villa [8]; Exterior Painting Staircase House [8] | 105,684.16 |
| B08-V25~V32-1720 |  | Installation Elec Fixtures & Accessories For The Yard | 4d | 2025-01-18 | 2025-01-21 | B08-V25~V32-1700, B08-V25~V32-1710, B08-V17~V24-1720 | 53d | 0d | Elec feeding panels GF & FF [8] | 22,372.88 |

| ID | WBS | Activity | Duration | Start | Finish | Predecessors | Total float | Free float | Resources | Cost | Department-1 |
| --- | --- | --- | --- | --- | --- | --- | --- | --- | --- | --- | --- |
|  | 5 | **External Sidewalk Works** |  | 2024-12-11 | 2025-01-26 |  |  |  |  |  |  |
| B08-V25~V32-1730 |  | Connection The Drain To The Piblic Network | 3d | 2024-12-11 | 2024-12-14 | B08-V25~V32-1510, B08-V25~V32-1590, B08-V17~V24-1730 | 21d | 4d | Connection Drain To The Piblic Network [8]; Connection Water To The Piblic Network [8] | 13,420.32 |  |
| B08-V25~V32-1740 |  | Pardora Works For The External Sidewalk | 2d | 2024-12-29 | 2024-12-30 | B08-V25~V32-1640, B08-V25~V32-1730, B08-V17~V24-1740 | 9d | 0d |  |  |  |
| B08-V25~V32-1750 |  | Interlock Works For The Exerrnal Sidewalk | 2d | 2024-12-31 | 2025-01-01 | B08-V25~V32-1740, B08-V17~V24-1750 | 9d | 0d |  |  |  |
| B08-V25~V32-1760 |  | Pulling The Villa's Main Elec Cable | 4d | 2025-01-22 | 2025-01-26 | B08-V25~V32-1750, B08-V25~V32-1720, B08-V17~V24-1760 | 53d | 0d | Elec Work Testing [8] | 22,819.84 |  |
|  | 6 | **Final Testing & Handover** |  | 2025-01-19 | 2025-02-13 |  |  |  |  |  |  |
| B08-V25~V32-1770 |  | Mech Work Testing & Handover | 5d | 2025-01-19 | 2025-01-23 | B08-V25~V32-1730, B08-V25~V32-1340, B08-V25~V32-1380, B08-V17~V24-1770 | 60d | 2d | Mech Work Testing & Handover [8] | 14,318.64 |  |
| B08-V25~V32-1780 |  | Arch Snaglist & Handover | 5d | 2025-01-25 | 2025-01-29 | B08-V25~V32-1750, B08-V25~V32-1710, B08-V25~V32-1400, B08-V17~V24-1780 | 55d | 2d | Arch Snaglist & Handover [8] | 77,320.64 |  |
| B08-V25~V32-1790 |  | ElecWork Testing & Handover | 5d | 2025-01-27 | 2025-02-01 | B08-V25~V32-1760, B08-V25~V32-1370, B08-V17~V24-1790 | 53d | 0d | Elec Work Handover [8] | 23,804.72 |  |
| B08-V25~V32-1800 |  | Final Handover Of The Villa To The Consltant | 5d | 2025-02-02 | 2025-02-06 | B08-V25~V32-1780, B08-V25~V32-1790, B08-V25~V32-1770, B08-V25~V32-1410, B08-V17~V24-1800 | 53d | 0d |  |  |  |
| B08-V25~V32-1810 |  | Customer Delivery | 6d | 2025-02-08 | 2025-02-13 | B08-V25~V32-1800, B08-V17~V24-1810 | 53d | 1d |  |  |  |
|  | 33 | **Contruction Works-1** |  | 2024-07-29 | 2025-10-19 |  |  |  |  |  |  |
|  | 7 | **B09-V01~V08** |  | 2024-07-29 | 2025-02-22 |  |  |  |  |  |  |
|  | 2 | **Under Grond Slap Works** |  | 2024-07-29 | 2024-09-07 |  |  |  |  |  |  |
| B09-V01~V08-1000 |  | Excavation&Compaction of Fondation | 6d | 2024-07-29 | 2024-08-04 | B08-V25~V32-1000 | 35d | 0d | Clearing & Groubbing [8]; Excavation & Leveling [8]; Stone Layer [8]; A3 Layer [8]; A1-a 1st Layer [8]; A1-a 2ed Layer [8] | 163,545.76 | Civil |
| B09-V01~V08-1010 |  | Pouring Concrete For Bedding | 2d | 2024-08-05 | 2024-08-06 | B09-V01~V08-1000, B08-V25~V32-1010 | 35d | 0d | PC Carpentry [8]; PC Concrete [8]; RC 18 MPA [9 M3] | 37,899.68 | Civil |
| B09-V01~V08-1020 |  | Reinforcement Concrete For Foundation | 5d | 2024-08-07 | 2024-08-12 | B09-V01~V08-1010, B08-V25~V32-1020 | 35d | 0d | RC Foundation Carpentry [8]; RC Foundation Steel [8]; RC Foundation Concrete [8] | 201,355.92 | Civil |
| B09-V01~V08-1030 |  | Steel Fixing& Carpenter work for Beams | 4d | 2024-08-13 | 2024-08-17 | B09-V01~V08-1020, B08-V25~V32-1030 | 35d | 0d | RC Grade Beam Carpentry & Steel [8] | 44,745.76 | Civil |
| B09-V01~V08-1040 |  | Mech&Elec Establishment for Beams | 3d | 2024-08-18 | 2024-08-20 | B09-V01~V08-1030, B08-V25~V32-1040 | 35d | 0d |  |  | Mech |
| B09-V01~V08-1050 |  | Pouring Concrete For Beams | 1d | 2024-08-21 | 2024-08-21 | B09-V01~V08-1040, B08-V25~V32-1050 | 35d | 0d | RC Grade Beam Concrete [8] | 77,141.68 | Civil |
| B09-V01~V08-1060 |  | Bitmen Coating For Fondation&Beams | 3d | 2024-08-22 | 2024-08-25 | B09-V01~V08-1050, B08-V25~V32-1060 | 35d | 0d | Bitumen Coating Foundations & Grade Beams [8] | 22,372.32 | Civil |
| B09-V01~V08-1070 |  | Backfilling Inside Fondations | 4d | 2024-08-26 | 2024-08-29 | B09-V01~V08-1060, B08-V25~V32-1070 | 35d | 0d | Backfilling 1st Layer [8]; Backfilling 2ed Layer [8] | 11,186.4 | Civil |
| B09-V01~V08-1080 |  | Mech Works Under Grond Slap | 3d | 2024-08-31 | 2024-09-02 | B09-V01~V08-1070, B08-V25~V32-1080 | 35d | 0d | Mech Establishment Under Ground Slap [8] | 13,423.42 | Mech |
| B09-V01~V08-1090 |  | Steel Fixing& Carpenter work for Ground Slap | 3d | 2024-09-03 | 2024-09-05 | B09-V01~V08-1080, B08-V25~V32-1090 | 35d | 0d | Steel & Carpentry For Ground Slap [8] | 10,246.54 | Civil |
| B09-V01~V08-1100 |  | Anti Termite Treatment For Ground Slap | 1d | 2024-09-07 | 2024-09-07 | B09-V01~V08-1090, B08-V25~V32-1100 | 35d | 0d | Anti Termite Treatment nder Ground Slap [8] | 2,237.28 | Civil |
| B09-V01~V08-1110 |  | Pouring Concrete For Ground Slap | 1d | 2024-09-07 | 2024-09-07 | B09-V01~V08-1100 FF, B09-V01~V08-1090, B08-V25~V32-1110 | 35d | 5d | Concrete For Ground Slap [8] | 58,169.52 | Civil |

| ID | WBS | Activity | Duration | Start | Finish | Predecessors | Total float | Free float | Resources | Cost | Department-1 |
| --- | --- | --- | --- | --- | --- | --- | --- | --- | --- | --- | --- |
|  | 4 | **Precast Works** |  | 2024-10-19 | 2024-10-26 |  |  |  |  |  |  |
| B09-V01~V08-1120 |  | Precast Constrction | 7d | 2024-10-19 | 2024-10-26 | B09-V01~V08-1110, B08-V25~V32-1120 | 0d |  | Precast Walls GF [8]; Hollow Core Slap GF [8]; Precast Stairs & staircase House [8]; Thermal insollation Outside Walls [8]; Concrete structure joints [8]; Precast Walls FF [8]; Hollow Core Slap FF [8] | 1,513,762.87 | Civil |
|  | 1 | **Works Inside The Villa** |  | 2024-10-27 | 2025-02-09 |  |  |  |  |  |  |
| B09-V01~V08-1130 |  | Block Work For GF & Estabishment 1F | 6d | 2024-10-27 | 2024-11-02 | B09-V01~V08-1120, B08-V25~V32-1130 | 13d | 0d | Block GF [8] | 13,647.1 | Arc |
| B09-V01~V08-1140 |  | L.L & H.L Drainage | 6d | 2024-11-03 | 2024-11-09 | B09-V01~V08-1130, B08-V25~V32-1140 | 13d | 0d | HL Drainage [8]; L.L Drainage [8] | 89,489.28 | Mech |
| B09-V01~V08-1150 |  | Elec Establishment For GF & 1F | 3d | 2024-11-03 | 2024-11-05 | B09-V01~V08-1130, B08-V25~V32-1150 | 16d | 3d | Elec Establishment GF [8] | 26,840.73 | Elec |
| B09-V01~V08-1160 |  | Screed Work For 1F & Roof | 6d | 2024-11-10 | 2024-11-16 | B09-V01~V08-1140, B09-V01~V08-1150, B08-V25~V32-1160 | 13d | 0d | Screed 1st Floor [8]; Screed Roof Floor [8]; Leveling Screed 1st Floor [8]; Leveling Screed Roof Floor [8] | 268,467.85 | Civil |
| B09-V01~V08-1170 |  | Water Tank & Heater Foundations | 4d | 2024-11-17 | 2024-11-20 | B09-V01~V08-1160, B08-V25~V32-1170 | 17d | 0d |  |  | Civil |
| B09-V01~V08-1180 |  | Block Works For 1F | 3d | 2024-11-17 | 2024-11-19 | B09-V01~V08-1160, B08-V25~V32-1180 | 13d | 0d | Block FF [8] | 20,537.81 | Arc |
| B09-V01~V08-1190 |  | Water Line Network | 6d | 2024-11-20 | 2024-11-26 | B09-V01~V08-1180, B08-V25~V32-1190 | 13d | 0d | Water Line Network [8] | 40,261.13 | Mech |
| B09-V01~V08-1200 |  | Continue Elec Establishment For GF & 1F | 3d | 2024-11-20 | 2024-11-23 | B09-V01~V08-1180, B08-V25~V32-1200 | 16d | 3d | Elec Establishment FF [8] | 26,840.73 | Elec |
| B09-V01~V08-1210 |  | Thermal Insulation For Roof | 5d | 2024-11-21 | 2024-11-26 | B09-V01~V08-1170, B08-V25~V32-1210 | 17d | 0d | Roof Insulation [8] | 32,530.16 | Arc |
| B09-V01~V08-1220 |  | Roof Floor Tiles | 6d | 2024-11-27 | 2024-12-03 | B09-V01~V08-1210, B08-V25~V32-1220 | 17d | 1d | Roof Tiles [8]; Roof Tiles Joints [8]; Re_Test Roof Insulation [8] | 63,179.38 | Arc |
| B09-V01~V08-1230 |  | Plaster Work For Villa | 6d | 2024-11-27 | 2024-12-03 | B09-V01~V08-1190, B09-V01~V08-1200, B08-V25~V32-1230 | 13d | 0d | Establishing a plastering GF [8]; Establishing a plastering FF [8]; Plastering GF [8]; Plastering FF [8] | 49,263.81 |  |
| B09-V01~V08-1240 |  | Marbale Stairs & Handrails | 6d | 2024-12-04 | 2024-12-10 | B09-V01~V08-1230, B08-V25~V32-1240 | 35d | 1d | Marbale Stairs [8]; Stairs Handrails SS [8] | 91,494.69 |  |
| B09-V01~V08-1250 |  | Water Proofing Of Bathrooms | 4d | 2024-12-04 | 2024-12-08 | B09-V01~V08-1230, B08-V25~V32-1250 | 13d | 0d | Bathrooms InsulationGF & FF [8] | 134.24 |  |
| B09-V01~V08-1260 |  | Pulling The Elec Wires | 4d | 2024-12-04 | 2024-12-08 | B09-V01~V08-1230, B08-V25~V32-1260 | 23d | 3d | Elec Wires GF [8]; Elec Wires FF [8] | 80,542.4 |  |
| B09-V01~V08-1270 |  | Bathroom Tiles | 4d | 2024-12-09 | 2024-12-12 | B09-V01~V08-1250, B09-V01~V08-1220, B08-V25~V32-1270 | 13d | 0d | Ceramic Walls Kitchen [8]; Ceramic Walls Bathrooms GF [8]; Ceramic Walls Bathrooms FF [8]; Ceramic Tiles Bathrooms GF [8]; Ceramic Tiles Kitchen GF [8]; Ceramic Tiles Store GF [8] | 73,204.08 |  |
| B09-V01~V08-1280 |  | Structure For Gypsum | 6d | 2024-12-14 | 2024-12-19 | B09-V01~V08-1270, B08-V25~V32-1280 | 13d | 0d | Structure For Gypsum GF Rooms [8]; Structure For Gypsum FF Rooms [8]; Structure For Gypsum Bathrooms & Kitchen [8] | 33,550.81 |  |
| B09-V01~V08-1290 |  | Gypsum Board For Room | 4d | 2024-12-21 | 2024-12-24 | B09-V01~V08-1280, B09-V01~V08-1260, B08-V25~V32-1290 | 13d | 0d | Gypsum Board For GF Room [8]; Gypsum Board For FF Room [8] | 35,796.64 |  |
| B09-V01~V08-1300 |  | Installation Of Gypsum Board For Bathroom & Kitchen | 4d | 2024-12-25 | 2024-12-29 | B09-V01~V08-1290, B08-V25~V32-1300 | 13d | 0d | Gypsum Board For Bathrooms & Kitchen [8] | 11,052.24 |  |
| B09-V01~V08-1310 |  | Putty Filler For Gypsm Board Ceiling | 6d | 2024-12-30 | 2025-01-05 | B09-V01~V08-1300, B08-V25~V32-1310 | 13d | 0d | Putty Filler 1st Layer Roof all Rooms [8]; Putty Filler 1st Layer Roof all Bathrooms & Kitchen [8]; Putty Filler1st Layer walls [8] | 62,182.52 |  |
| B09-V01~V08-1320 |  | Fixing Shower Glass | 4d | 2025-01-06 | 2025-01-09 | B09-V01~V08-1310, B08-V25~V32-1320 | 21d | 0d | Shower Glass [8] | 22,372.88 |  |
| B09-V01~V08-1330 |  | Interior Wall Putty Filler | 6d | 2025-01-06 | 2025-01-12 | B09-V01~V08-1310, B09-V01~V08-1240, B08-V25~V32-1330 | 13d | 0d | Putty Filler 2ed Layer Roof & WAlls GF [8]; Putty Filler 2ed Layer Roof & WAlls FF [8] | 62,150.21 |  |
| B09-V01~V08-1340 |  | Installation Of Sanitry Fixture | 7d | 2025-01-11 | 2025-01-18 | B09-V01~V08-1320, B08-V25~V32-1340 | 21d | 0d | Mech Fixtures & Accessories [8] | 98,435.64 |  |
| B09-V01~V08-1350 |  | 1st Face Paint | 6d | 2025-01-13 | 2025-01-19 | B09-V01~V08-1330, B08-V25~V32-1350 | 13d | 0d |  |  |  |
| B09-V01~V08-1360 |  | Installation Of Aluminum Windows | 7d | 2025-01-13 | 2025-01-20 | B09-V01~V08-1330, B08-V25~V32-1360 | 23d | 0d | Aluminum Windows [8] | 84,795.68 |  |
| B09-V01~V08-1370 |  | Installation Of Elec Fixture & Accessories | 7d | 2025-01-13 | 2025-01-20 | B09-V01~V08-1310, B09-V01~V08-1330, B09-V01~V08-1260, B08-V25~V32-1370 | 37d | 0d | Elec Fixtures & Accessories Villa & Yard [8]; Elec Cables GF & FF & Earthing [8] | 53,692.2 |  |
| B09-V01~V08-1380 |  | Installation Of Water Tank-Heater & Pumps | 7d | 2025-01-19 | 2025-01-26 | B09-V01~V08-1340, B08-V25~V32-1380, B09-V01~V08-1220 | 21d | 0d | Water Tank & booster Pump [8]; Lower Pump [8]; Heater [8] | 129,756.23 |  |
| B09-V01~V08-1390 |  | Installation Of Parquet | 4d | 2025-01-20 | 2025-01-23 | B09-V01~V08-1350, B08-V25~V32-1390 | 13d | 0d | Installation Of Parquet [8] | 52,978.96 |  |
| B09-V01~V08-1400 |  | Installation Of Wooden Doors | 7d | 2025-01-25 | 2025-02-01 | B09-V01~V08-1390, B08-V25~V32-1400 | 13d | 0d | Wooden Doors Kitchen & Bathroom without Accessories [8]; Wooden Doors Accessories all Villa [8]; Exterior Wooden Doors [8] | 142,105.45 |  |
| B09-V01~V08-1410 |  | Final Face Paint | 7d | 2025-02-02 | 2025-02-09 | B09-V01~V08-1360, B09-V01~V08-1400, B08-V25~V32-1410 | 13d | 0d | Final Face Paint Villa [8] | 31,096.77 |  |

| ID | WBS | Activity | Duration | Start | Finish | Predecessors | Total float | Free float | Resources | Cost |
| --- | --- | --- | --- | --- | --- | --- | --- | --- | --- | --- |
|  | 3 | **Fence & Courtyard Works** |  | 2024-10-27 | 2025-01-29 |  |  |  |  |  |
| B09-V01~V08-1420 |  | Pouring Bedding Concrete For Fence Fondations | 2d | 2024-10-27 | 2024-10-28 | B09-V01~V08-1120, B08-V25~V32-1420 | 9d | 0d | Excavation Fence Foundations [8] | 4,519.28 |
| B09-V01~V08-1430 |  | RC Concrete For Fence Fondations | 6d | 2024-10-29 | 2024-11-04 | B09-V01~V08-1420, B08-V25~V32-1430 | 9d | 0d | Fence Fondations-Eastern side [8]; Fence Fondations-Westren side [8]; Fence Fondations-Back side [8] | 13,420.32 |
| B09-V01~V08-1440 |  | Steel Fixing & Carpentry For Fence Columns | 6d | 2024-11-05 | 2024-11-11 | B09-V01~V08-1430, B08-V25~V32-1440 | 9d | 0d |  |  |
| B09-V01~V08-1450 |  | Establishing Elec For Fence Columns | 4d | 2024-11-12 | 2024-11-16 | B09-V01~V08-1440, B08-V25~V32-1450 | 9d | 0d |  |  |
| B09-V01~V08-1460 |  | Pouring Concrete For Fence Columns | 1d | 2024-11-17 | 2024-11-17 | B09-V01~V08-1450, B08-V25~V32-1460 | 9d | 0d | Fence Columns-Eastern side [8]; Fence Columns-Westren side [8]; Fence Columns-Back side [8] | 9,665.04 |
| B09-V01~V08-1470 |  | Installation Precast Panel For Fence | 5d | 2024-11-18 | 2024-11-23 | B09-V01~V08-1460, B08-V25~V32-1470 | 9d | 0d | Hollow Core Walls [8] | 71,593.2 |
| B09-V01~V08-1480 |  | Bitumen Coating For Fence Fondations | 4d | 2024-11-24 | 2024-11-27 | B09-V01~V08-1470, B08-V25~V32-1480 | 9d | 0d |  |  |
| B09-V01~V08-1490 |  | Pouring Bedding Concrete For "Front" Fence Fondations | 1d | 2024-11-24 | 2024-11-24 | B09-V01~V08-1470, B08-V25~V32-1490 | 21d | 0d |  |  |
| B09-V01~V08-1500 |  | RC Concrete For "Front" Fence Fondations | 4d | 2024-11-25 | 2024-11-28 | B09-V01~V08-1490, B08-V25~V32-1500 | 21d | 0d | Front Fence Fondations [8] | 8,904.4 |
| B09-V01~V08-1510 |  | Outdoor Drainage & Water Line | 5d | 2024-11-28 | 2024-12-03 | B09-V01~V08-1480, B09-V01~V08-1140, B08-V25~V32-1510 | 9d | 0d | Outdoor Drainage [8]; Outdoor Water Line [8] | 13,423.68 |
| B09-V01~V08-1520 |  | Steel Fixing & Carpentry For "Front" Fence Columns | 4d | 2024-11-30 | 2024-12-03 | B09-V01~V08-1500, B08-V25~V32-1520 | 21d | 0d |  |  |
| B09-V01~V08-1530 |  | Establishing Elec For "Front" Fence Columns | 4d | 2024-12-04 | 2024-12-08 | B09-V01~V08-1520, B08-V25~V32-1530 | 21d | 0d |  |  |
| B09-V01~V08-1540 |  | Establishing Elec For Fence & Yard | 2d | 2024-12-04 | 2024-12-05 | B09-V01~V08-1510, B08-V25~V32-1540 | 9d | 0d | Elec Establishment Fence & Yard [8] | 17,898.32 |
| B09-V01~V08-1550 |  | Backfilling the Yard | 4d | 2024-12-07 | 2024-12-10 | B09-V01~V08-1540, B08-V25~V32-1550 | 9d | 0d | Backfilling the Yard [8] | 10,560 |
| B09-V01~V08-1560 |  | Pouring Concrete Wall Of "Front" Fence Columns | 2d | 2024-12-09 | 2024-12-10 | B09-V01~V08-1530, B08-V25~V32-1560 | 21d | 0d | Front Fence Walls [8] | 17,898.32 |
| B09-V01~V08-1570 |  | Pouring Concrete Crown Of "Front" Fence Columns | 3d | 2024-12-11 | 2024-12-14 | B09-V01~V08-1560, B08-V25~V32-1570 | 21d | 0d | Fence Columns - C Chanel [8] | 3,310.37 |
| B09-V01~V08-1580 |  | Bardoura Works For Yard | 5d | 2024-12-11 | 2024-12-16 | B09-V01~V08-1550, B08-V25~V32-1580 | 9d | 0d | Bardoura Works For Yard [8] | 14,408.16 |
| B09-V01~V08-1590 |  | Pouring Concrete Flower Basin Of "Front" Fence Columns | 4d | 2024-12-15 | 2024-12-18 | B09-V01~V08-1570, B08-V25~V32-1590 | 21d | 0d |  |  |
| B09-V01~V08-1600 |  | Antitermite Treatment For Yard | 1d | 2024-12-17 | 2024-12-17 | B09-V01~V08-1580, B08-V25~V32-1600 | 9d | 0d | Antitermite Treatment For Yard [8] |  |
| B09-V01~V08-1610 |  | Pouring Concrete For Yard | 1d | 2024-12-18 | 2024-12-18 | B09-V01~V08-1600, B08-V25~V32-1610 | 9d | 0d |  |  |
| B09-V01~V08-1620 |  | Block Work For Flower Basin | 5d | 2024-12-19 | 2024-12-24 | B09-V01~V08-1610, B08-V25~V32-1620 | 9d | 0d |  |  |
| B09-V01~V08-1630 |  | Plastering Work For Flower Basin | 4d | 2024-12-25 | 2024-12-29 | B09-V01~V08-1620, B08-V25~V32-1630 | 9d | 0d |  |  |
| B09-V01~V08-1640 |  | Interlock Works For The Yard | 6d | 2024-12-30 | 2025-01-05 | B09-V01~V08-1630, B08-V25~V32-1640 | 9d | 0d | Interlock Works For The Yard [8] | 36,776.32 |
| B09-V01~V08-1650 |  | External Grading Works For The Villa | 4d | 2025-01-06 | 2025-01-09 | B09-V01~V08-1640, B08-V25~V32-1650 | 11d | 0d | External Grading Works For The Villa [8] | 3,221.68 |
| B09-V01~V08-1660 |  | Installation The Exterior Door & Garage Door | 5d | 2025-01-06 | 2025-01-11 | B09-V01~V08-1640, B08-V25~V32-1660 | 14d | 2d | Installation The Exterior Door [8]; Installation The Exterior Garage Door [8] | 40,002.72 |
| B09-V01~V08-1670 |  | Fixing Floor Drain For The Yard | 2d | 2025-01-06 | 2025-01-07 | B09-V01~V08-1640, B08-V25~V32-1670 | 17d | 5d | Floor Drain & Clean Out [8] | 13,423.76 |
| B09-V01~V08-1680 |  | Granite Surronds Around The Villa | 4d | 2025-01-11 | 2025-01-14 | B09-V01~V08-1650, B08-V25~V32-1680 | 11d | 2d | Granite Surronds Around The Villa [8] | 25,818.32 |
| B09-V01~V08-1690 |  | Painting The Base Surface Of The Fence | 2d | 2025-01-11 | 2025-01-12 | B09-V01~V08-1750, B08-V25~V32-1690 | 9d | 0d |  |  |
| B09-V01~V08-1700 |  | Painting The Final Face Of The Fence | 4d | 2025-01-13 | 2025-01-16 | B09-V01~V08-1690, B08-V25~V32-1700 | 9d | 0d | Painting Final Face Of The Fence [8] | 37,586.48 |
| B09-V01~V08-1710 |  | Exterior Painting Of The Villa | 7d | 2025-01-18 | 2025-01-25 | B09-V01~V08-1680, B09-V01~V08-1700, B09-V01~V08-1660, B09-V01~V08-1670, B08-V25~V32-1710 | 9d | 0d | Exterior Painting Of The Villa [8]; Exterior Painting Staircase House [8] | 105,684.16 |
| B09-V01~V08-1720 |  | Installation Elec Fixtures & Accessories For The Yard | 4d | 2025-01-26 | 2025-01-29 | B09-V01~V08-1700, B09-V01~V08-1710, B08-V25~V32-1720 | 52d | 0d | Elec feeding panels GF & FF [8] | 22,372.88 |

| ID | WBS | Activity | Duration | Start | Finish | Predecessors | Total float | Free float | Resources | Cost | Department-1 |
| --- | --- | --- | --- | --- | --- | --- | --- | --- | --- | --- | --- |
|  | 5 | **External Sidewalk Works** |  | 2024-12-19 | 2025-02-03 |  |  |  |  |  |  |
| B09-V01~V08-1730 |  | Connection The Drain To The Piblic Network | 3d | 2024-12-19 | 2024-12-22 | B09-V01~V08-1510, B09-V01~V08-1590, B08-V25~V32-1730 | 21d | 4d | Connection Drain To The Piblic Network [8]; Connection Water To The Piblic Network [8] | 13,420.32 |  |
| B09-V01~V08-1740 |  | Pardora Works For The External Sidewalk | 2d | 2025-01-06 | 2025-01-07 | B09-V01~V08-1640, B09-V01~V08-1730, B08-V25~V32-1740 | 9d | 0d |  |  |  |
| B09-V01~V08-1750 |  | Interlock Works For The Exerrnal Sidewalk | 2d | 2025-01-08 | 2025-01-09 | B09-V01~V08-1740, B08-V25~V32-1750 | 9d | 0d |  |  |  |
| B09-V01~V08-1760 |  | Pulling The Villa's Main Elec Cable | 4d | 2025-01-30 | 2025-02-03 | B09-V01~V08-1750, B09-V01~V08-1720, B08-V25~V32-1760 | 52d | 0d | Elec Work Testing [8] | 22,819.84 |  |
|  | 6 | **Final Testing & Handover** |  | 2025-01-27 | 2025-02-22 |  |  |  |  |  |  |
| B09-V01~V08-1770 |  | Mech Work Testing & Handover | 5d | 2025-01-27 | 2025-02-01 | B09-V01~V08-1730, B09-V01~V08-1340, B09-V01~V08-1380, B08-V25~V32-1770 | 59d | 2d | Mech Work Testing & Handover [8] | 14,318.64 |  |
| B09-V01~V08-1780 |  | Arch Snaglist & Handover | 5d | 2025-02-02 | 2025-02-06 | B09-V01~V08-1750, B09-V01~V08-1710, B09-V01~V08-1400, B08-V25~V32-1780 | 54d | 2d | Arch Snaglist & Handover [8] | 77,320.64 |  |
| B09-V01~V08-1790 |  | ElecWork Testing & Handover | 5d | 2025-02-04 | 2025-02-09 | B09-V01~V08-1760, B09-V01~V08-1370, B08-V25~V32-1790 | 52d | 0d | Elec Work Handover [8] | 23,804.72 |  |
| B09-V01~V08-1800 |  | Final Handover Of The Villa To The Consltant | 5d | 2025-02-10 | 2025-02-15 | B09-V01~V08-1780, B09-V01~V08-1790, B09-V01~V08-1770, B09-V01~V08-1410, B08-V25~V32-1800 | 52d | 0d |  |  |  |
| B09-V01~V08-1810 |  | Customer Delivery | 6d | 2025-02-16 | 2025-02-22 | B09-V01~V08-1800, B08-V25~V32-1810 | 52d | 1d |  |  |  |
|  | 1 | **B09-V09~V16** |  | 2024-08-05 | 2025-03-02 |  |  |  |  |  |  |
|  | 2 | **Under Grond Slap Works** |  | 2024-08-05 | 2024-09-14 |  |  |  |  |  |  |
| B09-V09~V16-1000 |  | Excavation&Compaction of Fondation | 6d | 2024-08-05 | 2024-08-11 | B09-V01~V08-1000 | 36d | 0d | Clearing & Groubbing [8]; Excavation & Leveling [8]; Stone Layer [8]; A3 Layer [8]; A1-a 1st Layer [8]; A1-a 2ed Layer [8] | 163,545.76 | Civil |
| B09-V09~V16-1010 |  | Pouring Concrete For Bedding | 2d | 2024-08-12 | 2024-08-13 | B09-V09~V16-1000, B09-V01~V08-1010 | 36d | 0d | PC Carpentry [8]; PC Concrete [8]; RC 18 MPA [9 M3] | 37,899.68 | Civil |
| B09-V09~V16-1020 |  | Reinforcement Concrete For Foundation | 5d | 2024-08-14 | 2024-08-19 | B09-V09~V16-1010, B09-V01~V08-1020 | 36d | 0d | RC Foundation Carpentry [8]; RC Foundation Steel [8]; RC Foundation Concrete [8] | 201,355.92 | Civil |
| B09-V09~V16-1030 |  | Steel Fixing& Carpenter work for Beams | 4d | 2024-08-20 | 2024-08-24 | B09-V09~V16-1020, B09-V01~V08-1030 | 36d | 0d | RC Grade Beam Carpentry & Steel [8] | 44,745.76 | Civil |
| B09-V09~V16-1040 |  | Mech&Elec Establishment for Beams | 3d | 2024-08-25 | 2024-08-27 | B09-V09~V16-1030, B09-V01~V08-1040 | 36d | 0d |  |  | Mech |
| B09-V09~V16-1050 |  | Pouring Concrete For Beams | 1d | 2024-08-28 | 2024-08-28 | B09-V09~V16-1040, B09-V01~V08-1050 | 36d | 0d | RC Grade Beam Concrete [8] | 77,141.68 | Civil |
| B09-V09~V16-1060 |  | Bitmen Coating For Fondation&Beams | 3d | 2024-08-29 | 2024-09-01 | B09-V09~V16-1050, B09-V01~V08-1060 | 36d | 0d | Bitumen Coating Foundations & Grade Beams [8] | 22,372.32 | Civil |
| B09-V09~V16-1070 |  | Backfilling Inside Fondations | 4d | 2024-09-02 | 2024-09-05 | B09-V09~V16-1060, B09-V01~V08-1070 | 36d | 0d | Backfilling 1st Layer [8]; Backfilling 2ed Layer [8] | 11,186.4 | Civil |
| B09-V09~V16-1080 |  | Mech Works Under Grond Slap | 3d | 2024-09-07 | 2024-09-09 | B09-V09~V16-1070, B09-V01~V08-1080 | 36d | 0d | Mech Establishment Under Ground Slap [8] | 13,423.42 | Mech |
| B09-V09~V16-1090 |  | Steel Fixing& Carpenter work for Ground Slap | 3d | 2024-09-10 | 2024-09-12 | B09-V09~V16-1080, B09-V01~V08-1090 | 36d | 0d | Steel & Carpentry For Ground Slap [8] | 10,246.54 | Civil |
| B09-V09~V16-1100 |  | Anti Termite Treatment For Ground Slap | 1d | 2024-09-14 | 2024-09-14 | B09-V09~V16-1090, B09-V01~V08-1100 | 36d | 0d | Anti Termite Treatment nder Ground Slap [8] | 2,237.28 | Civil |
| B09-V09~V16-1110 |  | Pouring Concrete For Ground Slap | 1d | 2024-09-14 | 2024-09-14 | B09-V09~V16-1100 FF, B09-V09~V16-1090, B09-V01~V08-1110 | 36d | 5d | Concrete For Ground Slap [8] | 58,169.52 | Civil |

| ID | WBS | Activity | Duration | Start | Finish | Predecessors | Total float | Free float | Resources | Cost | Department-1 |
| --- | --- | --- | --- | --- | --- | --- | --- | --- | --- | --- | --- |
|  | 4 | **Precast Works** |  | 2024-10-27 | 2024-11-03 |  |  |  |  |  |  |
| B09-V09~V16-1120 |  | Precast Constrction | 7d | 2024-10-27 | 2024-11-03 | B09-V09~V16-1110, B09-V01~V08-1120 | 0d |  | Precast Walls GF [8]; Hollow Core Slap GF [8]; Precast Stairs & staircase House [8]; Thermal insollation Outside Walls [8]; Concrete structure joints [8]; Precast Walls FF [8]; Hollow Core Slap FF [8] | 1,513,762.87 | Civil |
|  | 1 | **Works Inside The Villa** |  | 2024-11-04 | 2025-02-17 |  |  |  |  |  |  |
| B09-V09~V16-1130 |  | Block Work For GF & Estabishment 1F | 6d | 2024-11-04 | 2024-11-10 | B09-V09~V16-1120, B09-V01~V08-1130 | 13d | 0d | Block GF [8] | 13,647.1 | Arc |
| B09-V09~V16-1140 |  | L.L & H.L Drainage | 6d | 2024-11-11 | 2024-11-17 | B09-V09~V16-1130, B09-V01~V08-1140 | 13d | 0d | HL Drainage [8]; L.L Drainage [8] | 89,489.28 | Mech |
| B09-V09~V16-1150 |  | Elec Establishment For GF & 1F | 3d | 2024-11-11 | 2024-11-13 | B09-V09~V16-1130, B09-V01~V08-1150 | 16d | 3d | Elec Establishment GF [8] | 26,840.73 | Elec |
| B09-V09~V16-1160 |  | Screed Work For 1F & Roof | 6d | 2024-11-18 | 2024-11-24 | B09-V09~V16-1140, B09-V09~V16-1150, B09-V01~V08-1160 | 13d | 0d | Screed 1st Floor [8]; Screed Roof Floor [8]; Leveling Screed 1st Floor [8]; Leveling Screed Roof Floor [8] | 268,467.85 | Civil |
| B09-V09~V16-1170 |  | Water Tank & Heater Foundations | 4d | 2024-11-25 | 2024-11-28 | B09-V09~V16-1160, B09-V01~V08-1170 | 17d | 0d |  |  | Civil |
| B09-V09~V16-1180 |  | Block Works For 1F | 3d | 2024-11-25 | 2024-11-27 | B09-V09~V16-1160, B09-V01~V08-1180 | 13d | 0d | Block FF [8] | 20,537.81 | Arc |
| B09-V09~V16-1190 |  | Water Line Network | 6d | 2024-11-28 | 2024-12-04 | B09-V09~V16-1180, B09-V01~V08-1190 | 13d | 0d | Water Line Network [8] | 40,261.13 | Mech |
| B09-V09~V16-1200 |  | Continue Elec Establishment For GF & 1F | 3d | 2024-11-28 | 2024-12-01 | B09-V09~V16-1180, B09-V01~V08-1200 | 16d | 3d | Elec Establishment FF [8] | 26,840.73 | Elec |
| B09-V09~V16-1210 |  | Thermal Insulation For Roof | 5d | 2024-11-30 | 2024-12-04 | B09-V09~V16-1170, B09-V01~V08-1210 | 17d | 0d | Roof Insulation [8] | 32,530.16 | Arc |
| B09-V09~V16-1220 |  | Roof Floor Tiles | 6d | 2024-12-05 | 2024-12-11 | B09-V09~V16-1210, B09-V01~V08-1220 | 17d | 1d | Roof Tiles [8]; Roof Tiles Joints [8]; Re_Test Roof Insulation [8] | 63,179.38 | Arc |
| B09-V09~V16-1230 |  | Plaster Work For Villa | 6d | 2024-12-05 | 2024-12-11 | B09-V09~V16-1190, B09-V09~V16-1200, B09-V01~V08-1230 | 13d | 0d | Establishing a plastering GF [8]; Establishing a plastering FF [8]; Plastering GF [8]; Plastering FF [8] | 49,263.81 |  |
| B09-V09~V16-1240 |  | Marbale Stairs & Handrails | 6d | 2024-12-12 | 2024-12-18 | B09-V09~V16-1230, B09-V01~V08-1240 | 35d | 1d | Marbale Stairs [8]; Stairs Handrails SS [8] | 91,494.69 |  |
| B09-V09~V16-1250 |  | Water Proofing Of Bathrooms | 4d | 2024-12-12 | 2024-12-16 | B09-V09~V16-1230, B09-V01~V08-1250 | 13d | 0d | Bathrooms InsulationGF & FF [8] | 134.24 |  |
| B09-V09~V16-1260 |  | Pulling The Elec Wires | 4d | 2024-12-12 | 2024-12-16 | B09-V09~V16-1230, B09-V01~V08-1260 | 23d | 3d | Elec Wires GF [8]; Elec Wires FF [8] | 80,542.4 |  |
| B09-V09~V16-1270 |  | Bathroom Tiles | 4d | 2024-12-17 | 2024-12-21 | B09-V09~V16-1250, B09-V09~V16-1220, B09-V01~V08-1270 | 13d | 0d | Ceramic Walls Kitchen [8]; Ceramic Walls Bathrooms GF [8]; Ceramic Walls Bathrooms FF [8]; Ceramic Tiles Bathrooms GF [8]; Ceramic Tiles Kitchen GF [8]; Ceramic Tiles Store GF [8] | 73,204.08 |  |
| B09-V09~V16-1280 |  | Structure For Gypsum | 6d | 2024-12-22 | 2024-12-28 | B09-V09~V16-1270, B09-V01~V08-1280 | 13d | 0d | Structure For Gypsum GF Rooms [8]; Structure For Gypsum FF Rooms [8]; Structure For Gypsum Bathrooms & Kitchen [8] | 33,550.81 |  |
| B09-V09~V16-1290 |  | Gypsum Board For Room | 4d | 2024-12-29 | 2025-01-01 | B09-V09~V16-1280, B09-V09~V16-1260, B09-V01~V08-1290 | 13d | 0d | Gypsum Board For GF Room [8]; Gypsum Board For FF Room [8] | 35,796.64 |  |
| B09-V09~V16-1300 |  | Installation Of Gypsum Board For Bathroom & Kitchen | 4d | 2025-01-02 | 2025-01-06 | B09-V09~V16-1290, B09-V01~V08-1300 | 13d | 0d | Gypsum Board For Bathrooms & Kitchen [8] | 11,052.24 |  |
| B09-V09~V16-1310 |  | Putty Filler For Gypsm Board Ceiling | 6d | 2025-01-07 | 2025-01-13 | B09-V09~V16-1300, B09-V01~V08-1310 | 13d | 0d | Putty Filler 1st Layer Roof all Rooms [8]; Putty Filler 1st Layer Roof all Bathrooms & Kitchen [8]; Putty Filler1st Layer walls [8] | 62,182.52 |  |
| B09-V09~V16-1320 |  | Fixing Shower Glass | 4d | 2025-01-14 | 2025-01-18 | B09-V09~V16-1310, B09-V01~V08-1320 | 21d | 0d | Shower Glass [8] | 22,372.88 |  |
| B09-V09~V16-1330 |  | Interior Wall Putty Filler | 6d | 2025-01-14 | 2025-01-20 | B09-V09~V16-1310, B09-V09~V16-1240, B09-V01~V08-1330 | 13d | 0d | Putty Filler 2ed Layer Roof & WAlls GF [8]; Putty Filler 2ed Layer Roof & WAlls FF [8] | 62,150.21 |  |
| B09-V09~V16-1340 |  | Installation Of Sanitry Fixture | 7d | 2025-01-19 | 2025-01-26 | B09-V09~V16-1320, B09-V01~V08-1340 | 21d | 0d | Mech Fixtures & Accessories [8] | 98,435.64 |  |
| B09-V09~V16-1350 |  | 1st Face Paint | 6d | 2025-01-21 | 2025-01-27 | B09-V09~V16-1330, B09-V01~V08-1350 | 13d | 0d |  |  |  |
| B09-V09~V16-1360 |  | Installation Of Aluminum Windows | 7d | 2025-01-21 | 2025-01-28 | B09-V09~V16-1330, B09-V01~V08-1360 | 23d | 0d | Aluminum Windows [8] | 84,795.68 |  |
| B09-V09~V16-1370 |  | Installation Of Elec Fixture & Accessories | 7d | 2025-01-21 | 2025-01-28 | B09-V09~V16-1310, B09-V09~V16-1330, B09-V09~V16-1260, B09-V01~V08-1370 | 37d | 0d | Elec Fixtures & Accessories Villa & Yard [8]; Elec Cables GF & FF & Earthing [8] | 53,692.2 |  |
| B09-V09~V16-1380 |  | Installation Of Water Tank-Heater & Pumps | 7d | 2025-01-27 | 2025-02-03 | B09-V09~V16-1340, B09-V01~V08-1380, B09-V09~V16-1220 | 21d | 0d | Water Tank & booster Pump [8]; Lower Pump [8]; Heater [8] | 129,756.23 |  |
| B09-V09~V16-1390 |  | Installation Of Parquet | 4d | 2025-01-28 | 2025-02-01 | B09-V09~V16-1350, B09-V01~V08-1390 | 13d | 0d | Installation Of Parquet [8] | 52,978.96 |  |
| B09-V09~V16-1400 |  | Installation Of Wooden Doors | 7d | 2025-02-02 | 2025-02-09 | B09-V09~V16-1390, B09-V01~V08-1400 | 13d | 0d | Wooden Doors Kitchen & Bathroom without Accessories [8]; Wooden Doors Accessories all Villa [8]; Exterior Wooden Doors [8] | 142,105.45 |  |
| B09-V09~V16-1410 |  | Final Face Paint | 7d | 2025-02-10 | 2025-02-17 | B09-V09~V16-1360, B09-V09~V16-1400, B09-V01~V08-1410 | 13d | 0d | Final Face Paint Villa [8] | 31,096.77 |  |

| ID | WBS | Activity | Duration | Start | Finish | Predecessors | Total float | Free float | Resources | Cost |
| --- | --- | --- | --- | --- | --- | --- | --- | --- | --- | --- |
|  | 3 | **Fence & Courtyard Works** |  | 2024-11-04 | 2025-02-06 |  |  |  |  |  |
| B09-V09~V16-1420 |  | Pouring Bedding Concrete For Fence Fondations | 2d | 2024-11-04 | 2024-11-05 | B09-V09~V16-1120, B09-V01~V08-1420 | 9d | 0d | Excavation Fence Foundations [8] | 4,519.28 |
| B09-V09~V16-1430 |  | RC Concrete For Fence Fondations | 6d | 2024-11-06 | 2024-11-12 | B09-V09~V16-1420, B09-V01~V08-1430 | 9d | 0d | Fence Fondations-Eastern side [8]; Fence Fondations-Westren side [8]; Fence Fondations-Back side [8] | 13,420.32 |
| B09-V09~V16-1440 |  | Steel Fixing & Carpentry For Fence Columns | 6d | 2024-11-13 | 2024-11-19 | B09-V09~V16-1430, B09-V01~V08-1440 | 9d | 0d |  |  |
| B09-V09~V16-1450 |  | Establishing Elec For Fence Columns | 4d | 2024-11-20 | 2024-11-24 | B09-V09~V16-1440, B09-V01~V08-1450 | 9d | 0d |  |  |
| B09-V09~V16-1460 |  | Pouring Concrete For Fence Columns | 1d | 2024-11-25 | 2024-11-25 | B09-V09~V16-1450, B09-V01~V08-1460 | 9d | 0d | Fence Columns-Eastern side [8]; Fence Columns-Westren side [8]; Fence Columns-Back side [8] | 9,665.04 |
| B09-V09~V16-1470 |  | Installation Precast Panel For Fence | 5d | 2024-11-26 | 2024-12-01 | B09-V09~V16-1460, B09-V01~V08-1470 | 9d | 0d | Hollow Core Walls [8] | 71,593.2 |
| B09-V09~V16-1480 |  | Bitumen Coating For Fence Fondations | 4d | 2024-12-02 | 2024-12-05 | B09-V09~V16-1470, B09-V01~V08-1480 | 9d | 0d |  |  |
| B09-V09~V16-1490 |  | Pouring Bedding Concrete For "Front" Fence Fondations | 1d | 2024-12-02 | 2024-12-02 | B09-V09~V16-1470, B09-V01~V08-1490 | 21d | 0d |  |  |
| B09-V09~V16-1500 |  | RC Concrete For "Front" Fence Fondations | 4d | 2024-12-03 | 2024-12-07 | B09-V09~V16-1490, B09-V01~V08-1500 | 21d | 0d | Front Fence Fondations [8] | 8,904.4 |
| B09-V09~V16-1510 |  | Outdoor Drainage & Water Line | 5d | 2024-12-07 | 2024-12-11 | B09-V09~V16-1480, B09-V09~V16-1140, B09-V01~V08-1510 | 9d | 0d | Outdoor Drainage [8]; Outdoor Water Line [8] | 13,423.68 |
| B09-V09~V16-1520 |  | Steel Fixing & Carpentry For "Front" Fence Columns | 4d | 2024-12-08 | 2024-12-11 | B09-V09~V16-1500, B09-V01~V08-1520 | 21d | 0d |  |  |
| B09-V09~V16-1530 |  | Establishing Elec For "Front" Fence Columns | 4d | 2024-12-12 | 2024-12-16 | B09-V09~V16-1520, B09-V01~V08-1530 | 21d | 0d |  |  |
| B09-V09~V16-1540 |  | Establishing Elec For Fence & Yard | 2d | 2024-12-12 | 2024-12-14 | B09-V09~V16-1510, B09-V01~V08-1540 | 9d | 0d | Elec Establishment Fence & Yard [8] | 17,898.32 |
| B09-V09~V16-1550 |  | Backfilling the Yard | 4d | 2024-12-15 | 2024-12-18 | B09-V09~V16-1540, B09-V01~V08-1550 | 9d | 0d | Backfilling the Yard [8] | 10,560 |
| B09-V09~V16-1560 |  | Pouring Concrete Wall Of "Front" Fence Columns | 2d | 2024-12-17 | 2024-12-18 | B09-V09~V16-1530, B09-V01~V08-1560 | 21d | 0d | Front Fence Walls [8] | 17,898.32 |
| B09-V09~V16-1570 |  | Pouring Concrete Crown Of "Front" Fence Columns | 3d | 2024-12-19 | 2024-12-22 | B09-V09~V16-1560, B09-V01~V08-1570 | 21d | 0d | Fence Columns - C Chanel [8] | 3,310.37 |
| B09-V09~V16-1580 |  | Bardoura Works For Yard | 5d | 2024-12-19 | 2024-12-24 | B09-V09~V16-1550, B09-V01~V08-1580 | 9d | 0d | Bardoura Works For Yard [8] | 14,408.16 |
| B09-V09~V16-1590 |  | Pouring Concrete Flower Basin Of "Front" Fence Columns | 4d | 2024-12-23 | 2024-12-26 | B09-V09~V16-1570, B09-V01~V08-1590 | 21d | 0d |  |  |
| B09-V09~V16-1600 |  | Antitermite Treatment For Yard | 1d | 2024-12-25 | 2024-12-25 | B09-V09~V16-1580, B09-V01~V08-1600 | 9d | 0d | Antitermite Treatment For Yard [8] |  |
| B09-V09~V16-1610 |  | Pouring Concrete For Yard | 1d | 2024-12-26 | 2024-12-26 | B09-V09~V16-1600, B09-V01~V08-1610 | 9d | 0d |  |  |
| B09-V09~V16-1620 |  | Block Work For Flower Basin | 5d | 2024-12-28 | 2025-01-01 | B09-V09~V16-1610, B09-V01~V08-1620 | 9d | 0d |  |  |
| B09-V09~V16-1630 |  | Plastering Work For Flower Basin | 4d | 2025-01-02 | 2025-01-06 | B09-V09~V16-1620, B09-V01~V08-1630 | 9d | 0d |  |  |
| B09-V09~V16-1640 |  | Interlock Works For The Yard | 6d | 2025-01-07 | 2025-01-13 | B09-V09~V16-1630, B09-V01~V08-1640 | 9d | 0d | Interlock Works For The Yard [8] | 36,776.32 |
| B09-V09~V16-1650 |  | External Grading Works For The Villa | 4d | 2025-01-14 | 2025-01-18 | B09-V09~V16-1640, B09-V01~V08-1650 | 11d | 0d | External Grading Works For The Villa [8] | 3,221.68 |
| B09-V09~V16-1660 |  | Installation The Exterior Door & Garage Door | 5d | 2025-01-14 | 2025-01-19 | B09-V09~V16-1640, B09-V01~V08-1660 | 14d | 2d | Installation The Exterior Door [8]; Installation The Exterior Garage Door [8] | 40,002.72 |
| B09-V09~V16-1670 |  | Fixing Floor Drain For The Yard | 2d | 2025-01-14 | 2025-01-15 | B09-V09~V16-1640, B09-V01~V08-1670 | 17d | 5d | Floor Drain & Clean Out [8] | 13,423.76 |
| B09-V09~V16-1680 |  | Granite Surronds Around The Villa | 4d | 2025-01-19 | 2025-01-22 | B09-V09~V16-1650, B09-V01~V08-1680 | 11d | 2d | Granite Surronds Around The Villa [8] | 25,818.32 |
| B09-V09~V16-1690 |  | Painting The Base Surface Of The Fence | 2d | 2025-01-19 | 2025-01-20 | B09-V09~V16-1750, B09-V01~V08-1690 | 9d | 0d |  |  |
| B09-V09~V16-1700 |  | Painting The Final Face Of The Fence | 4d | 2025-01-21 | 2025-01-25 | B09-V09~V16-1690, B09-V01~V08-1700 | 9d | 0d | Painting Final Face Of The Fence [8] | 37,586.48 |
| B09-V09~V16-1710 |  | Exterior Painting Of The Villa | 7d | 2025-01-26 | 2025-02-02 | B09-V09~V16-1680, B09-V09~V16-1700, B09-V09~V16-1660, B09-V09~V16-1670, B09-V01~V08-1710 | 9d | 0d | Exterior Painting Of The Villa [8]; Exterior Painting Staircase House [8] | 105,684.16 |
| B09-V09~V16-1720 |  | Installation Elec Fixtures & Accessories For The Yard | 4d | 2025-02-03 | 2025-02-06 | B09-V09~V16-1700, B09-V09~V16-1710, B09-V01~V08-1720 | 51d | 0d | Elec feeding panels GF & FF [8] | 22,372.88 |

| ID | WBS | Activity | Duration | Start | Finish | Predecessors | Total float | Free float | Resources | Cost | Department-1 |
| --- | --- | --- | --- | --- | --- | --- | --- | --- | --- | --- | --- |
|  | 5 | **External Sidewalk Works** |  | 2024-12-28 | 2025-02-11 |  |  |  |  |  |  |
| B09-V09~V16-1730 |  | Connection The Drain To The Piblic Network | 3d | 2024-12-28 | 2024-12-30 | B09-V09~V16-1510, B09-V09~V16-1590, B09-V01~V08-1730 | 21d | 4d | Connection Drain To The Piblic Network [8]; Connection Water To The Piblic Network [8] | 13,420.32 |  |
| B09-V09~V16-1740 |  | Pardora Works For The External Sidewalk | 2d | 2025-01-14 | 2025-01-15 | B09-V09~V16-1640, B09-V09~V16-1730, B09-V01~V08-1740 | 9d | 0d |  |  |  |
| B09-V09~V16-1750 |  | Interlock Works For The Exerrnal Sidewalk | 2d | 2025-01-16 | 2025-01-18 | B09-V09~V16-1740, B09-V01~V08-1750 | 9d | 0d |  |  |  |
| B09-V09~V16-1760 |  | Pulling The Villa's Main Elec Cable | 4d | 2025-02-08 | 2025-02-11 | B09-V09~V16-1750, B09-V09~V16-1720, B09-V01~V08-1760 | 51d | 0d | Elec Work Testing [8] | 22,819.84 |  |
|  | 6 | **Final Testing & Handover** |  | 2025-02-04 | 2025-03-02 |  |  |  |  |  |  |
| B09-V09~V16-1770 |  | Mech Work Testing & Handover | 5d | 2025-02-04 | 2025-02-09 | B09-V09~V16-1730, B09-V09~V16-1340, B09-V09~V16-1380, B09-V01~V08-1770 | 58d | 2d | Mech Work Testing & Handover [8] | 14,318.64 |  |
| B09-V09~V16-1780 |  | Arch Snaglist & Handover | 5d | 2025-02-10 | 2025-02-15 | B09-V09~V16-1750, B09-V09~V16-1710, B09-V09~V16-1400, B09-V01~V08-1780 | 53d | 2d | Arch Snaglist & Handover [8] | 77,320.64 |  |
| B09-V09~V16-1790 |  | ElecWork Testing & Handover | 5d | 2025-02-12 | 2025-02-17 | B09-V09~V16-1760, B09-V09~V16-1370, B09-V01~V08-1790 | 51d | 0d | Elec Work Handover [8] | 23,804.72 |  |
| B09-V09~V16-1800 |  | Final Handover Of The Villa To The Consltant | 5d | 2025-02-18 | 2025-02-23 | B09-V09~V16-1780, B09-V09~V16-1790, B09-V09~V16-1770, B09-V09~V16-1410, B09-V01~V08-1800 | 51d | 0d |  |  |  |
| B09-V09~V16-1810 |  | Customer Delivery | 6d | 2025-02-24 | 2025-03-02 | B09-V09~V16-1800, B09-V01~V08-1810 | 51d | 1d |  |  |  |
|  | 2 | **B09-V17~V24** |  | 2024-08-12 | 2025-03-10 |  |  |  |  |  |  |
|  | 2 | **Under Grond Slap Works** |  | 2024-08-12 | 2024-09-21 |  |  |  |  |  |  |
| B09-V17~V24-1000 |  | Excavation&Compaction of Fondation | 6d | 2024-08-12 | 2024-08-18 | B09-V09~V16-1000 | 37d | 0d | Clearing & Groubbing [8]; Excavation & Leveling [8]; Stone Layer [8]; A3 Layer [8]; A1-a 1st Layer [8]; A1-a 2ed Layer [8] | 163,545.76 | Civil |
| B09-V17~V24-1010 |  | Pouring Concrete For Bedding | 2d | 2024-08-19 | 2024-08-20 | B09-V17~V24-1000, B09-V09~V16-1010 | 37d | 0d | PC Carpentry [8]; PC Concrete [8]; RC 18 MPA [9 M3] | 37,899.68 | Civil |
| B09-V17~V24-1020 |  | Reinforcement Concrete For Foundation | 5d | 2024-08-21 | 2024-08-26 | B09-V17~V24-1010, B09-V09~V16-1020 | 37d | 0d | RC Foundation Carpentry [8]; RC Foundation Steel [8]; RC Foundation Concrete [8] | 201,355.92 | Civil |
| B09-V17~V24-1030 |  | Steel Fixing& Carpenter work for Beams | 4d | 2024-08-27 | 2024-08-31 | B09-V17~V24-1020, B09-V09~V16-1030 | 37d | 0d | RC Grade Beam Carpentry & Steel [8] | 44,745.76 | Civil |
| B09-V17~V24-1040 |  | Mech&Elec Establishment for Beams | 3d | 2024-09-01 | 2024-09-03 | B09-V17~V24-1030, B09-V09~V16-1040 | 37d | 0d |  |  | Mech |
| B09-V17~V24-1050 |  | Pouring Concrete For Beams | 1d | 2024-09-04 | 2024-09-04 | B09-V17~V24-1040, B09-V09~V16-1050 | 37d | 0d | RC Grade Beam Concrete [8] | 77,141.68 | Civil |
| B09-V17~V24-1060 |  | Bitmen Coating For Fondation&Beams | 3d | 2024-09-05 | 2024-09-08 | B09-V17~V24-1050, B09-V09~V16-1060 | 37d | 0d | Bitumen Coating Foundations & Grade Beams [8] | 22,372.32 | Civil |
| B09-V17~V24-1070 |  | Backfilling Inside Fondations | 4d | 2024-09-09 | 2024-09-12 | B09-V17~V24-1060, B09-V09~V16-1070 | 37d | 0d | Backfilling 1st Layer [8]; Backfilling 2ed Layer [8] | 11,186.4 | Civil |
| B09-V17~V24-1080 |  | Mech Works Under Grond Slap | 3d | 2024-09-14 | 2024-09-16 | B09-V17~V24-1070, B09-V09~V16-1080 | 37d | 0d | Mech Establishment Under Ground Slap [8] | 13,423.42 | Mech |
| B09-V17~V24-1090 |  | Steel Fixing& Carpenter work for Ground Slap | 3d | 2024-09-17 | 2024-09-19 | B09-V17~V24-1080, B09-V09~V16-1090 | 37d | 0d | Steel & Carpentry For Ground Slap [8] | 10,246.54 | Civil |
| B09-V17~V24-1100 |  | Anti Termite Treatment For Ground Slap | 1d | 2024-09-21 | 2024-09-21 | B09-V17~V24-1090, B09-V09~V16-1100 | 37d | 0d | Anti Termite Treatment nder Ground Slap [8] | 2,237.28 | Civil |
| B09-V17~V24-1110 |  | Pouring Concrete For Ground Slap | 1d | 2024-09-21 | 2024-09-21 | B09-V17~V24-1100 FF, B09-V17~V24-1090, B09-V09~V16-1110 | 37d | 5d | Concrete For Ground Slap [8] | 58,169.52 | Civil |

| ID | WBS | Activity | Duration | Start | Finish | Predecessors | Total float | Free float | Resources | Cost | Department-1 |
| --- | --- | --- | --- | --- | --- | --- | --- | --- | --- | --- | --- |
|  | 4 | **Precast Works** |  | 2024-11-04 | 2024-11-11 |  |  |  |  |  |  |
| B09-V17~V24-1120 |  | Precast Constrction | 7d | 2024-11-04 | 2024-11-11 | B09-V17~V24-1110, B09-V09~V16-1120 | 0d |  | Precast Walls GF [8]; Hollow Core Slap GF [8]; Precast Stairs & staircase House [8]; Thermal insollation Outside Walls [8]; Concrete structure joints [8]; Precast Walls FF [8]; Hollow Core Slap FF [8] | 1,513,762.87 | Civil |
|  | 1 | **Works Inside The Villa** |  | 2024-11-12 | 2025-02-25 |  |  |  |  |  |  |
| B09-V17~V24-1130 |  | Block Work For GF & Estabishment 1F | 6d | 2024-11-12 | 2024-11-18 | B09-V17~V24-1120, B09-V09~V16-1130 | 13d | 0d | Block GF [8] | 13,647.1 | Arc |
| B09-V17~V24-1140 |  | L.L & H.L Drainage | 6d | 2024-11-19 | 2024-11-25 | B09-V17~V24-1130, B09-V09~V16-1140 | 13d | 0d | HL Drainage [8]; L.L Drainage [8] | 89,489.28 | Mech |
| B09-V17~V24-1150 |  | Elec Establishment For GF & 1F | 3d | 2024-11-19 | 2024-11-21 | B09-V17~V24-1130, B09-V09~V16-1150 | 16d | 3d | Elec Establishment GF [8] | 26,840.73 | Elec |
| B09-V17~V24-1160 |  | Screed Work For 1F & Roof | 6d | 2024-11-26 | 2024-12-02 | B09-V17~V24-1140, B09-V17~V24-1150, B09-V09~V16-1160 | 13d | 0d | Screed 1st Floor [8]; Screed Roof Floor [8]; Leveling Screed 1st Floor [8]; Leveling Screed Roof Floor [8] | 268,467.85 | Civil |
| B09-V17~V24-1170 |  | Water Tank & Heater Foundations | 4d | 2024-12-03 | 2024-12-07 | B09-V17~V24-1160, B09-V09~V16-1170 | 17d | 0d |  |  | Civil |
| B09-V17~V24-1180 |  | Block Works For 1F | 3d | 2024-12-03 | 2024-12-05 | B09-V17~V24-1160, B09-V09~V16-1180 | 13d | 0d | Block FF [8] | 20,537.81 | Arc |
| B09-V17~V24-1190 |  | Water Line Network | 6d | 2024-12-07 | 2024-12-12 | B09-V17~V24-1180, B09-V09~V16-1190 | 13d | 0d | Water Line Network [8] | 40,261.13 | Mech |
| B09-V17~V24-1200 |  | Continue Elec Establishment For GF & 1F | 3d | 2024-12-07 | 2024-12-09 | B09-V17~V24-1180, B09-V09~V16-1200 | 16d | 3d | Elec Establishment FF [8] | 26,840.73 | Elec |
| B09-V17~V24-1210 |  | Thermal Insulation For Roof | 5d | 2024-12-08 | 2024-12-12 | B09-V17~V24-1170, B09-V09~V16-1210 | 17d | 0d | Roof Insulation [8] | 32,530.16 | Arc |
| B09-V17~V24-1220 |  | Roof Floor Tiles | 6d | 2024-12-14 | 2024-12-19 | B09-V17~V24-1210, B09-V09~V16-1220 | 17d | 1d | Roof Tiles [8]; Roof Tiles Joints [8]; Re_Test Roof Insulation [8] | 63,179.38 | Arc |
| B09-V17~V24-1230 |  | Plaster Work For Villa | 6d | 2024-12-14 | 2024-12-19 | B09-V17~V24-1190, B09-V17~V24-1200, B09-V09~V16-1230 | 13d | 0d | Establishing a plastering GF [8]; Establishing a plastering FF [8]; Plastering GF [8]; Plastering FF [8] | 49,263.81 |  |
| B09-V17~V24-1240 |  | Marbale Stairs & Handrails | 6d | 2024-12-21 | 2024-12-26 | B09-V17~V24-1230, B09-V09~V16-1240 | 35d | 1d | Marbale Stairs [8]; Stairs Handrails SS [8] | 91,494.69 |  |
| B09-V17~V24-1250 |  | Water Proofing Of Bathrooms | 4d | 2024-12-21 | 2024-12-24 | B09-V17~V24-1230, B09-V09~V16-1250 | 13d | 0d | Bathrooms InsulationGF & FF [8] | 134.24 |  |
| B09-V17~V24-1260 |  | Pulling The Elec Wires | 4d | 2024-12-21 | 2024-12-24 | B09-V17~V24-1230, B09-V09~V16-1260 | 23d | 3d | Elec Wires GF [8]; Elec Wires FF [8] | 80,542.4 |  |
| B09-V17~V24-1270 |  | Bathroom Tiles | 4d | 2024-12-25 | 2024-12-29 | B09-V17~V24-1250, B09-V17~V24-1220, B09-V09~V16-1270 | 13d | 0d | Ceramic Walls Kitchen [8]; Ceramic Walls Bathrooms GF [8]; Ceramic Walls Bathrooms FF [8]; Ceramic Tiles Bathrooms GF [8]; Ceramic Tiles Kitchen GF [8]; Ceramic Tiles Store GF [8] | 73,204.08 |  |
| B09-V17~V24-1280 |  | Structure For Gypsum | 6d | 2024-12-30 | 2025-01-05 | B09-V17~V24-1270, B09-V09~V16-1280 | 13d | 0d | Structure For Gypsum GF Rooms [8]; Structure For Gypsum FF Rooms [8]; Structure For Gypsum Bathrooms & Kitchen [8] | 33,550.81 |  |
| B09-V17~V24-1290 |  | Gypsum Board For Room | 4d | 2025-01-06 | 2025-01-09 | B09-V17~V24-1280, B09-V17~V24-1260, B09-V09~V16-1290 | 13d | 0d | Gypsum Board For GF Room [8]; Gypsum Board For FF Room [8] | 35,796.64 |  |
| B09-V17~V24-1300 |  | Installation Of Gypsum Board For Bathroom & Kitchen | 4d | 2025-01-11 | 2025-01-14 | B09-V17~V24-1290, B09-V09~V16-1300 | 13d | 0d | Gypsum Board For Bathrooms & Kitchen [8] | 11,052.24 |  |
| B09-V17~V24-1310 |  | Putty Filler For Gypsm Board Ceiling | 6d | 2025-01-15 | 2025-01-21 | B09-V17~V24-1300, B09-V09~V16-1310 | 13d | 0d | Putty Filler 1st Layer Roof all Rooms [8]; Putty Filler 1st Layer Roof all Bathrooms & Kitchen [8]; Putty Filler1st Layer walls [8] | 62,182.52 |  |
| B09-V17~V24-1320 |  | Fixing Shower Glass | 4d | 2025-01-22 | 2025-01-26 | B09-V17~V24-1310, B09-V09~V16-1320 | 21d | 0d | Shower Glass [8] | 22,372.88 |  |
| B09-V17~V24-1330 |  | Interior Wall Putty Filler | 6d | 2025-01-22 | 2025-01-28 | B09-V17~V24-1310, B09-V17~V24-1240, B09-V09~V16-1330 | 13d | 0d | Putty Filler 2ed Layer Roof & WAlls GF [8]; Putty Filler 2ed Layer Roof & WAlls FF [8] | 62,150.21 |  |
| B09-V17~V24-1340 |  | Installation Of Sanitry Fixture | 7d | 2025-01-27 | 2025-02-03 | B09-V17~V24-1320, B09-V09~V16-1340 | 21d | 0d | Mech Fixtures & Accessories [8] | 98,435.64 |  |
| B09-V17~V24-1350 |  | 1st Face Paint | 6d | 2025-01-29 | 2025-02-04 | B09-V17~V24-1330, B09-V09~V16-1350 | 13d | 0d |  |  |  |
| B09-V17~V24-1360 |  | Installation Of Aluminum Windows | 7d | 2025-01-29 | 2025-02-05 | B09-V17~V24-1330, B09-V09~V16-1360 | 23d | 0d | Aluminum Windows [8] | 84,795.68 |  |
| B09-V17~V24-1370 |  | Installation Of Elec Fixture & Accessories | 7d | 2025-01-29 | 2025-02-05 | B09-V17~V24-1310, B09-V17~V24-1330, B09-V17~V24-1260, B09-V09~V16-1370 | 37d | 0d | Elec Fixtures & Accessories Villa & Yard [8]; Elec Cables GF & FF & Earthing [8] | 53,692.2 |  |
| B09-V17~V24-1380 |  | Installation Of Water Tank-Heater & Pumps | 7d | 2025-02-04 | 2025-02-11 | B09-V17~V24-1340, B09-V09~V16-1380, B09-V17~V24-1220 | 21d | 0d | Water Tank & booster Pump [8]; Lower Pump [8]; Heater [8] | 129,756.23 |  |
| B09-V17~V24-1390 |  | Installation Of Parquet | 4d | 2025-02-05 | 2025-02-09 | B09-V17~V24-1350, B09-V09~V16-1390 | 13d | 0d | Installation Of Parquet [8] | 52,978.96 |  |
| B09-V17~V24-1400 |  | Installation Of Wooden Doors | 7d | 2025-02-10 | 2025-02-17 | B09-V17~V24-1390, B09-V09~V16-1400 | 13d | 0d | Wooden Doors Kitchen & Bathroom without Accessories [8]; Wooden Doors Accessories all Villa [8]; Exterior Wooden Doors [8] | 142,105.45 |  |
| B09-V17~V24-1410 |  | Final Face Paint | 7d | 2025-02-18 | 2025-02-25 | B09-V17~V24-1360, B09-V17~V24-1400, B09-V09~V16-1410 | 13d | 0d | Final Face Paint Villa [8] | 31,096.77 |  |

| ID | WBS | Activity | Duration | Start | Finish | Predecessors | Total float | Free float | Resources | Cost |
| --- | --- | --- | --- | --- | --- | --- | --- | --- | --- | --- |
|  | 3 | **Fence & Courtyard Works** |  | 2024-11-12 | 2025-02-15 |  |  |  |  |  |
| B09-V17~V24-1420 |  | Pouring Bedding Concrete For Fence Fondations | 2d | 2024-11-12 | 2024-11-13 | B09-V17~V24-1120, B09-V09~V16-1420 | 9d | 0d | Excavation Fence Foundations [8] | 4,519.28 |
| B09-V17~V24-1430 |  | RC Concrete For Fence Fondations | 6d | 2024-11-14 | 2024-11-20 | B09-V17~V24-1420, B09-V09~V16-1430 | 9d | 0d | Fence Fondations-Eastern side [8]; Fence Fondations-Westren side [8]; Fence Fondations-Back side [8] | 13,420.32 |
| B09-V17~V24-1440 |  | Steel Fixing & Carpentry For Fence Columns | 6d | 2024-11-21 | 2024-11-27 | B09-V17~V24-1430, B09-V09~V16-1440 | 9d | 0d |  |  |
| B09-V17~V24-1450 |  | Establishing Elec For Fence Columns | 4d | 2024-11-28 | 2024-12-02 | B09-V17~V24-1440, B09-V09~V16-1450 | 9d | 0d |  |  |
| B09-V17~V24-1460 |  | Pouring Concrete For Fence Columns | 1d | 2024-12-03 | 2024-12-03 | B09-V17~V24-1450, B09-V09~V16-1460 | 9d | 0d | Fence Columns-Eastern side [8]; Fence Columns-Westren side [8]; Fence Columns-Back side [8] | 9,665.04 |
| B09-V17~V24-1470 |  | Installation Precast Panel For Fence | 5d | 2024-12-04 | 2024-12-09 | B09-V17~V24-1460, B09-V09~V16-1470 | 9d | 0d | Hollow Core Walls [8] | 71,593.2 |
| B09-V17~V24-1480 |  | Bitumen Coating For Fence Fondations | 4d | 2024-12-10 | 2024-12-14 | B09-V17~V24-1470, B09-V09~V16-1480 | 9d | 0d |  |  |
| B09-V17~V24-1490 |  | Pouring Bedding Concrete For "Front" Fence Fondations | 1d | 2024-12-10 | 2024-12-10 | B09-V17~V24-1470, B09-V09~V16-1490 | 21d | 0d |  |  |
| B09-V17~V24-1500 |  | RC Concrete For "Front" Fence Fondations | 4d | 2024-12-11 | 2024-12-15 | B09-V17~V24-1490, B09-V09~V16-1500 | 21d | 0d | Front Fence Fondations [8] | 8,904.4 |
| B09-V17~V24-1510 |  | Outdoor Drainage & Water Line | 5d | 2024-12-15 | 2024-12-19 | B09-V17~V24-1480, B09-V17~V24-1140, B09-V09~V16-1510 | 9d | 0d | Outdoor Drainage [8]; Outdoor Water Line [8] | 13,423.68 |
| B09-V17~V24-1520 |  | Steel Fixing & Carpentry For "Front" Fence Columns | 4d | 2024-12-16 | 2024-12-19 | B09-V17~V24-1500, B09-V09~V16-1520 | 21d | 0d |  |  |
| B09-V17~V24-1530 |  | Establishing Elec For "Front" Fence Columns | 4d | 2024-12-21 | 2024-12-24 | B09-V17~V24-1520, B09-V09~V16-1530 | 21d | 0d |  |  |
| B09-V17~V24-1540 |  | Establishing Elec For Fence & Yard | 2d | 2024-12-21 | 2024-12-22 | B09-V17~V24-1510, B09-V09~V16-1540 | 9d | 0d | Elec Establishment Fence & Yard [8] | 17,898.32 |
| B09-V17~V24-1550 |  | Backfilling the Yard | 4d | 2024-12-23 | 2024-12-26 | B09-V17~V24-1540, B09-V09~V16-1550 | 9d | 0d | Backfilling the Yard [8] | 10,560 |
| B09-V17~V24-1560 |  | Pouring Concrete Wall Of "Front" Fence Columns | 2d | 2024-12-25 | 2024-12-26 | B09-V17~V24-1530, B09-V09~V16-1560 | 21d | 0d | Front Fence Walls [8] | 17,898.32 |
| B09-V17~V24-1570 |  | Pouring Concrete Crown Of "Front" Fence Columns | 3d | 2024-12-28 | 2024-12-30 | B09-V17~V24-1560, B09-V09~V16-1570 | 21d | 0d | Fence Columns - C Chanel [8] | 3,310.37 |
| B09-V17~V24-1580 |  | Bardoura Works For Yard | 5d | 2024-12-28 | 2025-01-01 | B09-V17~V24-1550, B09-V09~V16-1580 | 9d | 0d | Bardoura Works For Yard [8] | 14,408.16 |
| B09-V17~V24-1590 |  | Pouring Concrete Flower Basin Of "Front" Fence Columns | 4d | 2024-12-31 | 2025-01-04 | B09-V17~V24-1570, B09-V09~V16-1590 | 21d | 0d |  |  |
| B09-V17~V24-1600 |  | Antitermite Treatment For Yard | 1d | 2025-01-02 | 2025-01-02 | B09-V17~V24-1580, B09-V09~V16-1600 | 9d | 0d | Antitermite Treatment For Yard [8] |  |
| B09-V17~V24-1610 |  | Pouring Concrete For Yard | 1d | 2025-01-04 | 2025-01-04 | B09-V17~V24-1600, B09-V09~V16-1610 | 9d | 0d |  |  |
| B09-V17~V24-1620 |  | Block Work For Flower Basin | 5d | 2025-01-05 | 2025-01-09 | B09-V17~V24-1610, B09-V09~V16-1620 | 9d | 0d |  |  |
| B09-V17~V24-1630 |  | Plastering Work For Flower Basin | 4d | 2025-01-11 | 2025-01-14 | B09-V17~V24-1620, B09-V09~V16-1630 | 9d | 0d |  |  |
| B09-V17~V24-1640 |  | Interlock Works For The Yard | 6d | 2025-01-15 | 2025-01-21 | B09-V17~V24-1630, B09-V09~V16-1640 | 9d | 0d | Interlock Works For The Yard [8] | 36,776.32 |
| B09-V17~V24-1650 |  | External Grading Works For The Villa | 4d | 2025-01-22 | 2025-01-26 | B09-V17~V24-1640, B09-V09~V16-1650 | 11d | 0d | External Grading Works For The Villa [8] | 3,221.68 |
| B09-V17~V24-1660 |  | Installation The Exterior Door & Garage Door | 5d | 2025-01-22 | 2025-01-27 | B09-V17~V24-1640, B09-V09~V16-1660 | 14d | 2d | Installation The Exterior Door [8]; Installation The Exterior Garage Door [8] | 40,002.72 |
| B09-V17~V24-1670 |  | Fixing Floor Drain For The Yard | 2d | 2025-01-22 | 2025-01-23 | B09-V17~V24-1640, B09-V09~V16-1670 | 17d | 5d | Floor Drain & Clean Out [8] | 13,423.76 |
| B09-V17~V24-1680 |  | Granite Surronds Around The Villa | 4d | 2025-01-27 | 2025-01-30 | B09-V17~V24-1650, B09-V09~V16-1680 | 11d | 2d | Granite Surronds Around The Villa [8] | 25,818.32 |
| B09-V17~V24-1690 |  | Painting The Base Surface Of The Fence | 2d | 2025-01-27 | 2025-01-28 | B09-V17~V24-1750, B09-V09~V16-1690 | 9d | 0d |  |  |
| B09-V17~V24-1700 |  | Painting The Final Face Of The Fence | 4d | 2025-01-29 | 2025-02-02 | B09-V17~V24-1690, B09-V09~V16-1700 | 9d | 0d | Painting Final Face Of The Fence [8] | 37,586.48 |
| B09-V17~V24-1710 |  | Exterior Painting Of The Villa | 7d | 2025-02-03 | 2025-02-10 | B09-V17~V24-1680, B09-V17~V24-1700, B09-V17~V24-1660, B09-V17~V24-1670, B09-V09~V16-1710 | 9d | 0d | Exterior Painting Of The Villa [8]; Exterior Painting Staircase House [8] | 105,684.16 |
| B09-V17~V24-1720 |  | Installation Elec Fixtures & Accessories For The Yard | 4d | 2025-02-11 | 2025-02-15 | B09-V17~V24-1700, B09-V17~V24-1710, B09-V09~V16-1720 | 50d | 0d | Elec feeding panels GF & FF [8] | 22,372.88 |

| ID | WBS | Activity | Duration | Start | Finish | Predecessors | Total float | Free float | Resources | Cost | Department-1 |
| --- | --- | --- | --- | --- | --- | --- | --- | --- | --- | --- | --- |
|  | 5 | **External Sidewalk Works** |  | 2025-01-05 | 2025-02-19 |  |  |  |  |  |  |
| B09-V17~V24-1730 |  | Connection The Drain To The Piblic Network | 3d | 2025-01-05 | 2025-01-07 | B09-V17~V24-1510, B09-V17~V24-1590, B09-V09~V16-1730 | 21d | 4d | Connection Drain To The Piblic Network [8]; Connection Water To The Piblic Network [8] | 13,420.32 |  |
| B09-V17~V24-1740 |  | Pardora Works For The External Sidewalk | 2d | 2025-01-22 | 2025-01-23 | B09-V17~V24-1640, B09-V17~V24-1730, B09-V09~V16-1740 | 9d | 0d |  |  |  |
| B09-V17~V24-1750 |  | Interlock Works For The Exerrnal Sidewalk | 2d | 2025-01-25 | 2025-01-26 | B09-V17~V24-1740, B09-V09~V16-1750 | 9d | 0d |  |  |  |
| B09-V17~V24-1760 |  | Pulling The Villa's Main Elec Cable | 4d | 2025-02-16 | 2025-02-19 | B09-V17~V24-1750, B09-V17~V24-1720, B09-V09~V16-1760 | 50d | 0d | Elec Work Testing [8] | 22,819.84 |  |
|  | 6 | **Final Testing & Handover** |  | 2025-02-12 | 2025-03-10 |  |  |  |  |  |  |
| B09-V17~V24-1770 |  | Mech Work Testing & Handover | 5d | 2025-02-12 | 2025-02-17 | B09-V17~V24-1730, B09-V17~V24-1340, B09-V17~V24-1380, B09-V09~V16-1770 | 57d | 2d | Mech Work Testing & Handover [8] | 14,318.64 |  |
| B09-V17~V24-1780 |  | Arch Snaglist & Handover | 5d | 2025-02-18 | 2025-02-23 | B09-V17~V24-1750, B09-V17~V24-1710, B09-V17~V24-1400, B09-V09~V16-1780 | 52d | 2d | Arch Snaglist & Handover [8] | 77,320.64 |  |
| B09-V17~V24-1790 |  | ElecWork Testing & Handover | 5d | 2025-02-20 | 2025-02-25 | B09-V17~V24-1760, B09-V17~V24-1370, B09-V09~V16-1790 | 50d | 0d | Elec Work Handover [8] | 23,804.72 |  |
| B09-V17~V24-1800 |  | Final Handover Of The Villa To The Consltant | 5d | 2025-02-26 | 2025-03-03 | B09-V17~V24-1780, B09-V17~V24-1790, B09-V17~V24-1770, B09-V17~V24-1410, B09-V09~V16-1800 | 50d | 0d |  |  |  |
| B09-V17~V24-1810 |  | Customer Delivery | 6d | 2025-03-04 | 2025-03-10 | B09-V17~V24-1800, B09-V09~V16-1810 | 50d | 1d |  |  |  |
|  | 3 | **B09-V25~V32** |  | 2024-08-19 | 2025-03-18 |  |  |  |  |  |  |
|  | 2 | **Under Grond Slap Works** |  | 2024-08-19 | 2024-09-28 |  |  |  |  |  |  |
| B09-V25~V32-1000 |  | Excavation&Compaction of Fondation | 6d | 2024-08-19 | 2024-08-25 | B09-V17~V24-1000 | 38d | 0d | Clearing & Groubbing [8]; Excavation & Leveling [8]; Stone Layer [8]; A3 Layer [8]; A1-a 1st Layer [8]; A1-a 2ed Layer [8] | 163,545.76 | Civil |
| B09-V25~V32-1010 |  | Pouring Concrete For Bedding | 2d | 2024-08-26 | 2024-08-27 | B09-V25~V32-1000, B09-V17~V24-1010 | 38d | 0d | PC Carpentry [8]; PC Concrete [8]; RC 18 MPA [9 M3] | 37,899.68 | Civil |
| B09-V25~V32-1020 |  | Reinforcement Concrete For Foundation | 5d | 2024-08-28 | 2024-09-02 | B09-V25~V32-1010, B09-V17~V24-1020 | 38d | 0d | RC Foundation Carpentry [8]; RC Foundation Steel [8]; RC Foundation Concrete [8] | 201,355.92 | Civil |
| B09-V25~V32-1030 |  | Steel Fixing& Carpenter work for Beams | 4d | 2024-09-03 | 2024-09-07 | B09-V25~V32-1020, B09-V17~V24-1030 | 38d | 0d | RC Grade Beam Carpentry & Steel [8] | 44,745.76 | Civil |
| B09-V25~V32-1040 |  | Mech&Elec Establishment for Beams | 3d | 2024-09-08 | 2024-09-10 | B09-V25~V32-1030, B09-V17~V24-1040 | 38d | 0d |  |  | Mech |
| B09-V25~V32-1050 |  | Pouring Concrete For Beams | 1d | 2024-09-11 | 2024-09-11 | B09-V25~V32-1040, B09-V17~V24-1050 | 38d | 0d | RC Grade Beam Concrete [8] | 77,141.68 | Civil |
| B09-V25~V32-1060 |  | Bitmen Coating For Fondation&Beams | 3d | 2024-09-12 | 2024-09-15 | B09-V25~V32-1050, B09-V17~V24-1060 | 38d | 0d | Bitumen Coating Foundations & Grade Beams [8] | 22,372.32 | Civil |
| B09-V25~V32-1070 |  | Backfilling Inside Fondations | 4d | 2024-09-16 | 2024-09-19 | B09-V25~V32-1060, B09-V17~V24-1070 | 38d | 0d | Backfilling 1st Layer [8]; Backfilling 2ed Layer [8] | 11,186.4 | Civil |
| B09-V25~V32-1080 |  | Mech Works Under Grond Slap | 3d | 2024-09-21 | 2024-09-23 | B09-V25~V32-1070, B09-V17~V24-1080 | 38d | 0d | Mech Establishment Under Ground Slap [8] | 13,423.42 | Mech |
| B09-V25~V32-1090 |  | Steel Fixing& Carpenter work for Ground Slap | 3d | 2024-09-24 | 2024-09-26 | B09-V25~V32-1080, B09-V17~V24-1090 | 38d | 0d | Steel & Carpentry For Ground Slap [8] | 10,246.54 | Civil |
| B09-V25~V32-1100 |  | Anti Termite Treatment For Ground Slap | 1d | 2024-09-28 | 2024-09-28 | B09-V25~V32-1090, B09-V17~V24-1100 | 38d | 0d | Anti Termite Treatment nder Ground Slap [8] | 2,237.28 | Civil |
| B09-V25~V32-1110 |  | Pouring Concrete For Ground Slap | 1d | 2024-09-28 | 2024-09-28 | B09-V25~V32-1100 FF, B09-V25~V32-1090, B09-V17~V24-1110 | 38d | 5d | Concrete For Ground Slap [8] | 58,169.52 | Civil |

| ID | WBS | Activity | Duration | Start | Finish | Predecessors | Total float | Free float | Resources | Cost | Department-1 |
| --- | --- | --- | --- | --- | --- | --- | --- | --- | --- | --- | --- |
|  | 4 | **Precast Works** |  | 2024-11-12 | 2024-11-19 |  |  |  |  |  |  |
| B09-V25~V32-1120 |  | Precast Constrction | 7d | 2024-11-12 | 2024-11-19 | B09-V25~V32-1110, B09-V17~V24-1120 | 0d |  | Precast Walls GF [8]; Hollow Core Slap GF [8]; Precast Stairs & staircase House [8]; Thermal insollation Outside Walls [8]; Concrete structure joints [8]; Precast Walls FF [8]; Hollow Core Slap FF [8] | 1,513,762.87 | Civil |
|  | 1 | **Works Inside The Villa** |  | 2024-11-20 | 2025-03-05 |  |  |  |  |  |  |
| B09-V25~V32-1130 |  | Block Work For GF & Estabishment 1F | 6d | 2024-11-20 | 2024-11-26 | B09-V25~V32-1120, B09-V17~V24-1130 | 13d | 0d | Block GF [8] | 13,647.1 | Arc |
| B09-V25~V32-1140 |  | L.L & H.L Drainage | 6d | 2024-11-27 | 2024-12-03 | B09-V25~V32-1130, B09-V17~V24-1140 | 13d | 0d | HL Drainage [8]; L.L Drainage [8] | 89,489.28 | Mech |
| B09-V25~V32-1150 |  | Elec Establishment For GF & 1F | 3d | 2024-11-27 | 2024-11-30 | B09-V25~V32-1130, B09-V17~V24-1150 | 16d | 3d | Elec Establishment GF [8] | 26,840.73 | Elec |
| B09-V25~V32-1160 |  | Screed Work For 1F & Roof | 6d | 2024-12-04 | 2024-12-10 | B09-V25~V32-1140, B09-V25~V32-1150, B09-V17~V24-1160 | 13d | 0d | Screed 1st Floor [8]; Screed Roof Floor [8]; Leveling Screed 1st Floor [8]; Leveling Screed Roof Floor [8] | 268,467.85 | Civil |
| B09-V25~V32-1170 |  | Water Tank & Heater Foundations | 4d | 2024-12-11 | 2024-12-15 | B09-V25~V32-1160, B09-V17~V24-1170 | 17d | 0d |  |  | Civil |
| B09-V25~V32-1180 |  | Block Works For 1F | 3d | 2024-12-11 | 2024-12-14 | B09-V25~V32-1160, B09-V17~V24-1180 | 13d | 0d | Block FF [8] | 20,537.81 | Arc |
| B09-V25~V32-1190 |  | Water Line Network | 6d | 2024-12-15 | 2024-12-21 | B09-V25~V32-1180, B09-V17~V24-1190 | 13d | 0d | Water Line Network [8] | 40,261.13 | Mech |
| B09-V25~V32-1200 |  | Continue Elec Establishment For GF & 1F | 3d | 2024-12-15 | 2024-12-17 | B09-V25~V32-1180, B09-V17~V24-1200 | 16d | 3d | Elec Establishment FF [8] | 26,840.73 | Elec |
| B09-V25~V32-1210 |  | Thermal Insulation For Roof | 5d | 2024-12-16 | 2024-12-21 | B09-V25~V32-1170, B09-V17~V24-1210 | 17d | 0d | Roof Insulation [8] | 32,530.16 | Arc |
| B09-V25~V32-1220 |  | Roof Floor Tiles | 6d | 2024-12-22 | 2024-12-28 | B09-V25~V32-1210, B09-V17~V24-1220 | 17d | 1d | Roof Tiles [8]; Roof Tiles Joints [8]; Re_Test Roof Insulation [8] | 63,179.38 | Arc |
| B09-V25~V32-1230 |  | Plaster Work For Villa | 6d | 2024-12-22 | 2024-12-28 | B09-V25~V32-1190, B09-V25~V32-1200, B09-V17~V24-1230 | 13d | 0d | Establishing a plastering GF [8]; Establishing a plastering FF [8]; Plastering GF [8]; Plastering FF [8] | 49,263.81 |  |
| B09-V25~V32-1240 |  | Marbale Stairs & Handrails | 6d | 2024-12-29 | 2025-01-04 | B09-V25~V32-1230, B09-V17~V24-1240 | 35d | 1d | Marbale Stairs [8]; Stairs Handrails SS [8] | 91,494.69 |  |
| B09-V25~V32-1250 |  | Water Proofing Of Bathrooms | 4d | 2024-12-29 | 2025-01-01 | B09-V25~V32-1230, B09-V17~V24-1250 | 13d | 0d | Bathrooms InsulationGF & FF [8] | 134.24 |  |
| B09-V25~V32-1260 |  | Pulling The Elec Wires | 4d | 2024-12-29 | 2025-01-01 | B09-V25~V32-1230, B09-V17~V24-1260 | 23d | 3d | Elec Wires GF [8]; Elec Wires FF [8] | 80,542.4 |  |
| B09-V25~V32-1270 |  | Bathroom Tiles | 4d | 2025-01-02 | 2025-01-06 | B09-V25~V32-1250, B09-V25~V32-1220, B09-V17~V24-1270 | 13d | 0d | Ceramic Walls Kitchen [8]; Ceramic Walls Bathrooms GF [8]; Ceramic Walls Bathrooms FF [8]; Ceramic Tiles Bathrooms GF [8]; Ceramic Tiles Kitchen GF [8]; Ceramic Tiles Store GF [8] | 73,204.08 |  |
| B09-V25~V32-1280 |  | Structure For Gypsum | 6d | 2025-01-07 | 2025-01-13 | B09-V25~V32-1270, B09-V17~V24-1280 | 13d | 0d | Structure For Gypsum GF Rooms [8]; Structure For Gypsum FF Rooms [8]; Structure For Gypsum Bathrooms & Kitchen [8] | 33,550.81 |  |
| B09-V25~V32-1290 |  | Gypsum Board For Room | 4d | 2025-01-14 | 2025-01-18 | B09-V25~V32-1280, B09-V25~V32-1260, B09-V17~V24-1290 | 13d | 0d | Gypsum Board For GF Room [8]; Gypsum Board For FF Room [8] | 35,796.64 |  |
| B09-V25~V32-1300 |  | Installation Of Gypsum Board For Bathroom & Kitchen | 4d | 2025-01-19 | 2025-01-22 | B09-V25~V32-1290, B09-V17~V24-1300 | 13d | 0d | Gypsum Board For Bathrooms & Kitchen [8] | 11,052.24 |  |
| B09-V25~V32-1310 |  | Putty Filler For Gypsm Board Ceiling | 6d | 2025-01-23 | 2025-01-29 | B09-V25~V32-1300, B09-V17~V24-1310 | 13d | 0d | Putty Filler 1st Layer Roof all Rooms [8]; Putty Filler 1st Layer Roof all Bathrooms & Kitchen [8]; Putty Filler1st Layer walls [8] | 62,182.52 |  |
| B09-V25~V32-1320 |  | Fixing Shower Glass | 4d | 2025-01-30 | 2025-02-03 | B09-V25~V32-1310, B09-V17~V24-1320 | 21d | 0d | Shower Glass [8] | 22,372.88 |  |
| B09-V25~V32-1330 |  | Interior Wall Putty Filler | 6d | 2025-01-30 | 2025-02-05 | B09-V25~V32-1310, B09-V25~V32-1240, B09-V17~V24-1330 | 13d | 0d | Putty Filler 2ed Layer Roof & WAlls GF [8]; Putty Filler 2ed Layer Roof & WAlls FF [8] | 62,150.21 |  |
| B09-V25~V32-1340 |  | Installation Of Sanitry Fixture | 7d | 2025-02-04 | 2025-02-11 | B09-V25~V32-1320, B09-V17~V24-1340 | 21d | 0d | Mech Fixtures & Accessories [8] | 98,435.64 |  |
| B09-V25~V32-1350 |  | 1st Face Paint | 6d | 2025-02-06 | 2025-02-12 | B09-V25~V32-1330, B09-V17~V24-1350 | 13d | 0d |  |  |  |
| B09-V25~V32-1360 |  | Installation Of Aluminum Windows | 7d | 2025-02-06 | 2025-02-13 | B09-V25~V32-1330, B09-V17~V24-1360 | 23d | 0d | Aluminum Windows [8] | 84,795.68 |  |
| B09-V25~V32-1370 |  | Installation Of Elec Fixture & Accessories | 7d | 2025-02-06 | 2025-02-13 | B09-V25~V32-1310, B09-V25~V32-1330, B09-V25~V32-1260, B09-V17~V24-1370 | 37d | 0d | Elec Fixtures & Accessories Villa & Yard [8]; Elec Cables GF & FF & Earthing [8] | 53,692.2 |  |
| B09-V25~V32-1380 |  | Installation Of Water Tank-Heater & Pumps | 7d | 2025-02-12 | 2025-02-19 | B09-V25~V32-1340, B09-V17~V24-1380, B09-V25~V32-1220 | 21d | 0d | Water Tank & booster Pump [8]; Lower Pump [8]; Heater [8] | 129,756.23 |  |
| B09-V25~V32-1390 |  | Installation Of Parquet | 4d | 2025-02-13 | 2025-02-17 | B09-V25~V32-1350, B09-V17~V24-1390 | 13d | 0d | Installation Of Parquet [8] | 52,978.96 |  |
| B09-V25~V32-1400 |  | Installation Of Wooden Doors | 7d | 2025-02-18 | 2025-02-25 | B09-V25~V32-1390, B09-V17~V24-1400 | 13d | 0d | Wooden Doors Kitchen & Bathroom without Accessories [8]; Wooden Doors Accessories all Villa [8]; Exterior Wooden Doors [8] | 142,105.45 |  |
| B09-V25~V32-1410 |  | Final Face Paint | 7d | 2025-02-26 | 2025-03-05 | B09-V25~V32-1360, B09-V25~V32-1400, B09-V17~V24-1410 | 13d | 0d | Final Face Paint Villa [8] | 31,096.77 |  |

| ID | WBS | Activity | Duration | Start | Finish | Predecessors | Total float | Free float | Resources | Cost |
| --- | --- | --- | --- | --- | --- | --- | --- | --- | --- | --- |
|  | 3 | **Fence & Courtyard Works** |  | 2024-11-20 | 2025-02-23 |  |  |  |  |  |
| B09-V25~V32-1420 |  | Pouring Bedding Concrete For Fence Fondations | 2d | 2024-11-20 | 2024-11-21 | B09-V25~V32-1120, B09-V17~V24-1420 | 9d | 0d | Excavation Fence Foundations [8] | 4,519.28 |
| B09-V25~V32-1430 |  | RC Concrete For Fence Fondations | 6d | 2024-11-23 | 2024-11-28 | B09-V25~V32-1420, B09-V17~V24-1430 | 9d | 0d | Fence Fondations-Eastern side [8]; Fence Fondations-Westren side [8]; Fence Fondations-Back side [8] | 13,420.32 |
| B09-V25~V32-1440 |  | Steel Fixing & Carpentry For Fence Columns | 6d | 2024-11-30 | 2024-12-05 | B09-V25~V32-1430, B09-V17~V24-1440 | 9d | 0d |  |  |
| B09-V25~V32-1450 |  | Establishing Elec For Fence Columns | 4d | 2024-12-07 | 2024-12-10 | B09-V25~V32-1440, B09-V17~V24-1450 | 9d | 0d |  |  |
| B09-V25~V32-1460 |  | Pouring Concrete For Fence Columns | 1d | 2024-12-11 | 2024-12-11 | B09-V25~V32-1450, B09-V17~V24-1460 | 9d | 0d | Fence Columns-Eastern side [8]; Fence Columns-Westren side [8]; Fence Columns-Back side [8] | 9,665.04 |
| B09-V25~V32-1470 |  | Installation Precast Panel For Fence | 5d | 2024-12-12 | 2024-12-17 | B09-V25~V32-1460, B09-V17~V24-1470 | 9d | 0d | Hollow Core Walls [8] | 71,593.2 |
| B09-V25~V32-1480 |  | Bitumen Coating For Fence Fondations | 4d | 2024-12-18 | 2024-12-22 | B09-V25~V32-1470, B09-V17~V24-1480 | 9d | 0d |  |  |
| B09-V25~V32-1490 |  | Pouring Bedding Concrete For "Front" Fence Fondations | 1d | 2024-12-18 | 2024-12-18 | B09-V25~V32-1470, B09-V17~V24-1490 | 21d | 0d |  |  |
| B09-V25~V32-1500 |  | RC Concrete For "Front" Fence Fondations | 4d | 2024-12-19 | 2024-12-23 | B09-V25~V32-1490, B09-V17~V24-1500 | 21d | 0d | Front Fence Fondations [8] | 8,904.4 |
| B09-V25~V32-1510 |  | Outdoor Drainage & Water Line | 5d | 2024-12-23 | 2024-12-28 | B09-V25~V32-1480, B09-V25~V32-1140, B09-V17~V24-1510 | 9d | 0d | Outdoor Drainage [8]; Outdoor Water Line [8] | 13,423.68 |
| B09-V25~V32-1520 |  | Steel Fixing & Carpentry For "Front" Fence Columns | 4d | 2024-12-24 | 2024-12-28 | B09-V25~V32-1500, B09-V17~V24-1520 | 21d | 0d |  |  |
| B09-V25~V32-1530 |  | Establishing Elec For "Front" Fence Columns | 4d | 2024-12-29 | 2025-01-01 | B09-V25~V32-1520, B09-V17~V24-1530 | 21d | 0d |  |  |
| B09-V25~V32-1540 |  | Establishing Elec For Fence & Yard | 2d | 2024-12-29 | 2024-12-30 | B09-V25~V32-1510, B09-V17~V24-1540 | 9d | 0d | Elec Establishment Fence & Yard [8] | 17,898.32 |
| B09-V25~V32-1550 |  | Backfilling the Yard | 4d | 2024-12-31 | 2025-01-04 | B09-V25~V32-1540, B09-V17~V24-1550 | 9d | 0d | Backfilling the Yard [8] | 10,560 |
| B09-V25~V32-1560 |  | Pouring Concrete Wall Of "Front" Fence Columns | 2d | 2025-01-02 | 2025-01-04 | B09-V25~V32-1530, B09-V17~V24-1560 | 21d | 0d | Front Fence Walls [8] | 17,898.32 |
| B09-V25~V32-1570 |  | Pouring Concrete Crown Of "Front" Fence Columns | 3d | 2025-01-05 | 2025-01-07 | B09-V25~V32-1560, B09-V17~V24-1570 | 21d | 0d | Fence Columns - C Chanel [8] | 3,310.37 |
| B09-V25~V32-1580 |  | Bardoura Works For Yard | 5d | 2025-01-05 | 2025-01-09 | B09-V25~V32-1550, B09-V17~V24-1580 | 9d | 0d | Bardoura Works For Yard [8] | 14,408.16 |
| B09-V25~V32-1590 |  | Pouring Concrete Flower Basin Of "Front" Fence Columns | 4d | 2025-01-08 | 2025-01-12 | B09-V25~V32-1570, B09-V17~V24-1590 | 21d | 0d |  |  |
| B09-V25~V32-1600 |  | Antitermite Treatment For Yard | 1d | 2025-01-11 | 2025-01-11 | B09-V25~V32-1580, B09-V17~V24-1600 | 9d | 0d | Antitermite Treatment For Yard [8] |  |
| B09-V25~V32-1610 |  | Pouring Concrete For Yard | 1d | 2025-01-12 | 2025-01-12 | B09-V25~V32-1600, B09-V17~V24-1610 | 9d | 0d |  |  |
| B09-V25~V32-1620 |  | Block Work For Flower Basin | 5d | 2025-01-13 | 2025-01-18 | B09-V25~V32-1610, B09-V17~V24-1620 | 9d | 0d |  |  |
| B09-V25~V32-1630 |  | Plastering Work For Flower Basin | 4d | 2025-01-19 | 2025-01-22 | B09-V25~V32-1620, B09-V17~V24-1630 | 9d | 0d |  |  |
| B09-V25~V32-1640 |  | Interlock Works For The Yard | 6d | 2025-01-23 | 2025-01-29 | B09-V25~V32-1630, B09-V17~V24-1640 | 9d | 0d | Interlock Works For The Yard [8] | 36,776.32 |
| B09-V25~V32-1650 |  | External Grading Works For The Villa | 4d | 2025-01-30 | 2025-02-03 | B09-V25~V32-1640, B09-V17~V24-1650 | 11d | 0d | External Grading Works For The Villa [8] | 3,221.68 |
| B09-V25~V32-1660 |  | Installation The Exterior Door & Garage Door | 5d | 2025-01-30 | 2025-02-04 | B09-V25~V32-1640, B09-V17~V24-1660 | 14d | 2d | Installation The Exterior Door [8]; Installation The Exterior Garage Door [8] | 40,002.72 |
| B09-V25~V32-1670 |  | Fixing Floor Drain For The Yard | 2d | 2025-01-30 | 2025-02-01 | B09-V25~V32-1640, B09-V17~V24-1670 | 17d | 5d | Floor Drain & Clean Out [8] | 13,423.76 |
| B09-V25~V32-1680 |  | Granite Surronds Around The Villa | 4d | 2025-02-04 | 2025-02-08 | B09-V25~V32-1650, B09-V17~V24-1680 | 11d | 2d | Granite Surronds Around The Villa [8] | 25,818.32 |
| B09-V25~V32-1690 |  | Painting The Base Surface Of The Fence | 2d | 2025-02-04 | 2025-02-05 | B09-V25~V32-1750, B09-V17~V24-1690 | 9d | 0d |  |  |
| B09-V25~V32-1700 |  | Painting The Final Face Of The Fence | 4d | 2025-02-06 | 2025-02-10 | B09-V25~V32-1690, B09-V17~V24-1700 | 9d | 0d | Painting Final Face Of The Fence [8] | 37,586.48 |
| B09-V25~V32-1710 |  | Exterior Painting Of The Villa | 7d | 2025-02-11 | 2025-02-18 | B09-V25~V32-1680, B09-V25~V32-1700, B09-V25~V32-1660, B09-V25~V32-1670, B09-V17~V24-1710 | 9d | 0d | Exterior Painting Of The Villa [8]; Exterior Painting Staircase House [8] | 105,684.16 |
| B09-V25~V32-1720 |  | Installation Elec Fixtures & Accessories For The Yard | 4d | 2025-02-19 | 2025-02-23 | B09-V25~V32-1700, B09-V25~V32-1710, B09-V17~V24-1720 | 49d | 0d | Elec feeding panels GF & FF [8] | 22,372.88 |

| ID | WBS | Activity | Duration | Start | Finish | Predecessors | Total float | Free float | Resources | Cost | Department-1 |
| --- | --- | --- | --- | --- | --- | --- | --- | --- | --- | --- | --- |
|  | 5 | **External Sidewalk Works** |  | 2025-01-13 | 2025-02-27 |  |  |  |  |  |  |
| B09-V25~V32-1730 |  | Connection The Drain To The Piblic Network | 3d | 2025-01-13 | 2025-01-15 | B09-V25~V32-1510, B09-V25~V32-1590, B09-V17~V24-1730 | 21d | 4d | Connection Drain To The Piblic Network [8]; Connection Water To The Piblic Network [8] | 13,420.32 |  |
| B09-V25~V32-1740 |  | Pardora Works For The External Sidewalk | 2d | 2025-01-30 | 2025-02-01 | B09-V25~V32-1640, B09-V25~V32-1730, B09-V17~V24-1740 | 9d | 0d |  |  |  |
| B09-V25~V32-1750 |  | Interlock Works For The Exerrnal Sidewalk | 2d | 2025-02-02 | 2025-02-03 | B09-V25~V32-1740, B09-V17~V24-1750 | 9d | 0d |  |  |  |
| B09-V25~V32-1760 |  | Pulling The Villa's Main Elec Cable | 4d | 2025-02-24 | 2025-02-27 | B09-V25~V32-1750, B09-V25~V32-1720, B09-V17~V24-1760 | 49d | 0d | Elec Work Testing [8] | 22,819.84 |  |
|  | 6 | **Final Testing & Handover** |  | 2025-02-20 | 2025-03-18 |  |  |  |  |  |  |
| B09-V25~V32-1770 |  | Mech Work Testing & Handover | 5d | 2025-02-20 | 2025-02-25 | B09-V25~V32-1730, B09-V25~V32-1340, B09-V25~V32-1380, B09-V17~V24-1770 | 56d | 2d | Mech Work Testing & Handover [8] | 14,318.64 |  |
| B09-V25~V32-1780 |  | Arch Snaglist & Handover | 5d | 2025-02-26 | 2025-03-03 | B09-V25~V32-1750, B09-V25~V32-1710, B09-V25~V32-1400, B09-V17~V24-1780 | 51d | 2d | Arch Snaglist & Handover [8] | 77,320.64 |  |
| B09-V25~V32-1790 |  | ElecWork Testing & Handover | 5d | 2025-03-01 | 2025-03-05 | B09-V25~V32-1760, B09-V25~V32-1370, B09-V17~V24-1790 | 49d | 0d | Elec Work Handover [8] | 23,804.72 |  |
| B09-V25~V32-1800 |  | Final Handover Of The Villa To The Consltant | 5d | 2025-03-06 | 2025-03-11 | B09-V25~V32-1780, B09-V25~V32-1790, B09-V25~V32-1770, B09-V25~V32-1410, B09-V17~V24-1800 | 49d | 0d |  |  |  |
| B09-V25~V32-1810 |  | Customer Delivery | 6d | 2025-03-12 | 2025-03-18 | B09-V25~V32-1800, B09-V17~V24-1810 | 49d | 1d |  |  |  |
|  | 4 | **B10-V01~V08** |  | 2024-08-26 | 2025-03-26 |  |  |  |  |  |  |
|  | 2 | **Under Grond Slap Works** |  | 2024-08-26 | 2024-10-05 |  |  |  |  |  |  |
| B10-V01~V08-1000 |  | Excavation&Compaction of Fondation | 6d | 2024-08-26 | 2024-09-01 | B09-V25~V32-1000 | 39d | 0d | Clearing & Groubbing [8]; Excavation & Leveling [8]; Stone Layer [8]; A3 Layer [8]; A1-a 1st Layer [8]; A1-a 2ed Layer [8] | 163,545.76 | Civil |
| B10-V01~V08-1010 |  | Pouring Concrete For Bedding | 2d | 2024-09-02 | 2024-09-03 | B10-V01~V08-1000, B09-V25~V32-1010 | 39d | 0d | PC Carpentry [8]; PC Concrete [8]; RC 18 MPA [9 M3] | 37,899.68 | Civil |
| B10-V01~V08-1020 |  | Reinforcement Concrete For Foundation | 5d | 2024-09-04 | 2024-09-09 | B10-V01~V08-1010, B09-V25~V32-1020 | 39d | 0d | RC Foundation Carpentry [8]; RC Foundation Steel [8]; RC Foundation Concrete [8] | 201,355.92 | Civil |
| B10-V01~V08-1030 |  | Steel Fixing& Carpenter work for Beams | 4d | 2024-09-10 | 2024-09-14 | B10-V01~V08-1020, B09-V25~V32-1030 | 39d | 0d | RC Grade Beam Carpentry & Steel [8] | 44,745.76 | Civil |
| B10-V01~V08-1040 |  | Mech&Elec Establishment for Beams | 3d | 2024-09-15 | 2024-09-17 | B10-V01~V08-1030, B09-V25~V32-1040 | 39d | 0d |  |  | Mech |
| B10-V01~V08-1050 |  | Pouring Concrete For Beams | 1d | 2024-09-18 | 2024-09-18 | B10-V01~V08-1040, B09-V25~V32-1050 | 39d | 0d | RC Grade Beam Concrete [8] | 77,141.68 | Civil |
| B10-V01~V08-1060 |  | Bitmen Coating For Fondation&Beams | 3d | 2024-09-19 | 2024-09-22 | B10-V01~V08-1050, B09-V25~V32-1060 | 39d | 0d | Bitumen Coating Foundations & Grade Beams [8] | 22,372.32 | Civil |
| B10-V01~V08-1070 |  | Backfilling Inside Fondations | 4d | 2024-09-23 | 2024-09-26 | B10-V01~V08-1060, B09-V25~V32-1070 | 39d | 0d | Backfilling 1st Layer [8]; Backfilling 2ed Layer [8] | 11,186.4 | Civil |
| B10-V01~V08-1080 |  | Mech Works Under Grond Slap | 3d | 2024-09-28 | 2024-09-30 | B10-V01~V08-1070, B09-V25~V32-1080 | 39d | 0d | Mech Establishment Under Ground Slap [8] | 13,423.42 | Mech |
| B10-V01~V08-1090 |  | Steel Fixing& Carpenter work for Ground Slap | 3d | 2024-10-01 | 2024-10-03 | B10-V01~V08-1080, B09-V25~V32-1090 | 39d | 0d | Steel & Carpentry For Ground Slap [8] | 10,246.54 | Civil |
| B10-V01~V08-1100 |  | Anti Termite Treatment For Ground Slap | 1d | 2024-10-05 | 2024-10-05 | B10-V01~V08-1090, B09-V25~V32-1100 | 39d | 0d | Anti Termite Treatment nder Ground Slap [8] | 2,237.28 | Civil |
| B10-V01~V08-1110 |  | Pouring Concrete For Ground Slap | 1d | 2024-10-05 | 2024-10-05 | B10-V01~V08-1100 FF, B10-V01~V08-1090, B09-V25~V32-1110 | 39d | 5d | Concrete For Ground Slap [8] | 58,169.52 | Civil |

| ID | WBS | Activity | Duration | Start | Finish | Predecessors | Total float | Free float | Resources | Cost | Department-1 |
| --- | --- | --- | --- | --- | --- | --- | --- | --- | --- | --- | --- |
|  | 4 | **Precast Works** |  | 2024-11-20 | 2024-11-27 |  |  |  |  |  |  |
| B10-V01~V08-1120 |  | Precast Constrction | 7d | 2024-11-20 | 2024-11-27 | B10-V01~V08-1110, B09-V25~V32-1120 | 0d |  | Precast Walls GF [8]; Hollow Core Slap GF [8]; Precast Stairs & staircase House [8]; Thermal insollation Outside Walls [8]; Concrete structure joints [8]; Precast Walls FF [8]; Hollow Core Slap FF [8] | 1,513,762.87 | Civil |
|  | 1 | **Works Inside The Villa** |  | 2024-11-28 | 2025-03-13 |  |  |  |  |  |  |
| B10-V01~V08-1130 |  | Block Work For GF & Estabishment 1F | 6d | 2024-11-28 | 2024-12-04 | B10-V01~V08-1120, B09-V25~V32-1130 | 13d | 0d | Block GF [8] | 13,647.1 | Arc |
| B10-V01~V08-1140 |  | L.L & H.L Drainage | 6d | 2024-12-05 | 2024-12-11 | B10-V01~V08-1130, B09-V25~V32-1140 | 13d | 0d | HL Drainage [8]; L.L Drainage [8] | 89,489.28 | Mech |
| B10-V01~V08-1150 |  | Elec Establishment For GF & 1F | 3d | 2024-12-05 | 2024-12-08 | B10-V01~V08-1130, B09-V25~V32-1150 | 16d | 3d | Elec Establishment GF [8] | 26,840.73 | Elec |
| B10-V01~V08-1160 |  | Screed Work For 1F & Roof | 6d | 2024-12-12 | 2024-12-18 | B10-V01~V08-1140, B10-V01~V08-1150, B09-V25~V32-1160 | 13d | 0d | Screed 1st Floor [8]; Screed Roof Floor [8]; Leveling Screed 1st Floor [8]; Leveling Screed Roof Floor [8] | 268,467.85 | Civil |
| B10-V01~V08-1170 |  | Water Tank & Heater Foundations | 4d | 2024-12-19 | 2024-12-23 | B10-V01~V08-1160, B09-V25~V32-1170 | 17d | 0d |  |  | Civil |
| B10-V01~V08-1180 |  | Block Works For 1F | 3d | 2024-12-19 | 2024-12-22 | B10-V01~V08-1160, B09-V25~V32-1180 | 13d | 0d | Block FF [8] | 20,537.81 | Arc |
| B10-V01~V08-1190 |  | Water Line Network | 6d | 2024-12-23 | 2024-12-29 | B10-V01~V08-1180, B09-V25~V32-1190 | 13d | 0d | Water Line Network [8] | 40,261.13 | Mech |
| B10-V01~V08-1200 |  | Continue Elec Establishment For GF & 1F | 3d | 2024-12-23 | 2024-12-25 | B10-V01~V08-1180, B09-V25~V32-1200 | 16d | 3d | Elec Establishment FF [8] | 26,840.73 | Elec |
| B10-V01~V08-1210 |  | Thermal Insulation For Roof | 5d | 2024-12-24 | 2024-12-29 | B10-V01~V08-1170, B09-V25~V32-1210 | 17d | 0d | Roof Insulation [8] | 32,530.16 | Arc |
| B10-V01~V08-1220 |  | Roof Floor Tiles | 6d | 2024-12-30 | 2025-01-05 | B10-V01~V08-1210, B09-V25~V32-1220 | 17d | 1d | Roof Tiles [8]; Roof Tiles Joints [8]; Re_Test Roof Insulation [8] | 63,179.38 | Arc |
| B10-V01~V08-1230 |  | Plaster Work For Villa | 6d | 2024-12-30 | 2025-01-05 | B10-V01~V08-1190, B10-V01~V08-1200, B09-V25~V32-1230 | 13d | 0d | Establishing a plastering GF [8]; Establishing a plastering FF [8]; Plastering GF [8]; Plastering FF [8] | 49,263.81 |  |
| B10-V01~V08-1240 |  | Marbale Stairs & Handrails | 6d | 2025-01-06 | 2025-01-12 | B10-V01~V08-1230, B09-V25~V32-1240 | 35d | 1d | Marbale Stairs [8]; Stairs Handrails SS [8] | 91,494.69 |  |
| B10-V01~V08-1250 |  | Water Proofing Of Bathrooms | 4d | 2025-01-06 | 2025-01-09 | B10-V01~V08-1230, B09-V25~V32-1250 | 13d | 0d | Bathrooms InsulationGF & FF [8] | 134.24 |  |
| B10-V01~V08-1260 |  | Pulling The Elec Wires | 4d | 2025-01-06 | 2025-01-09 | B10-V01~V08-1230, B09-V25~V32-1260 | 23d | 3d | Elec Wires GF [8]; Elec Wires FF [8] | 80,542.4 |  |
| B10-V01~V08-1270 |  | Bathroom Tiles | 4d | 2025-01-11 | 2025-01-14 | B10-V01~V08-1250, B10-V01~V08-1220, B09-V25~V32-1270 | 13d | 0d | Ceramic Walls Kitchen [8]; Ceramic Walls Bathrooms GF [8]; Ceramic Walls Bathrooms FF [8]; Ceramic Tiles Bathrooms GF [8]; Ceramic Tiles Kitchen GF [8]; Ceramic Tiles Store GF [8] | 73,204.08 |  |
| B10-V01~V08-1280 |  | Structure For Gypsum | 6d | 2025-01-15 | 2025-01-21 | B10-V01~V08-1270, B09-V25~V32-1280 | 13d | 0d | Structure For Gypsum GF Rooms [8]; Structure For Gypsum FF Rooms [8]; Structure For Gypsum Bathrooms & Kitchen [8] | 33,550.81 |  |
| B10-V01~V08-1290 |  | Gypsum Board For Room | 4d | 2025-01-22 | 2025-01-26 | B10-V01~V08-1280, B10-V01~V08-1260, B09-V25~V32-1290 | 13d | 0d | Gypsum Board For GF Room [8]; Gypsum Board For FF Room [8] | 35,796.64 |  |
| B10-V01~V08-1300 |  | Installation Of Gypsum Board For Bathroom & Kitchen | 4d | 2025-01-27 | 2025-01-30 | B10-V01~V08-1290, B09-V25~V32-1300 | 13d | 0d | Gypsum Board For Bathrooms & Kitchen [8] | 11,052.24 |  |
| B10-V01~V08-1310 |  | Putty Filler For Gypsm Board Ceiling | 6d | 2025-02-01 | 2025-02-06 | B10-V01~V08-1300, B09-V25~V32-1310 | 13d | 0d | Putty Filler 1st Layer Roof all Rooms [8]; Putty Filler 1st Layer Roof all Bathrooms & Kitchen [8]; Putty Filler1st Layer walls [8] | 62,182.52 |  |
| B10-V01~V08-1320 |  | Fixing Shower Glass | 4d | 2025-02-08 | 2025-02-11 | B10-V01~V08-1310, B09-V25~V32-1320 | 21d | 0d | Shower Glass [8] | 22,372.88 |  |
| B10-V01~V08-1330 |  | Interior Wall Putty Filler | 6d | 2025-02-08 | 2025-02-13 | B10-V01~V08-1310, B10-V01~V08-1240, B09-V25~V32-1330 | 13d | 0d | Putty Filler 2ed Layer Roof & WAlls GF [8]; Putty Filler 2ed Layer Roof & WAlls FF [8] | 62,150.21 |  |
| B10-V01~V08-1340 |  | Installation Of Sanitry Fixture | 7d | 2025-02-12 | 2025-02-19 | B10-V01~V08-1320, B09-V25~V32-1340 | 21d | 0d | Mech Fixtures & Accessories [8] | 98,435.64 |  |
| B10-V01~V08-1350 |  | 1st Face Paint | 6d | 2025-02-15 | 2025-02-20 | B10-V01~V08-1330, B09-V25~V32-1350 | 13d | 0d |  |  |  |
| B10-V01~V08-1360 |  | Installation Of Aluminum Windows | 7d | 2025-02-15 | 2025-02-22 | B10-V01~V08-1330, B09-V25~V32-1360 | 23d | 0d | Aluminum Windows [8] | 84,795.68 |  |
| B10-V01~V08-1370 |  | Installation Of Elec Fixture & Accessories | 7d | 2025-02-15 | 2025-02-22 | B10-V01~V08-1310, B10-V01~V08-1330, B10-V01~V08-1260, B09-V25~V32-1370 | 37d | 0d | Elec Fixtures & Accessories Villa & Yard [8]; Elec Cables GF & FF & Earthing [8] | 53,692.2 |  |
| B10-V01~V08-1380 |  | Installation Of Water Tank-Heater & Pumps | 7d | 2025-02-20 | 2025-02-27 | B10-V01~V08-1340, B09-V25~V32-1380, B10-V01~V08-1220 | 21d | 0d | Water Tank & booster Pump [8]; Lower Pump [8]; Heater [8] | 129,756.23 |  |
| B10-V01~V08-1390 |  | Installation Of Parquet | 4d | 2025-02-22 | 2025-02-25 | B10-V01~V08-1350, B09-V25~V32-1390 | 13d | 0d | Installation Of Parquet [8] | 52,978.96 |  |
| B10-V01~V08-1400 |  | Installation Of Wooden Doors | 7d | 2025-02-26 | 2025-03-05 | B10-V01~V08-1390, B09-V25~V32-1400 | 13d | 0d | Wooden Doors Kitchen & Bathroom without Accessories [8]; Wooden Doors Accessories all Villa [8]; Exterior Wooden Doors [8] | 142,105.45 |  |
| B10-V01~V08-1410 |  | Final Face Paint | 7d | 2025-03-06 | 2025-03-13 | B10-V01~V08-1360, B10-V01~V08-1400, B09-V25~V32-1410 | 13d | 0d | Final Face Paint Villa [8] | 31,096.77 |  |

| ID | WBS | Activity | Duration | Start | Finish | Predecessors | Total float | Free float | Resources | Cost |
| --- | --- | --- | --- | --- | --- | --- | --- | --- | --- | --- |
|  | 3 | **Fence & Courtyard Works** |  | 2024-11-28 | 2025-03-03 |  |  |  |  |  |
| B10-V01~V08-1420 |  | Pouring Bedding Concrete For Fence Fondations | 2d | 2024-11-28 | 2024-11-30 | B10-V01~V08-1120, B09-V25~V32-1420 | 9d | 0d | Excavation Fence Foundations [8] | 4,519.28 |
| B10-V01~V08-1430 |  | RC Concrete For Fence Fondations | 6d | 2024-12-01 | 2024-12-07 | B10-V01~V08-1420, B09-V25~V32-1430 | 9d | 0d | Fence Fondations-Eastern side [8]; Fence Fondations-Westren side [8]; Fence Fondations-Back side [8] | 13,420.32 |
| B10-V01~V08-1440 |  | Steel Fixing & Carpentry For Fence Columns | 6d | 2024-12-08 | 2024-12-14 | B10-V01~V08-1430, B09-V25~V32-1440 | 9d | 0d |  |  |
| B10-V01~V08-1450 |  | Establishing Elec For Fence Columns | 4d | 2024-12-15 | 2024-12-18 | B10-V01~V08-1440, B09-V25~V32-1450 | 9d | 0d |  |  |
| B10-V01~V08-1460 |  | Pouring Concrete For Fence Columns | 1d | 2024-12-19 | 2024-12-19 | B10-V01~V08-1450, B09-V25~V32-1460 | 9d | 0d | Fence Columns-Eastern side [8]; Fence Columns-Westren side [8]; Fence Columns-Back side [8] | 9,665.04 |
| B10-V01~V08-1470 |  | Installation Precast Panel For Fence | 5d | 2024-12-21 | 2024-12-25 | B10-V01~V08-1460, B09-V25~V32-1470 | 9d | 0d | Hollow Core Walls [8] | 71,593.2 |
| B10-V01~V08-1480 |  | Bitumen Coating For Fence Fondations | 4d | 2024-12-26 | 2024-12-30 | B10-V01~V08-1470, B09-V25~V32-1480 | 9d | 0d |  |  |
| B10-V01~V08-1490 |  | Pouring Bedding Concrete For "Front" Fence Fondations | 1d | 2024-12-26 | 2024-12-26 | B10-V01~V08-1470, B09-V25~V32-1490 | 21d | 0d |  |  |
| B10-V01~V08-1500 |  | RC Concrete For "Front" Fence Fondations | 4d | 2024-12-28 | 2024-12-31 | B10-V01~V08-1490, B09-V25~V32-1500 | 21d | 0d | Front Fence Fondations [8] | 8,904.4 |
| B10-V01~V08-1510 |  | Outdoor Drainage & Water Line | 5d | 2024-12-31 | 2025-01-05 | B10-V01~V08-1480, B10-V01~V08-1140, B09-V25~V32-1510 | 9d | 0d | Outdoor Drainage [8]; Outdoor Water Line [8] | 13,423.68 |
| B10-V01~V08-1520 |  | Steel Fixing & Carpentry For "Front" Fence Columns | 4d | 2025-01-01 | 2025-01-05 | B10-V01~V08-1500, B09-V25~V32-1520 | 21d | 0d |  |  |
| B10-V01~V08-1530 |  | Establishing Elec For "Front" Fence Columns | 4d | 2025-01-06 | 2025-01-09 | B10-V01~V08-1520, B09-V25~V32-1530 | 21d | 0d |  |  |
| B10-V01~V08-1540 |  | Establishing Elec For Fence & Yard | 2d | 2025-01-06 | 2025-01-07 | B10-V01~V08-1510, B09-V25~V32-1540 | 9d | 0d | Elec Establishment Fence & Yard [8] | 17,898.32 |
| B10-V01~V08-1550 |  | Backfilling the Yard | 4d | 2025-01-08 | 2025-01-12 | B10-V01~V08-1540, B09-V25~V32-1550 | 9d | 0d | Backfilling the Yard [8] | 10,560 |
| B10-V01~V08-1560 |  | Pouring Concrete Wall Of "Front" Fence Columns | 2d | 2025-01-11 | 2025-01-12 | B10-V01~V08-1530, B09-V25~V32-1560 | 21d | 0d | Front Fence Walls [8] | 17,898.32 |
| B10-V01~V08-1570 |  | Pouring Concrete Crown Of "Front" Fence Columns | 3d | 2025-01-13 | 2025-01-15 | B10-V01~V08-1560, B09-V25~V32-1570 | 21d | 0d | Fence Columns - C Chanel [8] | 3,310.37 |
| B10-V01~V08-1580 |  | Bardoura Works For Yard | 5d | 2025-01-13 | 2025-01-18 | B10-V01~V08-1550, B09-V25~V32-1580 | 9d | 0d | Bardoura Works For Yard [8] | 14,408.16 |
| B10-V01~V08-1590 |  | Pouring Concrete Flower Basin Of "Front" Fence Columns | 4d | 2025-01-16 | 2025-01-20 | B10-V01~V08-1570, B09-V25~V32-1590 | 21d | 0d |  |  |
| B10-V01~V08-1600 |  | Antitermite Treatment For Yard | 1d | 2025-01-19 | 2025-01-19 | B10-V01~V08-1580, B09-V25~V32-1600 | 9d | 0d | Antitermite Treatment For Yard [8] |  |
| B10-V01~V08-1610 |  | Pouring Concrete For Yard | 1d | 2025-01-20 | 2025-01-20 | B10-V01~V08-1600, B09-V25~V32-1610 | 9d | 0d |  |  |
| B10-V01~V08-1620 |  | Block Work For Flower Basin | 5d | 2025-01-21 | 2025-01-26 | B10-V01~V08-1610, B09-V25~V32-1620 | 9d | 0d |  |  |
| B10-V01~V08-1630 |  | Plastering Work For Flower Basin | 4d | 2025-01-27 | 2025-01-30 | B10-V01~V08-1620, B09-V25~V32-1630 | 9d | 0d |  |  |
| B10-V01~V08-1640 |  | Interlock Works For The Yard | 6d | 2025-02-01 | 2025-02-06 | B10-V01~V08-1630, B09-V25~V32-1640 | 9d | 0d | Interlock Works For The Yard [8] | 36,776.32 |
| B10-V01~V08-1650 |  | External Grading Works For The Villa | 4d | 2025-02-08 | 2025-02-11 | B10-V01~V08-1640, B09-V25~V32-1650 | 11d | 0d | External Grading Works For The Villa [8] | 3,221.68 |
| B10-V01~V08-1660 |  | Installation The Exterior Door & Garage Door | 5d | 2025-02-08 | 2025-02-12 | B10-V01~V08-1640, B09-V25~V32-1660 | 14d | 2d | Installation The Exterior Door [8]; Installation The Exterior Garage Door [8] | 40,002.72 |
| B10-V01~V08-1670 |  | Fixing Floor Drain For The Yard | 2d | 2025-02-08 | 2025-02-09 | B10-V01~V08-1640, B09-V25~V32-1670 | 17d | 5d | Floor Drain & Clean Out [8] | 13,423.76 |
| B10-V01~V08-1680 |  | Granite Surronds Around The Villa | 4d | 2025-02-12 | 2025-02-16 | B10-V01~V08-1650, B09-V25~V32-1680 | 11d | 2d | Granite Surronds Around The Villa [8] | 25,818.32 |
| B10-V01~V08-1690 |  | Painting The Base Surface Of The Fence | 2d | 2025-02-12 | 2025-02-13 | B10-V01~V08-1750, B09-V25~V32-1690 | 9d | 0d |  |  |
| B10-V01~V08-1700 |  | Painting The Final Face Of The Fence | 4d | 2025-02-15 | 2025-02-18 | B10-V01~V08-1690, B09-V25~V32-1700 | 9d | 0d | Painting Final Face Of The Fence [8] | 37,586.48 |
| B10-V01~V08-1710 |  | Exterior Painting Of The Villa | 7d | 2025-02-19 | 2025-02-26 | B10-V01~V08-1680, B10-V01~V08-1700, B10-V01~V08-1660, B10-V01~V08-1670, B09-V25~V32-1710 | 9d | 0d | Exterior Painting Of The Villa [8]; Exterior Painting Staircase House [8] | 105,684.16 |
| B10-V01~V08-1720 |  | Installation Elec Fixtures & Accessories For The Yard | 4d | 2025-02-27 | 2025-03-03 | B10-V01~V08-1700, B10-V01~V08-1710, B09-V25~V32-1720 | 48d | 0d | Elec feeding panels GF & FF [8] | 22,372.88 |

| ID | WBS | Activity | Duration | Start | Finish | Predecessors | Total float | Free float | Resources | Cost | Department-1 |
| --- | --- | --- | --- | --- | --- | --- | --- | --- | --- | --- | --- |
|  | 5 | **External Sidewalk Works** |  | 2025-01-21 | 2025-03-08 |  |  |  |  |  |  |
| B10-V01~V08-1730 |  | Connection The Drain To The Piblic Network | 3d | 2025-01-21 | 2025-01-23 | B10-V01~V08-1510, B10-V01~V08-1590, B09-V25~V32-1730 | 21d | 4d | Connection Drain To The Piblic Network [8]; Connection Water To The Piblic Network [8] | 13,420.32 |  |
| B10-V01~V08-1740 |  | Pardora Works For The External Sidewalk | 2d | 2025-02-08 | 2025-02-09 | B10-V01~V08-1640, B10-V01~V08-1730, B09-V25~V32-1740 | 9d | 0d |  |  |  |
| B10-V01~V08-1750 |  | Interlock Works For The Exerrnal Sidewalk | 2d | 2025-02-10 | 2025-02-11 | B10-V01~V08-1740, B09-V25~V32-1750 | 9d | 0d |  |  |  |
| B10-V01~V08-1760 |  | Pulling The Villa's Main Elec Cable | 4d | 2025-03-04 | 2025-03-08 | B10-V01~V08-1750, B10-V01~V08-1720, B09-V25~V32-1760 | 48d | 0d | Elec Work Testing [8] | 22,819.84 |  |
|  | 6 | **Final Testing & Handover** |  | 2025-03-01 | 2025-03-26 |  |  |  |  |  |  |
| B10-V01~V08-1770 |  | Mech Work Testing & Handover | 5d | 2025-03-01 | 2025-03-05 | B10-V01~V08-1730, B10-V01~V08-1340, B10-V01~V08-1380, B09-V25~V32-1770 | 55d | 2d | Mech Work Testing & Handover [8] | 14,318.64 |  |
| B10-V01~V08-1780 |  | Arch Snaglist & Handover | 5d | 2025-03-06 | 2025-03-11 | B10-V01~V08-1750, B10-V01~V08-1710, B10-V01~V08-1400, B09-V25~V32-1780 | 50d | 2d | Arch Snaglist & Handover [8] | 77,320.64 |  |
| B10-V01~V08-1790 |  | ElecWork Testing & Handover | 5d | 2025-03-09 | 2025-03-13 | B10-V01~V08-1760, B10-V01~V08-1370, B09-V25~V32-1790 | 48d | 0d | Elec Work Handover [8] | 23,804.72 |  |
| B10-V01~V08-1800 |  | Final Handover Of The Villa To The Consltant | 5d | 2025-03-15 | 2025-03-19 | B10-V01~V08-1780, B10-V01~V08-1790, B10-V01~V08-1770, B10-V01~V08-1410, B09-V25~V32-1800 | 48d | 0d |  |  |  |
| B10-V01~V08-1810 |  | Customer Delivery | 6d | 2025-03-20 | 2025-03-26 | B10-V01~V08-1800, B09-V25~V32-1810 | 48d | 1d |  |  |  |
|  | 5 | **B10-V09~V16** |  | 2024-09-02 | 2025-04-03 |  |  |  |  |  |  |
|  | 2 | **Under Grond Slap Works** |  | 2024-09-02 | 2024-10-12 |  |  |  |  |  |  |
| B10-V09~V16-1000 |  | Excavation&Compaction of Fondation | 6d | 2024-09-02 | 2024-09-08 | B10-V01~V08-1000 | 40d | 0d | Clearing & Groubbing [8]; Excavation & Leveling [8]; Stone Layer [8]; A3 Layer [8]; A1-a 1st Layer [8]; A1-a 2ed Layer [8] | 163,545.76 | Civil |
| B10-V09~V16-1010 |  | Pouring Concrete For Bedding | 2d | 2024-09-09 | 2024-09-10 | B10-V09~V16-1000, B10-V01~V08-1010 | 40d | 0d | PC Carpentry [8]; PC Concrete [8]; RC 18 MPA [9 M3] | 37,899.68 | Civil |
| B10-V09~V16-1020 |  | Reinforcement Concrete For Foundation | 5d | 2024-09-11 | 2024-09-16 | B10-V09~V16-1010, B10-V01~V08-1020 | 40d | 0d | RC Foundation Carpentry [8]; RC Foundation Steel [8]; RC Foundation Concrete [8] | 201,355.92 | Civil |
| B10-V09~V16-1030 |  | Steel Fixing& Carpenter work for Beams | 4d | 2024-09-17 | 2024-09-21 | B10-V09~V16-1020, B10-V01~V08-1030 | 40d | 0d | RC Grade Beam Carpentry & Steel [8] | 44,745.76 | Civil |
| B10-V09~V16-1040 |  | Mech&Elec Establishment for Beams | 3d | 2024-09-22 | 2024-09-24 | B10-V09~V16-1030, B10-V01~V08-1040 | 40d | 0d |  |  | Mech |
| B10-V09~V16-1050 |  | Pouring Concrete For Beams | 1d | 2024-09-25 | 2024-09-25 | B10-V09~V16-1040, B10-V01~V08-1050 | 40d | 0d | RC Grade Beam Concrete [8] | 77,141.68 | Civil |
| B10-V09~V16-1060 |  | Bitmen Coating For Fondation&Beams | 3d | 2024-09-26 | 2024-09-29 | B10-V09~V16-1050, B10-V01~V08-1060 | 40d | 0d | Bitumen Coating Foundations & Grade Beams [8] | 22,372.32 | Civil |
| B10-V09~V16-1070 |  | Backfilling Inside Fondations | 4d | 2024-09-30 | 2024-10-03 | B10-V09~V16-1060, B10-V01~V08-1070 | 40d | 0d | Backfilling 1st Layer [8]; Backfilling 2ed Layer [8] | 11,186.4 | Civil |
| B10-V09~V16-1080 |  | Mech Works Under Grond Slap | 3d | 2024-10-05 | 2024-10-07 | B10-V09~V16-1070, B10-V01~V08-1080 | 40d | 0d | Mech Establishment Under Ground Slap [8] | 13,423.42 | Mech |
| B10-V09~V16-1090 |  | Steel Fixing& Carpenter work for Ground Slap | 3d | 2024-10-08 | 2024-10-10 | B10-V09~V16-1080, B10-V01~V08-1090 | 40d | 0d | Steel & Carpentry For Ground Slap [8] | 10,246.54 | Civil |
| B10-V09~V16-1100 |  | Anti Termite Treatment For Ground Slap | 1d | 2024-10-12 | 2024-10-12 | B10-V09~V16-1090, B10-V01~V08-1100 | 40d | 0d | Anti Termite Treatment nder Ground Slap [8] | 2,237.28 | Civil |
| B10-V09~V16-1110 |  | Pouring Concrete For Ground Slap | 1d | 2024-10-12 | 2024-10-12 | B10-V09~V16-1100 FF, B10-V09~V16-1090, B10-V01~V08-1110 | 40d | 5d | Concrete For Ground Slap [8] | 58,169.52 | Civil |

| ID | WBS | Activity | Duration | Start | Finish | Predecessors | Total float | Free float | Resources | Cost | Department-1 |
| --- | --- | --- | --- | --- | --- | --- | --- | --- | --- | --- | --- |
|  | 4 | **Precast Works** |  | 2024-11-28 | 2024-12-05 |  |  |  |  |  |  |
| B10-V09~V16-1120 |  | Precast Constrction | 7d | 2024-11-28 | 2024-12-05 | B10-V09~V16-1110, B10-V01~V08-1120 | 0d |  | Precast Walls GF [8]; Hollow Core Slap GF [8]; Precast Stairs & staircase House [8]; Thermal insollation Outside Walls [8]; Concrete structure joints [8]; Precast Walls FF [8]; Hollow Core Slap FF [8] | 1,513,762.87 | Civil |
|  | 1 | **Works Inside The Villa** |  | 2024-12-07 | 2025-03-22 |  |  |  |  |  |  |
| B10-V09~V16-1130 |  | Block Work For GF & Estabishment 1F | 6d | 2024-12-07 | 2024-12-12 | B10-V09~V16-1120, B10-V01~V08-1130 | 13d | 0d | Block GF [8] | 13,647.1 | Arc |
| B10-V09~V16-1140 |  | L.L & H.L Drainage | 6d | 2024-12-14 | 2024-12-19 | B10-V09~V16-1130, B10-V01~V08-1140 | 13d | 0d | HL Drainage [8]; L.L Drainage [8] | 89,489.28 | Mech |
| B10-V09~V16-1150 |  | Elec Establishment For GF & 1F | 3d | 2024-12-14 | 2024-12-16 | B10-V09~V16-1130, B10-V01~V08-1150 | 16d | 3d | Elec Establishment GF [8] | 26,840.73 | Elec |
| B10-V09~V16-1160 |  | Screed Work For 1F & Roof | 6d | 2024-12-21 | 2024-12-26 | B10-V09~V16-1140, B10-V09~V16-1150, B10-V01~V08-1160 | 13d | 0d | Screed 1st Floor [8]; Screed Roof Floor [8]; Leveling Screed 1st Floor [8]; Leveling Screed Roof Floor [8] | 268,467.85 | Civil |
| B10-V09~V16-1170 |  | Water Tank & Heater Foundations | 4d | 2024-12-28 | 2024-12-31 | B10-V09~V16-1160, B10-V01~V08-1170 | 17d | 0d |  |  | Civil |
| B10-V09~V16-1180 |  | Block Works For 1F | 3d | 2024-12-28 | 2024-12-30 | B10-V09~V16-1160, B10-V01~V08-1180 | 13d | 0d | Block FF [8] | 20,537.81 | Arc |
| B10-V09~V16-1190 |  | Water Line Network | 6d | 2024-12-31 | 2025-01-06 | B10-V09~V16-1180, B10-V01~V08-1190 | 13d | 0d | Water Line Network [8] | 40,261.13 | Mech |
| B10-V09~V16-1200 |  | Continue Elec Establishment For GF & 1F | 3d | 2024-12-31 | 2025-01-02 | B10-V09~V16-1180, B10-V01~V08-1200 | 16d | 3d | Elec Establishment FF [8] | 26,840.73 | Elec |
| B10-V09~V16-1210 |  | Thermal Insulation For Roof | 5d | 2025-01-01 | 2025-01-06 | B10-V09~V16-1170, B10-V01~V08-1210 | 17d | 0d | Roof Insulation [8] | 32,530.16 | Arc |
| B10-V09~V16-1220 |  | Roof Floor Tiles | 6d | 2025-01-07 | 2025-01-13 | B10-V09~V16-1210, B10-V01~V08-1220 | 17d | 1d | Roof Tiles [8]; Roof Tiles Joints [8]; Re_Test Roof Insulation [8] | 63,179.38 | Arc |
| B10-V09~V16-1230 |  | Plaster Work For Villa | 6d | 2025-01-07 | 2025-01-13 | B10-V09~V16-1190, B10-V09~V16-1200, B10-V01~V08-1230 | 13d | 0d | Establishing a plastering GF [8]; Establishing a plastering FF [8]; Plastering GF [8]; Plastering FF [8] | 49,263.81 |  |
| B10-V09~V16-1240 |  | Marbale Stairs & Handrails | 6d | 2025-01-14 | 2025-01-20 | B10-V09~V16-1230, B10-V01~V08-1240 | 35d | 1d | Marbale Stairs [8]; Stairs Handrails SS [8] | 91,494.69 |  |
| B10-V09~V16-1250 |  | Water Proofing Of Bathrooms | 4d | 2025-01-14 | 2025-01-18 | B10-V09~V16-1230, B10-V01~V08-1250 | 13d | 0d | Bathrooms InsulationGF & FF [8] | 134.24 |  |
| B10-V09~V16-1260 |  | Pulling The Elec Wires | 4d | 2025-01-14 | 2025-01-18 | B10-V09~V16-1230, B10-V01~V08-1260 | 23d | 3d | Elec Wires GF [8]; Elec Wires FF [8] | 80,542.4 |  |
| B10-V09~V16-1270 |  | Bathroom Tiles | 4d | 2025-01-19 | 2025-01-22 | B10-V09~V16-1250, B10-V09~V16-1220, B10-V01~V08-1270 | 13d | 0d | Ceramic Walls Kitchen [8]; Ceramic Walls Bathrooms GF [8]; Ceramic Walls Bathrooms FF [8]; Ceramic Tiles Bathrooms GF [8]; Ceramic Tiles Kitchen GF [8]; Ceramic Tiles Store GF [8] | 73,204.08 |  |
| B10-V09~V16-1280 |  | Structure For Gypsum | 6d | 2025-01-23 | 2025-01-29 | B10-V09~V16-1270, B10-V01~V08-1280 | 13d | 0d | Structure For Gypsum GF Rooms [8]; Structure For Gypsum FF Rooms [8]; Structure For Gypsum Bathrooms & Kitchen [8] | 33,550.81 |  |
| B10-V09~V16-1290 |  | Gypsum Board For Room | 4d | 2025-01-30 | 2025-02-03 | B10-V09~V16-1280, B10-V09~V16-1260, B10-V01~V08-1290 | 13d | 0d | Gypsum Board For GF Room [8]; Gypsum Board For FF Room [8] | 35,796.64 |  |
| B10-V09~V16-1300 |  | Installation Of Gypsum Board For Bathroom & Kitchen | 4d | 2025-02-04 | 2025-02-08 | B10-V09~V16-1290, B10-V01~V08-1300 | 13d | 0d | Gypsum Board For Bathrooms & Kitchen [8] | 11,052.24 |  |
| B10-V09~V16-1310 |  | Putty Filler For Gypsm Board Ceiling | 6d | 2025-02-09 | 2025-02-15 | B10-V09~V16-1300, B10-V01~V08-1310 | 13d | 0d | Putty Filler 1st Layer Roof all Rooms [8]; Putty Filler 1st Layer Roof all Bathrooms & Kitchen [8]; Putty Filler1st Layer walls [8] | 62,182.52 |  |
| B10-V09~V16-1320 |  | Fixing Shower Glass | 4d | 2025-02-16 | 2025-02-19 | B10-V09~V16-1310, B10-V01~V08-1320 | 21d | 0d | Shower Glass [8] | 22,372.88 |  |
| B10-V09~V16-1330 |  | Interior Wall Putty Filler | 6d | 2025-02-16 | 2025-02-22 | B10-V09~V16-1310, B10-V09~V16-1240, B10-V01~V08-1330 | 13d | 0d | Putty Filler 2ed Layer Roof & WAlls GF [8]; Putty Filler 2ed Layer Roof & WAlls FF [8] | 62,150.21 |  |
| B10-V09~V16-1340 |  | Installation Of Sanitry Fixture | 7d | 2025-02-20 | 2025-02-27 | B10-V09~V16-1320, B10-V01~V08-1340 | 21d | 0d | Mech Fixtures & Accessories [8] | 98,435.64 |  |
| B10-V09~V16-1350 |  | 1st Face Paint | 6d | 2025-02-23 | 2025-03-01 | B10-V09~V16-1330, B10-V01~V08-1350 | 13d | 0d |  |  |  |
| B10-V09~V16-1360 |  | Installation Of Aluminum Windows | 7d | 2025-02-23 | 2025-03-02 | B10-V09~V16-1330, B10-V01~V08-1360 | 23d | 0d | Aluminum Windows [8] | 84,795.68 |  |
| B10-V09~V16-1370 |  | Installation Of Elec Fixture & Accessories | 7d | 2025-02-23 | 2025-03-02 | B10-V09~V16-1310, B10-V09~V16-1330, B10-V09~V16-1260, B10-V01~V08-1370 | 37d | 0d | Elec Fixtures & Accessories Villa & Yard [8]; Elec Cables GF & FF & Earthing [8] | 53,692.2 |  |
| B10-V09~V16-1380 |  | Installation Of Water Tank-Heater & Pumps | 7d | 2025-03-01 | 2025-03-08 | B10-V09~V16-1340, B10-V01~V08-1380, B10-V09~V16-1220 | 21d | 0d | Water Tank & booster Pump [8]; Lower Pump [8]; Heater [8] | 129,756.23 |  |
| B10-V09~V16-1390 |  | Installation Of Parquet | 4d | 2025-03-02 | 2025-03-05 | B10-V09~V16-1350, B10-V01~V08-1390 | 13d | 0d | Installation Of Parquet [8] | 52,978.96 |  |
| B10-V09~V16-1400 |  | Installation Of Wooden Doors | 7d | 2025-03-06 | 2025-03-13 | B10-V09~V16-1390, B10-V01~V08-1400 | 13d | 0d | Wooden Doors Kitchen & Bathroom without Accessories [8]; Wooden Doors Accessories all Villa [8]; Exterior Wooden Doors [8] | 142,105.45 |  |
| B10-V09~V16-1410 |  | Final Face Paint | 7d | 2025-03-15 | 2025-03-22 | B10-V09~V16-1360, B10-V09~V16-1400, B10-V01~V08-1410 | 13d | 0d | Final Face Paint Villa [8] | 31,096.77 |  |

| ID | WBS | Activity | Duration | Start | Finish | Predecessors | Total float | Free float | Resources | Cost |
| --- | --- | --- | --- | --- | --- | --- | --- | --- | --- | --- |
|  | 3 | **Fence & Courtyard Works** |  | 2024-12-07 | 2025-03-11 |  |  |  |  |  |
| B10-V09~V16-1420 |  | Pouring Bedding Concrete For Fence Fondations | 2d | 2024-12-07 | 2024-12-08 | B10-V09~V16-1120, B10-V01~V08-1420 | 9d | 0d | Excavation Fence Foundations [8] | 4,519.28 |
| B10-V09~V16-1430 |  | RC Concrete For Fence Fondations | 6d | 2024-12-09 | 2024-12-15 | B10-V09~V16-1420, B10-V01~V08-1430 | 9d | 0d | Fence Fondations-Eastern side [8]; Fence Fondations-Westren side [8]; Fence Fondations-Back side [8] | 13,420.32 |
| B10-V09~V16-1440 |  | Steel Fixing & Carpentry For Fence Columns | 6d | 2024-12-16 | 2024-12-22 | B10-V09~V16-1430, B10-V01~V08-1440 | 9d | 0d |  |  |
| B10-V09~V16-1450 |  | Establishing Elec For Fence Columns | 4d | 2024-12-23 | 2024-12-26 | B10-V09~V16-1440, B10-V01~V08-1450 | 9d | 0d |  |  |
| B10-V09~V16-1460 |  | Pouring Concrete For Fence Columns | 1d | 2024-12-28 | 2024-12-28 | B10-V09~V16-1450, B10-V01~V08-1460 | 9d | 0d | Fence Columns-Eastern side [8]; Fence Columns-Westren side [8]; Fence Columns-Back side [8] | 9,665.04 |
| B10-V09~V16-1470 |  | Installation Precast Panel For Fence | 5d | 2024-12-29 | 2025-01-02 | B10-V09~V16-1460, B10-V01~V08-1470 | 9d | 0d | Hollow Core Walls [8] | 71,593.2 |
| B10-V09~V16-1480 |  | Bitumen Coating For Fence Fondations | 4d | 2025-01-04 | 2025-01-07 | B10-V09~V16-1470, B10-V01~V08-1480 | 9d | 0d |  |  |
| B10-V09~V16-1490 |  | Pouring Bedding Concrete For "Front" Fence Fondations | 1d | 2025-01-04 | 2025-01-04 | B10-V09~V16-1470, B10-V01~V08-1490 | 21d | 0d |  |  |
| B10-V09~V16-1500 |  | RC Concrete For "Front" Fence Fondations | 4d | 2025-01-05 | 2025-01-08 | B10-V09~V16-1490, B10-V01~V08-1500 | 21d | 0d | Front Fence Fondations [8] | 8,904.4 |
| B10-V09~V16-1510 |  | Outdoor Drainage & Water Line | 5d | 2025-01-08 | 2025-01-13 | B10-V09~V16-1480, B10-V09~V16-1140, B10-V01~V08-1510 | 9d | 0d | Outdoor Drainage [8]; Outdoor Water Line [8] | 13,423.68 |
| B10-V09~V16-1520 |  | Steel Fixing & Carpentry For "Front" Fence Columns | 4d | 2025-01-09 | 2025-01-13 | B10-V09~V16-1500, B10-V01~V08-1520 | 21d | 0d |  |  |
| B10-V09~V16-1530 |  | Establishing Elec For "Front" Fence Columns | 4d | 2025-01-14 | 2025-01-18 | B10-V09~V16-1520, B10-V01~V08-1530 | 21d | 0d |  |  |
| B10-V09~V16-1540 |  | Establishing Elec For Fence & Yard | 2d | 2025-01-14 | 2025-01-15 | B10-V09~V16-1510, B10-V01~V08-1540 | 9d | 0d | Elec Establishment Fence & Yard [8] | 17,898.32 |
| B10-V09~V16-1550 |  | Backfilling the Yard | 4d | 2025-01-16 | 2025-01-20 | B10-V09~V16-1540, B10-V01~V08-1550 | 9d | 0d | Backfilling the Yard [8] | 10,560 |
| B10-V09~V16-1560 |  | Pouring Concrete Wall Of "Front" Fence Columns | 2d | 2025-01-19 | 2025-01-20 | B10-V09~V16-1530, B10-V01~V08-1560 | 21d | 0d | Front Fence Walls [8] | 17,898.32 |
| B10-V09~V16-1570 |  | Pouring Concrete Crown Of "Front" Fence Columns | 3d | 2025-01-21 | 2025-01-23 | B10-V09~V16-1560, B10-V01~V08-1570 | 21d | 0d | Fence Columns - C Chanel [8] | 3,310.37 |
| B10-V09~V16-1580 |  | Bardoura Works For Yard | 5d | 2025-01-21 | 2025-01-26 | B10-V09~V16-1550, B10-V01~V08-1580 | 9d | 0d | Bardoura Works For Yard [8] | 14,408.16 |
| B10-V09~V16-1590 |  | Pouring Concrete Flower Basin Of "Front" Fence Columns | 4d | 2025-01-25 | 2025-01-28 | B10-V09~V16-1570, B10-V01~V08-1590 | 21d | 0d |  |  |
| B10-V09~V16-1600 |  | Antitermite Treatment For Yard | 1d | 2025-01-27 | 2025-01-27 | B10-V09~V16-1580, B10-V01~V08-1600 | 9d | 0d | Antitermite Treatment For Yard [8] |  |
| B10-V09~V16-1610 |  | Pouring Concrete For Yard | 1d | 2025-01-28 | 2025-01-28 | B10-V09~V16-1600, B10-V01~V08-1610 | 9d | 0d |  |  |
| B10-V09~V16-1620 |  | Block Work For Flower Basin | 5d | 2025-01-29 | 2025-02-03 | B10-V09~V16-1610, B10-V01~V08-1620 | 9d | 0d |  |  |
| B10-V09~V16-1630 |  | Plastering Work For Flower Basin | 4d | 2025-02-04 | 2025-02-08 | B10-V09~V16-1620, B10-V01~V08-1630 | 9d | 0d |  |  |
| B10-V09~V16-1640 |  | Interlock Works For The Yard | 6d | 2025-02-09 | 2025-02-15 | B10-V09~V16-1630, B10-V01~V08-1640 | 9d | 0d | Interlock Works For The Yard [8] | 36,776.32 |
| B10-V09~V16-1650 |  | External Grading Works For The Villa | 4d | 2025-02-16 | 2025-02-19 | B10-V09~V16-1640, B10-V01~V08-1650 | 11d | 0d | External Grading Works For The Villa [8] | 3,221.68 |
| B10-V09~V16-1660 |  | Installation The Exterior Door & Garage Door | 5d | 2025-02-16 | 2025-02-20 | B10-V09~V16-1640, B10-V01~V08-1660 | 14d | 2d | Installation The Exterior Door [8]; Installation The Exterior Garage Door [8] | 40,002.72 |
| B10-V09~V16-1670 |  | Fixing Floor Drain For The Yard | 2d | 2025-02-16 | 2025-02-17 | B10-V09~V16-1640, B10-V01~V08-1670 | 17d | 5d | Floor Drain & Clean Out [8] | 13,423.76 |
| B10-V09~V16-1680 |  | Granite Surronds Around The Villa | 4d | 2025-02-20 | 2025-02-24 | B10-V09~V16-1650, B10-V01~V08-1680 | 11d | 2d | Granite Surronds Around The Villa [8] | 25,818.32 |
| B10-V09~V16-1690 |  | Painting The Base Surface Of The Fence | 2d | 2025-02-20 | 2025-02-22 | B10-V09~V16-1750, B10-V01~V08-1690 | 9d | 0d |  |  |
| B10-V09~V16-1700 |  | Painting The Final Face Of The Fence | 4d | 2025-02-23 | 2025-02-26 | B10-V09~V16-1690, B10-V01~V08-1700 | 9d | 0d | Painting Final Face Of The Fence [8] | 37,586.48 |
| B10-V09~V16-1710 |  | Exterior Painting Of The Villa | 7d | 2025-02-27 | 2025-03-06 | B10-V09~V16-1680, B10-V09~V16-1700, B10-V09~V16-1660, B10-V09~V16-1670, B10-V01~V08-1710 | 9d | 0d | Exterior Painting Of The Villa [8]; Exterior Painting Staircase House [8] | 105,684.16 |
| B10-V09~V16-1720 |  | Installation Elec Fixtures & Accessories For The Yard | 4d | 2025-03-08 | 2025-03-11 | B10-V09~V16-1700, B10-V09~V16-1710, B10-V01~V08-1720 | 47d | 0d | Elec feeding panels GF & FF [8] | 22,372.88 |

| ID | WBS | Activity | Duration | Start | Finish | Predecessors | Total float | Free float | Resources | Cost | Department-1 |
| --- | --- | --- | --- | --- | --- | --- | --- | --- | --- | --- | --- |
|  | 5 | **External Sidewalk Works** |  | 2025-01-29 | 2025-03-16 |  |  |  |  |  |  |
| B10-V09~V16-1730 |  | Connection The Drain To The Piblic Network | 3d | 2025-01-29 | 2025-02-01 | B10-V09~V16-1510, B10-V09~V16-1590, B10-V01~V08-1730 | 21d | 4d | Connection Drain To The Piblic Network [8]; Connection Water To The Piblic Network [8] | 13,420.32 |  |
| B10-V09~V16-1740 |  | Pardora Works For The External Sidewalk | 2d | 2025-02-16 | 2025-02-17 | B10-V09~V16-1640, B10-V09~V16-1730, B10-V01~V08-1740 | 9d | 0d |  |  |  |
| B10-V09~V16-1750 |  | Interlock Works For The Exerrnal Sidewalk | 2d | 2025-02-18 | 2025-02-19 | B10-V09~V16-1740, B10-V01~V08-1750 | 9d | 0d |  |  |  |
| B10-V09~V16-1760 |  | Pulling The Villa's Main Elec Cable | 4d | 2025-03-12 | 2025-03-16 | B10-V09~V16-1750, B10-V09~V16-1720, B10-V01~V08-1760 | 47d | 0d | Elec Work Testing [8] | 22,819.84 |  |
|  | 6 | **Final Testing & Handover** |  | 2025-03-09 | 2025-04-03 |  |  |  |  |  |  |
| B10-V09~V16-1770 |  | Mech Work Testing & Handover | 5d | 2025-03-09 | 2025-03-13 | B10-V09~V16-1730, B10-V09~V16-1340, B10-V09~V16-1380, B10-V01~V08-1770 | 54d | 2d | Mech Work Testing & Handover [8] | 14,318.64 |  |
| B10-V09~V16-1780 |  | Arch Snaglist & Handover | 5d | 2025-03-15 | 2025-03-19 | B10-V09~V16-1750, B10-V09~V16-1710, B10-V09~V16-1400, B10-V01~V08-1780 | 49d | 2d | Arch Snaglist & Handover [8] | 77,320.64 |  |
| B10-V09~V16-1790 |  | ElecWork Testing & Handover | 5d | 2025-03-17 | 2025-03-22 | B10-V09~V16-1760, B10-V09~V16-1370, B10-V01~V08-1790 | 47d | 0d | Elec Work Handover [8] | 23,804.72 |  |
| B10-V09~V16-1800 |  | Final Handover Of The Villa To The Consltant | 5d | 2025-03-23 | 2025-03-27 | B10-V09~V16-1780, B10-V09~V16-1790, B10-V09~V16-1770, B10-V09~V16-1410, B10-V01~V08-1800 | 47d | 0d |  |  |  |
| B10-V09~V16-1810 |  | Customer Delivery | 6d | 2025-03-29 | 2025-04-03 | B10-V09~V16-1800, B10-V01~V08-1810 | 47d | 1d |  |  |  |
|  | 6 | **B10-V17~V24** |  | 2024-09-09 | 2025-04-12 |  |  |  |  |  |  |
|  | 2 | **Under Grond Slap Works** |  | 2024-09-09 | 2024-10-19 |  |  |  |  |  |  |
| B10-V17~V24-1000 |  | Excavation&Compaction of Fondation | 6d | 2024-09-09 | 2024-09-15 | B10-V09~V16-1000 | 41d | 0d | Clearing & Groubbing [8]; Excavation & Leveling [8]; Stone Layer [8]; A3 Layer [8]; A1-a 1st Layer [8]; A1-a 2ed Layer [8] | 163,545.76 | Civil |
| B10-V17~V24-1010 |  | Pouring Concrete For Bedding | 2d | 2024-09-16 | 2024-09-17 | B10-V17~V24-1000, B10-V09~V16-1010 | 41d | 0d | PC Carpentry [8]; PC Concrete [8]; RC 18 MPA [9 M3] | 37,899.68 | Civil |
| B10-V17~V24-1020 |  | Reinforcement Concrete For Foundation | 5d | 2024-09-18 | 2024-09-23 | B10-V17~V24-1010, B10-V09~V16-1020 | 41d | 0d | RC Foundation Carpentry [8]; RC Foundation Steel [8]; RC Foundation Concrete [8] | 201,355.92 | Civil |
| B10-V17~V24-1030 |  | Steel Fixing& Carpenter work for Beams | 4d | 2024-09-24 | 2024-09-28 | B10-V17~V24-1020, B10-V09~V16-1030 | 41d | 0d | RC Grade Beam Carpentry & Steel [8] | 44,745.76 | Civil |
| B10-V17~V24-1040 |  | Mech&Elec Establishment for Beams | 3d | 2024-09-29 | 2024-10-01 | B10-V17~V24-1030, B10-V09~V16-1040 | 41d | 0d |  |  | Mech |
| B10-V17~V24-1050 |  | Pouring Concrete For Beams | 1d | 2024-10-02 | 2024-10-02 | B10-V17~V24-1040, B10-V09~V16-1050 | 41d | 0d | RC Grade Beam Concrete [8] | 77,141.68 | Civil |
| B10-V17~V24-1060 |  | Bitmen Coating For Fondation&Beams | 3d | 2024-10-03 | 2024-10-06 | B10-V17~V24-1050, B10-V09~V16-1060 | 41d | 0d | Bitumen Coating Foundations & Grade Beams [8] | 22,372.32 | Civil |
| B10-V17~V24-1070 |  | Backfilling Inside Fondations | 4d | 2024-10-07 | 2024-10-10 | B10-V17~V24-1060, B10-V09~V16-1070 | 41d | 0d | Backfilling 1st Layer [8]; Backfilling 2ed Layer [8] | 11,186.4 | Civil |
| B10-V17~V24-1080 |  | Mech Works Under Grond Slap | 3d | 2024-10-12 | 2024-10-14 | B10-V17~V24-1070, B10-V09~V16-1080 | 41d | 0d | Mech Establishment Under Ground Slap [8] | 13,423.42 | Mech |
| B10-V17~V24-1090 |  | Steel Fixing& Carpenter work for Ground Slap | 3d | 2024-10-15 | 2024-10-17 | B10-V17~V24-1080, B10-V09~V16-1090 | 41d | 0d | Steel & Carpentry For Ground Slap [8] | 10,246.54 | Civil |
| B10-V17~V24-1100 |  | Anti Termite Treatment For Ground Slap | 1d | 2024-10-19 | 2024-10-19 | B10-V17~V24-1090, B10-V09~V16-1100 | 41d | 0d | Anti Termite Treatment nder Ground Slap [8] | 2,237.28 | Civil |
| B10-V17~V24-1110 |  | Pouring Concrete For Ground Slap | 1d | 2024-10-19 | 2024-10-19 | B10-V17~V24-1100 FF, B10-V17~V24-1090, B10-V09~V16-1110 | 41d | 5d | Concrete For Ground Slap [8] | 58,169.52 | Civil |

| ID | WBS | Activity | Duration | Start | Finish | Predecessors | Total float | Free float | Resources | Cost | Department-1 |
| --- | --- | --- | --- | --- | --- | --- | --- | --- | --- | --- | --- |
|  | 4 | **Precast Works** |  | 2024-12-07 | 2024-12-14 |  |  |  |  |  |  |
| B10-V17~V24-1120 |  | Precast Constrction | 7d | 2024-12-07 | 2024-12-14 | B10-V17~V24-1110, B10-V09~V16-1120 | 0d |  | Precast Walls GF [8]; Hollow Core Slap GF [8]; Precast Stairs & staircase House [8]; Thermal insollation Outside Walls [8]; Concrete structure joints [8]; Precast Walls FF [8]; Hollow Core Slap FF [8] | 1,513,762.87 | Civil |
|  | 1 | **Works Inside The Villa** |  | 2024-12-15 | 2025-03-30 |  |  |  |  |  |  |
| B10-V17~V24-1130 |  | Block Work For GF & Estabishment 1F | 6d | 2024-12-15 | 2024-12-21 | B10-V17~V24-1120, B10-V09~V16-1130 | 13d | 0d | Block GF [8] | 13,647.1 | Arc |
| B10-V17~V24-1140 |  | L.L & H.L Drainage | 6d | 2024-12-22 | 2024-12-28 | B10-V17~V24-1130, B10-V09~V16-1140 | 13d | 0d | HL Drainage [8]; L.L Drainage [8] | 89,489.28 | Mech |
| B10-V17~V24-1150 |  | Elec Establishment For GF & 1F | 3d | 2024-12-22 | 2024-12-24 | B10-V17~V24-1130, B10-V09~V16-1150 | 16d | 3d | Elec Establishment GF [8] | 26,840.73 | Elec |
| B10-V17~V24-1160 |  | Screed Work For 1F & Roof | 6d | 2024-12-29 | 2025-01-04 | B10-V17~V24-1140, B10-V17~V24-1150, B10-V09~V16-1160 | 13d | 0d | Screed 1st Floor [8]; Screed Roof Floor [8]; Leveling Screed 1st Floor [8]; Leveling Screed Roof Floor [8] | 268,467.85 | Civil |
| B10-V17~V24-1170 |  | Water Tank & Heater Foundations | 4d | 2025-01-05 | 2025-01-08 | B10-V17~V24-1160, B10-V09~V16-1170 | 17d | 0d |  |  | Civil |
| B10-V17~V24-1180 |  | Block Works For 1F | 3d | 2025-01-05 | 2025-01-07 | B10-V17~V24-1160, B10-V09~V16-1180 | 13d | 0d | Block FF [8] | 20,537.81 | Arc |
| B10-V17~V24-1190 |  | Water Line Network | 6d | 2025-01-08 | 2025-01-14 | B10-V17~V24-1180, B10-V09~V16-1190 | 13d | 0d | Water Line Network [8] | 40,261.13 | Mech |
| B10-V17~V24-1200 |  | Continue Elec Establishment For GF & 1F | 3d | 2025-01-08 | 2025-01-11 | B10-V17~V24-1180, B10-V09~V16-1200 | 16d | 3d | Elec Establishment FF [8] | 26,840.73 | Elec |
| B10-V17~V24-1210 |  | Thermal Insulation For Roof | 5d | 2025-01-09 | 2025-01-14 | B10-V17~V24-1170, B10-V09~V16-1210 | 17d | 0d | Roof Insulation [8] | 32,530.16 | Arc |
| B10-V17~V24-1220 |  | Roof Floor Tiles | 6d | 2025-01-15 | 2025-01-21 | B10-V17~V24-1210, B10-V09~V16-1220 | 17d | 1d | Roof Tiles [8]; Roof Tiles Joints [8]; Re_Test Roof Insulation [8] | 63,179.38 | Arc |
| B10-V17~V24-1230 |  | Plaster Work For Villa | 6d | 2025-01-15 | 2025-01-21 | B10-V17~V24-1190, B10-V17~V24-1200, B10-V09~V16-1230 | 13d | 0d | Establishing a plastering GF [8]; Establishing a plastering FF [8]; Plastering GF [8]; Plastering FF [8] | 49,263.81 |  |
| B10-V17~V24-1240 |  | Marbale Stairs & Handrails | 6d | 2025-01-22 | 2025-01-28 | B10-V17~V24-1230, B10-V09~V16-1240 | 35d | 1d | Marbale Stairs [8]; Stairs Handrails SS [8] | 91,494.69 |  |
| B10-V17~V24-1250 |  | Water Proofing Of Bathrooms | 4d | 2025-01-22 | 2025-01-26 | B10-V17~V24-1230, B10-V09~V16-1250 | 13d | 0d | Bathrooms InsulationGF & FF [8] | 134.24 |  |
| B10-V17~V24-1260 |  | Pulling The Elec Wires | 4d | 2025-01-22 | 2025-01-26 | B10-V17~V24-1230, B10-V09~V16-1260 | 23d | 3d | Elec Wires GF [8]; Elec Wires FF [8] | 80,542.4 |  |
| B10-V17~V24-1270 |  | Bathroom Tiles | 4d | 2025-01-27 | 2025-01-30 | B10-V17~V24-1250, B10-V17~V24-1220, B10-V09~V16-1270 | 13d | 0d | Ceramic Walls Kitchen [8]; Ceramic Walls Bathrooms GF [8]; Ceramic Walls Bathrooms FF [8]; Ceramic Tiles Bathrooms GF [8]; Ceramic Tiles Kitchen GF [8]; Ceramic Tiles Store GF [8] | 73,204.08 |  |
| B10-V17~V24-1280 |  | Structure For Gypsum | 6d | 2025-02-01 | 2025-02-06 | B10-V17~V24-1270, B10-V09~V16-1280 | 13d | 0d | Structure For Gypsum GF Rooms [8]; Structure For Gypsum FF Rooms [8]; Structure For Gypsum Bathrooms & Kitchen [8] | 33,550.81 |  |
| B10-V17~V24-1290 |  | Gypsum Board For Room | 4d | 2025-02-08 | 2025-02-11 | B10-V17~V24-1280, B10-V17~V24-1260, B10-V09~V16-1290 | 13d | 0d | Gypsum Board For GF Room [8]; Gypsum Board For FF Room [8] | 35,796.64 |  |
| B10-V17~V24-1300 |  | Installation Of Gypsum Board For Bathroom & Kitchen | 4d | 2025-02-12 | 2025-02-16 | B10-V17~V24-1290, B10-V09~V16-1300 | 13d | 0d | Gypsum Board For Bathrooms & Kitchen [8] | 11,052.24 |  |
| B10-V17~V24-1310 |  | Putty Filler For Gypsm Board Ceiling | 6d | 2025-02-17 | 2025-02-23 | B10-V17~V24-1300, B10-V09~V16-1310 | 13d | 0d | Putty Filler 1st Layer Roof all Rooms [8]; Putty Filler 1st Layer Roof all Bathrooms & Kitchen [8]; Putty Filler1st Layer walls [8] | 62,182.52 |  |
| B10-V17~V24-1320 |  | Fixing Shower Glass | 4d | 2025-02-24 | 2025-02-27 | B10-V17~V24-1310, B10-V09~V16-1320 | 21d | 0d | Shower Glass [8] | 22,372.88 |  |
| B10-V17~V24-1330 |  | Interior Wall Putty Filler | 6d | 2025-02-24 | 2025-03-02 | B10-V17~V24-1310, B10-V17~V24-1240, B10-V09~V16-1330 | 13d | 0d | Putty Filler 2ed Layer Roof & WAlls GF [8]; Putty Filler 2ed Layer Roof & WAlls FF [8] | 62,150.21 |  |
| B10-V17~V24-1340 |  | Installation Of Sanitry Fixture | 7d | 2025-03-01 | 2025-03-08 | B10-V17~V24-1320, B10-V09~V16-1340 | 21d | 0d | Mech Fixtures & Accessories [8] | 98,435.64 |  |
| B10-V17~V24-1350 |  | 1st Face Paint | 6d | 2025-03-03 | 2025-03-09 | B10-V17~V24-1330, B10-V09~V16-1350 | 13d | 0d |  |  |  |
| B10-V17~V24-1360 |  | Installation Of Aluminum Windows | 7d | 2025-03-03 | 2025-03-10 | B10-V17~V24-1330, B10-V09~V16-1360 | 23d | 0d | Aluminum Windows [8] | 84,795.68 |  |
| B10-V17~V24-1370 |  | Installation Of Elec Fixture & Accessories | 7d | 2025-03-03 | 2025-03-10 | B10-V17~V24-1310, B10-V17~V24-1330, B10-V17~V24-1260, B10-V09~V16-1370 | 37d | 0d | Elec Fixtures & Accessories Villa & Yard [8]; Elec Cables GF & FF & Earthing [8] | 53,692.2 |  |
| B10-V17~V24-1380 |  | Installation Of Water Tank-Heater & Pumps | 7d | 2025-03-09 | 2025-03-16 | B10-V17~V24-1340, B10-V09~V16-1380, B10-V17~V24-1220 | 21d | 0d | Water Tank & booster Pump [8]; Lower Pump [8]; Heater [8] | 129,756.23 |  |
| B10-V17~V24-1390 |  | Installation Of Parquet | 4d | 2025-03-10 | 2025-03-13 | B10-V17~V24-1350, B10-V09~V16-1390 | 13d | 0d | Installation Of Parquet [8] | 52,978.96 |  |
| B10-V17~V24-1400 |  | Installation Of Wooden Doors | 7d | 2025-03-15 | 2025-03-22 | B10-V17~V24-1390, B10-V09~V16-1400 | 13d | 0d | Wooden Doors Kitchen & Bathroom without Accessories [8]; Wooden Doors Accessories all Villa [8]; Exterior Wooden Doors [8] | 142,105.45 |  |
| B10-V17~V24-1410 |  | Final Face Paint | 7d | 2025-03-23 | 2025-03-30 | B10-V17~V24-1360, B10-V17~V24-1400, B10-V09~V16-1410 | 13d | 0d | Final Face Paint Villa [8] | 31,096.77 |  |

| ID | WBS | Activity | Duration | Start | Finish | Predecessors | Total float | Free float | Resources | Cost |
| --- | --- | --- | --- | --- | --- | --- | --- | --- | --- | --- |
|  | 3 | **Fence & Courtyard Works** |  | 2024-12-15 | 2025-03-19 |  |  |  |  |  |
| B10-V17~V24-1420 |  | Pouring Bedding Concrete For Fence Fondations | 2d | 2024-12-15 | 2024-12-16 | B10-V17~V24-1120, B10-V09~V16-1420 | 9d | 0d | Excavation Fence Foundations [8] | 4,519.28 |
| B10-V17~V24-1430 |  | RC Concrete For Fence Fondations | 6d | 2024-12-17 | 2024-12-23 | B10-V17~V24-1420, B10-V09~V16-1430 | 9d | 0d | Fence Fondations-Eastern side [8]; Fence Fondations-Westren side [8]; Fence Fondations-Back side [8] | 13,420.32 |
| B10-V17~V24-1440 |  | Steel Fixing & Carpentry For Fence Columns | 6d | 2024-12-24 | 2024-12-30 | B10-V17~V24-1430, B10-V09~V16-1440 | 9d | 0d |  |  |
| B10-V17~V24-1450 |  | Establishing Elec For Fence Columns | 4d | 2024-12-31 | 2025-01-04 | B10-V17~V24-1440, B10-V09~V16-1450 | 9d | 0d |  |  |
| B10-V17~V24-1460 |  | Pouring Concrete For Fence Columns | 1d | 2025-01-05 | 2025-01-05 | B10-V17~V24-1450, B10-V09~V16-1460 | 9d | 0d | Fence Columns-Eastern side [8]; Fence Columns-Westren side [8]; Fence Columns-Back side [8] | 9,665.04 |
| B10-V17~V24-1470 |  | Installation Precast Panel For Fence | 5d | 2025-01-06 | 2025-01-11 | B10-V17~V24-1460, B10-V09~V16-1470 | 9d | 0d | Hollow Core Walls [8] | 71,593.2 |
| B10-V17~V24-1480 |  | Bitumen Coating For Fence Fondations | 4d | 2025-01-12 | 2025-01-15 | B10-V17~V24-1470, B10-V09~V16-1480 | 9d | 0d |  |  |
| B10-V17~V24-1490 |  | Pouring Bedding Concrete For "Front" Fence Fondations | 1d | 2025-01-12 | 2025-01-12 | B10-V17~V24-1470, B10-V09~V16-1490 | 21d | 0d |  |  |
| B10-V17~V24-1500 |  | RC Concrete For "Front" Fence Fondations | 4d | 2025-01-13 | 2025-01-16 | B10-V17~V24-1490, B10-V09~V16-1500 | 21d | 0d | Front Fence Fondations [8] | 8,904.4 |
| B10-V17~V24-1510 |  | Outdoor Drainage & Water Line | 5d | 2025-01-16 | 2025-01-21 | B10-V17~V24-1480, B10-V17~V24-1140, B10-V09~V16-1510 | 9d | 0d | Outdoor Drainage [8]; Outdoor Water Line [8] | 13,423.68 |
| B10-V17~V24-1520 |  | Steel Fixing & Carpentry For "Front" Fence Columns | 4d | 2025-01-18 | 2025-01-21 | B10-V17~V24-1500, B10-V09~V16-1520 | 21d | 0d |  |  |
| B10-V17~V24-1530 |  | Establishing Elec For "Front" Fence Columns | 4d | 2025-01-22 | 2025-01-26 | B10-V17~V24-1520, B10-V09~V16-1530 | 21d | 0d |  |  |
| B10-V17~V24-1540 |  | Establishing Elec For Fence & Yard | 2d | 2025-01-22 | 2025-01-23 | B10-V17~V24-1510, B10-V09~V16-1540 | 9d | 0d | Elec Establishment Fence & Yard [8] | 17,898.32 |
| B10-V17~V24-1550 |  | Backfilling the Yard | 4d | 2025-01-25 | 2025-01-28 | B10-V17~V24-1540, B10-V09~V16-1550 | 9d | 0d | Backfilling the Yard [8] | 10,560 |
| B10-V17~V24-1560 |  | Pouring Concrete Wall Of "Front" Fence Columns | 2d | 2025-01-27 | 2025-01-28 | B10-V17~V24-1530, B10-V09~V16-1560 | 21d | 0d | Front Fence Walls [8] | 17,898.32 |
| B10-V17~V24-1570 |  | Pouring Concrete Crown Of "Front" Fence Columns | 3d | 2025-01-29 | 2025-02-01 | B10-V17~V24-1560, B10-V09~V16-1570 | 21d | 0d | Fence Columns - C Chanel [8] | 3,310.37 |
| B10-V17~V24-1580 |  | Bardoura Works For Yard | 5d | 2025-01-29 | 2025-02-03 | B10-V17~V24-1550, B10-V09~V16-1580 | 9d | 0d | Bardoura Works For Yard [8] | 14,408.16 |
| B10-V17~V24-1590 |  | Pouring Concrete Flower Basin Of "Front" Fence Columns | 4d | 2025-02-02 | 2025-02-05 | B10-V17~V24-1570, B10-V09~V16-1590 | 21d | 0d |  |  |
| B10-V17~V24-1600 |  | Antitermite Treatment For Yard | 1d | 2025-02-04 | 2025-02-04 | B10-V17~V24-1580, B10-V09~V16-1600 | 9d | 0d | Antitermite Treatment For Yard [8] |  |
| B10-V17~V24-1610 |  | Pouring Concrete For Yard | 1d | 2025-02-05 | 2025-02-05 | B10-V17~V24-1600, B10-V09~V16-1610 | 9d | 0d |  |  |
| B10-V17~V24-1620 |  | Block Work For Flower Basin | 5d | 2025-02-06 | 2025-02-11 | B10-V17~V24-1610, B10-V09~V16-1620 | 9d | 0d |  |  |
| B10-V17~V24-1630 |  | Plastering Work For Flower Basin | 4d | 2025-02-12 | 2025-02-16 | B10-V17~V24-1620, B10-V09~V16-1630 | 9d | 0d |  |  |
| B10-V17~V24-1640 |  | Interlock Works For The Yard | 6d | 2025-02-17 | 2025-02-23 | B10-V17~V24-1630, B10-V09~V16-1640 | 9d | 0d | Interlock Works For The Yard [8] | 36,776.32 |
| B10-V17~V24-1650 |  | External Grading Works For The Villa | 4d | 2025-02-24 | 2025-02-27 | B10-V17~V24-1640, B10-V09~V16-1650 | 11d | 0d | External Grading Works For The Villa [8] | 3,221.68 |
| B10-V17~V24-1660 |  | Installation The Exterior Door & Garage Door | 5d | 2025-02-24 | 2025-03-01 | B10-V17~V24-1640, B10-V09~V16-1660 | 14d | 2d | Installation The Exterior Door [8]; Installation The Exterior Garage Door [8] | 40,002.72 |
| B10-V17~V24-1670 |  | Fixing Floor Drain For The Yard | 2d | 2025-02-24 | 2025-02-25 | B10-V17~V24-1640, B10-V09~V16-1670 | 17d | 5d | Floor Drain & Clean Out [8] | 13,423.76 |
| B10-V17~V24-1680 |  | Granite Surronds Around The Villa | 4d | 2025-03-01 | 2025-03-04 | B10-V17~V24-1650, B10-V09~V16-1680 | 11d | 2d | Granite Surronds Around The Villa [8] | 25,818.32 |
| B10-V17~V24-1690 |  | Painting The Base Surface Of The Fence | 2d | 2025-03-01 | 2025-03-02 | B10-V17~V24-1750, B10-V09~V16-1690 | 9d | 0d |  |  |
| B10-V17~V24-1700 |  | Painting The Final Face Of The Fence | 4d | 2025-03-03 | 2025-03-06 | B10-V17~V24-1690, B10-V09~V16-1700 | 9d | 0d | Painting Final Face Of The Fence [8] | 37,586.48 |
| B10-V17~V24-1710 |  | Exterior Painting Of The Villa | 7d | 2025-03-08 | 2025-03-15 | B10-V17~V24-1680, B10-V17~V24-1700, B10-V17~V24-1660, B10-V17~V24-1670, B10-V09~V16-1710 | 9d | 0d | Exterior Painting Of The Villa [8]; Exterior Painting Staircase House [8] | 105,684.16 |
| B10-V17~V24-1720 |  | Installation Elec Fixtures & Accessories For The Yard | 4d | 2025-03-16 | 2025-03-19 | B10-V17~V24-1700, B10-V17~V24-1710, B10-V09~V16-1720 | 46d | 0d | Elec feeding panels GF & FF [8] | 22,372.88 |

| ID | WBS | Activity | Duration | Start | Finish | Predecessors | Total float | Free float | Resources | Cost | Department-1 |
| --- | --- | --- | --- | --- | --- | --- | --- | --- | --- | --- | --- |
|  | 5 | **External Sidewalk Works** |  | 2025-02-06 | 2025-03-24 |  |  |  |  |  |  |
| B10-V17~V24-1730 |  | Connection The Drain To The Piblic Network | 3d | 2025-02-06 | 2025-02-09 | B10-V17~V24-1510, B10-V17~V24-1590, B10-V09~V16-1730 | 21d | 4d | Connection Drain To The Piblic Network [8]; Connection Water To The Piblic Network [8] | 13,420.32 |  |
| B10-V17~V24-1740 |  | Pardora Works For The External Sidewalk | 2d | 2025-02-24 | 2025-02-25 | B10-V17~V24-1640, B10-V17~V24-1730, B10-V09~V16-1740 | 9d | 0d |  |  |  |
| B10-V17~V24-1750 |  | Interlock Works For The Exerrnal Sidewalk | 2d | 2025-02-26 | 2025-02-27 | B10-V17~V24-1740, B10-V09~V16-1750 | 9d | 0d |  |  |  |
| B10-V17~V24-1760 |  | Pulling The Villa's Main Elec Cable | 4d | 2025-03-20 | 2025-03-24 | B10-V17~V24-1750, B10-V17~V24-1720, B10-V09~V16-1760 | 46d | 0d | Elec Work Testing [8] | 22,819.84 |  |
|  | 6 | **Final Testing & Handover** |  | 2025-03-17 | 2025-04-12 |  |  |  |  |  |  |
| B10-V17~V24-1770 |  | Mech Work Testing & Handover | 5d | 2025-03-17 | 2025-03-22 | B10-V17~V24-1730, B10-V17~V24-1340, B10-V17~V24-1380, B10-V09~V16-1770 | 53d | 2d | Mech Work Testing & Handover [8] | 14,318.64 |  |
| B10-V17~V24-1780 |  | Arch Snaglist & Handover | 5d | 2025-03-23 | 2025-03-27 | B10-V17~V24-1750, B10-V17~V24-1710, B10-V17~V24-1400, B10-V09~V16-1780 | 48d | 2d | Arch Snaglist & Handover [8] | 77,320.64 |  |
| B10-V17~V24-1790 |  | ElecWork Testing & Handover | 5d | 2025-03-25 | 2025-03-30 | B10-V17~V24-1760, B10-V17~V24-1370, B10-V09~V16-1790 | 46d | 0d | Elec Work Handover [8] | 23,804.72 |  |
| B10-V17~V24-1800 |  | Final Handover Of The Villa To The Consltant | 5d | 2025-03-31 | 2025-04-05 | B10-V17~V24-1780, B10-V17~V24-1790, B10-V17~V24-1770, B10-V17~V24-1410, B10-V09~V16-1800 | 46d | 0d |  |  |  |
| B10-V17~V24-1810 |  | Customer Delivery | 6d | 2025-04-06 | 2025-04-12 | B10-V17~V24-1800, B10-V09~V16-1810 | 46d | 1d |  |  |  |
|  | 8 | **B10-V25~V32** |  | 2024-09-16 | 2025-04-20 |  |  |  |  |  |  |
|  | 2 | **Under Grond Slap Works** |  | 2024-09-16 | 2024-10-26 |  |  |  |  |  |  |
| B10-V25~V32-1000 |  | Excavation&Compaction of Fondation | 6d | 2024-09-16 | 2024-09-22 | B10-V17~V24-1000 | 42d | 0d | Clearing & Groubbing [8]; Excavation & Leveling [8]; Stone Layer [8]; A3 Layer [8]; A1-a 1st Layer [8]; A1-a 2ed Layer [8] | 163,545.76 | Civil |
| B10-V25~V32-1010 |  | Pouring Concrete For Bedding | 2d | 2024-09-23 | 2024-09-24 | B10-V25~V32-1000, B10-V17~V24-1010 | 42d | 0d | PC Carpentry [8]; PC Concrete [8]; RC 18 MPA [9 M3] | 37,899.68 | Civil |
| B10-V25~V32-1020 |  | Reinforcement Concrete For Foundation | 5d | 2024-09-25 | 2024-09-30 | B10-V25~V32-1010, B10-V17~V24-1020 | 42d | 0d | RC Foundation Carpentry [8]; RC Foundation Steel [8]; RC Foundation Concrete [8] | 201,355.92 | Civil |
| B10-V25~V32-1030 |  | Steel Fixing& Carpenter work for Beams | 4d | 2024-10-01 | 2024-10-05 | B10-V25~V32-1020, B10-V17~V24-1030 | 42d | 0d | RC Grade Beam Carpentry & Steel [8] | 44,745.76 | Civil |
| B10-V25~V32-1040 |  | Mech&Elec Establishment for Beams | 3d | 2024-10-06 | 2024-10-08 | B10-V25~V32-1030, B10-V17~V24-1040 | 42d | 0d |  |  | Mech |
| B10-V25~V32-1050 |  | Pouring Concrete For Beams | 1d | 2024-10-09 | 2024-10-09 | B10-V25~V32-1040, B10-V17~V24-1050 | 42d | 0d | RC Grade Beam Concrete [8] | 77,141.68 | Civil |
| B10-V25~V32-1060 |  | Bitmen Coating For Fondation&Beams | 3d | 2024-10-10 | 2024-10-13 | B10-V25~V32-1050, B10-V17~V24-1060 | 42d | 0d | Bitumen Coating Foundations & Grade Beams [8] | 22,372.32 | Civil |
| B10-V25~V32-1070 |  | Backfilling Inside Fondations | 4d | 2024-10-14 | 2024-10-17 | B10-V25~V32-1060, B10-V17~V24-1070 | 42d | 0d | Backfilling 1st Layer [8]; Backfilling 2ed Layer [8] | 11,186.4 | Civil |
| B10-V25~V32-1080 |  | Mech Works Under Grond Slap | 3d | 2024-10-19 | 2024-10-21 | B10-V25~V32-1070, B10-V17~V24-1080 | 42d | 0d | Mech Establishment Under Ground Slap [8] | 13,423.42 | Mech |
| B10-V25~V32-1090 |  | Steel Fixing& Carpenter work for Ground Slap | 3d | 2024-10-22 | 2024-10-24 | B10-V25~V32-1080, B10-V17~V24-1090 | 42d | 0d | Steel & Carpentry For Ground Slap [8] | 10,246.54 | Civil |
| B10-V25~V32-1100 |  | Anti Termite Treatment For Ground Slap | 1d | 2024-10-26 | 2024-10-26 | B10-V25~V32-1090, B10-V17~V24-1100 | 42d | 0d | Anti Termite Treatment nder Ground Slap [8] | 2,237.28 | Civil |
| B10-V25~V32-1110 |  | Pouring Concrete For Ground Slap | 1d | 2024-10-26 | 2024-10-26 | B10-V25~V32-1100 FF, B10-V25~V32-1090, B10-V17~V24-1110 | 42d | 5d | Concrete For Ground Slap [8] | 58,169.52 | Civil |

| ID | WBS | Activity | Duration | Start | Finish | Predecessors | Total float | Free float | Resources | Cost | Department-1 |
| --- | --- | --- | --- | --- | --- | --- | --- | --- | --- | --- | --- |
|  | 4 | **Precast Works** |  | 2024-12-15 | 2024-12-22 |  |  |  |  |  |  |
| B10-V25~V32-1120 |  | Precast Constrction | 7d | 2024-12-15 | 2024-12-22 | B10-V25~V32-1110, B10-V17~V24-1120 | 0d |  | Precast Walls GF [8]; Hollow Core Slap GF [8]; Precast Stairs & staircase House [8]; Thermal insollation Outside Walls [8]; Concrete structure joints [8]; Precast Walls FF [8]; Hollow Core Slap FF [8] | 1,513,762.87 | Civil |
|  | 1 | **Works Inside The Villa** |  | 2024-12-23 | 2025-04-07 |  |  |  |  |  |  |
| B10-V25~V32-1130 |  | Block Work For GF & Estabishment 1F | 6d | 2024-12-23 | 2024-12-29 | B10-V25~V32-1120, B10-V17~V24-1130 | 13d | 0d | Block GF [8] | 13,647.1 | Arc |
| B10-V25~V32-1140 |  | L.L & H.L Drainage | 6d | 2024-12-30 | 2025-01-05 | B10-V25~V32-1130, B10-V17~V24-1140 | 13d | 0d | HL Drainage [8]; L.L Drainage [8] | 89,489.28 | Mech |
| B10-V25~V32-1150 |  | Elec Establishment For GF & 1F | 3d | 2024-12-30 | 2025-01-01 | B10-V25~V32-1130, B10-V17~V24-1150 | 16d | 3d | Elec Establishment GF [8] | 26,840.73 | Elec |
| B10-V25~V32-1160 |  | Screed Work For 1F & Roof | 6d | 2025-01-06 | 2025-01-12 | B10-V25~V32-1140, B10-V25~V32-1150, B10-V17~V24-1160 | 13d | 0d | Screed 1st Floor [8]; Screed Roof Floor [8]; Leveling Screed 1st Floor [8]; Leveling Screed Roof Floor [8] | 268,467.85 | Civil |
| B10-V25~V32-1170 |  | Water Tank & Heater Foundations | 4d | 2025-01-13 | 2025-01-16 | B10-V25~V32-1160, B10-V17~V24-1170 | 17d | 0d |  |  | Civil |
| B10-V25~V32-1180 |  | Block Works For 1F | 3d | 2025-01-13 | 2025-01-15 | B10-V25~V32-1160, B10-V17~V24-1180 | 13d | 0d | Block FF [8] | 20,537.81 | Arc |
| B10-V25~V32-1190 |  | Water Line Network | 6d | 2025-01-16 | 2025-01-22 | B10-V25~V32-1180, B10-V17~V24-1190 | 13d | 0d | Water Line Network [8] | 40,261.13 | Mech |
| B10-V25~V32-1200 |  | Continue Elec Establishment For GF & 1F | 3d | 2025-01-16 | 2025-01-19 | B10-V25~V32-1180, B10-V17~V24-1200 | 16d | 3d | Elec Establishment FF [8] | 26,840.73 | Elec |
| B10-V25~V32-1210 |  | Thermal Insulation For Roof | 5d | 2025-01-18 | 2025-01-22 | B10-V25~V32-1170, B10-V17~V24-1210 | 17d | 0d | Roof Insulation [8] | 32,530.16 | Arc |
| B10-V25~V32-1220 |  | Roof Floor Tiles | 6d | 2025-01-23 | 2025-01-29 | B10-V25~V32-1210, B10-V17~V24-1220 | 17d | 1d | Roof Tiles [8]; Roof Tiles Joints [8]; Re_Test Roof Insulation [8] | 63,179.38 | Arc |
| B10-V25~V32-1230 |  | Plaster Work For Villa | 6d | 2025-01-23 | 2025-01-29 | B10-V25~V32-1190, B10-V25~V32-1200, B10-V17~V24-1230 | 13d | 0d | Establishing a plastering GF [8]; Establishing a plastering FF [8]; Plastering GF [8]; Plastering FF [8] | 49,263.81 |  |
| B10-V25~V32-1240 |  | Marbale Stairs & Handrails | 6d | 2025-01-30 | 2025-02-05 | B10-V25~V32-1230, B10-V17~V24-1240 | 35d | 1d | Marbale Stairs [8]; Stairs Handrails SS [8] | 91,494.69 |  |
| B10-V25~V32-1250 |  | Water Proofing Of Bathrooms | 4d | 2025-01-30 | 2025-02-03 | B10-V25~V32-1230, B10-V17~V24-1250 | 13d | 0d | Bathrooms InsulationGF & FF [8] | 134.24 |  |
| B10-V25~V32-1260 |  | Pulling The Elec Wires | 4d | 2025-01-30 | 2025-02-03 | B10-V25~V32-1230, B10-V17~V24-1260 | 23d | 3d | Elec Wires GF [8]; Elec Wires FF [8] | 80,542.4 |  |
| B10-V25~V32-1270 |  | Bathroom Tiles | 4d | 2025-02-04 | 2025-02-08 | B10-V25~V32-1250, B10-V25~V32-1220, B10-V17~V24-1270 | 13d | 0d | Ceramic Walls Kitchen [8]; Ceramic Walls Bathrooms GF [8]; Ceramic Walls Bathrooms FF [8]; Ceramic Tiles Bathrooms GF [8]; Ceramic Tiles Kitchen GF [8]; Ceramic Tiles Store GF [8] | 73,204.08 |  |
| B10-V25~V32-1280 |  | Structure For Gypsum | 6d | 2025-02-09 | 2025-02-15 | B10-V25~V32-1270, B10-V17~V24-1280 | 13d | 0d | Structure For Gypsum GF Rooms [8]; Structure For Gypsum FF Rooms [8]; Structure For Gypsum Bathrooms & Kitchen [8] | 33,550.81 |  |
| B10-V25~V32-1290 |  | Gypsum Board For Room | 4d | 2025-02-16 | 2025-02-19 | B10-V25~V32-1280, B10-V25~V32-1260, B10-V17~V24-1290 | 13d | 0d | Gypsum Board For GF Room [8]; Gypsum Board For FF Room [8] | 35,796.64 |  |
| B10-V25~V32-1300 |  | Installation Of Gypsum Board For Bathroom & Kitchen | 4d | 2025-02-20 | 2025-02-24 | B10-V25~V32-1290, B10-V17~V24-1300 | 13d | 0d | Gypsum Board For Bathrooms & Kitchen [8] | 11,052.24 |  |
| B10-V25~V32-1310 |  | Putty Filler For Gypsm Board Ceiling | 6d | 2025-02-25 | 2025-03-03 | B10-V25~V32-1300, B10-V17~V24-1310 | 13d | 0d | Putty Filler 1st Layer Roof all Rooms [8]; Putty Filler 1st Layer Roof all Bathrooms & Kitchen [8]; Putty Filler1st Layer walls [8] | 62,182.52 |  |
| B10-V25~V32-1320 |  | Fixing Shower Glass | 4d | 2025-03-04 | 2025-03-08 | B10-V25~V32-1310, B10-V17~V24-1320 | 21d | 0d | Shower Glass [8] | 22,372.88 |  |
| B10-V25~V32-1330 |  | Interior Wall Putty Filler | 6d | 2025-03-04 | 2025-03-10 | B10-V25~V32-1310, B10-V25~V32-1240, B10-V17~V24-1330 | 13d | 0d | Putty Filler 2ed Layer Roof & WAlls GF [8]; Putty Filler 2ed Layer Roof & WAlls FF [8] | 62,150.21 |  |
| B10-V25~V32-1340 |  | Installation Of Sanitry Fixture | 7d | 2025-03-09 | 2025-03-16 | B10-V25~V32-1320, B10-V17~V24-1340 | 21d | 0d | Mech Fixtures & Accessories [8] | 98,435.64 |  |
| B10-V25~V32-1350 |  | 1st Face Paint | 6d | 2025-03-11 | 2025-03-17 | B10-V25~V32-1330, B10-V17~V24-1350 | 13d | 0d |  |  |  |
| B10-V25~V32-1360 |  | Installation Of Aluminum Windows | 7d | 2025-03-11 | 2025-03-18 | B10-V25~V32-1330, B10-V17~V24-1360 | 23d | 0d | Aluminum Windows [8] | 84,795.68 |  |
| B10-V25~V32-1370 |  | Installation Of Elec Fixture & Accessories | 7d | 2025-03-11 | 2025-03-18 | B10-V25~V32-1310, B10-V25~V32-1330, B10-V25~V32-1260, B10-V17~V24-1370 | 37d | 0d | Elec Fixtures & Accessories Villa & Yard [8]; Elec Cables GF & FF & Earthing [8] | 53,692.2 |  |
| B10-V25~V32-1380 |  | Installation Of Water Tank-Heater & Pumps | 7d | 2025-03-17 | 2025-03-24 | B10-V25~V32-1340, B10-V17~V24-1380, B10-V25~V32-1220 | 21d | 0d | Water Tank & booster Pump [8]; Lower Pump [8]; Heater [8] | 129,756.23 |  |
| B10-V25~V32-1390 |  | Installation Of Parquet | 4d | 2025-03-18 | 2025-03-22 | B10-V25~V32-1350, B10-V17~V24-1390 | 13d | 0d | Installation Of Parquet [8] | 52,978.96 |  |
| B10-V25~V32-1400 |  | Installation Of Wooden Doors | 7d | 2025-03-23 | 2025-03-30 | B10-V25~V32-1390, B10-V17~V24-1400 | 13d | 0d | Wooden Doors Kitchen & Bathroom without Accessories [8]; Wooden Doors Accessories all Villa [8]; Exterior Wooden Doors [8] | 142,105.45 |  |
| B10-V25~V32-1410 |  | Final Face Paint | 7d | 2025-03-31 | 2025-04-07 | B10-V25~V32-1360, B10-V25~V32-1400, B10-V17~V24-1410 | 13d | 0d | Final Face Paint Villa [8] | 31,096.77 |  |

| ID | WBS | Activity | Duration | Start | Finish | Predecessors | Total float | Free float | Resources | Cost |
| --- | --- | --- | --- | --- | --- | --- | --- | --- | --- | --- |
|  | 3 | **Fence & Courtyard Works** |  | 2024-12-23 | 2025-03-27 |  |  |  |  |  |
| B10-V25~V32-1420 |  | Pouring Bedding Concrete For Fence Fondations | 2d | 2024-12-23 | 2024-12-24 | B10-V25~V32-1120, B10-V17~V24-1420 | 9d | 0d | Excavation Fence Foundations [8] | 4,519.28 |
| B10-V25~V32-1430 |  | RC Concrete For Fence Fondations | 6d | 2024-12-25 | 2024-12-31 | B10-V25~V32-1420, B10-V17~V24-1430 | 9d | 0d | Fence Fondations-Eastern side [8]; Fence Fondations-Westren side [8]; Fence Fondations-Back side [8] | 13,420.32 |
| B10-V25~V32-1440 |  | Steel Fixing & Carpentry For Fence Columns | 6d | 2025-01-01 | 2025-01-07 | B10-V25~V32-1430, B10-V17~V24-1440 | 9d | 0d |  |  |
| B10-V25~V32-1450 |  | Establishing Elec For Fence Columns | 4d | 2025-01-08 | 2025-01-12 | B10-V25~V32-1440, B10-V17~V24-1450 | 9d | 0d |  |  |
| B10-V25~V32-1460 |  | Pouring Concrete For Fence Columns | 1d | 2025-01-13 | 2025-01-13 | B10-V25~V32-1450, B10-V17~V24-1460 | 9d | 0d | Fence Columns-Eastern side [8]; Fence Columns-Westren side [8]; Fence Columns-Back side [8] | 9,665.04 |
| B10-V25~V32-1470 |  | Installation Precast Panel For Fence | 5d | 2025-01-14 | 2025-01-19 | B10-V25~V32-1460, B10-V17~V24-1470 | 9d | 0d | Hollow Core Walls [8] | 71,593.2 |
| B10-V25~V32-1480 |  | Bitumen Coating For Fence Fondations | 4d | 2025-01-20 | 2025-01-23 | B10-V25~V32-1470, B10-V17~V24-1480 | 9d | 0d |  |  |
| B10-V25~V32-1490 |  | Pouring Bedding Concrete For "Front" Fence Fondations | 1d | 2025-01-20 | 2025-01-20 | B10-V25~V32-1470, B10-V17~V24-1490 | 21d | 0d |  |  |
| B10-V25~V32-1500 |  | RC Concrete For "Front" Fence Fondations | 4d | 2025-01-21 | 2025-01-25 | B10-V25~V32-1490, B10-V17~V24-1500 | 21d | 0d | Front Fence Fondations [8] | 8,904.4 |
| B10-V25~V32-1510 |  | Outdoor Drainage & Water Line | 5d | 2025-01-25 | 2025-01-29 | B10-V25~V32-1480, B10-V25~V32-1140, B10-V17~V24-1510 | 9d | 0d | Outdoor Drainage [8]; Outdoor Water Line [8] | 13,423.68 |
| B10-V25~V32-1520 |  | Steel Fixing & Carpentry For "Front" Fence Columns | 4d | 2025-01-26 | 2025-01-29 | B10-V25~V32-1500, B10-V17~V24-1520 | 21d | 0d |  |  |
| B10-V25~V32-1530 |  | Establishing Elec For "Front" Fence Columns | 4d | 2025-01-30 | 2025-02-03 | B10-V25~V32-1520, B10-V17~V24-1530 | 21d | 0d |  |  |
| B10-V25~V32-1540 |  | Establishing Elec For Fence & Yard | 2d | 2025-01-30 | 2025-02-01 | B10-V25~V32-1510, B10-V17~V24-1540 | 9d | 0d | Elec Establishment Fence & Yard [8] | 17,898.32 |
| B10-V25~V32-1550 |  | Backfilling the Yard | 4d | 2025-02-02 | 2025-02-05 | B10-V25~V32-1540, B10-V17~V24-1550 | 9d | 0d | Backfilling the Yard [8] | 10,560 |
| B10-V25~V32-1560 |  | Pouring Concrete Wall Of "Front" Fence Columns | 2d | 2025-02-04 | 2025-02-05 | B10-V25~V32-1530, B10-V17~V24-1560 | 21d | 0d | Front Fence Walls [8] | 17,898.32 |
| B10-V25~V32-1570 |  | Pouring Concrete Crown Of "Front" Fence Columns | 3d | 2025-02-06 | 2025-02-09 | B10-V25~V32-1560, B10-V17~V24-1570 | 21d | 0d | Fence Columns - C Chanel [8] | 3,310.37 |
| B10-V25~V32-1580 |  | Bardoura Works For Yard | 5d | 2025-02-06 | 2025-02-11 | B10-V25~V32-1550, B10-V17~V24-1580 | 9d | 0d | Bardoura Works For Yard [8] | 14,408.16 |
| B10-V25~V32-1590 |  | Pouring Concrete Flower Basin Of "Front" Fence Columns | 4d | 2025-02-10 | 2025-02-13 | B10-V25~V32-1570, B10-V17~V24-1590 | 21d | 0d |  |  |
| B10-V25~V32-1600 |  | Antitermite Treatment For Yard | 1d | 2025-02-12 | 2025-02-12 | B10-V25~V32-1580, B10-V17~V24-1600 | 9d | 0d | Antitermite Treatment For Yard [8] |  |
| B10-V25~V32-1610 |  | Pouring Concrete For Yard | 1d | 2025-02-13 | 2025-02-13 | B10-V25~V32-1600, B10-V17~V24-1610 | 9d | 0d |  |  |
| B10-V25~V32-1620 |  | Block Work For Flower Basin | 5d | 2025-02-15 | 2025-02-19 | B10-V25~V32-1610, B10-V17~V24-1620 | 9d | 0d |  |  |
| B10-V25~V32-1630 |  | Plastering Work For Flower Basin | 4d | 2025-02-20 | 2025-02-24 | B10-V25~V32-1620, B10-V17~V24-1630 | 9d | 0d |  |  |
| B10-V25~V32-1640 |  | Interlock Works For The Yard | 6d | 2025-02-25 | 2025-03-03 | B10-V25~V32-1630, B10-V17~V24-1640 | 9d | 0d | Interlock Works For The Yard [8] | 36,776.32 |
| B10-V25~V32-1650 |  | External Grading Works For The Villa | 4d | 2025-03-04 | 2025-03-08 | B10-V25~V32-1640, B10-V17~V24-1650 | 11d | 0d | External Grading Works For The Villa [8] | 3,221.68 |
| B10-V25~V32-1660 |  | Installation The Exterior Door & Garage Door | 5d | 2025-03-04 | 2025-03-09 | B10-V25~V32-1640, B10-V17~V24-1660 | 14d | 2d | Installation The Exterior Door [8]; Installation The Exterior Garage Door [8] | 40,002.72 |
| B10-V25~V32-1670 |  | Fixing Floor Drain For The Yard | 2d | 2025-03-04 | 2025-03-05 | B10-V25~V32-1640, B10-V17~V24-1670 | 17d | 5d | Floor Drain & Clean Out [8] | 13,423.76 |
| B10-V25~V32-1680 |  | Granite Surronds Around The Villa | 4d | 2025-03-09 | 2025-03-12 | B10-V25~V32-1650, B10-V17~V24-1680 | 11d | 2d | Granite Surronds Around The Villa [8] | 25,818.32 |
| B10-V25~V32-1690 |  | Painting The Base Surface Of The Fence | 2d | 2025-03-09 | 2025-03-10 | B10-V25~V32-1750, B10-V17~V24-1690 | 9d | 0d |  |  |
| B10-V25~V32-1700 |  | Painting The Final Face Of The Fence | 4d | 2025-03-11 | 2025-03-15 | B10-V25~V32-1690, B10-V17~V24-1700 | 9d | 0d | Painting Final Face Of The Fence [8] | 37,586.48 |
| B10-V25~V32-1710 |  | Exterior Painting Of The Villa | 7d | 2025-03-16 | 2025-03-23 | B10-V25~V32-1680, B10-V25~V32-1700, B10-V25~V32-1660, B10-V25~V32-1670, B10-V17~V24-1710 | 9d | 0d | Exterior Painting Of The Villa [8]; Exterior Painting Staircase House [8] | 105,684.16 |
| B10-V25~V32-1720 |  | Installation Elec Fixtures & Accessories For The Yard | 4d | 2025-03-24 | 2025-03-27 | B10-V25~V32-1700, B10-V25~V32-1710, B10-V17~V24-1720 | 45d | 0d | Elec feeding panels GF & FF [8] | 22,372.88 |

| ID | WBS | Activity | Duration | Start | Finish | Predecessors | Total float | Free float | Resources | Cost | Department-1 |
| --- | --- | --- | --- | --- | --- | --- | --- | --- | --- | --- | --- |
|  | 5 | **External Sidewalk Works** |  | 2025-02-15 | 2025-04-01 |  |  |  |  |  |  |
| B10-V25~V32-1730 |  | Connection The Drain To The Piblic Network | 3d | 2025-02-15 | 2025-02-17 | B10-V25~V32-1510, B10-V25~V32-1590, B10-V17~V24-1730 | 21d | 4d | Connection Drain To The Piblic Network [8]; Connection Water To The Piblic Network [8] | 13,420.32 |  |
| B10-V25~V32-1740 |  | Pardora Works For The External Sidewalk | 2d | 2025-03-04 | 2025-03-05 | B10-V25~V32-1640, B10-V25~V32-1730, B10-V17~V24-1740 | 9d | 0d |  |  |  |
| B10-V25~V32-1750 |  | Interlock Works For The Exerrnal Sidewalk | 2d | 2025-03-06 | 2025-03-08 | B10-V25~V32-1740, B10-V17~V24-1750 | 9d | 0d |  |  |  |
| B10-V25~V32-1760 |  | Pulling The Villa's Main Elec Cable | 4d | 2025-03-29 | 2025-04-01 | B10-V25~V32-1750, B10-V25~V32-1720, B10-V17~V24-1760 | 45d | 0d | Elec Work Testing [8] | 22,819.84 |  |
|  | 6 | **Final Testing & Handover** |  | 2025-03-25 | 2025-04-20 |  |  |  |  |  |  |
| B10-V25~V32-1770 |  | Mech Work Testing & Handover | 5d | 2025-03-25 | 2025-03-30 | B10-V25~V32-1730, B10-V25~V32-1340, B10-V25~V32-1380, B10-V17~V24-1770 | 52d | 1d | Mech Work Testing & Handover [8] | 14,318.64 |  |
| B10-V25~V32-1780 |  | Arch Snaglist & Handover | 5d | 2025-03-31 | 2025-04-05 | B10-V25~V32-1750, B10-V25~V32-1710, B10-V25~V32-1400, B10-V17~V24-1780 | 47d | 1d | Arch Snaglist & Handover [8] | 77,320.64 |  |
| B10-V25~V32-1790 |  | ElecWork Testing & Handover | 5d | 2025-04-02 | 2025-04-07 | B10-V25~V32-1760, B10-V25~V32-1370, B10-V17~V24-1790 | 45d | 0d | Elec Work Handover [8] | 23,804.72 |  |
| B10-V25~V32-1800 |  | Final Handover Of The Villa To The Consltant | 5d | 2025-04-08 | 2025-04-13 | B10-V25~V32-1780, B10-V25~V32-1790, B10-V25~V32-1770, B10-V25~V32-1410, B10-V17~V24-1800 | 45d | 0d |  |  |  |
| B10-V25~V32-1810 |  | Customer Delivery | 6d | 2025-04-14 | 2025-04-20 | B10-V25~V32-1800, B10-V17~V24-1810 | 45d | 1d |  |  |  |
|  | 9 | **B11-V01~V08** |  | 2024-09-23 | 2025-04-27 |  |  |  |  |  |  |
|  | 2 | **Under Grond Slap Works** |  | 2024-09-23 | 2024-11-02 |  |  |  |  |  |  |
| B11-V01~V08-1000 |  | Excavation&Compaction of Fondation | 6d | 2024-09-23 | 2024-09-29 | B10-V25~V32-1000 | 43d | 0d | Clearing & Groubbing [8]; Excavation & Leveling [8]; Stone Layer [8]; A3 Layer [8]; A1-a 1st Layer [8]; A1-a 2ed Layer [8] | 163,545.76 | Civil |
| B11-V01~V08-1010 |  | Pouring Concrete For Bedding | 2d | 2024-09-30 | 2024-10-01 | B11-V01~V08-1000, B10-V25~V32-1010 | 43d | 0d | PC Carpentry [8]; PC Concrete [8]; RC 18 MPA [9 M3] | 37,899.68 | Civil |
| B11-V01~V08-1020 |  | Reinforcement Concrete For Foundation | 5d | 2024-10-02 | 2024-10-07 | B11-V01~V08-1010, B10-V25~V32-1020 | 43d | 0d | RC Foundation Carpentry [8]; RC Foundation Steel [8]; RC Foundation Concrete [8] | 201,355.92 | Civil |
| B11-V01~V08-1030 |  | Steel Fixing& Carpenter work for Beams | 4d | 2024-10-08 | 2024-10-12 | B11-V01~V08-1020, B10-V25~V32-1030 | 43d | 0d | RC Grade Beam Carpentry & Steel [8] | 44,745.76 | Civil |
| B11-V01~V08-1040 |  | Mech&Elec Establishment for Beams | 3d | 2024-10-13 | 2024-10-15 | B11-V01~V08-1030, B10-V25~V32-1040 | 43d | 0d |  |  | Mech |
| B11-V01~V08-1050 |  | Pouring Concrete For Beams | 1d | 2024-10-16 | 2024-10-16 | B11-V01~V08-1040, B10-V25~V32-1050 | 43d | 0d | RC Grade Beam Concrete [8] | 77,141.68 | Civil |
| B11-V01~V08-1060 |  | Bitmen Coating For Fondation&Beams | 3d | 2024-10-17 | 2024-10-20 | B11-V01~V08-1050, B10-V25~V32-1060 | 43d | 0d | Bitumen Coating Foundations & Grade Beams [8] | 22,372.32 | Civil |
| B11-V01~V08-1070 |  | Backfilling Inside Fondations | 4d | 2024-10-21 | 2024-10-24 | B11-V01~V08-1060, B10-V25~V32-1070 | 43d | 0d | Backfilling 1st Layer [8]; Backfilling 2ed Layer [8] | 11,186.4 | Civil |
| B11-V01~V08-1080 |  | Mech Works Under Grond Slap | 3d | 2024-10-26 | 2024-10-28 | B11-V01~V08-1070, B10-V25~V32-1080 | 43d | 0d | Mech Establishment Under Ground Slap [8] | 13,423.42 | Mech |
| B11-V01~V08-1090 |  | Steel Fixing& Carpenter work for Ground Slap | 3d | 2024-10-29 | 2024-10-31 | B11-V01~V08-1080, B10-V25~V32-1090 | 43d | 0d | Steel & Carpentry For Ground Slap [8] | 10,246.54 | Civil |
| B11-V01~V08-1100 |  | Anti Termite Treatment For Ground Slap | 1d | 2024-11-02 | 2024-11-02 | B11-V01~V08-1090, B10-V25~V32-1100 | 43d | 0d | Anti Termite Treatment nder Ground Slap [8] | 2,237.28 | Civil |
| B11-V01~V08-1110 |  | Pouring Concrete For Ground Slap | 1d | 2024-11-02 | 2024-11-02 | B11-V01~V08-1100 FF, B11-V01~V08-1090, B10-V25~V32-1110 | 43d | 5d | Concrete For Ground Slap [8] | 58,169.52 | Civil |

| ID | WBS | Activity | Duration | Start | Finish | Predecessors | Total float | Free float | Resources | Cost | Department-1 |
| --- | --- | --- | --- | --- | --- | --- | --- | --- | --- | --- | --- |
|  | 4 | **Precast Works** |  | 2024-12-23 | 2024-12-30 |  |  |  |  |  |  |
| B11-V01~V08-1120 |  | Precast Constrction | 7d | 2024-12-23 | 2024-12-30 | B11-V01~V08-1110, B10-V25~V32-1120 | 0d |  | Precast Walls GF [8]; Hollow Core Slap GF [8]; Precast Stairs & staircase House [8]; Thermal insollation Outside Walls [8]; Concrete structure joints [8]; Precast Walls FF [8]; Hollow Core Slap FF [8] | 1,513,762.87 | Civil |
|  | 1 | **Works Inside The Villa** |  | 2024-12-31 | 2025-04-14 |  |  |  |  |  |  |
| B11-V01~V08-1130 |  | Block Work For GF & Estabishment 1F | 6d | 2024-12-31 | 2025-01-06 | B11-V01~V08-1120, B10-V25~V32-1130 | 15d | 0d | Block GF [8] | 13,647.1 | Arc |
| B11-V01~V08-1140 |  | L.L & H.L Drainage | 6d | 2025-01-07 | 2025-01-13 | B11-V01~V08-1130, B10-V25~V32-1140 | 15d | 0d | HL Drainage [8]; L.L Drainage [8] | 89,489.28 | Mech |
| B11-V01~V08-1150 |  | Elec Establishment For GF & 1F | 3d | 2025-01-07 | 2025-01-09 | B11-V01~V08-1130, B10-V25~V32-1150 | 18d | 3d | Elec Establishment GF [8] | 26,840.73 | Elec |
| B11-V01~V08-1160 |  | Screed Work For 1F & Roof | 6d | 2025-01-14 | 2025-01-20 | B11-V01~V08-1140, B11-V01~V08-1150, B10-V25~V32-1160 | 15d | 0d | Screed 1st Floor [8]; Screed Roof Floor [8]; Leveling Screed 1st Floor [8]; Leveling Screed Roof Floor [8] | 268,467.85 | Civil |
| B11-V01~V08-1170 |  | Water Tank & Heater Foundations | 4d | 2025-01-21 | 2025-01-25 | B11-V01~V08-1160, B10-V25~V32-1170 | 19d | 0d |  |  | Civil |
| B11-V01~V08-1180 |  | Block Works For 1F | 3d | 2025-01-21 | 2025-01-23 | B11-V01~V08-1160, B10-V25~V32-1180 | 15d | 0d | Block FF [8] | 20,537.81 | Arc |
| B11-V01~V08-1190 |  | Water Line Network | 6d | 2025-01-25 | 2025-01-30 | B11-V01~V08-1180, B10-V25~V32-1190 | 15d | 0d | Water Line Network [8] | 40,261.13 | Mech |
| B11-V01~V08-1200 |  | Continue Elec Establishment For GF & 1F | 3d | 2025-01-25 | 2025-01-27 | B11-V01~V08-1180, B10-V25~V32-1200 | 18d | 3d | Elec Establishment FF [8] | 26,840.73 | Elec |
| B11-V01~V08-1210 |  | Thermal Insulation For Roof | 5d | 2025-01-26 | 2025-01-30 | B11-V01~V08-1170, B10-V25~V32-1210 | 19d | 0d | Roof Insulation [8] | 32,530.16 | Arc |
| B11-V01~V08-1220 |  | Roof Floor Tiles | 6d | 2025-02-01 | 2025-02-06 | B11-V01~V08-1210, B10-V25~V32-1220 | 19d | 1d | Roof Tiles [8]; Roof Tiles Joints [8]; Re_Test Roof Insulation [8] | 63,179.38 | Arc |
| B11-V01~V08-1230 |  | Plaster Work For Villa | 6d | 2025-02-01 | 2025-02-06 | B11-V01~V08-1190, B11-V01~V08-1200, B10-V25~V32-1230 | 15d | 0d | Establishing a plastering GF [8]; Establishing a plastering FF [8]; Plastering GF [8]; Plastering FF [8] | 49,263.81 |  |
| B11-V01~V08-1240 |  | Marbale Stairs & Handrails | 6d | 2025-02-08 | 2025-02-13 | B11-V01~V08-1230, B10-V25~V32-1240 | 37d | 1d | Marbale Stairs [8]; Stairs Handrails SS [8] | 91,494.69 |  |
| B11-V01~V08-1250 |  | Water Proofing Of Bathrooms | 4d | 2025-02-08 | 2025-02-11 | B11-V01~V08-1230, B10-V25~V32-1250 | 15d | 0d | Bathrooms InsulationGF & FF [8] | 134.24 |  |
| B11-V01~V08-1260 |  | Pulling The Elec Wires | 4d | 2025-02-08 | 2025-02-11 | B11-V01~V08-1230, B10-V25~V32-1260 | 25d | 3d | Elec Wires GF [8]; Elec Wires FF [8] | 80,542.4 |  |
| B11-V01~V08-1270 |  | Bathroom Tiles | 4d | 2025-02-12 | 2025-02-16 | B11-V01~V08-1250, B11-V01~V08-1220, B10-V25~V32-1270 | 15d | 0d | Ceramic Walls Kitchen [8]; Ceramic Walls Bathrooms GF [8]; Ceramic Walls Bathrooms FF [8]; Ceramic Tiles Bathrooms GF [8]; Ceramic Tiles Kitchen GF [8]; Ceramic Tiles Store GF [8] | 73,204.08 |  |
| B11-V01~V08-1280 |  | Structure For Gypsum | 6d | 2025-02-17 | 2025-02-23 | B11-V01~V08-1270, B10-V25~V32-1280 | 15d | 0d | Structure For Gypsum GF Rooms [8]; Structure For Gypsum FF Rooms [8]; Structure For Gypsum Bathrooms & Kitchen [8] | 33,550.81 |  |
| B11-V01~V08-1290 |  | Gypsum Board For Room | 4d | 2025-02-24 | 2025-02-27 | B11-V01~V08-1280, B11-V01~V08-1260, B10-V25~V32-1290 | 15d | 0d | Gypsum Board For GF Room [8]; Gypsum Board For FF Room [8] | 35,796.64 |  |
| B11-V01~V08-1300 |  | Installation Of Gypsum Board For Bathroom & Kitchen | 4d | 2025-03-01 | 2025-03-04 | B11-V01~V08-1290, B10-V25~V32-1300 | 15d | 0d | Gypsum Board For Bathrooms & Kitchen [8] | 11,052.24 |  |
| B11-V01~V08-1310 |  | Putty Filler For Gypsm Board Ceiling | 6d | 2025-03-05 | 2025-03-11 | B11-V01~V08-1300, B10-V25~V32-1310 | 15d | 0d | Putty Filler 1st Layer Roof all Rooms [8]; Putty Filler 1st Layer Roof all Bathrooms & Kitchen [8]; Putty Filler1st Layer walls [8] | 62,182.52 |  |
| B11-V01~V08-1320 |  | Fixing Shower Glass | 4d | 2025-03-12 | 2025-03-16 | B11-V01~V08-1310, B10-V25~V32-1320 | 22d | 0d | Shower Glass [8] | 22,372.88 |  |
| B11-V01~V08-1330 |  | Interior Wall Putty Filler | 6d | 2025-03-12 | 2025-03-18 | B11-V01~V08-1310, B11-V01~V08-1240, B10-V25~V32-1330 | 15d | 0d | Putty Filler 2ed Layer Roof & WAlls GF [8]; Putty Filler 2ed Layer Roof & WAlls FF [8] | 62,150.21 |  |
| B11-V01~V08-1340 |  | Installation Of Sanitry Fixture | 6d | 2025-03-17 | 2025-03-23 | B11-V01~V08-1320, B10-V25~V32-1340 | 22d | 1d | Mech Fixtures & Accessories [8] | 98,440.56 |  |
| B11-V01~V08-1350 |  | 1st Face Paint | 5d | 2025-03-19 | 2025-03-24 | B11-V01~V08-1330, B10-V25~V32-1350 | 15d | 0d |  |  |  |
| B11-V01~V08-1360 |  | Installation Of Aluminum Windows | 6d | 2025-03-19 | 2025-03-25 | B11-V01~V08-1330, B10-V25~V32-1360 | 24d | 1d | Aluminum Windows [8] | 84,797.8 |  |
| B11-V01~V08-1370 |  | Installation Of Elec Fixture & Accessories | 6d | 2025-03-19 | 2025-03-25 | B11-V01~V08-1310, B11-V01~V08-1330, B11-V01~V08-1260, B10-V25~V32-1370 | 37d | 1d | Elec Fixtures & Accessories Villa & Yard [8]; Elec Cables GF & FF & Earthing [8] | 53,687.05 |  |
| B11-V01~V08-1380 |  | Installation Of Parquet | 4d | 2025-03-25 | 2025-03-29 | B11-V01~V08-1350, B10-V25~V32-1390 | 15d | 1d | Installation Of Parquet [8] | 52,978.96 |  |
| B11-V01~V08-1390 |  | Installation Of Water Tank-Heater & Pumps | 6d | 2025-03-25 | 2025-03-31 | B11-V01~V08-1340, B10-V25~V32-1380, B11-V01~V08-1220 | 21d | 0d | Water Tank & booster Pump [8]; Lower Pump [8]; Heater [8] | 129,742.58 |  |
| B11-V01~V08-1400 |  | Installation Of Wooden Doors | 6d | 2025-03-31 | 2025-04-06 | B11-V01~V08-1380, B10-V25~V32-1400 | 14d | 0d | Exterior Wooden Doors [8]; Wooden Doors Kitchen & Bathroom without Accessories [8]; Wooden Doors Accessories all Villa [8] | 142,110.43 |  |
| B11-V01~V08-1410 |  | Final Face Paint | 6d | 2025-04-08 | 2025-04-14 | B11-V01~V08-1360, B11-V01~V08-1400, B10-V25~V32-1410 | 13d | 0d | Final Face Paint Villa [8] | 31,090.55 |  |

| ID | WBS | Activity | Duration | Start | Finish | Predecessors | Total float | Free float | Resources | Cost |
| --- | --- | --- | --- | --- | --- | --- | --- | --- | --- | --- |
|  | 3 | **Fence & Courtyard Works** |  | 2024-12-31 | 2025-04-05 |  |  |  |  |  |
| B11-V01~V08-1420 |  | Pouring Bedding Concrete For Fence Fondations | 2d | 2024-12-31 | 2025-01-01 | B11-V01~V08-1120, B10-V25~V32-1420 | 9d | 0d | Excavation Fence Foundations [8] | 4,519.28 |
| B11-V01~V08-1430 |  | RC Concrete For Fence Fondations | 6d | 2025-01-02 | 2025-01-08 | B11-V01~V08-1420, B10-V25~V32-1430 | 9d | 0d | Fence Fondations-Eastern side [8]; Fence Fondations-Westren side [8]; Fence Fondations-Back side [8] | 13,420.32 |
| B11-V01~V08-1440 |  | Steel Fixing & Carpentry For Fence Columns | 6d | 2025-01-09 | 2025-01-15 | B11-V01~V08-1430, B10-V25~V32-1440 | 9d | 0d |  |  |
| B11-V01~V08-1450 |  | Establishing Elec For Fence Columns | 4d | 2025-01-16 | 2025-01-20 | B11-V01~V08-1440, B10-V25~V32-1450 | 9d | 0d |  |  |
| B11-V01~V08-1460 |  | Pouring Concrete For Fence Columns | 1d | 2025-01-21 | 2025-01-21 | B11-V01~V08-1450, B10-V25~V32-1460 | 9d | 0d | Fence Columns-Eastern side [8]; Fence Columns-Westren side [8]; Fence Columns-Back side [8] | 9,665.04 |
| B11-V01~V08-1470 |  | Installation Precast Panel For Fence | 5d | 2025-01-22 | 2025-01-27 | B11-V01~V08-1460, B10-V25~V32-1470 | 9d | 0d | Hollow Core Walls [8] | 71,593.2 |
| B11-V01~V08-1480 |  | Bitumen Coating For Fence Fondations | 4d | 2025-01-28 | 2025-02-01 | B11-V01~V08-1470, B10-V25~V32-1480 | 9d | 0d |  |  |
| B11-V01~V08-1490 |  | Pouring Bedding Concrete For "Front" Fence Fondations | 1d | 2025-01-28 | 2025-01-28 | B11-V01~V08-1470, B10-V25~V32-1490 | 21d | 0d |  |  |
| B11-V01~V08-1500 |  | RC Concrete For "Front" Fence Fondations | 4d | 2025-01-29 | 2025-02-02 | B11-V01~V08-1490, B10-V25~V32-1500 | 21d | 0d | Front Fence Fondations [8] | 8,904.4 |
| B11-V01~V08-1510 |  | Outdoor Drainage & Water Line | 5d | 2025-02-02 | 2025-02-06 | B11-V01~V08-1480, B11-V01~V08-1140, B10-V25~V32-1510 | 9d | 0d | Outdoor Drainage [8]; Outdoor Water Line [8] | 13,423.68 |
| B11-V01~V08-1520 |  | Steel Fixing & Carpentry For "Front" Fence Columns | 4d | 2025-02-03 | 2025-02-06 | B11-V01~V08-1500, B10-V25~V32-1520 | 21d | 0d |  |  |
| B11-V01~V08-1530 |  | Establishing Elec For "Front" Fence Columns | 4d | 2025-02-08 | 2025-02-11 | B11-V01~V08-1520, B10-V25~V32-1530 | 21d | 0d |  |  |
| B11-V01~V08-1540 |  | Establishing Elec For Fence & Yard | 2d | 2025-02-08 | 2025-02-09 | B11-V01~V08-1510, B10-V25~V32-1540 | 9d | 0d | Elec Establishment Fence & Yard [8] | 17,898.32 |
| B11-V01~V08-1550 |  | Backfilling the Yard | 4d | 2025-02-10 | 2025-02-13 | B11-V01~V08-1540, B10-V25~V32-1550 | 9d | 0d | Backfilling the Yard [8] | 10,560 |
| B11-V01~V08-1560 |  | Pouring Concrete Wall Of "Front" Fence Columns | 2d | 2025-02-12 | 2025-02-13 | B11-V01~V08-1530, B10-V25~V32-1560 | 21d | 0d | Front Fence Walls [8] | 17,898.32 |
| B11-V01~V08-1570 |  | Pouring Concrete Crown Of "Front" Fence Columns | 3d | 2025-02-15 | 2025-02-17 | B11-V01~V08-1560, B10-V25~V32-1570 | 21d | 0d | Fence Columns - C Chanel [8] | 3,310.37 |
| B11-V01~V08-1580 |  | Bardoura Works For Yard | 5d | 2025-02-15 | 2025-02-19 | B11-V01~V08-1550, B10-V25~V32-1580 | 9d | 0d | Bardoura Works For Yard [8] | 14,408.16 |
| B11-V01~V08-1590 |  | Pouring Concrete Flower Basin Of "Front" Fence Columns | 4d | 2025-02-18 | 2025-02-22 | B11-V01~V08-1570, B10-V25~V32-1590 | 21d | 0d |  |  |
| B11-V01~V08-1600 |  | Antitermite Treatment For Yard | 1d | 2025-02-20 | 2025-02-20 | B11-V01~V08-1580, B10-V25~V32-1600 | 9d | 0d | Antitermite Treatment For Yard [8] |  |
| B11-V01~V08-1610 |  | Pouring Concrete For Yard | 1d | 2025-02-22 | 2025-02-22 | B11-V01~V08-1600, B10-V25~V32-1610 | 9d | 0d |  |  |
| B11-V01~V08-1620 |  | Block Work For Flower Basin | 5d | 2025-02-23 | 2025-02-27 | B11-V01~V08-1610, B10-V25~V32-1620 | 9d | 0d |  |  |
| B11-V01~V08-1630 |  | Plastering Work For Flower Basin | 4d | 2025-03-01 | 2025-03-04 | B11-V01~V08-1620, B10-V25~V32-1630 | 9d | 0d |  |  |
| B11-V01~V08-1640 |  | Interlock Works For The Yard | 6d | 2025-03-05 | 2025-03-11 | B11-V01~V08-1630, B10-V25~V32-1640 | 9d | 0d | Interlock Works For The Yard [8] | 36,776.32 |
| B11-V01~V08-1650 |  | External Grading Works For The Villa | 4d | 2025-03-12 | 2025-03-16 | B11-V01~V08-1640, B10-V25~V32-1650 | 11d | 0d | External Grading Works For The Villa [8] | 3,221.68 |
| B11-V01~V08-1660 |  | Installation The Exterior Door & Garage Door | 5d | 2025-03-12 | 2025-03-17 | B11-V01~V08-1640, B10-V25~V32-1660 | 14d | 2d | Installation The Exterior Door [8]; Installation The Exterior Garage Door [8] | 40,002.72 |
| B11-V01~V08-1670 |  | Fixing Floor Drain For The Yard | 2d | 2025-03-12 | 2025-03-13 | B11-V01~V08-1640, B10-V25~V32-1670 | 17d | 5d | Floor Drain & Clean Out [8] | 13,423.76 |
| B11-V01~V08-1680 |  | Granite Surronds Around The Villa | 4d | 2025-03-17 | 2025-03-20 | B11-V01~V08-1650, B10-V25~V32-1680 | 11d | 2d | Granite Surronds Around The Villa [8] | 25,818.32 |
| B11-V01~V08-1690 |  | Painting The Base Surface Of The Fence | 2d | 2025-03-17 | 2025-03-18 | B11-V01~V08-1750, B10-V25~V32-1690 | 9d | 0d |  |  |
| B11-V01~V08-1700 |  | Painting The Final Face Of The Fence | 4d | 2025-03-19 | 2025-03-23 | B11-V01~V08-1690, B10-V25~V32-1700 | 9d | 0d | Painting Final Face Of The Fence [8] | 37,586.48 |
| B11-V01~V08-1710 |  | Exterior Painting Of The Villa | 7d | 2025-03-24 | 2025-03-31 | B11-V01~V08-1680, B11-V01~V08-1700, B11-V01~V08-1660, B11-V01~V08-1670, B10-V25~V32-1710 | 9d | 0d | Exterior Painting Of The Villa [8]; Exterior Painting Staircase House [8] | 105,684.16 |
| B11-V01~V08-1720 |  | Installation Elec Fixtures & Accessories For The Yard | 4d | 2025-04-01 | 2025-04-05 | B11-V01~V08-1700, B11-V01~V08-1710, B10-V25~V32-1720 | 44d | 0d | Elec feeding panels GF & FF [8] | 22,372.88 |

| ID | WBS | Activity | Duration | Start | Finish | Predecessors | Total float | Free float | Resources | Cost | Department-1 |
| --- | --- | --- | --- | --- | --- | --- | --- | --- | --- | --- | --- |
|  | 5 | **External Sidewalk Works** |  | 2025-02-23 | 2025-04-09 |  |  |  |  |  |  |
| B11-V01~V08-1730 |  | Connection The Drain To The Piblic Network | 3d | 2025-02-23 | 2025-02-25 | B11-V01~V08-1510, B11-V01~V08-1590, B10-V25~V32-1730 | 21d | 4d | Connection Drain To The Piblic Network [8]; Connection Water To The Piblic Network [8] | 13,420.32 |  |
| B11-V01~V08-1740 |  | Pardora Works For The External Sidewalk | 2d | 2025-03-12 | 2025-03-13 | B11-V01~V08-1640, B11-V01~V08-1730, B10-V25~V32-1740 | 9d | 0d |  |  |  |
| B11-V01~V08-1750 |  | Interlock Works For The Exerrnal Sidewalk | 2d | 2025-03-15 | 2025-03-16 | B11-V01~V08-1740, B10-V25~V32-1750 | 9d | 0d |  |  |  |
| B11-V01~V08-1760 |  | Pulling The Villa's Main Elec Cable | 4d | 2025-04-06 | 2025-04-09 | B11-V01~V08-1750, B11-V01~V08-1720, B10-V25~V32-1760 | 44d | 0d | Elec Work Testing [8] | 22,819.84 |  |
|  | 6 | **Final Testing & Handover** |  | 2025-04-01 | 2025-04-27 |  |  |  |  |  |  |
| B11-V01~V08-1770 |  | Mech Work Testing & Handover | 5d | 2025-04-01 | 2025-04-06 | B11-V01~V08-1730, B11-V01~V08-1340, B11-V01~V08-1390, B10-V25~V32-1770 | 52d | 1d | Mech Work Testing & Handover [8] | 14,318.64 |  |
| B11-V01~V08-1780 |  | Arch Snaglist & Handover | 5d | 2025-04-07 | 2025-04-12 | B11-V01~V08-1750, B11-V01~V08-1710, B11-V01~V08-1400, B10-V25~V32-1780 | 47d | 1d | Arch Snaglist & Handover [8] | 77,320.64 |  |
| B11-V01~V08-1790 |  | ElecWork Testing & Handover | 5d | 2025-04-10 | 2025-04-15 | B11-V01~V08-1760, B11-V01~V08-1370, B10-V25~V32-1790 | 44d | 0d | Elec Work Handover [8] | 23,804.72 |  |
| B11-V01~V08-1800 |  | Final Handover Of The Villa To The Consltant | 5d | 2025-04-16 | 2025-04-21 | B11-V01~V08-1780, B11-V01~V08-1790, B11-V01~V08-1770, B11-V01~V08-1410, B10-V25~V32-1800 | 44d | 0d |  |  |  |
| B11-V01~V08-1810 |  | Customer Delivery | 5d | 2025-04-22 | 2025-04-27 | B11-V01~V08-1800, B10-V25~V32-1810 | 44d | 2d |  |  |  |
|  | 10 | **B11-V09~V16** |  | 2024-09-30 | 2025-05-05 |  |  |  |  |  |  |
|  | 2 | **Under Grond Slap Works** |  | 2024-09-30 | 2024-11-09 |  |  |  |  |  |  |
| B11-V09~V16-1000 |  | Excavation&Compaction of Fondation | 6d | 2024-09-30 | 2024-10-06 | B11-V01~V08-1000 | 44d | 0d | Clearing & Groubbing [8]; Excavation & Leveling [8]; Stone Layer [8]; A3 Layer [8]; A1-a 1st Layer [8]; A1-a 2ed Layer [8] | 163,545.76 | Civil |
| B11-V09~V16-1010 |  | Pouring Concrete For Bedding | 2d | 2024-10-07 | 2024-10-08 | B11-V09~V16-1000, B11-V01~V08-1010 | 44d | 0d | PC Carpentry [8]; PC Concrete [8]; RC 18 MPA [9 M3] | 37,899.68 | Civil |
| B11-V09~V16-1020 |  | Reinforcement Concrete For Foundation | 5d | 2024-10-09 | 2024-10-14 | B11-V09~V16-1010, B11-V01~V08-1020 | 44d | 0d | RC Foundation Carpentry [8]; RC Foundation Steel [8]; RC Foundation Concrete [8] | 201,355.92 | Civil |
| B11-V09~V16-1030 |  | Steel Fixing& Carpenter work for Beams | 4d | 2024-10-15 | 2024-10-19 | B11-V09~V16-1020, B11-V01~V08-1030 | 44d | 0d | RC Grade Beam Carpentry & Steel [8] | 44,745.76 | Civil |
| B11-V09~V16-1040 |  | Mech&Elec Establishment for Beams | 3d | 2024-10-20 | 2024-10-22 | B11-V09~V16-1030, B11-V01~V08-1040 | 44d | 0d |  |  | Mech |
| B11-V09~V16-1050 |  | Pouring Concrete For Beams | 1d | 2024-10-23 | 2024-10-23 | B11-V09~V16-1040, B11-V01~V08-1050 | 44d | 0d | RC Grade Beam Concrete [8] | 77,141.68 | Civil |
| B11-V09~V16-1060 |  | Bitmen Coating For Fondation&Beams | 3d | 2024-10-24 | 2024-10-27 | B11-V09~V16-1050, B11-V01~V08-1060 | 44d | 0d | Bitumen Coating Foundations & Grade Beams [8] | 22,372.32 | Civil |
| B11-V09~V16-1070 |  | Backfilling Inside Fondations | 4d | 2024-10-28 | 2024-10-31 | B11-V09~V16-1060, B11-V01~V08-1070 | 44d | 0d | Backfilling 1st Layer [8]; Backfilling 2ed Layer [8] | 11,186.4 | Civil |
| B11-V09~V16-1080 |  | Mech Works Under Grond Slap | 3d | 2024-11-02 | 2024-11-04 | B11-V09~V16-1070, B11-V01~V08-1080 | 44d | 0d | Mech Establishment Under Ground Slap [8] | 13,423.42 | Mech |
| B11-V09~V16-1090 |  | Steel Fixing& Carpenter work for Ground Slap | 3d | 2024-11-05 | 2024-11-07 | B11-V09~V16-1080, B11-V01~V08-1090 | 44d | 0d | Steel & Carpentry For Ground Slap [8] | 10,246.54 | Civil |
| B11-V09~V16-1100 |  | Anti Termite Treatment For Ground Slap | 1d | 2024-11-09 | 2024-11-09 | B11-V09~V16-1090, B11-V01~V08-1100 | 44d | 0d | Anti Termite Treatment nder Ground Slap [8] | 2,237.28 | Civil |
| B11-V09~V16-1110 |  | Pouring Concrete For Ground Slap | 1d | 2024-11-09 | 2024-11-09 | B11-V09~V16-1100 FF, B11-V09~V16-1090, B11-V01~V08-1110 | 44d | 5d | Concrete For Ground Slap [8] | 58,169.52 | Civil |

| ID | WBS | Activity | Duration | Start | Finish | Predecessors | Total float | Free float | Resources | Cost | Department-1 |
| --- | --- | --- | --- | --- | --- | --- | --- | --- | --- | --- | --- |
|  | 4 | **Precast Works** |  | 2024-12-31 | 2025-01-07 |  |  |  |  |  |  |
| B11-V09~V16-1120 |  | Precast Constrction | 7d | 2024-12-31 | 2025-01-07 | B11-V09~V16-1110, B11-V01~V08-1120 | 0d |  | Precast Walls GF [8]; Hollow Core Slap GF [8]; Precast Stairs & staircase House [8]; Thermal insollation Outside Walls [8]; Concrete structure joints [8]; Precast Walls FF [8]; Hollow Core Slap FF [8] | 1,513,762.87 | Civil |
|  | 1 | **Works Inside The Villa** |  | 2025-01-08 | 2025-04-21 |  |  |  |  |  |  |
| B11-V09~V16-1130 |  | Block Work For GF & Estabishment 1F | 6d | 2025-01-08 | 2025-01-14 | B11-V09~V16-1120, B11-V01~V08-1130 | 14d | 0d | Block GF [8] | 13,647.1 | Arc |
| B11-V09~V16-1140 |  | L.L & H.L Drainage | 6d | 2025-01-15 | 2025-01-21 | B11-V09~V16-1130, B11-V01~V08-1140 | 14d | 0d | HL Drainage [8]; L.L Drainage [8] | 89,489.28 | Mech |
| B11-V09~V16-1150 |  | Elec Establishment For GF & 1F | 3d | 2025-01-15 | 2025-01-18 | B11-V09~V16-1130, B11-V01~V08-1150 | 17d | 3d | Elec Establishment GF [8] | 26,840.73 | Elec |
| B11-V09~V16-1160 |  | Screed Work For 1F & Roof | 6d | 2025-01-22 | 2025-01-28 | B11-V09~V16-1140, B11-V09~V16-1150, B11-V01~V08-1160 | 14d | 0d | Screed 1st Floor [8]; Screed Roof Floor [8]; Leveling Screed 1st Floor [8]; Leveling Screed Roof Floor [8] | 268,467.85 | Civil |
| B11-V09~V16-1170 |  | Water Tank & Heater Foundations | 4d | 2025-01-29 | 2025-02-02 | B11-V09~V16-1160, B11-V01~V08-1170 | 18d | 0d |  |  | Civil |
| B11-V09~V16-1180 |  | Block Works For 1F | 3d | 2025-01-29 | 2025-02-01 | B11-V09~V16-1160, B11-V01~V08-1180 | 14d | 0d | Block FF [8] | 20,537.81 | Arc |
| B11-V09~V16-1190 |  | Water Line Network | 6d | 2025-02-02 | 2025-02-08 | B11-V09~V16-1180, B11-V01~V08-1190 | 14d | 0d | Water Line Network [8] | 40,261.13 | Mech |
| B11-V09~V16-1200 |  | Continue Elec Establishment For GF & 1F | 3d | 2025-02-02 | 2025-02-04 | B11-V09~V16-1180, B11-V01~V08-1200 | 17d | 3d | Elec Establishment FF [8] | 26,840.73 | Elec |
| B11-V09~V16-1210 |  | Thermal Insulation For Roof | 5d | 2025-02-03 | 2025-02-08 | B11-V09~V16-1170, B11-V01~V08-1210 | 18d | 0d | Roof Insulation [8] | 32,530.16 | Arc |
| B11-V09~V16-1220 |  | Roof Floor Tiles | 6d | 2025-02-09 | 2025-02-15 | B11-V09~V16-1210, B11-V01~V08-1220 | 18d | 1d | Roof Tiles [8]; Roof Tiles Joints [8]; Re_Test Roof Insulation [8] | 63,179.38 | Arc |
| B11-V09~V16-1230 |  | Plaster Work For Villa | 6d | 2025-02-09 | 2025-02-15 | B11-V09~V16-1190, B11-V09~V16-1200, B11-V01~V08-1230 | 14d | 0d | Establishing a plastering GF [8]; Establishing a plastering FF [8]; Plastering GF [8]; Plastering FF [8] | 49,263.81 |  |
| B11-V09~V16-1240 |  | Marbale Stairs & Handrails | 6d | 2025-02-16 | 2025-02-22 | B11-V09~V16-1230, B11-V01~V08-1240 | 36d | 1d | Marbale Stairs [8]; Stairs Handrails SS [8] | 91,494.69 |  |
| B11-V09~V16-1250 |  | Water Proofing Of Bathrooms | 4d | 2025-02-16 | 2025-02-19 | B11-V09~V16-1230, B11-V01~V08-1250 | 14d | 0d | Bathrooms InsulationGF & FF [8] | 134.24 |  |
| B11-V09~V16-1260 |  | Pulling The Elec Wires | 4d | 2025-02-16 | 2025-02-19 | B11-V09~V16-1230, B11-V01~V08-1260 | 24d | 3d | Elec Wires GF [8]; Elec Wires FF [8] | 80,542.4 |  |
| B11-V09~V16-1270 |  | Bathroom Tiles | 4d | 2025-02-20 | 2025-02-24 | B11-V09~V16-1250, B11-V09~V16-1220, B11-V01~V08-1270 | 14d | 0d | Ceramic Walls Kitchen [8]; Ceramic Walls Bathrooms GF [8]; Ceramic Walls Bathrooms FF [8]; Ceramic Tiles Bathrooms GF [8]; Ceramic Tiles Kitchen GF [8]; Ceramic Tiles Store GF [8] | 73,204.08 |  |
| B11-V09~V16-1280 |  | Structure For Gypsum | 6d | 2025-02-25 | 2025-03-03 | B11-V09~V16-1270, B11-V01~V08-1280 | 14d | 0d | Structure For Gypsum GF Rooms [8]; Structure For Gypsum FF Rooms [8]; Structure For Gypsum Bathrooms & Kitchen [8] | 33,550.81 |  |
| B11-V09~V16-1290 |  | Gypsum Board For Room | 4d | 2025-03-04 | 2025-03-08 | B11-V09~V16-1280, B11-V09~V16-1260, B11-V01~V08-1290 | 14d | 0d | Gypsum Board For GF Room [8]; Gypsum Board For FF Room [8] | 35,796.64 |  |
| B11-V09~V16-1300 |  | Installation Of Gypsum Board For Bathroom & Kitchen | 4d | 2025-03-09 | 2025-03-12 | B11-V09~V16-1290, B11-V01~V08-1300 | 14d | 0d | Gypsum Board For Bathrooms & Kitchen [8] | 11,052.24 |  |
| B11-V09~V16-1310 |  | Putty Filler For Gypsm Board Ceiling | 6d | 2025-03-13 | 2025-03-19 | B11-V09~V16-1300, B11-V01~V08-1310 | 14d | 0d | Putty Filler 1st Layer Roof all Rooms [8]; Putty Filler 1st Layer Roof all Bathrooms & Kitchen [8]; Putty Filler1st Layer walls [8] | 62,182.52 |  |
| B11-V09~V16-1320 |  | Fixing Shower Glass | 4d | 2025-03-20 | 2025-03-24 | B11-V09~V16-1310, B11-V01~V08-1320 | 21d | 0d | Shower Glass [8] | 22,372.88 |  |
| B11-V09~V16-1330 |  | Interior Wall Putty Filler | 6d | 2025-03-20 | 2025-03-26 | B11-V09~V16-1310, B11-V09~V16-1240, B11-V01~V08-1330 | 14d | 0d | Putty Filler 2ed Layer Roof & WAlls GF [8]; Putty Filler 2ed Layer Roof & WAlls FF [8] | 62,150.21 |  |
| B11-V09~V16-1340 |  | Installation Of Sanitry Fixture | 6d | 2025-03-25 | 2025-03-31 | B11-V09~V16-1320, B11-V01~V08-1340 | 21d | 0d | Mech Fixtures & Accessories [8] | 98,438.1 |  |
| B11-V09~V16-1350 |  | 1st Face Paint | 5d | 2025-03-27 | 2025-04-01 | B11-V09~V16-1330, B11-V01~V08-1350 | 14d | 0d |  |  |  |
| B11-V09~V16-1360 |  | Installation Of Aluminum Windows | 6d | 2025-03-27 | 2025-04-02 | B11-V09~V16-1330, B11-V01~V08-1360 | 23d | 1d | Aluminum Windows [8] | 84,797.8 |  |
| B11-V09~V16-1370 |  | Installation Of Elec Fixture & Accessories | 6d | 2025-03-27 | 2025-04-02 | B11-V09~V16-1310, B11-V09~V16-1330, B11-V09~V16-1260, B11-V01~V08-1370 | 36d | 1d | Elec Fixtures & Accessories Villa & Yard [8]; Elec Cables GF & FF & Earthing [8] | 53,681.46 |  |
| B11-V09~V16-1380 |  | Installation Of Water Tank-Heater & Pumps | 6d | 2025-04-01 | 2025-04-07 | B11-V09~V16-1340, B11-V01~V08-1390, B11-V09~V16-1220 | 21d | 0d | Water Tank & booster Pump [8]; Lower Pump [8]; Heater [8] | 129,730.28 |  |
| B11-V09~V16-1390 |  | Installation Of Parquet | 4d | 2025-04-02 | 2025-04-06 | B11-V09~V16-1350, B11-V01~V08-1380 | 14d | 0d | Installation Of Parquet [8] | 52,978.96 |  |
| B11-V09~V16-1400 |  | Installation Of Wooden Doors | 6d | 2025-04-07 | 2025-04-13 | B11-V09~V16-1390, B11-V01~V08-1400 | 14d | 0d | Wooden Doors Accessories all Villa [8]; Wooden Doors Kitchen & Bathroom without Accessories [8]; Exterior Wooden Doors [8] | 142,109.01 |  |
| B11-V09~V16-1410 |  | Final Face Paint | 6d | 2025-04-15 | 2025-04-21 | B11-V09~V16-1360, B11-V09~V16-1400, B11-V01~V08-1410 | 13d | 0d | Final Face Paint Villa [8] | 31,090.55 |  |

| ID | WBS | Activity | Duration | Start | Finish | Predecessors | Total float | Free float | Resources | Cost |
| --- | --- | --- | --- | --- | --- | --- | --- | --- | --- | --- |
|  | 3 | **Fence & Courtyard Works** |  | 2025-01-08 | 2025-04-13 |  |  |  |  |  |
| B11-V09~V16-1420 |  | Pouring Bedding Concrete For Fence Fondations | 2d | 2025-01-08 | 2025-01-09 | B11-V09~V16-1120, B11-V01~V08-1420 | 9d | 0d | Excavation Fence Foundations [8] | 4,519.28 |
| B11-V09~V16-1430 |  | RC Concrete For Fence Fondations | 6d | 2025-01-11 | 2025-01-16 | B11-V09~V16-1420, B11-V01~V08-1430 | 9d | 0d | Fence Fondations-Eastern side [8]; Fence Fondations-Westren side [8]; Fence Fondations-Back side [8] | 13,420.32 |
| B11-V09~V16-1440 |  | Steel Fixing & Carpentry For Fence Columns | 6d | 2025-01-18 | 2025-01-23 | B11-V09~V16-1430, B11-V01~V08-1440 | 9d | 0d |  |  |
| B11-V09~V16-1450 |  | Establishing Elec For Fence Columns | 4d | 2025-01-25 | 2025-01-28 | B11-V09~V16-1440, B11-V01~V08-1450 | 9d | 0d |  |  |
| B11-V09~V16-1460 |  | Pouring Concrete For Fence Columns | 1d | 2025-01-29 | 2025-01-29 | B11-V09~V16-1450, B11-V01~V08-1460 | 9d | 0d | Fence Columns-Eastern side [8]; Fence Columns-Westren side [8]; Fence Columns-Back side [8] | 9,665.04 |
| B11-V09~V16-1470 |  | Installation Precast Panel For Fence | 5d | 2025-01-30 | 2025-02-04 | B11-V09~V16-1460, B11-V01~V08-1470 | 9d | 0d | Hollow Core Walls [8] | 71,593.2 |
| B11-V09~V16-1480 |  | Bitumen Coating For Fence Fondations | 4d | 2025-02-05 | 2025-02-09 | B11-V09~V16-1470, B11-V01~V08-1480 | 9d | 0d |  |  |
| B11-V09~V16-1490 |  | Pouring Bedding Concrete For "Front" Fence Fondations | 1d | 2025-02-05 | 2025-02-05 | B11-V09~V16-1470, B11-V01~V08-1490 | 21d | 0d |  |  |
| B11-V09~V16-1500 |  | RC Concrete For "Front" Fence Fondations | 4d | 2025-02-06 | 2025-02-10 | B11-V09~V16-1490, B11-V01~V08-1500 | 21d | 0d | Front Fence Fondations [8] | 8,904.4 |
| B11-V09~V16-1510 |  | Outdoor Drainage & Water Line | 5d | 2025-02-10 | 2025-02-15 | B11-V09~V16-1480, B11-V09~V16-1140, B11-V01~V08-1510 | 9d | 0d | Outdoor Drainage [8]; Outdoor Water Line [8] | 13,423.68 |
| B11-V09~V16-1520 |  | Steel Fixing & Carpentry For "Front" Fence Columns | 4d | 2025-02-11 | 2025-02-15 | B11-V09~V16-1500, B11-V01~V08-1520 | 21d | 0d |  |  |
| B11-V09~V16-1530 |  | Establishing Elec For "Front" Fence Columns | 4d | 2025-02-16 | 2025-02-19 | B11-V09~V16-1520, B11-V01~V08-1530 | 21d | 0d |  |  |
| B11-V09~V16-1540 |  | Establishing Elec For Fence & Yard | 2d | 2025-02-16 | 2025-02-17 | B11-V09~V16-1510, B11-V01~V08-1540 | 9d | 0d | Elec Establishment Fence & Yard [8] | 17,898.32 |
| B11-V09~V16-1550 |  | Backfilling the Yard | 4d | 2025-02-18 | 2025-02-22 | B11-V09~V16-1540, B11-V01~V08-1550 | 9d | 0d | Backfilling the Yard [8] | 10,560 |
| B11-V09~V16-1560 |  | Pouring Concrete Wall Of "Front" Fence Columns | 2d | 2025-02-20 | 2025-02-22 | B11-V09~V16-1530, B11-V01~V08-1560 | 21d | 0d | Front Fence Walls [8] | 17,898.32 |
| B11-V09~V16-1570 |  | Pouring Concrete Crown Of "Front" Fence Columns | 3d | 2025-02-23 | 2025-02-25 | B11-V09~V16-1560, B11-V01~V08-1570 | 21d | 0d | Fence Columns - C Chanel [8] | 3,310.37 |
| B11-V09~V16-1580 |  | Bardoura Works For Yard | 5d | 2025-02-23 | 2025-02-27 | B11-V09~V16-1550, B11-V01~V08-1580 | 9d | 0d | Bardoura Works For Yard [8] | 14,408.16 |
| B11-V09~V16-1590 |  | Pouring Concrete Flower Basin Of "Front" Fence Columns | 4d | 2025-02-26 | 2025-03-02 | B11-V09~V16-1570, B11-V01~V08-1590 | 21d | 0d |  |  |
| B11-V09~V16-1600 |  | Antitermite Treatment For Yard | 1d | 2025-03-01 | 2025-03-01 | B11-V09~V16-1580, B11-V01~V08-1600 | 9d | 0d | Antitermite Treatment For Yard [8] |  |
| B11-V09~V16-1610 |  | Pouring Concrete For Yard | 1d | 2025-03-02 | 2025-03-02 | B11-V09~V16-1600, B11-V01~V08-1610 | 9d | 0d |  |  |
| B11-V09~V16-1620 |  | Block Work For Flower Basin | 5d | 2025-03-03 | 2025-03-08 | B11-V09~V16-1610, B11-V01~V08-1620 | 9d | 0d |  |  |
| B11-V09~V16-1630 |  | Plastering Work For Flower Basin | 4d | 2025-03-09 | 2025-03-12 | B11-V09~V16-1620, B11-V01~V08-1630 | 9d | 0d |  |  |
| B11-V09~V16-1640 |  | Interlock Works For The Yard | 6d | 2025-03-13 | 2025-03-19 | B11-V09~V16-1630, B11-V01~V08-1640 | 9d | 0d | Interlock Works For The Yard [8] | 36,776.32 |
| B11-V09~V16-1650 |  | External Grading Works For The Villa | 4d | 2025-03-20 | 2025-03-24 | B11-V09~V16-1640, B11-V01~V08-1650 | 11d | 0d | External Grading Works For The Villa [8] | 3,221.68 |
| B11-V09~V16-1660 |  | Installation The Exterior Door & Garage Door | 5d | 2025-03-20 | 2025-03-25 | B11-V09~V16-1640, B11-V01~V08-1660 | 14d | 2d | Installation The Exterior Door [8]; Installation The Exterior Garage Door [8] | 40,002.72 |
| B11-V09~V16-1670 |  | Fixing Floor Drain For The Yard | 2d | 2025-03-20 | 2025-03-22 | B11-V09~V16-1640, B11-V01~V08-1670 | 17d | 5d | Floor Drain & Clean Out [8] | 13,423.76 |
| B11-V09~V16-1680 |  | Granite Surronds Around The Villa | 4d | 2025-03-25 | 2025-03-29 | B11-V09~V16-1650, B11-V01~V08-1680 | 11d | 2d | Granite Surronds Around The Villa [8] | 25,818.32 |
| B11-V09~V16-1690 |  | Painting The Base Surface Of The Fence | 2d | 2025-03-25 | 2025-03-26 | B11-V09~V16-1750, B11-V01~V08-1690 | 9d | 0d |  |  |
| B11-V09~V16-1700 |  | Painting The Final Face Of The Fence | 4d | 2025-03-27 | 2025-03-31 | B11-V09~V16-1690, B11-V01~V08-1700 | 9d | 0d | Painting Final Face Of The Fence [8] | 37,586.48 |
| B11-V09~V16-1710 |  | Exterior Painting Of The Villa | 7d | 2025-04-01 | 2025-04-08 | B11-V09~V16-1680, B11-V09~V16-1700, B11-V09~V16-1660, B11-V09~V16-1670, B11-V01~V08-1710 | 9d | 0d | Exterior Painting Of The Villa [8]; Exterior Painting Staircase House [8] | 105,684.16 |
| B11-V09~V16-1720 |  | Installation Elec Fixtures & Accessories For The Yard | 4d | 2025-04-09 | 2025-04-13 | B11-V09~V16-1700, B11-V09~V16-1710, B11-V01~V08-1720 | 42d | 0d | Elec feeding panels GF & FF [8] | 22,372.88 |

| ID | WBS | Activity | Duration | Start | Finish | Predecessors | Total float | Free float | Resources | Cost | Department-1 |
| --- | --- | --- | --- | --- | --- | --- | --- | --- | --- | --- | --- |
|  | 5 | **External Sidewalk Works** |  | 2025-03-03 | 2025-04-17 |  |  |  |  |  |  |
| B11-V09~V16-1730 |  | Connection The Drain To The Piblic Network | 3d | 2025-03-03 | 2025-03-05 | B11-V09~V16-1510, B11-V09~V16-1590, B11-V01~V08-1730 | 21d | 4d | Connection Drain To The Piblic Network [8]; Connection Water To The Piblic Network [8] | 13,420.32 |  |
| B11-V09~V16-1740 |  | Pardora Works For The External Sidewalk | 2d | 2025-03-20 | 2025-03-22 | B11-V09~V16-1640, B11-V09~V16-1730, B11-V01~V08-1740 | 9d | 0d |  |  |  |
| B11-V09~V16-1750 |  | Interlock Works For The Exerrnal Sidewalk | 2d | 2025-03-23 | 2025-03-24 | B11-V09~V16-1740, B11-V01~V08-1750 | 9d | 0d |  |  |  |
| B11-V09~V16-1760 |  | Pulling The Villa's Main Elec Cable | 4d | 2025-04-14 | 2025-04-17 | B11-V09~V16-1750, B11-V09~V16-1720, B11-V01~V08-1760 | 42d | 0d | Elec Work Testing [8] | 22,819.84 |  |
|  | 6 | **Final Testing & Handover** |  | 2025-04-08 | 2025-05-05 |  |  |  |  |  |  |
| B11-V09~V16-1770 |  | Mech Work Testing & Handover | 5d | 2025-04-08 | 2025-04-13 | B11-V09~V16-1730, B11-V09~V16-1340, B11-V09~V16-1380, B11-V01~V08-1770 | 51d | 2d | Mech Work Testing & Handover [8] | 14,318.64 |  |
| B11-V09~V16-1780 |  | Arch Snaglist & Handover | 5d | 2025-04-14 | 2025-04-19 | B11-V09~V16-1750, B11-V09~V16-1710, B11-V09~V16-1400, B11-V01~V08-1780 | 46d | 2d | Arch Snaglist & Handover [8] | 77,320.64 |  |
| B11-V09~V16-1790 |  | ElecWork Testing & Handover | 5d | 2025-04-19 | 2025-04-23 | B11-V09~V16-1760, B11-V09~V16-1370, B11-V01~V08-1790 | 42d | 0d | Elec Work Handover [8] | 23,804.72 |  |
| B11-V09~V16-1800 |  | Final Handover Of The Villa To The Consltant | 5d | 2025-04-24 | 2025-04-29 | B11-V09~V16-1780, B11-V09~V16-1790, B11-V09~V16-1770, B11-V09~V16-1410, B11-V01~V08-1800 | 42d | 0d |  |  |  |
| B11-V09~V16-1810 |  | Customer Delivery | 5d | 2025-04-30 | 2025-05-05 | B11-V09~V16-1800, B11-V01~V08-1810 | 42d | 2d |  |  |  |
|  | 11 | **B11-V17~V24** |  | 2024-10-07 | 2025-05-13 |  |  |  |  |  |  |
|  | 2 | **Under Grond Slap Works** |  | 2024-10-07 | 2024-11-16 |  |  |  |  |  |  |
| B11-V17~V24-1000 |  | Excavation&Compaction of Fondation | 6d | 2024-10-07 | 2024-10-13 | B11-V09~V16-1000 | 45d | 0d | Clearing & Groubbing [8]; Excavation & Leveling [8]; Stone Layer [8]; A3 Layer [8]; A1-a 1st Layer [8]; A1-a 2ed Layer [8] | 163,545.76 | Civil |
| B11-V17~V24-1010 |  | Pouring Concrete For Bedding | 2d | 2024-10-14 | 2024-10-15 | B11-V17~V24-1000, B11-V09~V16-1010 | 45d | 0d | PC Carpentry [8]; PC Concrete [8]; RC 18 MPA [9 M3] | 37,899.68 | Civil |
| B11-V17~V24-1020 |  | Reinforcement Concrete For Foundation | 5d | 2024-10-16 | 2024-10-21 | B11-V17~V24-1010, B11-V09~V16-1020 | 45d | 0d | RC Foundation Carpentry [8]; RC Foundation Steel [8]; RC Foundation Concrete [8] | 201,355.92 | Civil |
| B11-V17~V24-1030 |  | Steel Fixing& Carpenter work for Beams | 4d | 2024-10-22 | 2024-10-26 | B11-V17~V24-1020, B11-V09~V16-1030 | 45d | 0d | RC Grade Beam Carpentry & Steel [8] | 44,745.76 | Civil |
| B11-V17~V24-1040 |  | Mech&Elec Establishment for Beams | 3d | 2024-10-27 | 2024-10-29 | B11-V17~V24-1030, B11-V09~V16-1040 | 45d | 0d |  |  | Mech |
| B11-V17~V24-1050 |  | Pouring Concrete For Beams | 1d | 2024-10-30 | 2024-10-30 | B11-V17~V24-1040, B11-V09~V16-1050 | 45d | 0d | RC Grade Beam Concrete [8] | 77,141.68 | Civil |
| B11-V17~V24-1060 |  | Bitmen Coating For Fondation&Beams | 3d | 2024-10-31 | 2024-11-03 | B11-V17~V24-1050, B11-V09~V16-1060 | 45d | 0d | Bitumen Coating Foundations & Grade Beams [8] | 22,372.32 | Civil |
| B11-V17~V24-1070 |  | Backfilling Inside Fondations | 4d | 2024-11-04 | 2024-11-07 | B11-V17~V24-1060, B11-V09~V16-1070 | 45d | 0d | Backfilling 1st Layer [8]; Backfilling 2ed Layer [8] | 11,186.4 | Civil |
| B11-V17~V24-1080 |  | Mech Works Under Grond Slap | 3d | 2024-11-09 | 2024-11-11 | B11-V17~V24-1070, B11-V09~V16-1080 | 45d | 0d | Mech Establishment Under Ground Slap [8] | 13,423.42 | Mech |
| B11-V17~V24-1090 |  | Steel Fixing& Carpenter work for Ground Slap | 3d | 2024-11-12 | 2024-11-14 | B11-V17~V24-1080, B11-V09~V16-1090 | 45d | 0d | Steel & Carpentry For Ground Slap [8] | 10,246.54 | Civil |
| B11-V17~V24-1100 |  | Anti Termite Treatment For Ground Slap | 1d | 2024-11-16 | 2024-11-16 | B11-V17~V24-1090, B11-V09~V16-1100 | 45d | 0d | Anti Termite Treatment nder Ground Slap [8] | 2,237.28 | Civil |
| B11-V17~V24-1110 |  | Pouring Concrete For Ground Slap | 1d | 2024-11-16 | 2024-11-16 | B11-V17~V24-1100 FF, B11-V17~V24-1090, B11-V09~V16-1110 | 45d | 5d | Concrete For Ground Slap [8] | 58,169.52 | Civil |

| ID | WBS | Activity | Duration | Start | Finish | Predecessors | Total float | Free float | Resources | Cost | Department-1 |
| --- | --- | --- | --- | --- | --- | --- | --- | --- | --- | --- | --- |
|  | 4 | **Precast Works** |  | 2025-01-08 | 2025-01-15 |  |  |  |  |  |  |
| B11-V17~V24-1120 |  | Precast Constrction | 7d | 2025-01-08 | 2025-01-15 | B11-V17~V24-1110, B11-V09~V16-1120 | 0d |  | Precast Walls GF [8]; Hollow Core Slap GF [8]; Precast Stairs & staircase House [8]; Thermal insollation Outside Walls [8]; Concrete structure joints [8]; Precast Walls FF [8]; Hollow Core Slap FF [8] | 1,513,762.87 | Civil |
|  | 1 | **Works Inside The Villa** |  | 2025-01-16 | 2025-04-28 |  |  |  |  |  |  |
| B11-V17~V24-1130 |  | Block Work For GF & Estabishment 1F | 6d | 2025-01-16 | 2025-01-22 | B11-V17~V24-1120, B11-V09~V16-1130 | 13d | 0d | Block GF [8] | 13,647.1 | Arc |
| B11-V17~V24-1140 |  | L.L & H.L Drainage | 6d | 2025-01-23 | 2025-01-29 | B11-V17~V24-1130, B11-V09~V16-1140 | 13d | 0d | HL Drainage [8]; L.L Drainage [8] | 89,489.28 | Mech |
| B11-V17~V24-1150 |  | Elec Establishment For GF & 1F | 3d | 2025-01-23 | 2025-01-26 | B11-V17~V24-1130, B11-V09~V16-1150 | 16d | 3d | Elec Establishment GF [8] | 26,840.73 | Elec |
| B11-V17~V24-1160 |  | Screed Work For 1F & Roof | 6d | 2025-01-30 | 2025-02-05 | B11-V17~V24-1140, B11-V17~V24-1150, B11-V09~V16-1160 | 13d | 0d | Screed 1st Floor [8]; Screed Roof Floor [8]; Leveling Screed 1st Floor [8]; Leveling Screed Roof Floor [8] | 268,467.85 | Civil |
| B11-V17~V24-1170 |  | Water Tank & Heater Foundations | 4d | 2025-02-06 | 2025-02-10 | B11-V17~V24-1160, B11-V09~V16-1170 | 17d | 0d |  |  | Civil |
| B11-V17~V24-1180 |  | Block Works For 1F | 3d | 2025-02-06 | 2025-02-09 | B11-V17~V24-1160, B11-V09~V16-1180 | 13d | 0d | Block FF [8] | 20,537.81 | Arc |
| B11-V17~V24-1190 |  | Water Line Network | 6d | 2025-02-10 | 2025-02-16 | B11-V17~V24-1180, B11-V09~V16-1190 | 13d | 0d | Water Line Network [8] | 40,261.13 | Mech |
| B11-V17~V24-1200 |  | Continue Elec Establishment For GF & 1F | 3d | 2025-02-10 | 2025-02-12 | B11-V17~V24-1180, B11-V09~V16-1200 | 16d | 3d | Elec Establishment FF [8] | 26,840.73 | Elec |
| B11-V17~V24-1210 |  | Thermal Insulation For Roof | 5d | 2025-02-11 | 2025-02-16 | B11-V17~V24-1170, B11-V09~V16-1210 | 17d | 0d | Roof Insulation [8] | 32,530.16 | Arc |
| B11-V17~V24-1220 |  | Roof Floor Tiles | 6d | 2025-02-17 | 2025-02-23 | B11-V17~V24-1210, B11-V09~V16-1220 | 17d | 1d | Roof Tiles [8]; Roof Tiles Joints [8]; Re_Test Roof Insulation [8] | 63,179.38 | Arc |
| B11-V17~V24-1230 |  | Plaster Work For Villa | 6d | 2025-02-17 | 2025-02-23 | B11-V17~V24-1190, B11-V17~V24-1200, B11-V09~V16-1230 | 13d | 0d | Establishing a plastering GF [8]; Establishing a plastering FF [8]; Plastering GF [8]; Plastering FF [8] | 49,263.81 |  |
| B11-V17~V24-1240 |  | Marbale Stairs & Handrails | 6d | 2025-02-24 | 2025-03-02 | B11-V17~V24-1230, B11-V09~V16-1240 | 35d | 1d | Marbale Stairs [8]; Stairs Handrails SS [8] | 91,494.69 |  |
| B11-V17~V24-1250 |  | Water Proofing Of Bathrooms | 4d | 2025-02-24 | 2025-02-27 | B11-V17~V24-1230, B11-V09~V16-1250 | 13d | 0d | Bathrooms InsulationGF & FF [8] | 134.24 |  |
| B11-V17~V24-1260 |  | Pulling The Elec Wires | 4d | 2025-02-24 | 2025-02-27 | B11-V17~V24-1230, B11-V09~V16-1260 | 23d | 3d | Elec Wires GF [8]; Elec Wires FF [8] | 80,542.4 |  |
| B11-V17~V24-1270 |  | Bathroom Tiles | 4d | 2025-03-01 | 2025-03-04 | B11-V17~V24-1250, B11-V17~V24-1220, B11-V09~V16-1270 | 13d | 0d | Ceramic Walls Kitchen [8]; Ceramic Walls Bathrooms GF [8]; Ceramic Walls Bathrooms FF [8]; Ceramic Tiles Bathrooms GF [8]; Ceramic Tiles Kitchen GF [8]; Ceramic Tiles Store GF [8] | 73,204.08 |  |
| B11-V17~V24-1280 |  | Structure For Gypsum | 6d | 2025-03-05 | 2025-03-11 | B11-V17~V24-1270, B11-V09~V16-1280 | 13d | 0d | Structure For Gypsum GF Rooms [8]; Structure For Gypsum FF Rooms [8]; Structure For Gypsum Bathrooms & Kitchen [8] | 33,550.81 |  |
| B11-V17~V24-1290 |  | Gypsum Board For Room | 4d | 2025-03-12 | 2025-03-16 | B11-V17~V24-1280, B11-V17~V24-1260, B11-V09~V16-1290 | 13d | 0d | Gypsum Board For GF Room [8]; Gypsum Board For FF Room [8] | 35,796.64 |  |
| B11-V17~V24-1300 |  | Installation Of Gypsum Board For Bathroom & Kitchen | 4d | 2025-03-17 | 2025-03-20 | B11-V17~V24-1290, B11-V09~V16-1300 | 13d | 0d | Gypsum Board For Bathrooms & Kitchen [8] | 11,052.24 |  |
| B11-V17~V24-1310 |  | Putty Filler For Gypsm Board Ceiling | 6d | 2025-03-22 | 2025-03-27 | B11-V17~V24-1300, B11-V09~V16-1310 | 13d | 0d | Putty Filler 1st Layer Roof all Rooms [8]; Putty Filler 1st Layer Roof all Bathrooms & Kitchen [8]; Putty Filler1st Layer walls [8] | 62,182.52 |  |
| B11-V17~V24-1320 |  | Fixing Shower Glass | 4d | 2025-03-29 | 2025-04-01 | B11-V17~V24-1310, B11-V09~V16-1320 | 20d | 0d | Shower Glass [8] | 22,372.88 |  |
| B11-V17~V24-1330 |  | Interior Wall Putty Filler | 6d | 2025-03-29 | 2025-04-03 | B11-V17~V24-1310, B11-V17~V24-1240, B11-V09~V16-1330 | 13d | 0d | Putty Filler 2ed Layer Roof & WAlls GF [8]; Putty Filler 2ed Layer Roof & WAlls FF [8] | 62,150.21 |  |
| B11-V17~V24-1340 |  | Installation Of Sanitry Fixture | 6d | 2025-04-02 | 2025-04-08 | B11-V17~V24-1320, B11-V09~V16-1340 | 20d | 0d | Mech Fixtures & Accessories [8] | 98,438.1 |  |
| B11-V17~V24-1350 |  | 1st Face Paint | 5d | 2025-04-05 | 2025-04-09 | B11-V17~V24-1330, B11-V09~V16-1350 | 13d | 0d |  |  |  |
| B11-V17~V24-1360 |  | Installation Of Aluminum Windows | 6d | 2025-04-05 | 2025-04-10 | B11-V17~V24-1330, B11-V09~V16-1360 | 22d | 1d | Aluminum Windows [8] | 84,797.8 |  |
| B11-V17~V24-1370 |  | Installation Of Elec Fixture & Accessories | 6d | 2025-04-05 | 2025-04-10 | B11-V17~V24-1310, B11-V17~V24-1330, B11-V17~V24-1260, B11-V09~V16-1370 | 35d | 1d | Elec Fixtures & Accessories Villa & Yard [8]; Elec Cables GF & FF & Earthing [8] | 53,681.46 |  |
| B11-V17~V24-1380 |  | Installation Of Water Tank-Heater & Pumps | 6d | 2025-04-09 | 2025-04-15 | B11-V17~V24-1340, B11-V09~V16-1380, B11-V17~V24-1220 | 20d | 0d | Water Tank & booster Pump [8]; Lower Pump [8]; Heater [8] | 129,730.28 |  |
| B11-V17~V24-1390 |  | Installation Of Parquet | 4d | 2025-04-10 | 2025-04-14 | B11-V17~V24-1350, B11-V09~V16-1390 | 13d | 0d | Installation Of Parquet [8] | 52,978.96 |  |
| B11-V17~V24-1400 |  | Installation Of Wooden Doors | 6d | 2025-04-15 | 2025-04-21 | B11-V17~V24-1390, B11-V09~V16-1400 | 13d | 0d | Wooden Doors Accessories all Villa [8]; Wooden Doors Kitchen & Bathroom without Accessories [8]; Exterior Wooden Doors [8] | 142,109.01 |  |
| B11-V17~V24-1410 |  | Final Face Paint | 6d | 2025-04-22 | 2025-04-28 | B11-V17~V24-1360, B11-V17~V24-1400, B11-V09~V16-1410 | 13d | 1d | Final Face Paint Villa [8] | 31,090.55 |  |

| ID | WBS | Activity | Duration | Start | Finish | Predecessors | Total float | Free float | Resources | Cost |
| --- | --- | --- | --- | --- | --- | --- | --- | --- | --- | --- |
|  | 3 | **Fence & Courtyard Works** |  | 2025-01-16 | 2025-04-21 |  |  |  |  |  |
| B11-V17~V24-1420 |  | Pouring Bedding Concrete For Fence Fondations | 2d | 2025-01-16 | 2025-01-18 | B11-V17~V24-1120, B11-V09~V16-1420 | 9d | 0d | Excavation Fence Foundations [8] | 4,519.28 |
| B11-V17~V24-1430 |  | RC Concrete For Fence Fondations | 6d | 2025-01-19 | 2025-01-25 | B11-V17~V24-1420, B11-V09~V16-1430 | 9d | 0d | Fence Fondations-Eastern side [8]; Fence Fondations-Westren side [8]; Fence Fondations-Back side [8] | 13,420.32 |
| B11-V17~V24-1440 |  | Steel Fixing & Carpentry For Fence Columns | 6d | 2025-01-26 | 2025-02-01 | B11-V17~V24-1430, B11-V09~V16-1440 | 9d | 0d |  |  |
| B11-V17~V24-1450 |  | Establishing Elec For Fence Columns | 4d | 2025-02-02 | 2025-02-05 | B11-V17~V24-1440, B11-V09~V16-1450 | 9d | 0d |  |  |
| B11-V17~V24-1460 |  | Pouring Concrete For Fence Columns | 1d | 2025-02-06 | 2025-02-06 | B11-V17~V24-1450, B11-V09~V16-1460 | 9d | 0d | Fence Columns-Eastern side [8]; Fence Columns-Westren side [8]; Fence Columns-Back side [8] | 9,665.04 |
| B11-V17~V24-1470 |  | Installation Precast Panel For Fence | 5d | 2025-02-08 | 2025-02-12 | B11-V17~V24-1460, B11-V09~V16-1470 | 9d | 0d | Hollow Core Walls [8] | 71,593.2 |
| B11-V17~V24-1480 |  | Bitumen Coating For Fence Fondations | 4d | 2025-02-13 | 2025-02-17 | B11-V17~V24-1470, B11-V09~V16-1480 | 9d | 0d |  |  |
| B11-V17~V24-1490 |  | Pouring Bedding Concrete For "Front" Fence Fondations | 1d | 2025-02-13 | 2025-02-13 | B11-V17~V24-1470, B11-V09~V16-1490 | 21d | 0d |  |  |
| B11-V17~V24-1500 |  | RC Concrete For "Front" Fence Fondations | 4d | 2025-02-15 | 2025-02-18 | B11-V17~V24-1490, B11-V09~V16-1500 | 21d | 0d | Front Fence Fondations [8] | 8,904.4 |
| B11-V17~V24-1510 |  | Outdoor Drainage & Water Line | 5d | 2025-02-18 | 2025-02-23 | B11-V17~V24-1480, B11-V17~V24-1140, B11-V09~V16-1510 | 9d | 0d | Outdoor Drainage [8]; Outdoor Water Line [8] | 13,423.68 |
| B11-V17~V24-1520 |  | Steel Fixing & Carpentry For "Front" Fence Columns | 4d | 2025-02-19 | 2025-02-23 | B11-V17~V24-1500, B11-V09~V16-1520 | 21d | 0d |  |  |
| B11-V17~V24-1530 |  | Establishing Elec For "Front" Fence Columns | 4d | 2025-02-24 | 2025-02-27 | B11-V17~V24-1520, B11-V09~V16-1530 | 21d | 0d |  |  |
| B11-V17~V24-1540 |  | Establishing Elec For Fence & Yard | 2d | 2025-02-24 | 2025-02-25 | B11-V17~V24-1510, B11-V09~V16-1540 | 9d | 0d | Elec Establishment Fence & Yard [8] | 17,898.32 |
| B11-V17~V24-1550 |  | Backfilling the Yard | 4d | 2025-02-26 | 2025-03-02 | B11-V17~V24-1540, B11-V09~V16-1550 | 9d | 0d | Backfilling the Yard [8] | 10,560 |
| B11-V17~V24-1560 |  | Pouring Concrete Wall Of "Front" Fence Columns | 2d | 2025-03-01 | 2025-03-02 | B11-V17~V24-1530, B11-V09~V16-1560 | 21d | 0d | Front Fence Walls [8] | 17,898.32 |
| B11-V17~V24-1570 |  | Pouring Concrete Crown Of "Front" Fence Columns | 3d | 2025-03-03 | 2025-03-05 | B11-V17~V24-1560, B11-V09~V16-1570 | 21d | 0d | Fence Columns - C Chanel [8] | 3,310.37 |
| B11-V17~V24-1580 |  | Bardoura Works For Yard | 5d | 2025-03-03 | 2025-03-08 | B11-V17~V24-1550, B11-V09~V16-1580 | 9d | 0d | Bardoura Works For Yard [8] | 14,408.16 |
| B11-V17~V24-1590 |  | Pouring Concrete Flower Basin Of "Front" Fence Columns | 4d | 2025-03-06 | 2025-03-10 | B11-V17~V24-1570, B11-V09~V16-1590 | 21d | 0d |  |  |
| B11-V17~V24-1600 |  | Antitermite Treatment For Yard | 1d | 2025-03-09 | 2025-03-09 | B11-V17~V24-1580, B11-V09~V16-1600 | 9d | 0d | Antitermite Treatment For Yard [8] |  |
| B11-V17~V24-1610 |  | Pouring Concrete For Yard | 1d | 2025-03-10 | 2025-03-10 | B11-V17~V24-1600, B11-V09~V16-1610 | 9d | 0d |  |  |
| B11-V17~V24-1620 |  | Block Work For Flower Basin | 5d | 2025-03-11 | 2025-03-16 | B11-V17~V24-1610, B11-V09~V16-1620 | 9d | 0d |  |  |
| B11-V17~V24-1630 |  | Plastering Work For Flower Basin | 4d | 2025-03-17 | 2025-03-20 | B11-V17~V24-1620, B11-V09~V16-1630 | 9d | 0d |  |  |
| B11-V17~V24-1640 |  | Interlock Works For The Yard | 6d | 2025-03-22 | 2025-03-27 | B11-V17~V24-1630, B11-V09~V16-1640 | 9d | 0d | Interlock Works For The Yard [8] | 36,776.32 |
| B11-V17~V24-1650 |  | External Grading Works For The Villa | 4d | 2025-03-29 | 2025-04-01 | B11-V17~V24-1640, B11-V09~V16-1650 | 11d | 0d | External Grading Works For The Villa [8] | 3,221.68 |
| B11-V17~V24-1660 |  | Installation The Exterior Door & Garage Door | 5d | 2025-03-29 | 2025-04-02 | B11-V17~V24-1640, B11-V09~V16-1660 | 14d | 2d | Installation The Exterior Door [8]; Installation The Exterior Garage Door [8] | 40,002.72 |
| B11-V17~V24-1670 |  | Fixing Floor Drain For The Yard | 2d | 2025-03-29 | 2025-03-30 | B11-V17~V24-1640, B11-V09~V16-1670 | 17d | 5d | Floor Drain & Clean Out [8] | 13,423.76 |
| B11-V17~V24-1680 |  | Granite Surronds Around The Villa | 4d | 2025-04-02 | 2025-04-06 | B11-V17~V24-1650, B11-V09~V16-1680 | 11d | 2d | Granite Surronds Around The Villa [8] | 25,818.32 |
| B11-V17~V24-1690 |  | Painting The Base Surface Of The Fence | 2d | 2025-04-02 | 2025-04-03 | B11-V17~V24-1750, B11-V09~V16-1690 | 9d | 0d |  |  |
| B11-V17~V24-1700 |  | Painting The Final Face Of The Fence | 4d | 2025-04-05 | 2025-04-08 | B11-V17~V24-1690, B11-V09~V16-1700 | 9d | 0d | Painting Final Face Of The Fence [8] | 37,586.48 |
| B11-V17~V24-1710 |  | Exterior Painting Of The Villa | 7d | 2025-04-09 | 2025-04-16 | B11-V17~V24-1680, B11-V17~V24-1700, B11-V17~V24-1660, B11-V17~V24-1670, B11-V09~V16-1710 | 9d | 0d | Exterior Painting Of The Villa [8]; Exterior Painting Staircase House [8] | 105,684.16 |
| B11-V17~V24-1720 |  | Installation Elec Fixtures & Accessories For The Yard | 4d | 2025-04-17 | 2025-04-21 | B11-V17~V24-1700, B11-V17~V24-1710, B11-V09~V16-1720 | 40d | 0d | Elec feeding panels GF & FF [8] | 22,372.88 |

| ID | WBS | Activity | Duration | Start | Finish | Predecessors | Total float | Free float | Resources | Cost | Department-1 |
| --- | --- | --- | --- | --- | --- | --- | --- | --- | --- | --- | --- |
|  | 5 | **External Sidewalk Works** |  | 2025-03-11 | 2025-04-26 |  |  |  |  |  |  |
| B11-V17~V24-1730 |  | Connection The Drain To The Piblic Network | 3d | 2025-03-11 | 2025-03-13 | B11-V17~V24-1510, B11-V17~V24-1590, B11-V09~V16-1730 | 21d | 4d | Connection Drain To The Piblic Network [8]; Connection Water To The Piblic Network [8] | 13,420.32 |  |
| B11-V17~V24-1740 |  | Pardora Works For The External Sidewalk | 2d | 2025-03-29 | 2025-03-30 | B11-V17~V24-1640, B11-V17~V24-1730, B11-V09~V16-1740 | 9d | 0d |  |  |  |
| B11-V17~V24-1750 |  | Interlock Works For The Exerrnal Sidewalk | 2d | 2025-03-31 | 2025-04-01 | B11-V17~V24-1740, B11-V09~V16-1750 | 9d | 0d |  |  |  |
| B11-V17~V24-1760 |  | Pulling The Villa's Main Elec Cable | 4d | 2025-04-22 | 2025-04-26 | B11-V17~V24-1750, B11-V17~V24-1720, B11-V09~V16-1760 | 40d | 0d | Elec Work Testing [8] | 22,819.84 |  |
|  | 6 | **Final Testing & Handover** |  | 2025-04-16 | 2025-05-13 |  |  |  |  |  |  |
| B11-V17~V24-1770 |  | Mech Work Testing & Handover | 5d | 2025-04-16 | 2025-04-21 | B11-V17~V24-1730, B11-V17~V24-1340, B11-V17~V24-1380, B11-V09~V16-1770 | 49d | 2d | Mech Work Testing & Handover [8] | 14,318.64 |  |
| B11-V17~V24-1780 |  | Arch Snaglist & Handover | 5d | 2025-04-22 | 2025-04-27 | B11-V17~V24-1750, B11-V17~V24-1710, B11-V17~V24-1400, B11-V09~V16-1780 | 44d | 2d | Arch Snaglist & Handover [8] | 77,320.64 |  |
| B11-V17~V24-1790 |  | ElecWork Testing & Handover | 5d | 2025-04-27 | 2025-05-01 | B11-V17~V24-1760, B11-V17~V24-1370, B11-V09~V16-1790 | 40d | 0d | Elec Work Handover [8] | 23,804.72 |  |
| B11-V17~V24-1800 |  | Final Handover Of The Villa To The Consltant | 5d | 2025-05-03 | 2025-05-07 | B11-V17~V24-1780, B11-V17~V24-1790, B11-V17~V24-1770, B11-V17~V24-1410, B11-V09~V16-1800 | 40d | 0d |  |  |  |
| B11-V17~V24-1810 |  | Customer Delivery | 5d | 2025-05-08 | 2025-05-13 | B11-V17~V24-1800, B11-V09~V16-1810 | 40d | 2d |  |  |  |
|  | 12 | **B11-V25~V32** |  | 2024-10-14 | 2025-05-21 |  |  |  |  |  |  |
|  | 2 | **Under Grond Slap Works** |  | 2024-10-14 | 2024-11-23 |  |  |  |  |  |  |
| B11-V25~V32-1000 |  | Excavation&Compaction of Fondation | 6d | 2024-10-14 | 2024-10-20 | B11-V17~V24-1000 | 46d | 0d | Clearing & Groubbing [8]; Excavation & Leveling [8]; Stone Layer [8]; A3 Layer [8]; A1-a 1st Layer [8]; A1-a 2ed Layer [8] | 163,545.76 | Civil |
| B11-V25~V32-1010 |  | Pouring Concrete For Bedding | 2d | 2024-10-21 | 2024-10-22 | B11-V25~V32-1000, B11-V17~V24-1010 | 46d | 0d | PC Carpentry [8]; PC Concrete [8]; RC 18 MPA [9 M3] | 37,899.68 | Civil |
| B11-V25~V32-1020 |  | Reinforcement Concrete For Foundation | 5d | 2024-10-23 | 2024-10-28 | B11-V25~V32-1010, B11-V17~V24-1020 | 46d | 0d | RC Foundation Carpentry [8]; RC Foundation Steel [8]; RC Foundation Concrete [8] | 201,355.92 | Civil |
| B11-V25~V32-1030 |  | Steel Fixing& Carpenter work for Beams | 4d | 2024-10-29 | 2024-11-02 | B11-V25~V32-1020, B11-V17~V24-1030 | 46d | 0d | RC Grade Beam Carpentry & Steel [8] | 44,745.76 | Civil |
| B11-V25~V32-1040 |  | Mech&Elec Establishment for Beams | 3d | 2024-11-03 | 2024-11-05 | B11-V25~V32-1030, B11-V17~V24-1040 | 46d | 0d |  |  | Mech |
| B11-V25~V32-1050 |  | Pouring Concrete For Beams | 1d | 2024-11-06 | 2024-11-06 | B11-V25~V32-1040, B11-V17~V24-1050 | 46d | 0d | RC Grade Beam Concrete [8] | 77,141.68 | Civil |
| B11-V25~V32-1060 |  | Bitmen Coating For Fondation&Beams | 3d | 2024-11-07 | 2024-11-10 | B11-V25~V32-1050, B11-V17~V24-1060 | 46d | 0d | Bitumen Coating Foundations & Grade Beams [8] | 22,372.32 | Civil |
| B11-V25~V32-1070 |  | Backfilling Inside Fondations | 4d | 2024-11-11 | 2024-11-14 | B11-V25~V32-1060, B11-V17~V24-1070 | 46d | 0d | Backfilling 1st Layer [8]; Backfilling 2ed Layer [8] | 11,186.4 | Civil |
| B11-V25~V32-1080 |  | Mech Works Under Grond Slap | 3d | 2024-11-16 | 2024-11-18 | B11-V25~V32-1070, B11-V17~V24-1080 | 46d | 0d | Mech Establishment Under Ground Slap [8] | 13,423.42 | Mech |
| B11-V25~V32-1090 |  | Steel Fixing& Carpenter work for Ground Slap | 3d | 2024-11-19 | 2024-11-21 | B11-V25~V32-1080, B11-V17~V24-1090 | 46d | 0d | Steel & Carpentry For Ground Slap [8] | 10,246.54 | Civil |
| B11-V25~V32-1100 |  | Anti Termite Treatment For Ground Slap | 1d | 2024-11-23 | 2024-11-23 | B11-V25~V32-1090, B11-V17~V24-1100 | 46d | 0d | Anti Termite Treatment nder Ground Slap [8] | 2,237.28 | Civil |
| B11-V25~V32-1110 |  | Pouring Concrete For Ground Slap | 1d | 2024-11-23 | 2024-11-23 | B11-V25~V32-1100 FF, B11-V25~V32-1090, B11-V17~V24-1110 | 46d | 5d | Concrete For Ground Slap [8] | 58,169.52 | Civil |

| ID | WBS | Activity | Duration | Start | Finish | Predecessors | Total float | Free float | Resources | Cost | Department-1 |
| --- | --- | --- | --- | --- | --- | --- | --- | --- | --- | --- | --- |
|  | 4 | **Precast Works** |  | 2025-01-16 | 2025-01-23 |  |  |  |  |  |  |
| B11-V25~V32-1120 |  | Precast Constrction | 7d | 2025-01-16 | 2025-01-23 | B11-V25~V32-1110, B11-V17~V24-1120 | 0d |  | Precast Walls GF [8]; Hollow Core Slap GF [8]; Precast Stairs & staircase House [8]; Thermal insollation Outside Walls [8]; Concrete structure joints [8]; Precast Walls FF [8]; Hollow Core Slap FF [8] | 1,513,762.87 | Civil |
|  | 1 | **Works Inside The Villa** |  | 2025-01-25 | 2025-05-06 |  |  |  |  |  |  |
| B11-V25~V32-1130 |  | Block Work For GF & Estabishment 1F | 6d | 2025-01-25 | 2025-01-30 | B11-V25~V32-1120, B11-V17~V24-1130 | 12d | 0d | Block GF [8] | 13,647.1 | Arc |
| B11-V25~V32-1140 |  | L.L & H.L Drainage | 6d | 2025-02-01 | 2025-02-06 | B11-V25~V32-1130, B11-V17~V24-1140 | 12d | 0d | HL Drainage [8]; L.L Drainage [8] | 89,489.28 | Mech |
| B11-V25~V32-1150 |  | Elec Establishment For GF & 1F | 3d | 2025-02-01 | 2025-02-03 | B11-V25~V32-1130, B11-V17~V24-1150 | 15d | 3d | Elec Establishment GF [8] | 26,840.73 | Elec |
| B11-V25~V32-1160 |  | Screed Work For 1F & Roof | 6d | 2025-02-08 | 2025-02-13 | B11-V25~V32-1140, B11-V25~V32-1150, B11-V17~V24-1160 | 12d | 0d | Screed 1st Floor [8]; Screed Roof Floor [8]; Leveling Screed 1st Floor [8]; Leveling Screed Roof Floor [8] | 268,467.85 | Civil |
| B11-V25~V32-1170 |  | Water Tank & Heater Foundations | 4d | 2025-02-15 | 2025-02-18 | B11-V25~V32-1160, B11-V17~V24-1170 | 16d | 0d |  |  | Civil |
| B11-V25~V32-1180 |  | Block Works For 1F | 3d | 2025-02-15 | 2025-02-17 | B11-V25~V32-1160, B11-V17~V24-1180 | 12d | 0d | Block FF [8] | 20,537.81 | Arc |
| B11-V25~V32-1190 |  | Water Line Network | 6d | 2025-02-18 | 2025-02-24 | B11-V25~V32-1180, B11-V17~V24-1190 | 12d | 0d | Water Line Network [8] | 40,261.13 | Mech |
| B11-V25~V32-1200 |  | Continue Elec Establishment For GF & 1F | 3d | 2025-02-18 | 2025-02-20 | B11-V25~V32-1180, B11-V17~V24-1200 | 15d | 3d | Elec Establishment FF [8] | 26,840.73 | Elec |
| B11-V25~V32-1210 |  | Thermal Insulation For Roof | 5d | 2025-02-19 | 2025-02-24 | B11-V25~V32-1170, B11-V17~V24-1210 | 16d | 0d | Roof Insulation [8] | 32,530.16 | Arc |
| B11-V25~V32-1220 |  | Roof Floor Tiles | 6d | 2025-02-25 | 2025-03-03 | B11-V25~V32-1210, B11-V17~V24-1220 | 16d | 1d | Roof Tiles [8]; Roof Tiles Joints [8]; Re_Test Roof Insulation [8] | 63,179.38 | Arc |
| B11-V25~V32-1230 |  | Plaster Work For Villa | 6d | 2025-02-25 | 2025-03-03 | B11-V25~V32-1190, B11-V25~V32-1200, B11-V17~V24-1230 | 12d | 0d | Establishing a plastering GF [8]; Establishing a plastering FF [8]; Plastering GF [8]; Plastering FF [8] | 49,263.81 |  |
| B11-V25~V32-1240 |  | Marbale Stairs & Handrails | 6d | 2025-03-04 | 2025-03-10 | B11-V25~V32-1230, B11-V17~V24-1240 | 34d | 1d | Marbale Stairs [8]; Stairs Handrails SS [8] | 91,494.69 |  |
| B11-V25~V32-1250 |  | Water Proofing Of Bathrooms | 4d | 2025-03-04 | 2025-03-08 | B11-V25~V32-1230, B11-V17~V24-1250 | 12d | 0d | Bathrooms InsulationGF & FF [8] | 134.24 |  |
| B11-V25~V32-1260 |  | Pulling The Elec Wires | 4d | 2025-03-04 | 2025-03-08 | B11-V25~V32-1230, B11-V17~V24-1260 | 22d | 3d | Elec Wires GF [8]; Elec Wires FF [8] | 80,542.4 |  |
| B11-V25~V32-1270 |  | Bathroom Tiles | 4d | 2025-03-09 | 2025-03-12 | B11-V25~V32-1250, B11-V25~V32-1220, B11-V17~V24-1270 | 12d | 0d | Ceramic Walls Kitchen [8]; Ceramic Walls Bathrooms GF [8]; Ceramic Walls Bathrooms FF [8]; Ceramic Tiles Bathrooms GF [8]; Ceramic Tiles Kitchen GF [8]; Ceramic Tiles Store GF [8] | 73,204.08 |  |
| B11-V25~V32-1280 |  | Structure For Gypsum | 6d | 2025-03-13 | 2025-03-19 | B11-V25~V32-1270, B11-V17~V24-1280 | 12d | 0d | Structure For Gypsum GF Rooms [8]; Structure For Gypsum FF Rooms [8]; Structure For Gypsum Bathrooms & Kitchen [8] | 33,550.81 |  |
| B11-V25~V32-1290 |  | Gypsum Board For Room | 4d | 2025-03-20 | 2025-03-24 | B11-V25~V32-1280, B11-V25~V32-1260, B11-V17~V24-1290 | 12d | 0d | Gypsum Board For GF Room [8]; Gypsum Board For FF Room [8] | 35,796.64 |  |
| B11-V25~V32-1300 |  | Installation Of Gypsum Board For Bathroom & Kitchen | 4d | 2025-03-25 | 2025-03-29 | B11-V25~V32-1290, B11-V17~V24-1300 | 12d | 0d | Gypsum Board For Bathrooms & Kitchen [8] | 11,052.24 |  |
| B11-V25~V32-1310 |  | Putty Filler For Gypsm Board Ceiling | 6d | 2025-03-30 | 2025-04-05 | B11-V25~V32-1300, B11-V17~V24-1310 | 12d | 0d | Putty Filler 1st Layer Roof all Rooms [8]; Putty Filler 1st Layer Roof all Bathrooms & Kitchen [8]; Putty Filler1st Layer walls [8] | 62,182.52 |  |
| B11-V25~V32-1320 |  | Fixing Shower Glass | 4d | 2025-04-06 | 2025-04-09 | B11-V25~V32-1310, B11-V17~V24-1320 | 19d | 0d | Shower Glass [8] | 22,372.88 |  |
| B11-V25~V32-1330 |  | Interior Wall Putty Filler | 6d | 2025-04-06 | 2025-04-12 | B11-V25~V32-1310, B11-V25~V32-1240, B11-V17~V24-1330 | 12d | 0d | Putty Filler 2ed Layer Roof & WAlls GF [8]; Putty Filler 2ed Layer Roof & WAlls FF [8] | 62,150.21 |  |
| B11-V25~V32-1340 |  | Installation Of Sanitry Fixture | 6d | 2025-04-10 | 2025-04-16 | B11-V25~V32-1320, B11-V17~V24-1340 | 19d | 0d | Mech Fixtures & Accessories [8] | 98,438.1 |  |
| B11-V25~V32-1350 |  | 1st Face Paint | 5d | 2025-04-13 | 2025-04-17 | B11-V25~V32-1330, B11-V17~V24-1350 | 12d | 0d |  |  |  |
| B11-V25~V32-1360 |  | Installation Of Aluminum Windows | 6d | 2025-04-13 | 2025-04-19 | B11-V25~V32-1330, B11-V17~V24-1360 | 21d | 1d | Aluminum Windows [8] | 84,797.8 |  |
| B11-V25~V32-1370 |  | Installation Of Elec Fixture & Accessories | 6d | 2025-04-13 | 2025-04-19 | B11-V25~V32-1310, B11-V25~V32-1330, B11-V25~V32-1260, B11-V17~V24-1370 | 34d | 1d | Elec Fixtures & Accessories Villa & Yard [8]; Elec Cables GF & FF & Earthing [8] | 53,681.46 |  |
| B11-V25~V32-1380 |  | Installation Of Water Tank-Heater & Pumps | 6d | 2025-04-17 | 2025-04-23 | B11-V25~V32-1340, B11-V17~V24-1380, B11-V25~V32-1220 | 19d | 0d | Water Tank & booster Pump [8]; Lower Pump [8]; Heater [8] | 129,730.28 |  |
| B11-V25~V32-1390 |  | Installation Of Parquet | 4d | 2025-04-19 | 2025-04-22 | B11-V25~V32-1350, B11-V17~V24-1390 | 12d | 0d | Installation Of Parquet [8] | 52,978.96 |  |
| B11-V25~V32-1400 |  | Installation Of Wooden Doors | 6d | 2025-04-23 | 2025-04-29 | B11-V25~V32-1390, B11-V17~V24-1400 | 12d | 0d | Wooden Doors Accessories all Villa [8]; Wooden Doors Kitchen & Bathroom without Accessories [8]; Exterior Wooden Doors [8] | 142,109.01 |  |
| B11-V25~V32-1410 |  | Final Face Paint | 6d | 2025-04-30 | 2025-05-06 | B11-V25~V32-1360, B11-V25~V32-1400, B11-V17~V24-1410 | 12d | 1d | Final Face Paint Villa [8] | 31,090.55 |  |

| ID | WBS | Activity | Duration | Start | Finish | Predecessors | Total float | Free float | Resources | Cost |
| --- | --- | --- | --- | --- | --- | --- | --- | --- | --- | --- |
|  | 3 | **Fence & Courtyard Works** |  | 2025-01-25 | 2025-04-29 |  |  |  |  |  |
| B11-V25~V32-1420 |  | Pouring Bedding Concrete For Fence Fondations | 2d | 2025-01-25 | 2025-01-26 | B11-V25~V32-1120, B11-V17~V24-1420 | 9d | 0d | Excavation Fence Foundations [8] | 4,519.28 |
| B11-V25~V32-1430 |  | RC Concrete For Fence Fondations | 6d | 2025-01-27 | 2025-02-02 | B11-V25~V32-1420, B11-V17~V24-1430 | 9d | 0d | Fence Fondations-Eastern side [8]; Fence Fondations-Westren side [8]; Fence Fondations-Back side [8] | 13,420.32 |
| B11-V25~V32-1440 |  | Steel Fixing & Carpentry For Fence Columns | 6d | 2025-02-03 | 2025-02-09 | B11-V25~V32-1430, B11-V17~V24-1440 | 9d | 0d |  |  |
| B11-V25~V32-1450 |  | Establishing Elec For Fence Columns | 4d | 2025-02-10 | 2025-02-13 | B11-V25~V32-1440, B11-V17~V24-1450 | 9d | 0d |  |  |
| B11-V25~V32-1460 |  | Pouring Concrete For Fence Columns | 1d | 2025-02-15 | 2025-02-15 | B11-V25~V32-1450, B11-V17~V24-1460 | 9d | 0d | Fence Columns-Eastern side [8]; Fence Columns-Westren side [8]; Fence Columns-Back side [8] | 9,665.04 |
| B11-V25~V32-1470 |  | Installation Precast Panel For Fence | 5d | 2025-02-16 | 2025-02-20 | B11-V25~V32-1460, B11-V17~V24-1470 | 9d | 0d | Hollow Core Walls [8] | 71,593.2 |
| B11-V25~V32-1480 |  | Bitumen Coating For Fence Fondations | 4d | 2025-02-22 | 2025-02-25 | B11-V25~V32-1470, B11-V17~V24-1480 | 9d | 0d |  |  |
| B11-V25~V32-1490 |  | Pouring Bedding Concrete For "Front" Fence Fondations | 1d | 2025-02-22 | 2025-02-22 | B11-V25~V32-1470, B11-V17~V24-1490 | 21d | 0d |  |  |
| B11-V25~V32-1500 |  | RC Concrete For "Front" Fence Fondations | 4d | 2025-02-23 | 2025-02-26 | B11-V25~V32-1490, B11-V17~V24-1500 | 21d | 0d | Front Fence Fondations [8] | 8,904.4 |
| B11-V25~V32-1510 |  | Outdoor Drainage & Water Line | 5d | 2025-02-26 | 2025-03-03 | B11-V25~V32-1480, B11-V25~V32-1140, B11-V17~V24-1510 | 9d | 0d | Outdoor Drainage [8]; Outdoor Water Line [8] | 13,423.68 |
| B11-V25~V32-1520 |  | Steel Fixing & Carpentry For "Front" Fence Columns | 4d | 2025-02-27 | 2025-03-03 | B11-V25~V32-1500, B11-V17~V24-1520 | 21d | 0d |  |  |
| B11-V25~V32-1530 |  | Establishing Elec For "Front" Fence Columns | 4d | 2025-03-04 | 2025-03-08 | B11-V25~V32-1520, B11-V17~V24-1530 | 21d | 0d |  |  |
| B11-V25~V32-1540 |  | Establishing Elec For Fence & Yard | 2d | 2025-03-04 | 2025-03-05 | B11-V25~V32-1510, B11-V17~V24-1540 | 9d | 0d | Elec Establishment Fence & Yard [8] | 17,898.32 |
| B11-V25~V32-1550 |  | Backfilling the Yard | 4d | 2025-03-06 | 2025-03-10 | B11-V25~V32-1540, B11-V17~V24-1550 | 9d | 0d | Backfilling the Yard [8] | 10,560 |
| B11-V25~V32-1560 |  | Pouring Concrete Wall Of "Front" Fence Columns | 2d | 2025-03-09 | 2025-03-10 | B11-V25~V32-1530, B11-V17~V24-1560 | 21d | 0d | Front Fence Walls [8] | 17,898.32 |
| B11-V25~V32-1570 |  | Pouring Concrete Crown Of "Front" Fence Columns | 3d | 2025-03-11 | 2025-03-13 | B11-V25~V32-1560, B11-V17~V24-1570 | 21d | 0d | Fence Columns - C Chanel [8] | 3,310.37 |
| B11-V25~V32-1580 |  | Bardoura Works For Yard | 5d | 2025-03-11 | 2025-03-16 | B11-V25~V32-1550, B11-V17~V24-1580 | 9d | 0d | Bardoura Works For Yard [8] | 14,408.16 |
| B11-V25~V32-1590 |  | Pouring Concrete Flower Basin Of "Front" Fence Columns | 4d | 2025-03-15 | 2025-03-18 | B11-V25~V32-1570, B11-V17~V24-1590 | 21d | 0d |  |  |
| B11-V25~V32-1600 |  | Antitermite Treatment For Yard | 1d | 2025-03-17 | 2025-03-17 | B11-V25~V32-1580, B11-V17~V24-1600 | 9d | 0d | Antitermite Treatment For Yard [8] |  |
| B11-V25~V32-1610 |  | Pouring Concrete For Yard | 1d | 2025-03-18 | 2025-03-18 | B11-V25~V32-1600, B11-V17~V24-1610 | 9d | 0d |  |  |
| B11-V25~V32-1620 |  | Block Work For Flower Basin | 5d | 2025-03-19 | 2025-03-24 | B11-V25~V32-1610, B11-V17~V24-1620 | 9d | 0d |  |  |
| B11-V25~V32-1630 |  | Plastering Work For Flower Basin | 4d | 2025-03-25 | 2025-03-29 | B11-V25~V32-1620, B11-V17~V24-1630 | 9d | 0d |  |  |
| B11-V25~V32-1640 |  | Interlock Works For The Yard | 6d | 2025-03-30 | 2025-04-05 | B11-V25~V32-1630, B11-V17~V24-1640 | 9d | 0d | Interlock Works For The Yard [8] | 36,776.32 |
| B11-V25~V32-1650 |  | External Grading Works For The Villa | 4d | 2025-04-06 | 2025-04-09 | B11-V25~V32-1640, B11-V17~V24-1650 | 11d | 0d | External Grading Works For The Villa [8] | 3,221.68 |
| B11-V25~V32-1660 |  | Installation The Exterior Door & Garage Door | 5d | 2025-04-06 | 2025-04-10 | B11-V25~V32-1640, B11-V17~V24-1660 | 14d | 2d | Installation The Exterior Door [8]; Installation The Exterior Garage Door [8] | 40,002.72 |
| B11-V25~V32-1670 |  | Fixing Floor Drain For The Yard | 2d | 2025-04-06 | 2025-04-07 | B11-V25~V32-1640, B11-V17~V24-1670 | 17d | 5d | Floor Drain & Clean Out [8] | 13,423.76 |
| B11-V25~V32-1680 |  | Granite Surronds Around The Villa | 4d | 2025-04-10 | 2025-04-14 | B11-V25~V32-1650, B11-V17~V24-1680 | 11d | 2d | Granite Surronds Around The Villa [8] | 25,818.32 |
| B11-V25~V32-1690 |  | Painting The Base Surface Of The Fence | 2d | 2025-04-10 | 2025-04-12 | B11-V25~V32-1750, B11-V17~V24-1690 | 9d | 0d |  |  |
| B11-V25~V32-1700 |  | Painting The Final Face Of The Fence | 4d | 2025-04-13 | 2025-04-16 | B11-V25~V32-1690, B11-V17~V24-1700 | 9d | 0d | Painting Final Face Of The Fence [8] | 37,586.48 |
| B11-V25~V32-1710 |  | Exterior Painting Of The Villa | 7d | 2025-04-17 | 2025-04-24 | B11-V25~V32-1680, B11-V25~V32-1700, B11-V25~V32-1660, B11-V25~V32-1670, B11-V17~V24-1710 | 9d | 0d | Exterior Painting Of The Villa [8]; Exterior Painting Staircase House [8] | 105,684.16 |
| B11-V25~V32-1720 |  | Installation Elec Fixtures & Accessories For The Yard | 4d | 2025-04-26 | 2025-04-29 | B11-V25~V32-1700, B11-V25~V32-1710, B11-V17~V24-1720 | 38d | 0d | Elec feeding panels GF & FF [8] | 22,372.88 |

| ID | WBS | Activity | Duration | Start | Finish | Predecessors | Total float | Free float | Resources | Cost | Department-1 |
| --- | --- | --- | --- | --- | --- | --- | --- | --- | --- | --- | --- |
|  | 5 | **External Sidewalk Works** |  | 2025-03-19 | 2025-05-04 |  |  |  |  |  |  |
| B11-V25~V32-1730 |  | Connection The Drain To The Piblic Network | 3d | 2025-03-19 | 2025-03-22 | B11-V25~V32-1510, B11-V25~V32-1590, B11-V17~V24-1730 | 21d | 4d | Connection Drain To The Piblic Network [8]; Connection Water To The Piblic Network [8] | 13,420.32 |  |
| B11-V25~V32-1740 |  | Pardora Works For The External Sidewalk | 2d | 2025-04-06 | 2025-04-07 | B11-V25~V32-1640, B11-V25~V32-1730, B11-V17~V24-1740 | 9d | 0d |  |  |  |
| B11-V25~V32-1750 |  | Interlock Works For The Exerrnal Sidewalk | 2d | 2025-04-08 | 2025-04-09 | B11-V25~V32-1740, B11-V17~V24-1750 | 9d | 0d |  |  |  |
| B11-V25~V32-1760 |  | Pulling The Villa's Main Elec Cable | 4d | 2025-04-30 | 2025-05-04 | B11-V25~V32-1750, B11-V25~V32-1720, B11-V17~V24-1760 | 38d | 0d | Elec Work Testing [8] | 22,819.84 |  |
|  | 6 | **Final Testing & Handover** |  | 2025-04-24 | 2025-05-21 |  |  |  |  |  |  |
| B11-V25~V32-1770 |  | Mech Work Testing & Handover | 5d | 2025-04-24 | 2025-04-29 | B11-V25~V32-1730, B11-V25~V32-1340, B11-V25~V32-1380, B11-V17~V24-1770 | 47d | 2d | Mech Work Testing & Handover [8] | 14,318.64 |  |
| B11-V25~V32-1780 |  | Arch Snaglist & Handover | 5d | 2025-04-30 | 2025-05-05 | B11-V25~V32-1750, B11-V25~V32-1710, B11-V25~V32-1400, B11-V17~V24-1780 | 42d | 2d | Arch Snaglist & Handover [8] | 77,320.64 |  |
| B11-V25~V32-1790 |  | ElecWork Testing & Handover | 5d | 2025-05-05 | 2025-05-10 | B11-V25~V32-1760, B11-V25~V32-1370, B11-V17~V24-1790 | 38d | 0d | Elec Work Handover [8] | 23,804.72 |  |
| B11-V25~V32-1800 |  | Final Handover Of The Villa To The Consltant | 5d | 2025-05-11 | 2025-05-15 | B11-V25~V32-1780, B11-V25~V32-1790, B11-V25~V32-1770, B11-V25~V32-1410, B11-V17~V24-1800 | 38d | 0d |  |  |  |
| B11-V25~V32-1810 |  | Customer Delivery | 5d | 2025-05-17 | 2025-05-21 | B11-V25~V32-1800, B11-V17~V24-1810 | 38d | 2d |  |  |  |
|  | 13 | **B12-V01~V08** |  | 2024-10-21 | 2025-05-29 |  |  |  |  |  |  |
|  | 2 | **Under Grond Slap Works** |  | 2024-10-21 | 2024-11-30 |  |  |  |  |  |  |
| B12-V01~V08-1000 |  | Excavation&Compaction of Fondation | 6d | 2024-10-21 | 2024-10-27 | B11-V25~V32-1000 | 47d | 0d | Clearing & Groubbing [8]; Excavation & Leveling [8]; Stone Layer [8]; A3 Layer [8]; A1-a 1st Layer [8]; A1-a 2ed Layer [8] | 163,545.76 | Civil |
| B12-V01~V08-1010 |  | Pouring Concrete For Bedding | 2d | 2024-10-28 | 2024-10-29 | B12-V01~V08-1000, B11-V25~V32-1010 | 47d | 0d | PC Carpentry [8]; PC Concrete [8]; RC 18 MPA [9 M3] | 37,899.68 | Civil |
| B12-V01~V08-1020 |  | Reinforcement Concrete For Foundation | 5d | 2024-10-30 | 2024-11-04 | B12-V01~V08-1010, B11-V25~V32-1020 | 47d | 0d | RC Foundation Carpentry [8]; RC Foundation Steel [8]; RC Foundation Concrete [8] | 201,355.92 | Civil |
| B12-V01~V08-1030 |  | Steel Fixing& Carpenter work for Beams | 4d | 2024-11-05 | 2024-11-09 | B12-V01~V08-1020, B11-V25~V32-1030 | 47d | 0d | RC Grade Beam Carpentry & Steel [8] | 44,745.76 | Civil |
| B12-V01~V08-1040 |  | Mech&Elec Establishment for Beams | 3d | 2024-11-10 | 2024-11-12 | B12-V01~V08-1030, B11-V25~V32-1040 | 47d | 0d |  |  | Mech |
| B12-V01~V08-1050 |  | Pouring Concrete For Beams | 1d | 2024-11-13 | 2024-11-13 | B12-V01~V08-1040, B11-V25~V32-1050 | 47d | 0d | RC Grade Beam Concrete [8] | 77,141.68 | Civil |
| B12-V01~V08-1060 |  | Bitmen Coating For Fondation&Beams | 3d | 2024-11-14 | 2024-11-17 | B12-V01~V08-1050, B11-V25~V32-1060 | 47d | 0d | Bitumen Coating Foundations & Grade Beams [8] | 22,372.32 | Civil |
| B12-V01~V08-1070 |  | Backfilling Inside Fondations | 4d | 2024-11-18 | 2024-11-21 | B12-V01~V08-1060, B11-V25~V32-1070 | 47d | 0d | Backfilling 1st Layer [8]; Backfilling 2ed Layer [8] | 11,186.4 | Civil |
| B12-V01~V08-1080 |  | Mech Works Under Grond Slap | 3d | 2024-11-23 | 2024-11-25 | B12-V01~V08-1070, B11-V25~V32-1080 | 47d | 0d | Mech Establishment Under Ground Slap [8] | 13,423.42 | Mech |
| B12-V01~V08-1090 |  | Steel Fixing& Carpenter work for Ground Slap | 3d | 2024-11-26 | 2024-11-28 | B12-V01~V08-1080, B11-V25~V32-1090 | 47d | 0d | Steel & Carpentry For Ground Slap [8] | 10,246.54 | Civil |
| B12-V01~V08-1100 |  | Anti Termite Treatment For Ground Slap | 1d | 2024-11-30 | 2024-11-30 | B12-V01~V08-1090, B11-V25~V32-1100 | 47d | 0d | Anti Termite Treatment nder Ground Slap [8] | 2,237.28 | Civil |
| B12-V01~V08-1110 |  | Pouring Concrete For Ground Slap | 1d | 2024-11-30 | 2024-11-30 | B12-V01~V08-1100 FF, B12-V01~V08-1090, B11-V25~V32-1110 | 47d | 5d | Concrete For Ground Slap [8] | 58,169.52 | Civil |

| ID | WBS | Activity | Duration | Start | Finish | Predecessors | Total float | Free float | Resources | Cost | Department-1 |
| --- | --- | --- | --- | --- | --- | --- | --- | --- | --- | --- | --- |
|  | 4 | **Precast Works** |  | 2025-01-25 | 2025-02-01 |  |  |  |  |  |  |
| B12-V01~V08-1120 |  | Precast Constrction | 7d | 2025-01-25 | 2025-02-01 | B12-V01~V08-1110, B11-V25~V32-1120 | 0d |  | Precast Walls GF [8]; Hollow Core Slap GF [8]; Precast Stairs & staircase House [8]; Thermal insollation Outside Walls [8]; Concrete structure joints [8]; Precast Walls FF [8]; Hollow Core Slap FF [8] | 1,513,762.87 | Civil |
|  | 1 | **Works Inside The Villa** |  | 2025-02-02 | 2025-05-14 |  |  |  |  |  |  |
| B12-V01~V08-1130 |  | Block Work For GF & Estabishment 1F | 6d | 2025-02-02 | 2025-02-08 | B12-V01~V08-1120, B11-V25~V32-1130 | 11d | 0d | Block GF [8] | 13,647.1 | Arc |
| B12-V01~V08-1140 |  | L.L & H.L Drainage | 6d | 2025-02-09 | 2025-02-15 | B12-V01~V08-1130, B11-V25~V32-1140 | 11d | 0d | HL Drainage [8]; L.L Drainage [8] | 89,489.28 | Mech |
| B12-V01~V08-1150 |  | Elec Establishment For GF & 1F | 3d | 2025-02-09 | 2025-02-11 | B12-V01~V08-1130, B11-V25~V32-1150 | 14d | 3d | Elec Establishment GF [8] | 26,840.73 | Elec |
| B12-V01~V08-1160 |  | Screed Work For 1F & Roof | 6d | 2025-02-16 | 2025-02-22 | B12-V01~V08-1140, B12-V01~V08-1150, B11-V25~V32-1160 | 11d | 0d | Screed 1st Floor [8]; Screed Roof Floor [8]; Leveling Screed 1st Floor [8]; Leveling Screed Roof Floor [8] | 268,467.85 | Civil |
| B12-V01~V08-1170 |  | Water Tank & Heater Foundations | 4d | 2025-02-23 | 2025-02-26 | B12-V01~V08-1160, B11-V25~V32-1170 | 15d | 0d |  |  | Civil |
| B12-V01~V08-1180 |  | Block Works For 1F | 3d | 2025-02-23 | 2025-02-25 | B12-V01~V08-1160, B11-V25~V32-1180 | 11d | 0d | Block FF [8] | 20,537.81 | Arc |
| B12-V01~V08-1190 |  | Water Line Network | 6d | 2025-02-26 | 2025-03-04 | B12-V01~V08-1180, B11-V25~V32-1190 | 11d | 0d | Water Line Network [8] | 40,261.13 | Mech |
| B12-V01~V08-1200 |  | Continue Elec Establishment For GF & 1F | 3d | 2025-02-26 | 2025-03-01 | B12-V01~V08-1180, B11-V25~V32-1200 | 14d | 3d | Elec Establishment FF [8] | 26,840.73 | Elec |
| B12-V01~V08-1210 |  | Thermal Insulation For Roof | 5d | 2025-02-27 | 2025-03-04 | B12-V01~V08-1170, B11-V25~V32-1210 | 15d | 0d | Roof Insulation [8] | 32,530.16 | Arc |
| B12-V01~V08-1220 |  | Roof Floor Tiles | 6d | 2025-03-05 | 2025-03-11 | B12-V01~V08-1210, B11-V25~V32-1220 | 15d | 1d | Roof Tiles [8]; Roof Tiles Joints [8]; Re_Test Roof Insulation [8] | 63,179.38 | Arc |
| B12-V01~V08-1230 |  | Plaster Work For Villa | 6d | 2025-03-05 | 2025-03-11 | B12-V01~V08-1190, B12-V01~V08-1200, B11-V25~V32-1230 | 11d | 0d | Establishing a plastering GF [8]; Establishing a plastering FF [8]; Plastering GF [8]; Plastering FF [8] | 49,263.81 |  |
| B12-V01~V08-1240 |  | Marbale Stairs & Handrails | 6d | 2025-03-12 | 2025-03-18 | B12-V01~V08-1230, B11-V25~V32-1240 | 33d | 1d | Marbale Stairs [8]; Stairs Handrails SS [8] | 91,494.69 |  |
| B12-V01~V08-1250 |  | Water Proofing Of Bathrooms | 4d | 2025-03-12 | 2025-03-16 | B12-V01~V08-1230, B11-V25~V32-1250 | 11d | 0d | Bathrooms InsulationGF & FF [8] | 134.24 |  |
| B12-V01~V08-1260 |  | Pulling The Elec Wires | 4d | 2025-03-12 | 2025-03-16 | B12-V01~V08-1230, B11-V25~V32-1260 | 21d | 3d | Elec Wires GF [8]; Elec Wires FF [8] | 80,542.4 |  |
| B12-V01~V08-1270 |  | Bathroom Tiles | 4d | 2025-03-17 | 2025-03-20 | B12-V01~V08-1250, B12-V01~V08-1220, B11-V25~V32-1270 | 11d | 0d | Ceramic Walls Kitchen [8]; Ceramic Walls Bathrooms GF [8]; Ceramic Walls Bathrooms FF [8]; Ceramic Tiles Bathrooms GF [8]; Ceramic Tiles Kitchen GF [8]; Ceramic Tiles Store GF [8] | 73,204.08 |  |
| B12-V01~V08-1280 |  | Structure For Gypsum | 6d | 2025-03-22 | 2025-03-27 | B12-V01~V08-1270, B11-V25~V32-1280 | 11d | 0d | Structure For Gypsum GF Rooms [8]; Structure For Gypsum FF Rooms [8]; Structure For Gypsum Bathrooms & Kitchen [8] | 33,550.81 |  |
| B12-V01~V08-1290 |  | Gypsum Board For Room | 4d | 2025-03-29 | 2025-04-01 | B12-V01~V08-1280, B12-V01~V08-1260, B11-V25~V32-1290 | 11d | 0d | Gypsum Board For GF Room [8]; Gypsum Board For FF Room [8] | 35,796.64 |  |
| B12-V01~V08-1300 |  | Installation Of Gypsum Board For Bathroom & Kitchen | 4d | 2025-04-02 | 2025-04-06 | B12-V01~V08-1290, B11-V25~V32-1300 | 11d | 0d | Gypsum Board For Bathrooms & Kitchen [8] | 11,052.24 |  |
| B12-V01~V08-1310 |  | Putty Filler For Gypsm Board Ceiling | 6d | 2025-04-07 | 2025-04-13 | B12-V01~V08-1300, B11-V25~V32-1310 | 11d | 0d | Putty Filler 1st Layer Roof all Rooms [8]; Putty Filler 1st Layer Roof all Bathrooms & Kitchen [8]; Putty Filler1st Layer walls [8] | 62,182.52 |  |
| B12-V01~V08-1320 |  | Fixing Shower Glass | 4d | 2025-04-14 | 2025-04-17 | B12-V01~V08-1310, B11-V25~V32-1320 | 18d | 0d | Shower Glass [8] | 22,372.88 |  |
| B12-V01~V08-1330 |  | Interior Wall Putty Filler | 6d | 2025-04-14 | 2025-04-20 | B12-V01~V08-1310, B12-V01~V08-1240, B11-V25~V32-1330 | 11d | 0d | Putty Filler 2ed Layer Roof & WAlls GF [8]; Putty Filler 2ed Layer Roof & WAlls FF [8] | 62,150.21 |  |
| B12-V01~V08-1340 |  | Installation Of Sanitry Fixture | 6d | 2025-04-19 | 2025-04-24 | B12-V01~V08-1320, B11-V25~V32-1340 | 18d | 0d | Mech Fixtures & Accessories [8] | 98,438.1 |  |
| B12-V01~V08-1350 |  | 1st Face Paint | 5d | 2025-04-21 | 2025-04-26 | B12-V01~V08-1330, B11-V25~V32-1350 | 11d | 0d |  |  |  |
| B12-V01~V08-1360 |  | Installation Of Aluminum Windows | 6d | 2025-04-21 | 2025-04-27 | B12-V01~V08-1330, B11-V25~V32-1360 | 20d | 1d | Aluminum Windows [8] | 84,797.8 |  |
| B12-V01~V08-1370 |  | Installation Of Elec Fixture & Accessories | 6d | 2025-04-21 | 2025-04-27 | B12-V01~V08-1310, B12-V01~V08-1330, B12-V01~V08-1260, B11-V25~V32-1370 | 33d | 1d | Elec Fixtures & Accessories Villa & Yard [8]; Elec Cables GF & FF & Earthing [8] | 53,681.46 |  |
| B12-V01~V08-1380 |  | Installation Of Water Tank-Heater & Pumps | 6d | 2025-04-26 | 2025-05-01 | B12-V01~V08-1340, B11-V25~V32-1380, B12-V01~V08-1220 | 18d | 0d | Water Tank & booster Pump [8]; Lower Pump [8]; Heater [8] | 129,730.28 |  |
| B12-V01~V08-1390 |  | Installation Of Parquet | 4d | 2025-04-27 | 2025-04-30 | B12-V01~V08-1350, B11-V25~V32-1390 | 11d | 0d | Installation Of Parquet [8] | 52,978.96 |  |
| B12-V01~V08-1400 |  | Installation Of Wooden Doors | 6d | 2025-05-01 | 2025-05-07 | B12-V01~V08-1390, B11-V25~V32-1400 | 11d | 0d | Wooden Doors Accessories all Villa [8]; Wooden Doors Kitchen & Bathroom without Accessories [8]; Exterior Wooden Doors [8] | 142,109.01 |  |
| B12-V01~V08-1410 |  | Final Face Paint | 6d | 2025-05-08 | 2025-05-14 | B12-V01~V08-1360, B12-V01~V08-1400, B11-V25~V32-1410 | 11d | 1d | Final Face Paint Villa [8] | 31,090.55 |  |

| ID | WBS | Activity | Duration | Start | Finish | Predecessors | Total float | Free float | Resources | Cost |
| --- | --- | --- | --- | --- | --- | --- | --- | --- | --- | --- |
|  | 3 | **Fence & Courtyard Works** |  | 2025-02-02 | 2025-05-07 |  |  |  |  |  |
| B12-V01~V08-1420 |  | Pouring Bedding Concrete For Fence Fondations | 2d | 2025-02-02 | 2025-02-03 | B12-V01~V08-1120, B11-V25~V32-1420 | 9d | 0d | Excavation Fence Foundations [8] | 4,519.28 |
| B12-V01~V08-1430 |  | RC Concrete For Fence Fondations | 6d | 2025-02-04 | 2025-02-10 | B12-V01~V08-1420, B11-V25~V32-1430 | 9d | 0d | Fence Fondations-Eastern side [8]; Fence Fondations-Westren side [8]; Fence Fondations-Back side [8] | 13,420.32 |
| B12-V01~V08-1440 |  | Steel Fixing & Carpentry For Fence Columns | 6d | 2025-02-11 | 2025-02-17 | B12-V01~V08-1430, B11-V25~V32-1440 | 9d | 0d |  |  |
| B12-V01~V08-1450 |  | Establishing Elec For Fence Columns | 4d | 2025-02-18 | 2025-02-22 | B12-V01~V08-1440, B11-V25~V32-1450 | 9d | 0d |  |  |
| B12-V01~V08-1460 |  | Pouring Concrete For Fence Columns | 1d | 2025-02-23 | 2025-02-23 | B12-V01~V08-1450, B11-V25~V32-1460 | 9d | 0d | Fence Columns-Eastern side [8]; Fence Columns-Westren side [8]; Fence Columns-Back side [8] | 9,665.04 |
| B12-V01~V08-1470 |  | Installation Precast Panel For Fence | 5d | 2025-02-24 | 2025-03-01 | B12-V01~V08-1460, B11-V25~V32-1470 | 9d | 0d | Hollow Core Walls [8] | 71,593.2 |
| B12-V01~V08-1480 |  | Bitumen Coating For Fence Fondations | 4d | 2025-03-02 | 2025-03-05 | B12-V01~V08-1470, B11-V25~V32-1480 | 9d | 0d |  |  |
| B12-V01~V08-1490 |  | Pouring Bedding Concrete For "Front" Fence Fondations | 1d | 2025-03-02 | 2025-03-02 | B12-V01~V08-1470, B11-V25~V32-1490 | 21d | 0d |  |  |
| B12-V01~V08-1500 |  | RC Concrete For "Front" Fence Fondations | 4d | 2025-03-03 | 2025-03-06 | B12-V01~V08-1490, B11-V25~V32-1500 | 21d | 0d | Front Fence Fondations [8] | 8,904.4 |
| B12-V01~V08-1510 |  | Outdoor Drainage & Water Line | 5d | 2025-03-06 | 2025-03-11 | B12-V01~V08-1480, B12-V01~V08-1140, B11-V25~V32-1510 | 9d | 0d | Outdoor Drainage [8]; Outdoor Water Line [8] | 13,423.68 |
| B12-V01~V08-1520 |  | Steel Fixing & Carpentry For "Front" Fence Columns | 4d | 2025-03-08 | 2025-03-11 | B12-V01~V08-1500, B11-V25~V32-1520 | 21d | 0d |  |  |
| B12-V01~V08-1530 |  | Establishing Elec For "Front" Fence Columns | 4d | 2025-03-12 | 2025-03-16 | B12-V01~V08-1520, B11-V25~V32-1530 | 21d | 0d |  |  |
| B12-V01~V08-1540 |  | Establishing Elec For Fence & Yard | 2d | 2025-03-12 | 2025-03-13 | B12-V01~V08-1510, B11-V25~V32-1540 | 9d | 0d | Elec Establishment Fence & Yard [8] | 17,898.32 |
| B12-V01~V08-1550 |  | Backfilling the Yard | 4d | 2025-03-15 | 2025-03-18 | B12-V01~V08-1540, B11-V25~V32-1550 | 9d | 0d | Backfilling the Yard [8] | 10,560 |
| B12-V01~V08-1560 |  | Pouring Concrete Wall Of "Front" Fence Columns | 2d | 2025-03-17 | 2025-03-18 | B12-V01~V08-1530, B11-V25~V32-1560 | 21d | 0d | Front Fence Walls [8] | 17,898.32 |
| B12-V01~V08-1570 |  | Pouring Concrete Crown Of "Front" Fence Columns | 3d | 2025-03-19 | 2025-03-22 | B12-V01~V08-1560, B11-V25~V32-1570 | 21d | 0d | Fence Columns - C Chanel [8] | 3,310.37 |
| B12-V01~V08-1580 |  | Bardoura Works For Yard | 5d | 2025-03-19 | 2025-03-24 | B12-V01~V08-1550, B11-V25~V32-1580 | 9d | 0d | Bardoura Works For Yard [8] | 14,408.16 |
| B12-V01~V08-1590 |  | Pouring Concrete Flower Basin Of "Front" Fence Columns | 4d | 2025-03-23 | 2025-03-26 | B12-V01~V08-1570, B11-V25~V32-1590 | 21d | 0d |  |  |
| B12-V01~V08-1600 |  | Antitermite Treatment For Yard | 1d | 2025-03-25 | 2025-03-25 | B12-V01~V08-1580, B11-V25~V32-1600 | 9d | 0d | Antitermite Treatment For Yard [8] |  |
| B12-V01~V08-1610 |  | Pouring Concrete For Yard | 1d | 2025-03-26 | 2025-03-26 | B12-V01~V08-1600, B11-V25~V32-1610 | 9d | 0d |  |  |
| B12-V01~V08-1620 |  | Block Work For Flower Basin | 5d | 2025-03-27 | 2025-04-01 | B12-V01~V08-1610, B11-V25~V32-1620 | 9d | 0d |  |  |
| B12-V01~V08-1630 |  | Plastering Work For Flower Basin | 4d | 2025-04-02 | 2025-04-06 | B12-V01~V08-1620, B11-V25~V32-1630 | 9d | 0d |  |  |
| B12-V01~V08-1640 |  | Interlock Works For The Yard | 6d | 2025-04-07 | 2025-04-13 | B12-V01~V08-1630, B11-V25~V32-1640 | 9d | 0d | Interlock Works For The Yard [8] | 36,776.32 |
| B12-V01~V08-1650 |  | External Grading Works For The Villa | 4d | 2025-04-14 | 2025-04-17 | B12-V01~V08-1640, B11-V25~V32-1650 | 11d | 0d | External Grading Works For The Villa [8] | 3,221.68 |
| B12-V01~V08-1660 |  | Installation The Exterior Door & Garage Door | 5d | 2025-04-14 | 2025-04-19 | B12-V01~V08-1640, B11-V25~V32-1660 | 14d | 2d | Installation The Exterior Door [8]; Installation The Exterior Garage Door [8] | 40,002.72 |
| B12-V01~V08-1670 |  | Fixing Floor Drain For The Yard | 2d | 2025-04-14 | 2025-04-15 | B12-V01~V08-1640, B11-V25~V32-1670 | 17d | 5d | Floor Drain & Clean Out [8] | 13,423.76 |
| B12-V01~V08-1680 |  | Granite Surronds Around The Villa | 4d | 2025-04-19 | 2025-04-22 | B12-V01~V08-1650, B11-V25~V32-1680 | 11d | 2d | Granite Surronds Around The Villa [8] | 25,818.32 |
| B12-V01~V08-1690 |  | Painting The Base Surface Of The Fence | 2d | 2025-04-19 | 2025-04-20 | B12-V01~V08-1750, B11-V25~V32-1690 | 9d | 0d |  |  |
| B12-V01~V08-1700 |  | Painting The Final Face Of The Fence | 4d | 2025-04-21 | 2025-04-24 | B12-V01~V08-1690, B11-V25~V32-1700 | 9d | 0d | Painting Final Face Of The Fence [8] | 37,586.48 |
| B12-V01~V08-1710 |  | Exterior Painting Of The Villa | 7d | 2025-04-26 | 2025-05-03 | B12-V01~V08-1680, B12-V01~V08-1700, B12-V01~V08-1660, B12-V01~V08-1670, B11-V25~V32-1710 | 9d | 0d | Exterior Painting Of The Villa [8]; Exterior Painting Staircase House [8] | 105,684.16 |
| B12-V01~V08-1720 |  | Installation Elec Fixtures & Accessories For The Yard | 4d | 2025-05-04 | 2025-05-07 | B12-V01~V08-1700, B12-V01~V08-1710, B11-V25~V32-1720 | 36d | 0d | Elec feeding panels GF & FF [8] | 22,372.88 |

| ID | WBS | Activity | Duration | Start | Finish | Predecessors | Total float | Free float | Resources | Cost | Department-1 |
| --- | --- | --- | --- | --- | --- | --- | --- | --- | --- | --- | --- |
|  | 5 | **External Sidewalk Works** |  | 2025-03-27 | 2025-05-12 |  |  |  |  |  |  |
| B12-V01~V08-1730 |  | Connection The Drain To The Piblic Network | 3d | 2025-03-27 | 2025-03-30 | B12-V01~V08-1510, B12-V01~V08-1590, B11-V25~V32-1730 | 21d | 4d | Connection Drain To The Piblic Network [8]; Connection Water To The Piblic Network [8] | 13,420.32 |  |
| B12-V01~V08-1740 |  | Pardora Works For The External Sidewalk | 2d | 2025-04-14 | 2025-04-15 | B12-V01~V08-1640, B12-V01~V08-1730, B11-V25~V32-1740 | 9d | 0d |  |  |  |
| B12-V01~V08-1750 |  | Interlock Works For The Exerrnal Sidewalk | 2d | 2025-04-16 | 2025-04-17 | B12-V01~V08-1740, B11-V25~V32-1750 | 9d | 0d |  |  |  |
| B12-V01~V08-1760 |  | Pulling The Villa's Main Elec Cable | 4d | 2025-05-08 | 2025-05-12 | B12-V01~V08-1750, B12-V01~V08-1720, B11-V25~V32-1760 | 36d | 0d | Elec Work Testing [8] | 22,819.84 |  |
|  | 6 | **Final Testing & Handover** |  | 2025-05-03 | 2025-05-29 |  |  |  |  |  |  |
| B12-V01~V08-1770 |  | Mech Work Testing & Handover | 5d | 2025-05-03 | 2025-05-07 | B12-V01~V08-1730, B12-V01~V08-1340, B12-V01~V08-1380, B11-V25~V32-1770 | 45d | 2d | Mech Work Testing & Handover [8] | 14,318.64 |  |
| B12-V01~V08-1780 |  | Arch Snaglist & Handover | 5d | 2025-05-08 | 2025-05-13 | B12-V01~V08-1750, B12-V01~V08-1710, B12-V01~V08-1400, B11-V25~V32-1780 | 40d | 2d | Arch Snaglist & Handover [8] | 77,320.64 |  |
| B12-V01~V08-1790 |  | ElecWork Testing & Handover | 5d | 2025-05-13 | 2025-05-18 | B12-V01~V08-1760, B12-V01~V08-1370, B11-V25~V32-1790 | 36d | 0d | Elec Work Handover [8] | 23,804.72 |  |
| B12-V01~V08-1800 |  | Final Handover Of The Villa To The Consltant | 5d | 2025-05-19 | 2025-05-24 | B12-V01~V08-1780, B12-V01~V08-1790, B12-V01~V08-1770, B12-V01~V08-1410, B11-V25~V32-1800 | 36d | 0d |  |  |  |
| B12-V01~V08-1810 |  | Customer Delivery | 5d | 2025-05-25 | 2025-05-29 | B12-V01~V08-1800, B11-V25~V32-1810 | 36d | 2d |  |  |  |
|  | 14 | **B12-V09~V16** |  | 2024-10-28 | 2025-06-07 |  |  |  |  |  |  |
|  | 2 | **Under Grond Slap Works** |  | 2024-10-28 | 2024-12-07 |  |  |  |  |  |  |
| B12-V09~V16-1000 |  | Excavation&Compaction of Fondation | 6d | 2024-10-28 | 2024-11-03 | B12-V01~V08-1000 | 48d | 0d | Clearing & Groubbing [8]; Excavation & Leveling [8]; Stone Layer [8]; A3 Layer [8]; A1-a 1st Layer [8]; A1-a 2ed Layer [8] | 163,545.76 | Civil |
| B12-V09~V16-1010 |  | Pouring Concrete For Bedding | 2d | 2024-11-04 | 2024-11-05 | B12-V09~V16-1000, B12-V01~V08-1010 | 48d | 0d | PC Carpentry [8]; PC Concrete [8]; RC 18 MPA [9 M3] | 37,899.68 | Civil |
| B12-V09~V16-1020 |  | Reinforcement Concrete For Foundation | 5d | 2024-11-06 | 2024-11-11 | B12-V09~V16-1010, B12-V01~V08-1020 | 48d | 0d | RC Foundation Carpentry [8]; RC Foundation Steel [8]; RC Foundation Concrete [8] | 201,355.92 | Civil |
| B12-V09~V16-1030 |  | Steel Fixing& Carpenter work for Beams | 4d | 2024-11-12 | 2024-11-16 | B12-V09~V16-1020, B12-V01~V08-1030 | 48d | 0d | RC Grade Beam Carpentry & Steel [8] | 44,745.76 | Civil |
| B12-V09~V16-1040 |  | Mech&Elec Establishment for Beams | 3d | 2024-11-17 | 2024-11-19 | B12-V09~V16-1030, B12-V01~V08-1040 | 48d | 0d |  |  | Mech |
| B12-V09~V16-1050 |  | Pouring Concrete For Beams | 1d | 2024-11-20 | 2024-11-20 | B12-V09~V16-1040, B12-V01~V08-1050 | 48d | 0d | RC Grade Beam Concrete [8] | 77,141.68 | Civil |
| B12-V09~V16-1060 |  | Bitmen Coating For Fondation&Beams | 3d | 2024-11-21 | 2024-11-24 | B12-V09~V16-1050, B12-V01~V08-1060 | 48d | 0d | Bitumen Coating Foundations & Grade Beams [8] | 22,372.32 | Civil |
| B12-V09~V16-1070 |  | Backfilling Inside Fondations | 4d | 2024-11-25 | 2024-11-28 | B12-V09~V16-1060, B12-V01~V08-1070 | 48d | 0d | Backfilling 1st Layer [8]; Backfilling 2ed Layer [8] | 11,186.4 | Civil |
| B12-V09~V16-1080 |  | Mech Works Under Grond Slap | 3d | 2024-11-30 | 2024-12-02 | B12-V09~V16-1070, B12-V01~V08-1080 | 48d | 0d | Mech Establishment Under Ground Slap [8] | 13,423.42 | Mech |
| B12-V09~V16-1090 |  | Steel Fixing& Carpenter work for Ground Slap | 3d | 2024-12-03 | 2024-12-05 | B12-V09~V16-1080, B12-V01~V08-1090 | 48d | 0d | Steel & Carpentry For Ground Slap [8] | 10,246.54 | Civil |
| B12-V09~V16-1100 |  | Anti Termite Treatment For Ground Slap | 1d | 2024-12-07 | 2024-12-07 | B12-V09~V16-1090, B12-V01~V08-1100 | 48d | 0d | Anti Termite Treatment nder Ground Slap [8] | 2,237.28 | Civil |
| B12-V09~V16-1110 |  | Pouring Concrete For Ground Slap | 1d | 2024-12-07 | 2024-12-07 | B12-V09~V16-1100 FF, B12-V09~V16-1090, B12-V01~V08-1110 | 48d | 5d | Concrete For Ground Slap [8] | 58,169.52 | Civil |

| ID | WBS | Activity | Duration | Start | Finish | Predecessors | Total float | Free float | Resources | Cost | Department-1 |
| --- | --- | --- | --- | --- | --- | --- | --- | --- | --- | --- | --- |
|  | 4 | **Precast Works** |  | 2025-02-02 | 2025-02-09 |  |  |  |  |  |  |
| B12-V09~V16-1120 |  | Precast Constrction | 7d | 2025-02-02 | 2025-02-09 | B12-V09~V16-1110, B12-V01~V08-1120 | 0d |  | Precast Walls GF [8]; Hollow Core Slap GF [8]; Precast Stairs & staircase House [8]; Thermal insollation Outside Walls [8]; Concrete structure joints [8]; Precast Walls FF [8]; Hollow Core Slap FF [8] | 1,513,762.87 | Civil |
|  | 1 | **Works Inside The Villa** |  | 2025-02-10 | 2025-05-22 |  |  |  |  |  |  |
| B12-V09~V16-1130 |  | Block Work For GF & Estabishment 1F | 6d | 2025-02-10 | 2025-02-16 | B12-V09~V16-1120, B12-V01~V08-1130 | 10d | 0d | Block GF [8] | 13,647.1 | Arc |
| B12-V09~V16-1140 |  | L.L & H.L Drainage | 6d | 2025-02-17 | 2025-02-23 | B12-V09~V16-1130, B12-V01~V08-1140 | 10d | 0d | HL Drainage [8]; L.L Drainage [8] | 89,489.28 | Mech |
| B12-V09~V16-1150 |  | Elec Establishment For GF & 1F | 3d | 2025-02-17 | 2025-02-19 | B12-V09~V16-1130, B12-V01~V08-1150 | 13d | 3d | Elec Establishment GF [8] | 26,840.73 | Elec |
| B12-V09~V16-1160 |  | Screed Work For 1F & Roof | 6d | 2025-02-24 | 2025-03-02 | B12-V09~V16-1140, B12-V09~V16-1150, B12-V01~V08-1160 | 10d | 0d | Screed 1st Floor [8]; Screed Roof Floor [8]; Leveling Screed 1st Floor [8]; Leveling Screed Roof Floor [8] | 268,467.85 | Civil |
| B12-V09~V16-1170 |  | Water Tank & Heater Foundations | 4d | 2025-03-03 | 2025-03-06 | B12-V09~V16-1160, B12-V01~V08-1170 | 14d | 0d |  |  | Civil |
| B12-V09~V16-1180 |  | Block Works For 1F | 3d | 2025-03-03 | 2025-03-05 | B12-V09~V16-1160, B12-V01~V08-1180 | 10d | 0d | Block FF [8] | 20,537.81 | Arc |
| B12-V09~V16-1190 |  | Water Line Network | 6d | 2025-03-06 | 2025-03-12 | B12-V09~V16-1180, B12-V01~V08-1190 | 10d | 0d | Water Line Network [8] | 40,261.13 | Mech |
| B12-V09~V16-1200 |  | Continue Elec Establishment For GF & 1F | 3d | 2025-03-06 | 2025-03-09 | B12-V09~V16-1180, B12-V01~V08-1200 | 13d | 3d | Elec Establishment FF [8] | 26,840.73 | Elec |
| B12-V09~V16-1210 |  | Thermal Insulation For Roof | 5d | 2025-03-08 | 2025-03-12 | B12-V09~V16-1170, B12-V01~V08-1210 | 14d | 0d | Roof Insulation [8] | 32,530.16 | Arc |
| B12-V09~V16-1220 |  | Roof Floor Tiles | 6d | 2025-03-13 | 2025-03-19 | B12-V09~V16-1210, B12-V01~V08-1220 | 14d | 1d | Roof Tiles [8]; Roof Tiles Joints [8]; Re_Test Roof Insulation [8] | 63,179.38 | Arc |
| B12-V09~V16-1230 |  | Plaster Work For Villa | 6d | 2025-03-13 | 2025-03-19 | B12-V09~V16-1190, B12-V09~V16-1200, B12-V01~V08-1230 | 10d | 0d | Establishing a plastering GF [8]; Establishing a plastering FF [8]; Plastering GF [8]; Plastering FF [8] | 49,263.81 |  |
| B12-V09~V16-1240 |  | Marbale Stairs & Handrails | 6d | 2025-03-20 | 2025-03-26 | B12-V09~V16-1230, B12-V01~V08-1240 | 32d | 1d | Marbale Stairs [8]; Stairs Handrails SS [8] | 91,494.69 |  |
| B12-V09~V16-1250 |  | Water Proofing Of Bathrooms | 4d | 2025-03-20 | 2025-03-24 | B12-V09~V16-1230, B12-V01~V08-1250 | 10d | 0d | Bathrooms InsulationGF & FF [8] | 134.24 |  |
| B12-V09~V16-1260 |  | Pulling The Elec Wires | 4d | 2025-03-20 | 2025-03-24 | B12-V09~V16-1230, B12-V01~V08-1260 | 20d | 3d | Elec Wires GF [8]; Elec Wires FF [8] | 80,542.4 |  |
| B12-V09~V16-1270 |  | Bathroom Tiles | 4d | 2025-03-25 | 2025-03-29 | B12-V09~V16-1250, B12-V09~V16-1220, B12-V01~V08-1270 | 10d | 0d | Ceramic Walls Kitchen [8]; Ceramic Walls Bathrooms GF [8]; Ceramic Walls Bathrooms FF [8]; Ceramic Tiles Bathrooms GF [8]; Ceramic Tiles Kitchen GF [8]; Ceramic Tiles Store GF [8] | 73,204.08 |  |
| B12-V09~V16-1280 |  | Structure For Gypsum | 6d | 2025-03-30 | 2025-04-05 | B12-V09~V16-1270, B12-V01~V08-1280 | 10d | 0d | Structure For Gypsum GF Rooms [8]; Structure For Gypsum FF Rooms [8]; Structure For Gypsum Bathrooms & Kitchen [8] | 33,550.81 |  |
| B12-V09~V16-1290 |  | Gypsum Board For Room | 4d | 2025-04-06 | 2025-04-09 | B12-V09~V16-1280, B12-V09~V16-1260, B12-V01~V08-1290 | 10d | 0d | Gypsum Board For GF Room [8]; Gypsum Board For FF Room [8] | 35,796.64 |  |
| B12-V09~V16-1300 |  | Installation Of Gypsum Board For Bathroom & Kitchen | 4d | 2025-04-10 | 2025-04-14 | B12-V09~V16-1290, B12-V01~V08-1300 | 10d | 0d | Gypsum Board For Bathrooms & Kitchen [8] | 11,052.24 |  |
| B12-V09~V16-1310 |  | Putty Filler For Gypsm Board Ceiling | 6d | 2025-04-15 | 2025-04-21 | B12-V09~V16-1300, B12-V01~V08-1310 | 10d | 0d | Putty Filler 1st Layer Roof all Rooms [8]; Putty Filler 1st Layer Roof all Bathrooms & Kitchen [8]; Putty Filler1st Layer walls [8] | 62,182.52 |  |
| B12-V09~V16-1320 |  | Fixing Shower Glass | 4d | 2025-04-22 | 2025-04-26 | B12-V09~V16-1310, B12-V01~V08-1320 | 17d | 0d | Shower Glass [8] | 22,372.88 |  |
| B12-V09~V16-1330 |  | Interior Wall Putty Filler | 6d | 2025-04-22 | 2025-04-28 | B12-V09~V16-1310, B12-V09~V16-1240, B12-V01~V08-1330 | 10d | 0d | Putty Filler 2ed Layer Roof & WAlls GF [8]; Putty Filler 2ed Layer Roof & WAlls FF [8] | 62,150.21 |  |
| B12-V09~V16-1340 |  | Installation Of Sanitry Fixture | 6d | 2025-04-27 | 2025-05-03 | B12-V09~V16-1320, B12-V01~V08-1340 | 17d | 0d | Mech Fixtures & Accessories [8] | 98,438.1 |  |
| B12-V09~V16-1350 |  | 1st Face Paint | 5d | 2025-04-29 | 2025-05-04 | B12-V09~V16-1330, B12-V01~V08-1350 | 10d | 0d |  |  |  |
| B12-V09~V16-1360 |  | Installation Of Aluminum Windows | 6d | 2025-04-29 | 2025-05-05 | B12-V09~V16-1330, B12-V01~V08-1360 | 19d | 1d | Aluminum Windows [8] | 84,797.8 |  |
| B12-V09~V16-1370 |  | Installation Of Elec Fixture & Accessories | 6d | 2025-04-29 | 2025-05-05 | B12-V09~V16-1310, B12-V09~V16-1330, B12-V09~V16-1260, B12-V01~V08-1370 | 32d | 1d | Elec Fixtures & Accessories Villa & Yard [8]; Elec Cables GF & FF & Earthing [8] | 53,681.46 |  |
| B12-V09~V16-1380 |  | Installation Of Water Tank-Heater & Pumps | 6d | 2025-05-04 | 2025-05-10 | B12-V09~V16-1340, B12-V01~V08-1380, B12-V09~V16-1220 | 17d | 0d | Water Tank & booster Pump [8]; Lower Pump [8]; Heater [8] | 129,730.28 |  |
| B12-V09~V16-1390 |  | Installation Of Parquet | 4d | 2025-05-05 | 2025-05-08 | B12-V09~V16-1350, B12-V01~V08-1390 | 10d | 0d | Installation Of Parquet [8] | 52,978.96 |  |
| B12-V09~V16-1400 |  | Installation Of Wooden Doors | 6d | 2025-05-10 | 2025-05-15 | B12-V09~V16-1390, B12-V01~V08-1400 | 10d | 0d | Wooden Doors Accessories all Villa [8]; Wooden Doors Kitchen & Bathroom without Accessories [8]; Exterior Wooden Doors [8] | 142,109.01 |  |
| B12-V09~V16-1410 |  | Final Face Paint | 6d | 2025-05-17 | 2025-05-22 | B12-V09~V16-1360, B12-V09~V16-1400, B12-V01~V08-1410 | 10d | 1d | Final Face Paint Villa [8] | 31,090.55 |  |

| ID | WBS | Activity | Duration | Start | Finish | Predecessors | Total float | Free float | Resources | Cost |
| --- | --- | --- | --- | --- | --- | --- | --- | --- | --- | --- |
|  | 3 | **Fence & Courtyard Works** |  | 2025-02-10 | 2025-05-15 |  |  |  |  |  |
| B12-V09~V16-1420 |  | Pouring Bedding Concrete For Fence Fondations | 2d | 2025-02-10 | 2025-02-11 | B12-V09~V16-1120, B12-V01~V08-1420 | 9d | 0d | Excavation Fence Foundations [8] | 4,519.28 |
| B12-V09~V16-1430 |  | RC Concrete For Fence Fondations | 6d | 2025-02-12 | 2025-02-18 | B12-V09~V16-1420, B12-V01~V08-1430 | 9d | 0d | Fence Fondations-Eastern side [8]; Fence Fondations-Westren side [8]; Fence Fondations-Back side [8] | 13,420.32 |
| B12-V09~V16-1440 |  | Steel Fixing & Carpentry For Fence Columns | 6d | 2025-02-19 | 2025-02-25 | B12-V09~V16-1430, B12-V01~V08-1440 | 9d | 0d |  |  |
| B12-V09~V16-1450 |  | Establishing Elec For Fence Columns | 4d | 2025-02-26 | 2025-03-02 | B12-V09~V16-1440, B12-V01~V08-1450 | 9d | 0d |  |  |
| B12-V09~V16-1460 |  | Pouring Concrete For Fence Columns | 1d | 2025-03-03 | 2025-03-03 | B12-V09~V16-1450, B12-V01~V08-1460 | 9d | 0d | Fence Columns-Eastern side [8]; Fence Columns-Westren side [8]; Fence Columns-Back side [8] | 9,665.04 |
| B12-V09~V16-1470 |  | Installation Precast Panel For Fence | 5d | 2025-03-04 | 2025-03-09 | B12-V09~V16-1460, B12-V01~V08-1470 | 9d | 0d | Hollow Core Walls [8] | 71,593.2 |
| B12-V09~V16-1480 |  | Bitumen Coating For Fence Fondations | 4d | 2025-03-10 | 2025-03-13 | B12-V09~V16-1470, B12-V01~V08-1480 | 9d | 0d |  |  |
| B12-V09~V16-1490 |  | Pouring Bedding Concrete For "Front" Fence Fondations | 1d | 2025-03-10 | 2025-03-10 | B12-V09~V16-1470, B12-V01~V08-1490 | 21d | 0d |  |  |
| B12-V09~V16-1500 |  | RC Concrete For "Front" Fence Fondations | 4d | 2025-03-11 | 2025-03-15 | B12-V09~V16-1490, B12-V01~V08-1500 | 21d | 0d | Front Fence Fondations [8] | 8,904.4 |
| B12-V09~V16-1510 |  | Outdoor Drainage & Water Line | 5d | 2025-03-15 | 2025-03-19 | B12-V09~V16-1480, B12-V09~V16-1140, B12-V01~V08-1510 | 9d | 0d | Outdoor Drainage [8]; Outdoor Water Line [8] | 13,423.68 |
| B12-V09~V16-1520 |  | Steel Fixing & Carpentry For "Front" Fence Columns | 4d | 2025-03-16 | 2025-03-19 | B12-V09~V16-1500, B12-V01~V08-1520 | 21d | 0d |  |  |
| B12-V09~V16-1530 |  | Establishing Elec For "Front" Fence Columns | 4d | 2025-03-20 | 2025-03-24 | B12-V09~V16-1520, B12-V01~V08-1530 | 21d | 0d |  |  |
| B12-V09~V16-1540 |  | Establishing Elec For Fence & Yard | 2d | 2025-03-20 | 2025-03-22 | B12-V09~V16-1510, B12-V01~V08-1540 | 9d | 0d | Elec Establishment Fence & Yard [8] | 17,898.32 |
| B12-V09~V16-1550 |  | Backfilling the Yard | 4d | 2025-03-23 | 2025-03-26 | B12-V09~V16-1540, B12-V01~V08-1550 | 9d | 0d | Backfilling the Yard [8] | 10,560 |
| B12-V09~V16-1560 |  | Pouring Concrete Wall Of "Front" Fence Columns | 2d | 2025-03-25 | 2025-03-26 | B12-V09~V16-1530, B12-V01~V08-1560 | 21d | 0d | Front Fence Walls [8] | 17,898.32 |
| B12-V09~V16-1570 |  | Pouring Concrete Crown Of "Front" Fence Columns | 3d | 2025-03-27 | 2025-03-30 | B12-V09~V16-1560, B12-V01~V08-1570 | 21d | 0d | Fence Columns - C Chanel [8] | 3,310.37 |
| B12-V09~V16-1580 |  | Bardoura Works For Yard | 5d | 2025-03-27 | 2025-04-01 | B12-V09~V16-1550, B12-V01~V08-1580 | 9d | 0d | Bardoura Works For Yard [8] | 14,408.16 |
| B12-V09~V16-1590 |  | Pouring Concrete Flower Basin Of "Front" Fence Columns | 4d | 2025-03-31 | 2025-04-03 | B12-V09~V16-1570, B12-V01~V08-1590 | 21d | 0d |  |  |
| B12-V09~V16-1600 |  | Antitermite Treatment For Yard | 1d | 2025-04-02 | 2025-04-02 | B12-V09~V16-1580, B12-V01~V08-1600 | 9d | 0d | Antitermite Treatment For Yard [8] |  |
| B12-V09~V16-1610 |  | Pouring Concrete For Yard | 1d | 2025-04-03 | 2025-04-03 | B12-V09~V16-1600, B12-V01~V08-1610 | 9d | 0d |  |  |
| B12-V09~V16-1620 |  | Block Work For Flower Basin | 5d | 2025-04-05 | 2025-04-09 | B12-V09~V16-1610, B12-V01~V08-1620 | 9d | 0d |  |  |
| B12-V09~V16-1630 |  | Plastering Work For Flower Basin | 4d | 2025-04-10 | 2025-04-14 | B12-V09~V16-1620, B12-V01~V08-1630 | 9d | 0d |  |  |
| B12-V09~V16-1640 |  | Interlock Works For The Yard | 6d | 2025-04-15 | 2025-04-21 | B12-V09~V16-1630, B12-V01~V08-1640 | 9d | 0d | Interlock Works For The Yard [8] | 36,776.32 |
| B12-V09~V16-1650 |  | External Grading Works For The Villa | 4d | 2025-04-22 | 2025-04-26 | B12-V09~V16-1640, B12-V01~V08-1650 | 11d | 0d | External Grading Works For The Villa [8] | 3,221.68 |
| B12-V09~V16-1660 |  | Installation The Exterior Door & Garage Door | 5d | 2025-04-22 | 2025-04-27 | B12-V09~V16-1640, B12-V01~V08-1660 | 14d | 2d | Installation The Exterior Door [8]; Installation The Exterior Garage Door [8] | 40,002.72 |
| B12-V09~V16-1670 |  | Fixing Floor Drain For The Yard | 2d | 2025-04-22 | 2025-04-23 | B12-V09~V16-1640, B12-V01~V08-1670 | 17d | 5d | Floor Drain & Clean Out [8] | 13,423.76 |
| B12-V09~V16-1680 |  | Granite Surronds Around The Villa | 4d | 2025-04-27 | 2025-04-30 | B12-V09~V16-1650, B12-V01~V08-1680 | 11d | 2d | Granite Surronds Around The Villa [8] | 25,818.32 |
| B12-V09~V16-1690 |  | Painting The Base Surface Of The Fence | 2d | 2025-04-27 | 2025-04-28 | B12-V09~V16-1750, B12-V01~V08-1690 | 9d | 0d |  |  |
| B12-V09~V16-1700 |  | Painting The Final Face Of The Fence | 4d | 2025-04-29 | 2025-05-03 | B12-V09~V16-1690, B12-V01~V08-1700 | 9d | 0d | Painting Final Face Of The Fence [8] | 37,586.48 |
| B12-V09~V16-1710 |  | Exterior Painting Of The Villa | 7d | 2025-05-04 | 2025-05-11 | B12-V09~V16-1680, B12-V09~V16-1700, B12-V09~V16-1660, B12-V09~V16-1670, B12-V01~V08-1710 | 9d | 0d | Exterior Painting Of The Villa [8]; Exterior Painting Staircase House [8] | 105,684.16 |
| B12-V09~V16-1720 |  | Installation Elec Fixtures & Accessories For The Yard | 4d | 2025-05-12 | 2025-05-15 | B12-V09~V16-1700, B12-V09~V16-1710, B12-V01~V08-1720 | 34d | 0d | Elec feeding panels GF & FF [8] | 22,372.88 |

| ID | WBS | Activity | Duration | Start | Finish | Predecessors | Total float | Free float | Resources | Cost | Department-1 |
| --- | --- | --- | --- | --- | --- | --- | --- | --- | --- | --- | --- |
|  | 5 | **External Sidewalk Works** |  | 2025-04-05 | 2025-05-20 |  |  |  |  |  |  |
| B12-V09~V16-1730 |  | Connection The Drain To The Piblic Network | 3d | 2025-04-05 | 2025-04-07 | B12-V09~V16-1510, B12-V09~V16-1590, B12-V01~V08-1730 | 21d | 4d | Connection Drain To The Piblic Network [8]; Connection Water To The Piblic Network [8] | 13,420.32 |  |
| B12-V09~V16-1740 |  | Pardora Works For The External Sidewalk | 2d | 2025-04-22 | 2025-04-23 | B12-V09~V16-1640, B12-V09~V16-1730, B12-V01~V08-1740 | 9d | 0d |  |  |  |
| B12-V09~V16-1750 |  | Interlock Works For The Exerrnal Sidewalk | 2d | 2025-04-24 | 2025-04-26 | B12-V09~V16-1740, B12-V01~V08-1750 | 9d | 0d |  |  |  |
| B12-V09~V16-1760 |  | Pulling The Villa's Main Elec Cable | 4d | 2025-05-17 | 2025-05-20 | B12-V09~V16-1750, B12-V09~V16-1720, B12-V01~V08-1760 | 34d | 0d | Elec Work Testing [8] | 22,819.84 |  |
|  | 6 | **Final Testing & Handover** |  | 2025-05-11 | 2025-06-07 |  |  |  |  |  |  |
| B12-V09~V16-1770 |  | Mech Work Testing & Handover | 5d | 2025-05-11 | 2025-05-15 | B12-V09~V16-1730, B12-V09~V16-1340, B12-V09~V16-1380, B12-V01~V08-1770 | 43d | 2d | Mech Work Testing & Handover [8] | 14,318.64 |  |
| B12-V09~V16-1780 |  | Arch Snaglist & Handover | 5d | 2025-05-17 | 2025-05-21 | B12-V09~V16-1750, B12-V09~V16-1710, B12-V09~V16-1400, B12-V01~V08-1780 | 38d | 2d | Arch Snaglist & Handover [8] | 77,320.64 |  |
| B12-V09~V16-1790 |  | ElecWork Testing & Handover | 5d | 2025-05-21 | 2025-05-26 | B12-V09~V16-1760, B12-V09~V16-1370, B12-V01~V08-1790 | 34d | 0d | Elec Work Handover [8] | 23,804.72 |  |
| B12-V09~V16-1800 |  | Final Handover Of The Villa To The Consltant | 5d | 2025-05-27 | 2025-06-01 | B12-V09~V16-1780, B12-V09~V16-1790, B12-V09~V16-1770, B12-V09~V16-1410, B12-V01~V08-1800 | 34d | 0d |  |  |  |
| B12-V09~V16-1810 |  | Customer Delivery | 5d | 2025-06-02 | 2025-06-07 | B12-V09~V16-1800, B12-V01~V08-1810 | 34d | 2d |  |  |  |
|  | 15 | **B12-V17~V24** |  | 2024-11-04 | 2025-06-15 |  |  |  |  |  |  |
|  | 2 | **Under Grond Slap Works** |  | 2024-11-04 | 2024-12-14 |  |  |  |  |  |  |
| B12-V17~V24-1000 |  | Excavation&Compaction of Fondation | 6d | 2024-11-04 | 2024-11-10 | B12-V09~V16-1000 | 49d | 0d | Clearing & Groubbing [8]; Excavation & Leveling [8]; Stone Layer [8]; A3 Layer [8]; A1-a 1st Layer [8]; A1-a 2ed Layer [8] | 163,545.76 | Civil |
| B12-V17~V24-1010 |  | Pouring Concrete For Bedding | 2d | 2024-11-11 | 2024-11-12 | B12-V17~V24-1000, B12-V09~V16-1010 | 49d | 0d | PC Carpentry [8]; PC Concrete [8]; RC 18 MPA [9 M3] | 37,899.68 | Civil |
| B12-V17~V24-1020 |  | Reinforcement Concrete For Foundation | 5d | 2024-11-13 | 2024-11-18 | B12-V17~V24-1010, B12-V09~V16-1020 | 49d | 0d | RC Foundation Carpentry [8]; RC Foundation Steel [8]; RC Foundation Concrete [8] | 201,355.92 | Civil |
| B12-V17~V24-1030 |  | Steel Fixing& Carpenter work for Beams | 4d | 2024-11-19 | 2024-11-23 | B12-V17~V24-1020, B12-V09~V16-1030 | 49d | 0d | RC Grade Beam Carpentry & Steel [8] | 44,745.76 | Civil |
| B12-V17~V24-1040 |  | Mech&Elec Establishment for Beams | 3d | 2024-11-24 | 2024-11-26 | B12-V17~V24-1030, B12-V09~V16-1040 | 49d | 0d |  |  | Mech |
| B12-V17~V24-1050 |  | Pouring Concrete For Beams | 1d | 2024-11-27 | 2024-11-27 | B12-V17~V24-1040, B12-V09~V16-1050 | 49d | 0d | RC Grade Beam Concrete [8] | 77,141.68 | Civil |
| B12-V17~V24-1060 |  | Bitmen Coating For Fondation&Beams | 3d | 2024-11-28 | 2024-12-01 | B12-V17~V24-1050, B12-V09~V16-1060 | 49d | 0d | Bitumen Coating Foundations & Grade Beams [8] | 22,372.32 | Civil |
| B12-V17~V24-1070 |  | Backfilling Inside Fondations | 4d | 2024-12-02 | 2024-12-05 | B12-V17~V24-1060, B12-V09~V16-1070 | 49d | 0d | Backfilling 1st Layer [8]; Backfilling 2ed Layer [8] | 11,186.4 | Civil |
| B12-V17~V24-1080 |  | Mech Works Under Grond Slap | 3d | 2024-12-07 | 2024-12-09 | B12-V17~V24-1070, B12-V09~V16-1080 | 49d | 0d | Mech Establishment Under Ground Slap [8] | 13,423.42 | Mech |
| B12-V17~V24-1090 |  | Steel Fixing& Carpenter work for Ground Slap | 3d | 2024-12-10 | 2024-12-12 | B12-V17~V24-1080, B12-V09~V16-1090 | 49d | 0d | Steel & Carpentry For Ground Slap [8] | 10,246.54 | Civil |
| B12-V17~V24-1100 |  | Anti Termite Treatment For Ground Slap | 1d | 2024-12-14 | 2024-12-14 | B12-V17~V24-1090, B12-V09~V16-1100 | 49d | 0d | Anti Termite Treatment nder Ground Slap [8] | 2,237.28 | Civil |
| B12-V17~V24-1110 |  | Pouring Concrete For Ground Slap | 1d | 2024-12-14 | 2024-12-14 | B12-V17~V24-1100 FF, B12-V17~V24-1090, B12-V09~V16-1110 | 49d | 5d | Concrete For Ground Slap [8] | 58,169.52 | Civil |

| ID | WBS | Activity | Duration | Start | Finish | Predecessors | Total float | Free float | Resources | Cost | Department-1 |
| --- | --- | --- | --- | --- | --- | --- | --- | --- | --- | --- | --- |
|  | 4 | **Precast Works** |  | 2025-02-10 | 2025-02-17 |  |  |  |  |  |  |
| B12-V17~V24-1120 |  | Precast Constrction | 7d | 2025-02-10 | 2025-02-17 | B12-V17~V24-1110, B12-V09~V16-1120 | 0d |  | Precast Walls GF [8]; Hollow Core Slap GF [8]; Precast Stairs & staircase House [8]; Thermal insollation Outside Walls [8]; Concrete structure joints [8]; Precast Walls FF [8]; Hollow Core Slap FF [8] | 1,513,762.87 | Civil |
|  | 1 | **Works Inside The Villa** |  | 2025-02-18 | 2025-05-31 |  |  |  |  |  |  |
| B12-V17~V24-1130 |  | Block Work For GF & Estabishment 1F | 6d | 2025-02-18 | 2025-02-24 | B12-V17~V24-1120, B12-V09~V16-1130 | 9d | 0d | Block GF [8] | 13,647.1 | Arc |
| B12-V17~V24-1140 |  | L.L & H.L Drainage | 6d | 2025-02-25 | 2025-03-03 | B12-V17~V24-1130, B12-V09~V16-1140 | 9d | 0d | HL Drainage [8]; L.L Drainage [8] | 89,489.28 | Mech |
| B12-V17~V24-1150 |  | Elec Establishment For GF & 1F | 3d | 2025-02-25 | 2025-02-27 | B12-V17~V24-1130, B12-V09~V16-1150 | 12d | 3d | Elec Establishment GF [8] | 26,840.73 | Elec |
| B12-V17~V24-1160 |  | Screed Work For 1F & Roof | 6d | 2025-03-04 | 2025-03-10 | B12-V17~V24-1140, B12-V17~V24-1150, B12-V09~V16-1160 | 9d | 0d | Screed 1st Floor [8]; Screed Roof Floor [8]; Leveling Screed 1st Floor [8]; Leveling Screed Roof Floor [8] | 268,467.85 | Civil |
| B12-V17~V24-1170 |  | Water Tank & Heater Foundations | 4d | 2025-03-11 | 2025-03-15 | B12-V17~V24-1160, B12-V09~V16-1170 | 13d | 0d |  |  | Civil |
| B12-V17~V24-1180 |  | Block Works For 1F | 3d | 2025-03-11 | 2025-03-13 | B12-V17~V24-1160, B12-V09~V16-1180 | 9d | 0d | Block FF [8] | 20,537.81 | Arc |
| B12-V17~V24-1190 |  | Water Line Network | 6d | 2025-03-15 | 2025-03-20 | B12-V17~V24-1180, B12-V09~V16-1190 | 9d | 0d | Water Line Network [8] | 40,261.13 | Mech |
| B12-V17~V24-1200 |  | Continue Elec Establishment For GF & 1F | 3d | 2025-03-15 | 2025-03-17 | B12-V17~V24-1180, B12-V09~V16-1200 | 12d | 3d | Elec Establishment FF [8] | 26,840.73 | Elec |
| B12-V17~V24-1210 |  | Thermal Insulation For Roof | 5d | 2025-03-16 | 2025-03-20 | B12-V17~V24-1170, B12-V09~V16-1210 | 13d | 0d | Roof Insulation [8] | 32,530.16 | Arc |
| B12-V17~V24-1220 |  | Roof Floor Tiles | 6d | 2025-03-22 | 2025-03-27 | B12-V17~V24-1210, B12-V09~V16-1220 | 13d | 1d | Roof Tiles [8]; Roof Tiles Joints [8]; Re_Test Roof Insulation [8] | 63,179.38 | Arc |
| B12-V17~V24-1230 |  | Plaster Work For Villa | 6d | 2025-03-22 | 2025-03-27 | B12-V17~V24-1190, B12-V17~V24-1200, B12-V09~V16-1230 | 9d | 0d | Establishing a plastering GF [8]; Establishing a plastering FF [8]; Plastering GF [8]; Plastering FF [8] | 49,263.81 |  |
| B12-V17~V24-1240 |  | Marbale Stairs & Handrails | 6d | 2025-03-29 | 2025-04-03 | B12-V17~V24-1230, B12-V09~V16-1240 | 31d | 1d | Marbale Stairs [8]; Stairs Handrails SS [8] | 91,494.69 |  |
| B12-V17~V24-1250 |  | Water Proofing Of Bathrooms | 4d | 2025-03-29 | 2025-04-01 | B12-V17~V24-1230, B12-V09~V16-1250 | 9d | 0d | Bathrooms InsulationGF & FF [8] | 134.24 |  |
| B12-V17~V24-1260 |  | Pulling The Elec Wires | 4d | 2025-03-29 | 2025-04-01 | B12-V17~V24-1230, B12-V09~V16-1260 | 19d | 3d | Elec Wires GF [8]; Elec Wires FF [8] | 80,542.4 |  |
| B12-V17~V24-1270 |  | Bathroom Tiles | 4d | 2025-04-02 | 2025-04-06 | B12-V17~V24-1250, B12-V17~V24-1220, B12-V09~V16-1270 | 9d | 0d | Ceramic Walls Kitchen [8]; Ceramic Walls Bathrooms GF [8]; Ceramic Walls Bathrooms FF [8]; Ceramic Tiles Bathrooms GF [8]; Ceramic Tiles Kitchen GF [8]; Ceramic Tiles Store GF [8] | 73,204.08 |  |
| B12-V17~V24-1280 |  | Structure For Gypsum | 6d | 2025-04-07 | 2025-04-13 | B12-V17~V24-1270, B12-V09~V16-1280 | 9d | 0d | Structure For Gypsum GF Rooms [8]; Structure For Gypsum FF Rooms [8]; Structure For Gypsum Bathrooms & Kitchen [8] | 33,550.81 |  |
| B12-V17~V24-1290 |  | Gypsum Board For Room | 4d | 2025-04-14 | 2025-04-17 | B12-V17~V24-1280, B12-V17~V24-1260, B12-V09~V16-1290 | 9d | 0d | Gypsum Board For GF Room [8]; Gypsum Board For FF Room [8] | 35,796.64 |  |
| B12-V17~V24-1300 |  | Installation Of Gypsum Board For Bathroom & Kitchen | 4d | 2025-04-19 | 2025-04-22 | B12-V17~V24-1290, B12-V09~V16-1300 | 9d | 0d | Gypsum Board For Bathrooms & Kitchen [8] | 11,052.24 |  |
| B12-V17~V24-1310 |  | Putty Filler For Gypsm Board Ceiling | 6d | 2025-04-23 | 2025-04-29 | B12-V17~V24-1300, B12-V09~V16-1310 | 9d | 0d | Putty Filler 1st Layer Roof all Rooms [8]; Putty Filler 1st Layer Roof all Bathrooms & Kitchen [8]; Putty Filler1st Layer walls [8] | 62,182.52 |  |
| B12-V17~V24-1320 |  | Fixing Shower Glass | 4d | 2025-04-30 | 2025-05-04 | B12-V17~V24-1310, B12-V09~V16-1320 | 16d | 0d | Shower Glass [8] | 22,372.88 |  |
| B12-V17~V24-1330 |  | Interior Wall Putty Filler | 6d | 2025-04-30 | 2025-05-06 | B12-V17~V24-1310, B12-V17~V24-1240, B12-V09~V16-1330 | 9d | 0d | Putty Filler 2ed Layer Roof & WAlls GF [8]; Putty Filler 2ed Layer Roof & WAlls FF [8] | 62,150.21 |  |
| B12-V17~V24-1340 |  | Installation Of Sanitry Fixture | 6d | 2025-05-05 | 2025-05-11 | B12-V17~V24-1320, B12-V09~V16-1340 | 16d | 0d | Mech Fixtures & Accessories [8] | 98,438.1 |  |
| B12-V17~V24-1350 |  | 1st Face Paint | 5d | 2025-05-07 | 2025-05-12 | B12-V17~V24-1330, B12-V09~V16-1350 | 9d | 0d |  |  |  |
| B12-V17~V24-1360 |  | Installation Of Aluminum Windows | 6d | 2025-05-07 | 2025-05-13 | B12-V17~V24-1330, B12-V09~V16-1360 | 18d | 1d | Aluminum Windows [8] | 84,797.8 |  |
| B12-V17~V24-1370 |  | Installation Of Elec Fixture & Accessories | 6d | 2025-05-07 | 2025-05-13 | B12-V17~V24-1310, B12-V17~V24-1330, B12-V17~V24-1260, B12-V09~V16-1370 | 31d | 1d | Elec Fixtures & Accessories Villa & Yard [8]; Elec Cables GF & FF & Earthing [8] | 53,681.46 |  |
| B12-V17~V24-1380 |  | Installation Of Water Tank-Heater & Pumps | 6d | 2025-05-12 | 2025-05-18 | B12-V17~V24-1340, B12-V09~V16-1380, B12-V17~V24-1220 | 16d | 0d | Water Tank & booster Pump [8]; Lower Pump [8]; Heater [8] | 129,730.28 |  |
| B12-V17~V24-1390 |  | Installation Of Parquet | 4d | 2025-05-13 | 2025-05-17 | B12-V17~V24-1350, B12-V09~V16-1390 | 9d | 0d | Installation Of Parquet [8] | 52,978.96 |  |
| B12-V17~V24-1400 |  | Installation Of Wooden Doors | 6d | 2025-05-18 | 2025-05-24 | B12-V17~V24-1390, B12-V09~V16-1400 | 9d | 0d | Wooden Doors Accessories all Villa [8]; Wooden Doors Kitchen & Bathroom without Accessories [8]; Exterior Wooden Doors [8] | 142,109.01 |  |
| B12-V17~V24-1410 |  | Final Face Paint | 6d | 2025-05-25 | 2025-05-31 | B12-V17~V24-1360, B12-V17~V24-1400, B12-V09~V16-1410 | 9d | 1d | Final Face Paint Villa [8] | 31,090.55 |  |

| ID | WBS | Activity | Duration | Start | Finish | Predecessors | Total float | Free float | Resources | Cost |
| --- | --- | --- | --- | --- | --- | --- | --- | --- | --- | --- |
|  | 3 | **Fence & Courtyard Works** |  | 2025-02-18 | 2025-05-24 |  |  |  |  |  |
| B12-V17~V24-1420 |  | Pouring Bedding Concrete For Fence Fondations | 2d | 2025-02-18 | 2025-02-19 | B12-V17~V24-1120, B12-V09~V16-1420 | 9d | 0d | Excavation Fence Foundations [8] | 4,519.28 |
| B12-V17~V24-1430 |  | RC Concrete For Fence Fondations | 6d | 2025-02-20 | 2025-02-26 | B12-V17~V24-1420, B12-V09~V16-1430 | 9d | 0d | Fence Fondations-Eastern side [8]; Fence Fondations-Westren side [8]; Fence Fondations-Back side [8] | 13,420.32 |
| B12-V17~V24-1440 |  | Steel Fixing & Carpentry For Fence Columns | 6d | 2025-02-27 | 2025-03-05 | B12-V17~V24-1430, B12-V09~V16-1440 | 9d | 0d |  |  |
| B12-V17~V24-1450 |  | Establishing Elec For Fence Columns | 4d | 2025-03-06 | 2025-03-10 | B12-V17~V24-1440, B12-V09~V16-1450 | 9d | 0d |  |  |
| B12-V17~V24-1460 |  | Pouring Concrete For Fence Columns | 1d | 2025-03-11 | 2025-03-11 | B12-V17~V24-1450, B12-V09~V16-1460 | 9d | 0d | Fence Columns-Eastern side [8]; Fence Columns-Westren side [8]; Fence Columns-Back side [8] | 9,665.04 |
| B12-V17~V24-1470 |  | Installation Precast Panel For Fence | 5d | 2025-03-12 | 2025-03-17 | B12-V17~V24-1460, B12-V09~V16-1470 | 9d | 0d | Hollow Core Walls [8] | 71,593.2 |
| B12-V17~V24-1480 |  | Bitumen Coating For Fence Fondations | 4d | 2025-03-18 | 2025-03-22 | B12-V17~V24-1470, B12-V09~V16-1480 | 9d | 0d |  |  |
| B12-V17~V24-1490 |  | Pouring Bedding Concrete For "Front" Fence Fondations | 1d | 2025-03-18 | 2025-03-18 | B12-V17~V24-1470, B12-V09~V16-1490 | 21d | 0d |  |  |
| B12-V17~V24-1500 |  | RC Concrete For "Front" Fence Fondations | 4d | 2025-03-19 | 2025-03-23 | B12-V17~V24-1490, B12-V09~V16-1500 | 21d | 0d | Front Fence Fondations [8] | 8,904.4 |
| B12-V17~V24-1510 |  | Outdoor Drainage & Water Line | 5d | 2025-03-23 | 2025-03-27 | B12-V17~V24-1480, B12-V17~V24-1140, B12-V09~V16-1510 | 9d | 0d | Outdoor Drainage [8]; Outdoor Water Line [8] | 13,423.68 |
| B12-V17~V24-1520 |  | Steel Fixing & Carpentry For "Front" Fence Columns | 4d | 2025-03-24 | 2025-03-27 | B12-V17~V24-1500, B12-V09~V16-1520 | 21d | 0d |  |  |
| B12-V17~V24-1530 |  | Establishing Elec For "Front" Fence Columns | 4d | 2025-03-29 | 2025-04-01 | B12-V17~V24-1520, B12-V09~V16-1530 | 21d | 0d |  |  |
| B12-V17~V24-1540 |  | Establishing Elec For Fence & Yard | 2d | 2025-03-29 | 2025-03-30 | B12-V17~V24-1510, B12-V09~V16-1540 | 9d | 0d | Elec Establishment Fence & Yard [8] | 17,898.32 |
| B12-V17~V24-1550 |  | Backfilling the Yard | 4d | 2025-03-31 | 2025-04-03 | B12-V17~V24-1540, B12-V09~V16-1550 | 9d | 0d | Backfilling the Yard [8] | 10,560 |
| B12-V17~V24-1560 |  | Pouring Concrete Wall Of "Front" Fence Columns | 2d | 2025-04-02 | 2025-04-03 | B12-V17~V24-1530, B12-V09~V16-1560 | 21d | 0d | Front Fence Walls [8] | 17,898.32 |
| B12-V17~V24-1570 |  | Pouring Concrete Crown Of "Front" Fence Columns | 3d | 2025-04-05 | 2025-04-07 | B12-V17~V24-1560, B12-V09~V16-1570 | 21d | 0d | Fence Columns - C Chanel [8] | 3,310.37 |
| B12-V17~V24-1580 |  | Bardoura Works For Yard | 5d | 2025-04-05 | 2025-04-09 | B12-V17~V24-1550, B12-V09~V16-1580 | 9d | 0d | Bardoura Works For Yard [8] | 14,408.16 |
| B12-V17~V24-1590 |  | Pouring Concrete Flower Basin Of "Front" Fence Columns | 4d | 2025-04-08 | 2025-04-12 | B12-V17~V24-1570, B12-V09~V16-1590 | 21d | 0d |  |  |
| B12-V17~V24-1600 |  | Antitermite Treatment For Yard | 1d | 2025-04-10 | 2025-04-10 | B12-V17~V24-1580, B12-V09~V16-1600 | 9d | 0d | Antitermite Treatment For Yard [8] |  |
| B12-V17~V24-1610 |  | Pouring Concrete For Yard | 1d | 2025-04-12 | 2025-04-12 | B12-V17~V24-1600, B12-V09~V16-1610 | 9d | 0d |  |  |
| B12-V17~V24-1620 |  | Block Work For Flower Basin | 5d | 2025-04-13 | 2025-04-17 | B12-V17~V24-1610, B12-V09~V16-1620 | 9d | 0d |  |  |
| B12-V17~V24-1630 |  | Plastering Work For Flower Basin | 4d | 2025-04-19 | 2025-04-22 | B12-V17~V24-1620, B12-V09~V16-1630 | 9d | 0d |  |  |
| B12-V17~V24-1640 |  | Interlock Works For The Yard | 6d | 2025-04-23 | 2025-04-29 | B12-V17~V24-1630, B12-V09~V16-1640 | 9d | 0d | Interlock Works For The Yard [8] | 36,776.32 |
| B12-V17~V24-1650 |  | External Grading Works For The Villa | 4d | 2025-04-30 | 2025-05-04 | B12-V17~V24-1640, B12-V09~V16-1650 | 11d | 0d | External Grading Works For The Villa [8] | 3,221.68 |
| B12-V17~V24-1660 |  | Installation The Exterior Door & Garage Door | 5d | 2025-04-30 | 2025-05-05 | B12-V17~V24-1640, B12-V09~V16-1660 | 14d | 2d | Installation The Exterior Door [8]; Installation The Exterior Garage Door [8] | 40,002.72 |
| B12-V17~V24-1670 |  | Fixing Floor Drain For The Yard | 2d | 2025-04-30 | 2025-05-01 | B12-V17~V24-1640, B12-V09~V16-1670 | 17d | 5d | Floor Drain & Clean Out [8] | 13,423.76 |
| B12-V17~V24-1680 |  | Granite Surronds Around The Villa | 4d | 2025-05-05 | 2025-05-08 | B12-V17~V24-1650, B12-V09~V16-1680 | 11d | 2d | Granite Surronds Around The Villa [8] | 25,818.32 |
| B12-V17~V24-1690 |  | Painting The Base Surface Of The Fence | 2d | 2025-05-05 | 2025-05-06 | B12-V17~V24-1750, B12-V09~V16-1690 | 9d | 0d |  |  |
| B12-V17~V24-1700 |  | Painting The Final Face Of The Fence | 4d | 2025-05-07 | 2025-05-11 | B12-V17~V24-1690, B12-V09~V16-1700 | 9d | 0d | Painting Final Face Of The Fence [8] | 37,586.48 |
| B12-V17~V24-1710 |  | Exterior Painting Of The Villa | 7d | 2025-05-12 | 2025-05-19 | B12-V17~V24-1680, B12-V17~V24-1700, B12-V17~V24-1660, B12-V17~V24-1670, B12-V09~V16-1710 | 9d | 0d | Exterior Painting Of The Villa [8]; Exterior Painting Staircase House [8] | 105,684.16 |
| B12-V17~V24-1720 |  | Installation Elec Fixtures & Accessories For The Yard | 4d | 2025-05-20 | 2025-05-24 | B12-V17~V24-1700, B12-V17~V24-1710, B12-V09~V16-1720 | 32d | 0d | Elec feeding panels GF & FF [8] | 22,372.88 |

| ID | WBS | Activity | Duration | Start | Finish | Predecessors | Total float | Free float | Resources | Cost | Department-1 |
| --- | --- | --- | --- | --- | --- | --- | --- | --- | --- | --- | --- |
|  | 5 | **External Sidewalk Works** |  | 2025-04-13 | 2025-05-28 |  |  |  |  |  |  |
| B12-V17~V24-1730 |  | Connection The Drain To The Piblic Network | 3d | 2025-04-13 | 2025-04-15 | B12-V17~V24-1510, B12-V17~V24-1590, B12-V09~V16-1730 | 21d | 4d | Connection Drain To The Piblic Network [8]; Connection Water To The Piblic Network [8] | 13,420.32 |  |
| B12-V17~V24-1740 |  | Pardora Works For The External Sidewalk | 2d | 2025-04-30 | 2025-05-01 | B12-V17~V24-1640, B12-V17~V24-1730, B12-V09~V16-1740 | 9d | 0d |  |  |  |
| B12-V17~V24-1750 |  | Interlock Works For The Exerrnal Sidewalk | 2d | 2025-05-03 | 2025-05-04 | B12-V17~V24-1740, B12-V09~V16-1750 | 9d | 0d |  |  |  |
| B12-V17~V24-1760 |  | Pulling The Villa's Main Elec Cable | 4d | 2025-05-25 | 2025-05-28 | B12-V17~V24-1750, B12-V17~V24-1720, B12-V09~V16-1760 | 32d | 0d | Elec Work Testing [8] | 22,819.84 |  |
|  | 6 | **Final Testing & Handover** |  | 2025-05-19 | 2025-06-15 |  |  |  |  |  |  |
| B12-V17~V24-1770 |  | Mech Work Testing & Handover | 5d | 2025-05-19 | 2025-05-24 | B12-V17~V24-1730, B12-V17~V24-1340, B12-V17~V24-1380, B12-V09~V16-1770 | 41d | 2d | Mech Work Testing & Handover [8] | 14,318.64 |  |
| B12-V17~V24-1780 |  | Arch Snaglist & Handover | 5d | 2025-05-25 | 2025-05-29 | B12-V17~V24-1750, B12-V17~V24-1710, B12-V17~V24-1400, B12-V09~V16-1780 | 36d | 2d | Arch Snaglist & Handover [8] | 77,320.64 |  |
| B12-V17~V24-1790 |  | ElecWork Testing & Handover | 5d | 2025-05-29 | 2025-06-03 | B12-V17~V24-1760, B12-V17~V24-1370, B12-V09~V16-1790 | 32d | 0d | Elec Work Handover [8] | 23,804.72 |  |
| B12-V17~V24-1800 |  | Final Handover Of The Villa To The Consltant | 5d | 2025-06-04 | 2025-06-09 | B12-V17~V24-1780, B12-V17~V24-1790, B12-V17~V24-1770, B12-V17~V24-1410, B12-V09~V16-1800 | 32d | 0d |  |  |  |
| B12-V17~V24-1810 |  | Customer Delivery | 5d | 2025-06-10 | 2025-06-15 | B12-V17~V24-1800, B12-V09~V16-1810 | 32d | 2d |  |  |  |
|  | 16 | **B12-V25~V32** |  | 2024-11-11 | 2025-06-23 |  |  |  |  |  |  |
|  | 2 | **Under Grond Slap Works** |  | 2024-11-11 | 2024-12-21 |  |  |  |  |  |  |
| B12-V25~V32-1000 |  | Excavation&Compaction of Fondation | 6d | 2024-11-11 | 2024-11-17 | B12-V17~V24-1000 | 50d | 0d | Clearing & Groubbing [8]; Excavation & Leveling [8]; Stone Layer [8]; A3 Layer [8]; A1-a 1st Layer [8]; A1-a 2ed Layer [8] | 163,545.76 | Civil |
| B12-V25~V32-1010 |  | Pouring Concrete For Bedding | 2d | 2024-11-18 | 2024-11-19 | B12-V25~V32-1000, B12-V17~V24-1010 | 50d | 0d | PC Carpentry [8]; PC Concrete [8]; RC 18 MPA [9 M3] | 37,899.68 | Civil |
| B12-V25~V32-1020 |  | Reinforcement Concrete For Foundation | 5d | 2024-11-20 | 2024-11-25 | B12-V25~V32-1010, B12-V17~V24-1020 | 50d | 0d | RC Foundation Carpentry [8]; RC Foundation Steel [8]; RC Foundation Concrete [8] | 201,355.92 | Civil |
| B12-V25~V32-1030 |  | Steel Fixing& Carpenter work for Beams | 4d | 2024-11-26 | 2024-11-30 | B12-V25~V32-1020, B12-V17~V24-1030 | 50d | 0d | RC Grade Beam Carpentry & Steel [8] | 44,745.76 | Civil |
| B12-V25~V32-1040 |  | Mech&Elec Establishment for Beams | 3d | 2024-12-01 | 2024-12-03 | B12-V25~V32-1030, B12-V17~V24-1040 | 50d | 0d |  |  | Mech |
| B12-V25~V32-1050 |  | Pouring Concrete For Beams | 1d | 2024-12-04 | 2024-12-04 | B12-V25~V32-1040, B12-V17~V24-1050 | 50d | 0d | RC Grade Beam Concrete [8] | 77,141.68 | Civil |
| B12-V25~V32-1060 |  | Bitmen Coating For Fondation&Beams | 3d | 2024-12-05 | 2024-12-08 | B12-V25~V32-1050, B12-V17~V24-1060 | 50d | 0d | Bitumen Coating Foundations & Grade Beams [8] | 22,372.32 | Civil |
| B12-V25~V32-1070 |  | Backfilling Inside Fondations | 4d | 2024-12-09 | 2024-12-12 | B12-V25~V32-1060, B12-V17~V24-1070 | 50d | 0d | Backfilling 1st Layer [8]; Backfilling 2ed Layer [8] | 11,186.4 | Civil |
| B12-V25~V32-1080 |  | Mech Works Under Grond Slap | 3d | 2024-12-14 | 2024-12-16 | B12-V25~V32-1070, B12-V17~V24-1080 | 50d | 0d | Mech Establishment Under Ground Slap [8] | 13,423.42 | Mech |
| B12-V25~V32-1090 |  | Steel Fixing& Carpenter work for Ground Slap | 3d | 2024-12-17 | 2024-12-19 | B12-V25~V32-1080, B12-V17~V24-1090 | 50d | 0d | Steel & Carpentry For Ground Slap [8] | 10,246.54 | Civil |
| B12-V25~V32-1100 |  | Anti Termite Treatment For Ground Slap | 1d | 2024-12-21 | 2024-12-21 | B12-V25~V32-1090, B12-V17~V24-1100 | 50d | 0d | Anti Termite Treatment nder Ground Slap [8] | 2,237.28 | Civil |
| B12-V25~V32-1110 |  | Pouring Concrete For Ground Slap | 1d | 2024-12-21 | 2024-12-21 | B12-V25~V32-1100 FF, B12-V25~V32-1090, B12-V17~V24-1110 | 50d | 5d | Concrete For Ground Slap [8] | 58,169.52 | Civil |

| ID | WBS | Activity | Duration | Start | Finish | Predecessors | Total float | Free float | Resources | Cost | Department-1 |
| --- | --- | --- | --- | --- | --- | --- | --- | --- | --- | --- | --- |
|  | 4 | **Precast Works** |  | 2025-02-18 | 2025-02-25 |  |  |  |  |  |  |
| B12-V25~V32-1120 |  | Precast Constrction | 7d | 2025-02-18 | 2025-02-25 | B12-V25~V32-1110, B12-V17~V24-1120 | 0d |  | Precast Walls GF [8]; Hollow Core Slap GF [8]; Precast Stairs & staircase House [8]; Thermal insollation Outside Walls [8]; Concrete structure joints [8]; Precast Walls FF [8]; Hollow Core Slap FF [8] | 1,513,762.87 | Civil |
|  | 1 | **Works Inside The Villa** |  | 2025-02-26 | 2025-06-08 |  |  |  |  |  |  |
| B12-V25~V32-1130 |  | Block Work For GF & Estabishment 1F | 6d | 2025-02-26 | 2025-03-04 | B12-V25~V32-1120, B12-V17~V24-1130 | 8d | 0d | Block GF [8] | 13,647.1 | Arc |
| B12-V25~V32-1140 |  | L.L & H.L Drainage | 6d | 2025-03-05 | 2025-03-11 | B12-V25~V32-1130, B12-V17~V24-1140 | 8d | 0d | HL Drainage [8]; L.L Drainage [8] | 89,489.28 | Mech |
| B12-V25~V32-1150 |  | Elec Establishment For GF & 1F | 3d | 2025-03-05 | 2025-03-08 | B12-V25~V32-1130, B12-V17~V24-1150 | 11d | 3d | Elec Establishment GF [8] | 26,840.73 | Elec |
| B12-V25~V32-1160 |  | Screed Work For 1F & Roof | 6d | 2025-03-12 | 2025-03-18 | B12-V25~V32-1140, B12-V25~V32-1150, B12-V17~V24-1160 | 8d | 0d | Screed 1st Floor [8]; Screed Roof Floor [8]; Leveling Screed 1st Floor [8]; Leveling Screed Roof Floor [8] | 268,467.85 | Civil |
| B12-V25~V32-1170 |  | Water Tank & Heater Foundations | 4d | 2025-03-19 | 2025-03-23 | B12-V25~V32-1160, B12-V17~V24-1170 | 12d | 0d |  |  | Civil |
| B12-V25~V32-1180 |  | Block Works For 1F | 3d | 2025-03-19 | 2025-03-22 | B12-V25~V32-1160, B12-V17~V24-1180 | 8d | 0d | Block FF [8] | 20,537.81 | Arc |
| B12-V25~V32-1190 |  | Water Line Network | 6d | 2025-03-23 | 2025-03-29 | B12-V25~V32-1180, B12-V17~V24-1190 | 8d | 0d | Water Line Network [8] | 40,261.13 | Mech |
| B12-V25~V32-1200 |  | Continue Elec Establishment For GF & 1F | 3d | 2025-03-23 | 2025-03-25 | B12-V25~V32-1180, B12-V17~V24-1200 | 11d | 3d | Elec Establishment FF [8] | 26,840.73 | Elec |
| B12-V25~V32-1210 |  | Thermal Insulation For Roof | 5d | 2025-03-24 | 2025-03-29 | B12-V25~V32-1170, B12-V17~V24-1210 | 12d | 0d | Roof Insulation [8] | 32,530.16 | Arc |
| B12-V25~V32-1220 |  | Roof Floor Tiles | 6d | 2025-03-30 | 2025-04-05 | B12-V25~V32-1210, B12-V17~V24-1220 | 12d | 1d | Roof Tiles [8]; Roof Tiles Joints [8]; Re_Test Roof Insulation [8] | 63,179.38 | Arc |
| B12-V25~V32-1230 |  | Plaster Work For Villa | 6d | 2025-03-30 | 2025-04-05 | B12-V25~V32-1190, B12-V25~V32-1200, B12-V17~V24-1230 | 8d | 0d | Establishing a plastering GF [8]; Establishing a plastering FF [8]; Plastering GF [8]; Plastering FF [8] | 49,263.81 |  |
| B12-V25~V32-1240 |  | Marbale Stairs & Handrails | 6d | 2025-04-06 | 2025-04-12 | B12-V25~V32-1230, B12-V17~V24-1240 | 30d | 1d | Marbale Stairs [8]; Stairs Handrails SS [8] | 91,494.69 |  |
| B12-V25~V32-1250 |  | Water Proofing Of Bathrooms | 4d | 2025-04-06 | 2025-04-09 | B12-V25~V32-1230, B12-V17~V24-1250 | 8d | 0d | Bathrooms InsulationGF & FF [8] | 134.24 |  |
| B12-V25~V32-1260 |  | Pulling The Elec Wires | 4d | 2025-04-06 | 2025-04-09 | B12-V25~V32-1230, B12-V17~V24-1260 | 18d | 3d | Elec Wires GF [8]; Elec Wires FF [8] | 80,542.4 |  |
| B12-V25~V32-1270 |  | Bathroom Tiles | 4d | 2025-04-10 | 2025-04-14 | B12-V25~V32-1250, B12-V25~V32-1220, B12-V17~V24-1270 | 8d | 0d | Ceramic Walls Kitchen [8]; Ceramic Walls Bathrooms GF [8]; Ceramic Walls Bathrooms FF [8]; Ceramic Tiles Bathrooms GF [8]; Ceramic Tiles Kitchen GF [8]; Ceramic Tiles Store GF [8] | 73,204.08 |  |
| B12-V25~V32-1280 |  | Structure For Gypsum | 6d | 2025-04-15 | 2025-04-21 | B12-V25~V32-1270, B12-V17~V24-1280 | 8d | 0d | Structure For Gypsum GF Rooms [8]; Structure For Gypsum FF Rooms [8]; Structure For Gypsum Bathrooms & Kitchen [8] | 33,550.81 |  |
| B12-V25~V32-1290 |  | Gypsum Board For Room | 4d | 2025-04-22 | 2025-04-26 | B12-V25~V32-1280, B12-V25~V32-1260, B12-V17~V24-1290 | 8d | 0d | Gypsum Board For GF Room [8]; Gypsum Board For FF Room [8] | 35,796.64 |  |
| B12-V25~V32-1300 |  | Installation Of Gypsum Board For Bathroom & Kitchen | 4d | 2025-04-27 | 2025-04-30 | B12-V25~V32-1290, B12-V17~V24-1300 | 8d | 0d | Gypsum Board For Bathrooms & Kitchen [8] | 11,052.24 |  |
| B12-V25~V32-1310 |  | Putty Filler For Gypsm Board Ceiling | 6d | 2025-05-01 | 2025-05-07 | B12-V25~V32-1300, B12-V17~V24-1310 | 8d | 0d | Putty Filler 1st Layer Roof all Rooms [8]; Putty Filler 1st Layer Roof all Bathrooms & Kitchen [8]; Putty Filler1st Layer walls [8] | 62,182.52 |  |
| B12-V25~V32-1320 |  | Fixing Shower Glass | 4d | 2025-05-08 | 2025-05-12 | B12-V25~V32-1310, B12-V17~V24-1320 | 15d | 0d | Shower Glass [8] | 22,372.88 |  |
| B12-V25~V32-1330 |  | Interior Wall Putty Filler | 6d | 2025-05-08 | 2025-05-14 | B12-V25~V32-1310, B12-V25~V32-1240, B12-V17~V24-1330 | 8d | 0d | Putty Filler 2ed Layer Roof & WAlls GF [8]; Putty Filler 2ed Layer Roof & WAlls FF [8] | 62,150.21 |  |
| B12-V25~V32-1340 |  | Installation Of Sanitry Fixture | 6d | 2025-05-13 | 2025-05-19 | B12-V25~V32-1320, B12-V17~V24-1340 | 15d | 0d | Mech Fixtures & Accessories [8] | 98,438.1 |  |
| B12-V25~V32-1350 |  | 1st Face Paint | 5d | 2025-05-15 | 2025-05-20 | B12-V25~V32-1330, B12-V17~V24-1350 | 8d | 0d |  |  |  |
| B12-V25~V32-1360 |  | Installation Of Aluminum Windows | 6d | 2025-05-15 | 2025-05-21 | B12-V25~V32-1330, B12-V17~V24-1360 | 17d | 1d | Aluminum Windows [8] | 84,797.8 |  |
| B12-V25~V32-1370 |  | Installation Of Elec Fixture & Accessories | 6d | 2025-05-15 | 2025-05-21 | B12-V25~V32-1310, B12-V25~V32-1330, B12-V25~V32-1260, B12-V17~V24-1370 | 30d | 1d | Elec Fixtures & Accessories Villa & Yard [8]; Elec Cables GF & FF & Earthing [8] | 53,681.46 |  |
| B12-V25~V32-1380 |  | Installation Of Water Tank-Heater & Pumps | 6d | 2025-05-20 | 2025-05-26 | B12-V25~V32-1340, B12-V17~V24-1380, B12-V25~V32-1220 | 15d | 0d | Water Tank & booster Pump [8]; Lower Pump [8]; Heater [8] | 129,730.28 |  |
| B12-V25~V32-1390 |  | Installation Of Parquet | 4d | 2025-05-21 | 2025-05-25 | B12-V25~V32-1350, B12-V17~V24-1390 | 8d | 0d | Installation Of Parquet [8] | 52,978.96 |  |
| B12-V25~V32-1400 |  | Installation Of Wooden Doors | 6d | 2025-05-26 | 2025-06-01 | B12-V25~V32-1390, B12-V17~V24-1400 | 8d | 0d | Wooden Doors Accessories all Villa [8]; Wooden Doors Kitchen & Bathroom without Accessories [8]; Exterior Wooden Doors [8] | 142,109.01 |  |
| B12-V25~V32-1410 |  | Final Face Paint | 6d | 2025-06-02 | 2025-06-08 | B12-V25~V32-1360, B12-V25~V32-1400, B12-V17~V24-1410 | 8d | 1d | Final Face Paint Villa [8] | 31,090.55 |  |

| ID | WBS | Activity | Duration | Start | Finish | Predecessors | Total float | Free float | Resources | Cost |
| --- | --- | --- | --- | --- | --- | --- | --- | --- | --- | --- |
|  | 3 | **Fence & Courtyard Works** |  | 2025-02-26 | 2025-06-01 |  |  |  |  |  |
| B12-V25~V32-1420 |  | Pouring Bedding Concrete For Fence Fondations | 2d | 2025-02-26 | 2025-02-27 | B12-V25~V32-1120, B12-V17~V24-1420 | 9d | 0d | Excavation Fence Foundations [8] | 4,519.28 |
| B12-V25~V32-1430 |  | RC Concrete For Fence Fondations | 6d | 2025-03-01 | 2025-03-06 | B12-V25~V32-1420, B12-V17~V24-1430 | 9d | 0d | Fence Fondations-Eastern side [8]; Fence Fondations-Westren side [8]; Fence Fondations-Back side [8] | 13,420.32 |
| B12-V25~V32-1440 |  | Steel Fixing & Carpentry For Fence Columns | 6d | 2025-03-08 | 2025-03-13 | B12-V25~V32-1430, B12-V17~V24-1440 | 9d | 0d |  |  |
| B12-V25~V32-1450 |  | Establishing Elec For Fence Columns | 4d | 2025-03-15 | 2025-03-18 | B12-V25~V32-1440, B12-V17~V24-1450 | 9d | 0d |  |  |
| B12-V25~V32-1460 |  | Pouring Concrete For Fence Columns | 1d | 2025-03-19 | 2025-03-19 | B12-V25~V32-1450, B12-V17~V24-1460 | 9d | 0d | Fence Columns-Eastern side [8]; Fence Columns-Westren side [8]; Fence Columns-Back side [8] | 9,665.04 |
| B12-V25~V32-1470 |  | Installation Precast Panel For Fence | 5d | 2025-03-20 | 2025-03-25 | B12-V25~V32-1460, B12-V17~V24-1470 | 9d | 0d | Hollow Core Walls [8] | 71,593.2 |
| B12-V25~V32-1480 |  | Bitumen Coating For Fence Fondations | 4d | 2025-03-26 | 2025-03-30 | B12-V25~V32-1470, B12-V17~V24-1480 | 9d | 0d |  |  |
| B12-V25~V32-1490 |  | Pouring Bedding Concrete For "Front" Fence Fondations | 1d | 2025-03-26 | 2025-03-26 | B12-V25~V32-1470, B12-V17~V24-1490 | 21d | 0d |  |  |
| B12-V25~V32-1500 |  | RC Concrete For "Front" Fence Fondations | 4d | 2025-03-27 | 2025-03-31 | B12-V25~V32-1490, B12-V17~V24-1500 | 21d | 0d | Front Fence Fondations [8] | 8,904.4 |
| B12-V25~V32-1510 |  | Outdoor Drainage & Water Line | 5d | 2025-03-31 | 2025-04-05 | B12-V25~V32-1480, B12-V25~V32-1140, B12-V17~V24-1510 | 9d | 0d | Outdoor Drainage [8]; Outdoor Water Line [8] | 13,423.68 |
| B12-V25~V32-1520 |  | Steel Fixing & Carpentry For "Front" Fence Columns | 4d | 2025-04-01 | 2025-04-05 | B12-V25~V32-1500, B12-V17~V24-1520 | 21d | 0d |  |  |
| B12-V25~V32-1530 |  | Establishing Elec For "Front" Fence Columns | 4d | 2025-04-06 | 2025-04-09 | B12-V25~V32-1520, B12-V17~V24-1530 | 21d | 0d |  |  |
| B12-V25~V32-1540 |  | Establishing Elec For Fence & Yard | 2d | 2025-04-06 | 2025-04-07 | B12-V25~V32-1510, B12-V17~V24-1540 | 9d | 0d | Elec Establishment Fence & Yard [8] | 17,898.32 |
| B12-V25~V32-1550 |  | Backfilling the Yard | 4d | 2025-04-08 | 2025-04-12 | B12-V25~V32-1540, B12-V17~V24-1550 | 9d | 0d | Backfilling the Yard [8] | 10,560 |
| B12-V25~V32-1560 |  | Pouring Concrete Wall Of "Front" Fence Columns | 2d | 2025-04-10 | 2025-04-12 | B12-V25~V32-1530, B12-V17~V24-1560 | 21d | 0d | Front Fence Walls [8] | 17,898.32 |
| B12-V25~V32-1570 |  | Pouring Concrete Crown Of "Front" Fence Columns | 3d | 2025-04-13 | 2025-04-15 | B12-V25~V32-1560, B12-V17~V24-1570 | 21d | 0d | Fence Columns - C Chanel [8] | 3,310.37 |
| B12-V25~V32-1580 |  | Bardoura Works For Yard | 5d | 2025-04-13 | 2025-04-17 | B12-V25~V32-1550, B12-V17~V24-1580 | 9d | 0d | Bardoura Works For Yard [8] | 14,408.16 |
| B12-V25~V32-1590 |  | Pouring Concrete Flower Basin Of "Front" Fence Columns | 4d | 2025-04-16 | 2025-04-20 | B12-V25~V32-1570, B12-V17~V24-1590 | 21d | 0d |  |  |
| B12-V25~V32-1600 |  | Antitermite Treatment For Yard | 1d | 2025-04-19 | 2025-04-19 | B12-V25~V32-1580, B12-V17~V24-1600 | 9d | 0d | Antitermite Treatment For Yard [8] |  |
| B12-V25~V32-1610 |  | Pouring Concrete For Yard | 1d | 2025-04-20 | 2025-04-20 | B12-V25~V32-1600, B12-V17~V24-1610 | 9d | 0d |  |  |
| B12-V25~V32-1620 |  | Block Work For Flower Basin | 5d | 2025-04-21 | 2025-04-26 | B12-V25~V32-1610, B12-V17~V24-1620 | 9d | 0d |  |  |
| B12-V25~V32-1630 |  | Plastering Work For Flower Basin | 4d | 2025-04-27 | 2025-04-30 | B12-V25~V32-1620, B12-V17~V24-1630 | 9d | 0d |  |  |
| B12-V25~V32-1640 |  | Interlock Works For The Yard | 6d | 2025-05-01 | 2025-05-07 | B12-V25~V32-1630, B12-V17~V24-1640 | 9d | 0d | Interlock Works For The Yard [8] | 36,776.32 |
| B12-V25~V32-1650 |  | External Grading Works For The Villa | 4d | 2025-05-08 | 2025-05-12 | B12-V25~V32-1640, B12-V17~V24-1650 | 11d | 0d | External Grading Works For The Villa [8] | 3,221.68 |
| B12-V25~V32-1660 |  | Installation The Exterior Door & Garage Door | 5d | 2025-05-08 | 2025-05-13 | B12-V25~V32-1640, B12-V17~V24-1660 | 14d | 2d | Installation The Exterior Door [8]; Installation The Exterior Garage Door [8] | 40,002.72 |
| B12-V25~V32-1670 |  | Fixing Floor Drain For The Yard | 2d | 2025-05-08 | 2025-05-10 | B12-V25~V32-1640, B12-V17~V24-1670 | 17d | 5d | Floor Drain & Clean Out [8] | 13,423.76 |
| B12-V25~V32-1680 |  | Granite Surronds Around The Villa | 4d | 2025-05-13 | 2025-05-17 | B12-V25~V32-1650, B12-V17~V24-1680 | 11d | 2d | Granite Surronds Around The Villa [8] | 25,818.32 |
| B12-V25~V32-1690 |  | Painting The Base Surface Of The Fence | 2d | 2025-05-13 | 2025-05-14 | B12-V25~V32-1750, B12-V17~V24-1690 | 9d | 0d |  |  |
| B12-V25~V32-1700 |  | Painting The Final Face Of The Fence | 4d | 2025-05-15 | 2025-05-19 | B12-V25~V32-1690, B12-V17~V24-1700 | 9d | 0d | Painting Final Face Of The Fence [8] | 37,586.48 |
| B12-V25~V32-1710 |  | Exterior Painting Of The Villa | 7d | 2025-05-20 | 2025-05-27 | B12-V25~V32-1680, B12-V25~V32-1700, B12-V25~V32-1660, B12-V25~V32-1670, B12-V17~V24-1710 | 9d | 0d | Exterior Painting Of The Villa [8]; Exterior Painting Staircase House [8] | 105,684.16 |
| B12-V25~V32-1720 |  | Installation Elec Fixtures & Accessories For The Yard | 4d | 2025-05-28 | 2025-06-01 | B12-V25~V32-1700, B12-V25~V32-1710, B12-V17~V24-1720 | 30d | 0d | Elec feeding panels GF & FF [8] | 22,372.88 |

| ID | WBS | Activity | Duration | Start | Finish | Predecessors | Total float | Free float | Resources | Cost | Department-1 |
| --- | --- | --- | --- | --- | --- | --- | --- | --- | --- | --- | --- |
|  | 5 | **External Sidewalk Works** |  | 2025-04-21 | 2025-06-05 |  |  |  |  |  |  |
| B12-V25~V32-1730 |  | Connection The Drain To The Piblic Network | 3d | 2025-04-21 | 2025-04-23 | B12-V25~V32-1510, B12-V25~V32-1590, B12-V17~V24-1730 | 21d | 4d | Connection Drain To The Piblic Network [8]; Connection Water To The Piblic Network [8] | 13,420.32 |  |
| B12-V25~V32-1740 |  | Pardora Works For The External Sidewalk | 2d | 2025-05-08 | 2025-05-10 | B12-V25~V32-1640, B12-V25~V32-1730, B12-V17~V24-1740 | 9d | 0d |  |  |  |
| B12-V25~V32-1750 |  | Interlock Works For The Exerrnal Sidewalk | 2d | 2025-05-11 | 2025-05-12 | B12-V25~V32-1740, B12-V17~V24-1750 | 9d | 0d |  |  |  |
| B12-V25~V32-1760 |  | Pulling The Villa's Main Elec Cable | 4d | 2025-06-02 | 2025-06-05 | B12-V25~V32-1750, B12-V25~V32-1720, B12-V17~V24-1760 | 30d | 0d | Elec Work Testing [8] | 22,819.84 |  |
|  | 6 | **Final Testing & Handover** |  | 2025-05-27 | 2025-06-23 |  |  |  |  |  |  |
| B12-V25~V32-1770 |  | Mech Work Testing & Handover | 5d | 2025-05-27 | 2025-06-01 | B12-V25~V32-1730, B12-V25~V32-1340, B12-V25~V32-1380, B12-V17~V24-1770 | 39d | 2d | Mech Work Testing & Handover [8] | 14,318.64 |  |
| B12-V25~V32-1780 |  | Arch Snaglist & Handover | 5d | 2025-06-02 | 2025-06-07 | B12-V25~V32-1750, B12-V25~V32-1710, B12-V25~V32-1400, B12-V17~V24-1780 | 34d | 2d | Arch Snaglist & Handover [8] | 77,320.64 |  |
| B12-V25~V32-1790 |  | ElecWork Testing & Handover | 5d | 2025-06-07 | 2025-06-11 | B12-V25~V32-1760, B12-V25~V32-1370, B12-V17~V24-1790 | 30d | 0d | Elec Work Handover [8] | 23,804.72 |  |
| B12-V25~V32-1800 |  | Final Handover Of The Villa To The Consltant | 5d | 2025-06-12 | 2025-06-17 | B12-V25~V32-1780, B12-V25~V32-1790, B12-V25~V32-1770, B12-V25~V32-1410, B12-V17~V24-1800 | 30d | 0d |  |  |  |
| B12-V25~V32-1810 |  | Customer Delivery | 5d | 2025-06-18 | 2025-06-23 | B12-V25~V32-1800, B12-V17~V24-1810 | 30d | 2d |  |  |  |
|  | 17 | **B13-V01~V08** |  | 2024-11-18 | 2025-07-01 |  |  |  |  |  |  |
|  | 2 | **Under Grond Slap Works** |  | 2024-11-18 | 2024-12-28 |  |  |  |  |  |  |
| B13-V01~V08-1000 |  | Excavation&Compaction of Fondation | 6d | 2024-11-18 | 2024-11-24 | B12-V25~V32-1000 | 51d | 0d | Clearing & Groubbing [8]; Excavation & Leveling [8]; Stone Layer [8]; A3 Layer [8]; A1-a 1st Layer [8]; A1-a 2ed Layer [8] | 163,545.76 | Civil |
| B13-V01~V08-1010 |  | Pouring Concrete For Bedding | 2d | 2024-11-25 | 2024-11-26 | B13-V01~V08-1000, B12-V25~V32-1010 | 51d | 0d | PC Carpentry [8]; PC Concrete [8]; RC 18 MPA [9 M3] | 37,899.68 | Civil |
| B13-V01~V08-1020 |  | Reinforcement Concrete For Foundation | 5d | 2024-11-27 | 2024-12-02 | B13-V01~V08-1010, B12-V25~V32-1020 | 51d | 0d | RC Foundation Carpentry [8]; RC Foundation Steel [8]; RC Foundation Concrete [8] | 201,355.92 | Civil |
| B13-V01~V08-1030 |  | Steel Fixing& Carpenter work for Beams | 4d | 2024-12-03 | 2024-12-07 | B13-V01~V08-1020, B12-V25~V32-1030 | 51d | 0d | RC Grade Beam Carpentry & Steel [8] | 44,745.76 | Civil |
| B13-V01~V08-1040 |  | Mech&Elec Establishment for Beams | 3d | 2024-12-08 | 2024-12-10 | B13-V01~V08-1030, B12-V25~V32-1040 | 51d | 0d |  |  | Mech |
| B13-V01~V08-1050 |  | Pouring Concrete For Beams | 1d | 2024-12-11 | 2024-12-11 | B13-V01~V08-1040, B12-V25~V32-1050 | 51d | 0d | RC Grade Beam Concrete [8] | 77,141.68 | Civil |
| B13-V01~V08-1060 |  | Bitmen Coating For Fondation&Beams | 3d | 2024-12-12 | 2024-12-15 | B13-V01~V08-1050, B12-V25~V32-1060 | 51d | 0d | Bitumen Coating Foundations & Grade Beams [8] | 22,372.32 | Civil |
| B13-V01~V08-1070 |  | Backfilling Inside Fondations | 4d | 2024-12-16 | 2024-12-19 | B13-V01~V08-1060, B12-V25~V32-1070 | 51d | 0d | Backfilling 1st Layer [8]; Backfilling 2ed Layer [8] | 11,186.4 | Civil |
| B13-V01~V08-1080 |  | Mech Works Under Grond Slap | 3d | 2024-12-21 | 2024-12-23 | B13-V01~V08-1070, B12-V25~V32-1080 | 51d | 0d | Mech Establishment Under Ground Slap [8] | 13,423.42 | Mech |
| B13-V01~V08-1090 |  | Steel Fixing& Carpenter work for Ground Slap | 3d | 2024-12-24 | 2024-12-26 | B13-V01~V08-1080, B12-V25~V32-1090 | 51d | 0d | Steel & Carpentry For Ground Slap [8] | 10,246.54 | Civil |
| B13-V01~V08-1100 |  | Anti Termite Treatment For Ground Slap | 1d | 2024-12-28 | 2024-12-28 | B13-V01~V08-1090, B12-V25~V32-1100 | 51d | 0d | Anti Termite Treatment nder Ground Slap [8] | 2,237.28 | Civil |
| B13-V01~V08-1110 |  | Pouring Concrete For Ground Slap | 1d | 2024-12-28 | 2024-12-28 | B13-V01~V08-1100 FF, B13-V01~V08-1090, B12-V25~V32-1110 | 51d | 5d | Concrete For Ground Slap [8] | 58,169.52 | Civil |

| ID | WBS | Activity | Duration | Start | Finish | Predecessors | Total float | Free float | Resources | Cost | Department-1 |
| --- | --- | --- | --- | --- | --- | --- | --- | --- | --- | --- | --- |
|  | 4 | **Precast Works** |  | 2025-02-26 | 2025-03-05 |  |  |  |  |  |  |
| B13-V01~V08-1120 |  | Precast Constrction | 7d | 2025-02-26 | 2025-03-05 | B13-V01~V08-1110, B12-V25~V32-1120 | 0d |  | Precast Walls GF [8]; Hollow Core Slap GF [8]; Precast Stairs & staircase House [8]; Thermal insollation Outside Walls [8]; Concrete structure joints [8]; Precast Walls FF [8]; Hollow Core Slap FF [8] | 1,513,762.87 | Civil |
|  | 1 | **Works Inside The Villa** |  | 2025-03-06 | 2025-06-16 |  |  |  |  |  |  |
| B13-V01~V08-1130 |  | Block Work For GF & Estabishment 1F | 6d | 2025-03-06 | 2025-03-12 | B13-V01~V08-1120, B12-V25~V32-1130 | 7d | 0d | Block GF [8] | 13,647.1 | Arc |
| B13-V01~V08-1140 |  | L.L & H.L Drainage | 6d | 2025-03-13 | 2025-03-19 | B13-V01~V08-1130, B12-V25~V32-1140 | 7d | 0d | HL Drainage [8]; L.L Drainage [8] | 89,489.28 | Mech |
| B13-V01~V08-1150 |  | Elec Establishment For GF & 1F | 3d | 2025-03-13 | 2025-03-16 | B13-V01~V08-1130, B12-V25~V32-1150 | 10d | 3d | Elec Establishment GF [8] | 26,840.73 | Elec |
| B13-V01~V08-1160 |  | Screed Work For 1F & Roof | 6d | 2025-03-20 | 2025-03-26 | B13-V01~V08-1140, B13-V01~V08-1150, B12-V25~V32-1160 | 7d | 0d | Screed 1st Floor [8]; Screed Roof Floor [8]; Leveling Screed 1st Floor [8]; Leveling Screed Roof Floor [8] | 268,467.85 | Civil |
| B13-V01~V08-1170 |  | Water Tank & Heater Foundations | 4d | 2025-03-27 | 2025-03-31 | B13-V01~V08-1160, B12-V25~V32-1170 | 11d | 0d |  |  | Civil |
| B13-V01~V08-1180 |  | Block Works For 1F | 3d | 2025-03-27 | 2025-03-30 | B13-V01~V08-1160, B12-V25~V32-1180 | 7d | 0d | Block FF [8] | 20,537.81 | Arc |
| B13-V01~V08-1190 |  | Water Line Network | 6d | 2025-03-31 | 2025-04-06 | B13-V01~V08-1180, B12-V25~V32-1190 | 7d | 0d | Water Line Network [8] | 40,261.13 | Mech |
| B13-V01~V08-1200 |  | Continue Elec Establishment For GF & 1F | 3d | 2025-03-31 | 2025-04-02 | B13-V01~V08-1180, B12-V25~V32-1200 | 10d | 3d | Elec Establishment FF [8] | 26,840.73 | Elec |
| B13-V01~V08-1210 |  | Thermal Insulation For Roof | 5d | 2025-04-01 | 2025-04-06 | B13-V01~V08-1170, B12-V25~V32-1210 | 11d | 0d | Roof Insulation [8] | 32,530.16 | Arc |
| B13-V01~V08-1220 |  | Roof Floor Tiles | 6d | 2025-04-07 | 2025-04-13 | B13-V01~V08-1210, B12-V25~V32-1220 | 11d | 1d | Roof Tiles [8]; Roof Tiles Joints [8]; Re_Test Roof Insulation [8] | 63,179.38 | Arc |
| B13-V01~V08-1230 |  | Plaster Work For Villa | 6d | 2025-04-07 | 2025-04-13 | B13-V01~V08-1190, B13-V01~V08-1200, B12-V25~V32-1230 | 7d | 0d | Establishing a plastering GF [8]; Establishing a plastering FF [8]; Plastering GF [8]; Plastering FF [8] | 49,263.81 |  |
| B13-V01~V08-1240 |  | Marbale Stairs & Handrails | 6d | 2025-04-14 | 2025-04-20 | B13-V01~V08-1230, B12-V25~V32-1240 | 29d | 1d | Marbale Stairs [8]; Stairs Handrails SS [8] | 91,494.69 |  |
| B13-V01~V08-1250 |  | Water Proofing Of Bathrooms | 4d | 2025-04-14 | 2025-04-17 | B13-V01~V08-1230, B12-V25~V32-1250 | 7d | 0d | Bathrooms InsulationGF & FF [8] | 134.24 |  |
| B13-V01~V08-1260 |  | Pulling The Elec Wires | 4d | 2025-04-14 | 2025-04-17 | B13-V01~V08-1230, B12-V25~V32-1260 | 17d | 3d | Elec Wires GF [8]; Elec Wires FF [8] | 80,542.4 |  |
| B13-V01~V08-1270 |  | Bathroom Tiles | 4d | 2025-04-19 | 2025-04-22 | B13-V01~V08-1250, B13-V01~V08-1220, B12-V25~V32-1270 | 7d | 0d | Ceramic Walls Kitchen [8]; Ceramic Walls Bathrooms GF [8]; Ceramic Walls Bathrooms FF [8]; Ceramic Tiles Bathrooms GF [8]; Ceramic Tiles Kitchen GF [8]; Ceramic Tiles Store GF [8] | 73,204.08 |  |
| B13-V01~V08-1280 |  | Structure For Gypsum | 6d | 2025-04-23 | 2025-04-29 | B13-V01~V08-1270, B12-V25~V32-1280 | 7d | 0d | Structure For Gypsum GF Rooms [8]; Structure For Gypsum FF Rooms [8]; Structure For Gypsum Bathrooms & Kitchen [8] | 33,550.81 |  |
| B13-V01~V08-1290 |  | Gypsum Board For Room | 4d | 2025-04-30 | 2025-05-04 | B13-V01~V08-1280, B13-V01~V08-1260, B12-V25~V32-1290 | 7d | 0d | Gypsum Board For GF Room [8]; Gypsum Board For FF Room [8] | 35,796.64 |  |
| B13-V01~V08-1300 |  | Installation Of Gypsum Board For Bathroom & Kitchen | 4d | 2025-05-05 | 2025-05-08 | B13-V01~V08-1290, B12-V25~V32-1300 | 7d | 0d | Gypsum Board For Bathrooms & Kitchen [8] | 11,052.24 |  |
| B13-V01~V08-1310 |  | Putty Filler For Gypsm Board Ceiling | 6d | 2025-05-10 | 2025-05-15 | B13-V01~V08-1300, B12-V25~V32-1310 | 7d | 0d | Putty Filler 1st Layer Roof all Rooms [8]; Putty Filler 1st Layer Roof all Bathrooms & Kitchen [8]; Putty Filler1st Layer walls [8] | 62,182.52 |  |
| B13-V01~V08-1320 |  | Fixing Shower Glass | 4d | 2025-05-17 | 2025-05-20 | B13-V01~V08-1310, B12-V25~V32-1320 | 14d | 0d | Shower Glass [8] | 22,372.88 |  |
| B13-V01~V08-1330 |  | Interior Wall Putty Filler | 6d | 2025-05-17 | 2025-05-22 | B13-V01~V08-1310, B13-V01~V08-1240, B12-V25~V32-1330 | 7d | 0d | Putty Filler 2ed Layer Roof & WAlls GF [8]; Putty Filler 2ed Layer Roof & WAlls FF [8] | 62,150.21 |  |
| B13-V01~V08-1340 |  | Installation Of Sanitry Fixture | 6d | 2025-05-21 | 2025-05-27 | B13-V01~V08-1320, B12-V25~V32-1340 | 14d | 0d | Mech Fixtures & Accessories [8] | 98,438.1 |  |
| B13-V01~V08-1350 |  | 1st Face Paint | 5d | 2025-05-24 | 2025-05-28 | B13-V01~V08-1330, B12-V25~V32-1350 | 7d | 0d |  |  |  |
| B13-V01~V08-1360 |  | Installation Of Aluminum Windows | 6d | 2025-05-24 | 2025-05-29 | B13-V01~V08-1330, B12-V25~V32-1360 | 16d | 1d | Aluminum Windows [8] | 84,797.8 |  |
| B13-V01~V08-1370 |  | Installation Of Elec Fixture & Accessories | 6d | 2025-05-24 | 2025-05-29 | B13-V01~V08-1310, B13-V01~V08-1330, B13-V01~V08-1260, B12-V25~V32-1370 | 29d | 1d | Elec Fixtures & Accessories Villa & Yard [8]; Elec Cables GF & FF & Earthing [8] | 53,681.46 |  |
| B13-V01~V08-1380 |  | Installation Of Water Tank-Heater & Pumps | 6d | 2025-05-28 | 2025-06-03 | B13-V01~V08-1340, B12-V25~V32-1380, B13-V01~V08-1220 | 14d | 0d | Water Tank & booster Pump [8]; Lower Pump [8]; Heater [8] | 129,730.28 |  |
| B13-V01~V08-1390 |  | Installation Of Parquet | 4d | 2025-05-29 | 2025-06-02 | B13-V01~V08-1350, B12-V25~V32-1390 | 7d | 0d | Installation Of Parquet [8] | 52,978.96 |  |
| B13-V01~V08-1400 |  | Installation Of Wooden Doors | 6d | 2025-06-03 | 2025-06-09 | B13-V01~V08-1390, B12-V25~V32-1400 | 7d | 0d | Wooden Doors Accessories all Villa [8]; Wooden Doors Kitchen & Bathroom without Accessories [8]; Exterior Wooden Doors [8] | 142,109.01 |  |
| B13-V01~V08-1410 |  | Final Face Paint | 6d | 2025-06-10 | 2025-06-16 | B13-V01~V08-1360, B13-V01~V08-1400, B12-V25~V32-1410 | 7d | 1d | Final Face Paint Villa [8] | 31,090.55 |  |

| ID | WBS | Activity | Duration | Start | Finish | Predecessors | Total float | Free float | Resources | Cost |
| --- | --- | --- | --- | --- | --- | --- | --- | --- | --- | --- |
|  | 3 | **Fence & Courtyard Works** |  | 2025-03-06 | 2025-06-09 |  |  |  |  |  |
| B13-V01~V08-1420 |  | Pouring Bedding Concrete For Fence Fondations | 2d | 2025-03-06 | 2025-03-08 | B13-V01~V08-1120, B12-V25~V32-1420 | 9d | 0d | Excavation Fence Foundations [8] | 4,519.28 |
| B13-V01~V08-1430 |  | RC Concrete For Fence Fondations | 6d | 2025-03-09 | 2025-03-15 | B13-V01~V08-1420, B12-V25~V32-1430 | 9d | 0d | Fence Fondations-Eastern side [8]; Fence Fondations-Westren side [8]; Fence Fondations-Back side [8] | 13,420.32 |
| B13-V01~V08-1440 |  | Steel Fixing & Carpentry For Fence Columns | 6d | 2025-03-16 | 2025-03-22 | B13-V01~V08-1430, B12-V25~V32-1440 | 9d | 0d |  |  |
| B13-V01~V08-1450 |  | Establishing Elec For Fence Columns | 4d | 2025-03-23 | 2025-03-26 | B13-V01~V08-1440, B12-V25~V32-1450 | 9d | 0d |  |  |
| B13-V01~V08-1460 |  | Pouring Concrete For Fence Columns | 1d | 2025-03-27 | 2025-03-27 | B13-V01~V08-1450, B12-V25~V32-1460 | 9d | 0d | Fence Columns-Eastern side [8]; Fence Columns-Westren side [8]; Fence Columns-Back side [8] | 9,665.04 |
| B13-V01~V08-1470 |  | Installation Precast Panel For Fence | 5d | 2025-03-29 | 2025-04-02 | B13-V01~V08-1460, B12-V25~V32-1470 | 9d | 0d | Hollow Core Walls [8] | 71,593.2 |
| B13-V01~V08-1480 |  | Bitumen Coating For Fence Fondations | 4d | 2025-04-03 | 2025-04-07 | B13-V01~V08-1470, B12-V25~V32-1480 | 9d | 0d |  |  |
| B13-V01~V08-1490 |  | Pouring Bedding Concrete For "Front" Fence Fondations | 1d | 2025-04-03 | 2025-04-03 | B13-V01~V08-1470, B12-V25~V32-1490 | 21d | 0d |  |  |
| B13-V01~V08-1500 |  | RC Concrete For "Front" Fence Fondations | 4d | 2025-04-05 | 2025-04-08 | B13-V01~V08-1490, B12-V25~V32-1500 | 21d | 0d | Front Fence Fondations [8] | 8,904.4 |
| B13-V01~V08-1510 |  | Outdoor Drainage & Water Line | 5d | 2025-04-08 | 2025-04-13 | B13-V01~V08-1480, B13-V01~V08-1140, B12-V25~V32-1510 | 9d | 0d | Outdoor Drainage [8]; Outdoor Water Line [8] | 13,423.68 |
| B13-V01~V08-1520 |  | Steel Fixing & Carpentry For "Front" Fence Columns | 4d | 2025-04-09 | 2025-04-13 | B13-V01~V08-1500, B12-V25~V32-1520 | 21d | 0d |  |  |
| B13-V01~V08-1530 |  | Establishing Elec For "Front" Fence Columns | 4d | 2025-04-14 | 2025-04-17 | B13-V01~V08-1520, B12-V25~V32-1530 | 21d | 0d |  |  |
| B13-V01~V08-1540 |  | Establishing Elec For Fence & Yard | 2d | 2025-04-14 | 2025-04-15 | B13-V01~V08-1510, B12-V25~V32-1540 | 9d | 0d | Elec Establishment Fence & Yard [8] | 17,898.32 |
| B13-V01~V08-1550 |  | Backfilling the Yard | 4d | 2025-04-16 | 2025-04-20 | B13-V01~V08-1540, B12-V25~V32-1550 | 9d | 0d | Backfilling the Yard [8] | 10,560 |
| B13-V01~V08-1560 |  | Pouring Concrete Wall Of "Front" Fence Columns | 2d | 2025-04-19 | 2025-04-20 | B13-V01~V08-1530, B12-V25~V32-1560 | 21d | 0d | Front Fence Walls [8] | 17,898.32 |
| B13-V01~V08-1570 |  | Pouring Concrete Crown Of "Front" Fence Columns | 3d | 2025-04-21 | 2025-04-23 | B13-V01~V08-1560, B12-V25~V32-1570 | 21d | 0d | Fence Columns - C Chanel [8] | 3,310.37 |
| B13-V01~V08-1580 |  | Bardoura Works For Yard | 5d | 2025-04-21 | 2025-04-26 | B13-V01~V08-1550, B12-V25~V32-1580 | 9d | 0d | Bardoura Works For Yard [8] | 14,408.16 |
| B13-V01~V08-1590 |  | Pouring Concrete Flower Basin Of "Front" Fence Columns | 4d | 2025-04-24 | 2025-04-28 | B13-V01~V08-1570, B12-V25~V32-1590 | 21d | 0d |  |  |
| B13-V01~V08-1600 |  | Antitermite Treatment For Yard | 1d | 2025-04-27 | 2025-04-27 | B13-V01~V08-1580, B12-V25~V32-1600 | 9d | 0d | Antitermite Treatment For Yard [8] |  |
| B13-V01~V08-1610 |  | Pouring Concrete For Yard | 1d | 2025-04-28 | 2025-04-28 | B13-V01~V08-1600, B12-V25~V32-1610 | 9d | 0d |  |  |
| B13-V01~V08-1620 |  | Block Work For Flower Basin | 5d | 2025-04-29 | 2025-05-04 | B13-V01~V08-1610, B12-V25~V32-1620 | 9d | 0d |  |  |
| B13-V01~V08-1630 |  | Plastering Work For Flower Basin | 4d | 2025-05-05 | 2025-05-08 | B13-V01~V08-1620, B12-V25~V32-1630 | 9d | 0d |  |  |
| B13-V01~V08-1640 |  | Interlock Works For The Yard | 6d | 2025-05-10 | 2025-05-15 | B13-V01~V08-1630, B12-V25~V32-1640 | 9d | 0d | Interlock Works For The Yard [8] | 36,776.32 |
| B13-V01~V08-1650 |  | External Grading Works For The Villa | 4d | 2025-05-17 | 2025-05-20 | B13-V01~V08-1640, B12-V25~V32-1650 | 11d | 0d | External Grading Works For The Villa [8] | 3,221.68 |
| B13-V01~V08-1660 |  | Installation The Exterior Door & Garage Door | 5d | 2025-05-17 | 2025-05-21 | B13-V01~V08-1640, B12-V25~V32-1660 | 14d | 2d | Installation The Exterior Door [8]; Installation The Exterior Garage Door [8] | 40,002.72 |
| B13-V01~V08-1670 |  | Fixing Floor Drain For The Yard | 2d | 2025-05-17 | 2025-05-18 | B13-V01~V08-1640, B12-V25~V32-1670 | 17d | 5d | Floor Drain & Clean Out [8] | 13,423.76 |
| B13-V01~V08-1680 |  | Granite Surronds Around The Villa | 4d | 2025-05-21 | 2025-05-25 | B13-V01~V08-1650, B12-V25~V32-1680 | 11d | 2d | Granite Surronds Around The Villa [8] | 25,818.32 |
| B13-V01~V08-1690 |  | Painting The Base Surface Of The Fence | 2d | 2025-05-21 | 2025-05-22 | B13-V01~V08-1750, B12-V25~V32-1690 | 9d | 0d |  |  |
| B13-V01~V08-1700 |  | Painting The Final Face Of The Fence | 4d | 2025-05-24 | 2025-05-27 | B13-V01~V08-1690, B12-V25~V32-1700 | 9d | 0d | Painting Final Face Of The Fence [8] | 37,586.48 |
| B13-V01~V08-1710 |  | Exterior Painting Of The Villa | 7d | 2025-05-28 | 2025-06-04 | B13-V01~V08-1680, B13-V01~V08-1700, B13-V01~V08-1660, B13-V01~V08-1670, B12-V25~V32-1710 | 9d | 0d | Exterior Painting Of The Villa [8]; Exterior Painting Staircase House [8] | 105,684.16 |
| B13-V01~V08-1720 |  | Installation Elec Fixtures & Accessories For The Yard | 4d | 2025-06-05 | 2025-06-09 | B13-V01~V08-1700, B13-V01~V08-1710, B12-V25~V32-1720 | 28d | 0d | Elec feeding panels GF & FF [8] | 22,372.88 |

| ID | WBS | Activity | Duration | Start | Finish | Predecessors | Total float | Free float | Resources | Cost | Department-1 |
| --- | --- | --- | --- | --- | --- | --- | --- | --- | --- | --- | --- |
|  | 5 | **External Sidewalk Works** |  | 2025-04-29 | 2025-06-14 |  |  |  |  |  |  |
| B13-V01~V08-1730 |  | Connection The Drain To The Piblic Network | 3d | 2025-04-29 | 2025-05-01 | B13-V01~V08-1510, B13-V01~V08-1590, B12-V25~V32-1730 | 21d | 4d | Connection Drain To The Piblic Network [8]; Connection Water To The Piblic Network [8] | 13,420.32 |  |
| B13-V01~V08-1740 |  | Pardora Works For The External Sidewalk | 2d | 2025-05-17 | 2025-05-18 | B13-V01~V08-1640, B13-V01~V08-1730, B12-V25~V32-1740 | 9d | 0d |  |  |  |
| B13-V01~V08-1750 |  | Interlock Works For The Exerrnal Sidewalk | 2d | 2025-05-19 | 2025-05-20 | B13-V01~V08-1740, B12-V25~V32-1750 | 9d | 0d |  |  |  |
| B13-V01~V08-1760 |  | Pulling The Villa's Main Elec Cable | 4d | 2025-06-10 | 2025-06-14 | B13-V01~V08-1750, B13-V01~V08-1720, B12-V25~V32-1760 | 28d | 0d | Elec Work Testing [8] | 22,819.84 |  |
|  | 6 | **Final Testing & Handover** |  | 2025-06-04 | 2025-07-01 |  |  |  |  |  |  |
| B13-V01~V08-1770 |  | Mech Work Testing & Handover | 5d | 2025-06-04 | 2025-06-09 | B13-V01~V08-1730, B13-V01~V08-1340, B13-V01~V08-1380, B12-V25~V32-1770 | 37d | 2d | Mech Work Testing & Handover [8] | 14,318.64 |  |
| B13-V01~V08-1780 |  | Arch Snaglist & Handover | 5d | 2025-06-10 | 2025-06-15 | B13-V01~V08-1750, B13-V01~V08-1710, B13-V01~V08-1400, B12-V25~V32-1780 | 32d | 2d | Arch Snaglist & Handover [8] | 77,320.64 |  |
| B13-V01~V08-1790 |  | ElecWork Testing & Handover | 5d | 2025-06-15 | 2025-06-19 | B13-V01~V08-1760, B13-V01~V08-1370, B12-V25~V32-1790 | 28d | 0d | Elec Work Handover [8] | 23,804.72 |  |
| B13-V01~V08-1800 |  | Final Handover Of The Villa To The Consltant | 5d | 2025-06-21 | 2025-06-25 | B13-V01~V08-1780, B13-V01~V08-1790, B13-V01~V08-1770, B13-V01~V08-1410, B12-V25~V32-1800 | 28d | 0d |  |  |  |
| B13-V01~V08-1810 |  | Customer Delivery | 5d | 2025-06-26 | 2025-07-01 | B13-V01~V08-1800, B12-V25~V32-1810 | 28d | 2d |  |  |  |
|  | 18 | **B13-V09~V16** |  | 2024-11-25 | 2025-07-09 |  |  |  |  |  |  |
|  | 2 | **Under Grond Slap Works** |  | 2024-11-25 | 2025-01-04 |  |  |  |  |  |  |
| B13-V09~V16-1000 |  | Excavation&Compaction of Fondation | 6d | 2024-11-25 | 2024-12-01 | B13-V01~V08-1000 | 52d | 0d | Clearing & Groubbing [8]; Excavation & Leveling [8]; Stone Layer [8]; A3 Layer [8]; A1-a 1st Layer [8]; A1-a 2ed Layer [8] | 163,545.76 | Civil |
| B13-V09~V16-1010 |  | Pouring Concrete For Bedding | 2d | 2024-12-02 | 2024-12-03 | B13-V09~V16-1000, B13-V01~V08-1010 | 52d | 0d | PC Carpentry [8]; PC Concrete [8]; RC 18 MPA [9 M3] | 37,899.68 | Civil |
| B13-V09~V16-1020 |  | Reinforcement Concrete For Foundation | 5d | 2024-12-04 | 2024-12-09 | B13-V09~V16-1010, B13-V01~V08-1020 | 52d | 0d | RC Foundation Carpentry [8]; RC Foundation Steel [8]; RC Foundation Concrete [8] | 201,355.92 | Civil |
| B13-V09~V16-1030 |  | Steel Fixing& Carpenter work for Beams | 4d | 2024-12-10 | 2024-12-14 | B13-V09~V16-1020, B13-V01~V08-1030 | 52d | 0d | RC Grade Beam Carpentry & Steel [8] | 44,745.76 | Civil |
| B13-V09~V16-1040 |  | Mech&Elec Establishment for Beams | 3d | 2024-12-15 | 2024-12-17 | B13-V09~V16-1030, B13-V01~V08-1040 | 52d | 0d |  |  | Mech |
| B13-V09~V16-1050 |  | Pouring Concrete For Beams | 1d | 2024-12-18 | 2024-12-18 | B13-V09~V16-1040, B13-V01~V08-1050 | 52d | 0d | RC Grade Beam Concrete [8] | 77,141.68 | Civil |
| B13-V09~V16-1060 |  | Bitmen Coating For Fondation&Beams | 3d | 2024-12-19 | 2024-12-22 | B13-V09~V16-1050, B13-V01~V08-1060 | 52d | 0d | Bitumen Coating Foundations & Grade Beams [8] | 22,372.32 | Civil |
| B13-V09~V16-1070 |  | Backfilling Inside Fondations | 4d | 2024-12-23 | 2024-12-26 | B13-V09~V16-1060, B13-V01~V08-1070 | 52d | 0d | Backfilling 1st Layer [8]; Backfilling 2ed Layer [8] | 11,186.4 | Civil |
| B13-V09~V16-1080 |  | Mech Works Under Grond Slap | 3d | 2024-12-28 | 2024-12-30 | B13-V09~V16-1070, B13-V01~V08-1080 | 52d | 0d | Mech Establishment Under Ground Slap [8] | 13,423.42 | Mech |
| B13-V09~V16-1090 |  | Steel Fixing& Carpenter work for Ground Slap | 3d | 2024-12-31 | 2025-01-02 | B13-V09~V16-1080, B13-V01~V08-1090 | 52d | 0d | Steel & Carpentry For Ground Slap [8] | 10,246.54 | Civil |
| B13-V09~V16-1100 |  | Anti Termite Treatment For Ground Slap | 1d | 2025-01-04 | 2025-01-04 | B13-V09~V16-1090, B13-V01~V08-1100 | 52d | 0d | Anti Termite Treatment nder Ground Slap [8] | 2,237.28 | Civil |
| B13-V09~V16-1110 |  | Pouring Concrete For Ground Slap | 1d | 2025-01-04 | 2025-01-04 | B13-V09~V16-1100 FF, B13-V09~V16-1090, B13-V01~V08-1110 | 52d | 5d | Concrete For Ground Slap [8] | 58,169.52 | Civil |

| ID | WBS | Activity | Duration | Start | Finish | Predecessors | Total float | Free float | Resources | Cost | Department-1 |
| --- | --- | --- | --- | --- | --- | --- | --- | --- | --- | --- | --- |
|  | 4 | **Precast Works** |  | 2025-03-06 | 2025-03-13 |  |  |  |  |  |  |
| B13-V09~V16-1120 |  | Precast Constrction | 7d | 2025-03-06 | 2025-03-13 | B13-V09~V16-1110, B13-V01~V08-1120 | 0d |  | Precast Walls GF [8]; Hollow Core Slap GF [8]; Precast Stairs & staircase House [8]; Thermal insollation Outside Walls [8]; Concrete structure joints [8]; Precast Walls FF [8]; Hollow Core Slap FF [8] | 1,513,762.87 | Civil |
|  | 1 | **Works Inside The Villa** |  | 2025-03-15 | 2025-06-24 |  |  |  |  |  |  |
| B13-V09~V16-1130 |  | Block Work For GF & Estabishment 1F | 6d | 2025-03-15 | 2025-03-20 | B13-V09~V16-1120, B13-V01~V08-1130 | 6d | 0d | Block GF [8] | 13,647.1 | Arc |
| B13-V09~V16-1140 |  | L.L & H.L Drainage | 6d | 2025-03-22 | 2025-03-27 | B13-V09~V16-1130, B13-V01~V08-1140 | 6d | 0d | HL Drainage [8]; L.L Drainage [8] | 89,489.28 | Mech |
| B13-V09~V16-1150 |  | Elec Establishment For GF & 1F | 3d | 2025-03-22 | 2025-03-24 | B13-V09~V16-1130, B13-V01~V08-1150 | 9d | 3d | Elec Establishment GF [8] | 26,840.73 | Elec |
| B13-V09~V16-1160 |  | Screed Work For 1F & Roof | 6d | 2025-03-29 | 2025-04-03 | B13-V09~V16-1140, B13-V09~V16-1150, B13-V01~V08-1160 | 6d | 0d | Screed 1st Floor [8]; Screed Roof Floor [8]; Leveling Screed 1st Floor [8]; Leveling Screed Roof Floor [8] | 268,467.85 | Civil |
| B13-V09~V16-1170 |  | Water Tank & Heater Foundations | 4d | 2025-04-05 | 2025-04-08 | B13-V09~V16-1160, B13-V01~V08-1170 | 10d | 0d |  |  | Civil |
| B13-V09~V16-1180 |  | Block Works For 1F | 3d | 2025-04-05 | 2025-04-07 | B13-V09~V16-1160, B13-V01~V08-1180 | 6d | 0d | Block FF [8] | 20,537.81 | Arc |
| B13-V09~V16-1190 |  | Water Line Network | 6d | 2025-04-08 | 2025-04-14 | B13-V09~V16-1180, B13-V01~V08-1190 | 6d | 0d | Water Line Network [8] | 40,261.13 | Mech |
| B13-V09~V16-1200 |  | Continue Elec Establishment For GF & 1F | 3d | 2025-04-08 | 2025-04-10 | B13-V09~V16-1180, B13-V01~V08-1200 | 9d | 3d | Elec Establishment FF [8] | 26,840.73 | Elec |
| B13-V09~V16-1210 |  | Thermal Insulation For Roof | 5d | 2025-04-09 | 2025-04-14 | B13-V09~V16-1170, B13-V01~V08-1210 | 10d | 0d | Roof Insulation [8] | 32,530.16 | Arc |
| B13-V09~V16-1220 |  | Roof Floor Tiles | 6d | 2025-04-15 | 2025-04-21 | B13-V09~V16-1210, B13-V01~V08-1220 | 10d | 1d | Roof Tiles [8]; Roof Tiles Joints [8]; Re_Test Roof Insulation [8] | 63,179.38 | Arc |
| B13-V09~V16-1230 |  | Plaster Work For Villa | 6d | 2025-04-15 | 2025-04-21 | B13-V09~V16-1190, B13-V09~V16-1200, B13-V01~V08-1230 | 6d | 0d | Establishing a plastering GF [8]; Establishing a plastering FF [8]; Plastering GF [8]; Plastering FF [8] | 49,263.81 |  |
| B13-V09~V16-1240 |  | Marbale Stairs & Handrails | 6d | 2025-04-22 | 2025-04-28 | B13-V09~V16-1230, B13-V01~V08-1240 | 28d | 1d | Marbale Stairs [8]; Stairs Handrails SS [8] | 91,494.69 |  |
| B13-V09~V16-1250 |  | Water Proofing Of Bathrooms | 4d | 2025-04-22 | 2025-04-26 | B13-V09~V16-1230, B13-V01~V08-1250 | 6d | 0d | Bathrooms InsulationGF & FF [8] | 134.24 |  |
| B13-V09~V16-1260 |  | Pulling The Elec Wires | 4d | 2025-04-22 | 2025-04-26 | B13-V09~V16-1230, B13-V01~V08-1260 | 16d | 3d | Elec Wires GF [8]; Elec Wires FF [8] | 80,542.4 |  |
| B13-V09~V16-1270 |  | Bathroom Tiles | 4d | 2025-04-27 | 2025-04-30 | B13-V09~V16-1250, B13-V09~V16-1220, B13-V01~V08-1270 | 6d | 0d | Ceramic Walls Kitchen [8]; Ceramic Walls Bathrooms GF [8]; Ceramic Walls Bathrooms FF [8]; Ceramic Tiles Bathrooms GF [8]; Ceramic Tiles Kitchen GF [8]; Ceramic Tiles Store GF [8] | 73,204.08 |  |
| B13-V09~V16-1280 |  | Structure For Gypsum | 6d | 2025-05-01 | 2025-05-07 | B13-V09~V16-1270, B13-V01~V08-1280 | 6d | 0d | Structure For Gypsum GF Rooms [8]; Structure For Gypsum FF Rooms [8]; Structure For Gypsum Bathrooms & Kitchen [8] | 33,550.81 |  |
| B13-V09~V16-1290 |  | Gypsum Board For Room | 4d | 2025-05-08 | 2025-05-12 | B13-V09~V16-1280, B13-V09~V16-1260, B13-V01~V08-1290 | 6d | 0d | Gypsum Board For GF Room [8]; Gypsum Board For FF Room [8] | 35,796.64 |  |
| B13-V09~V16-1300 |  | Installation Of Gypsum Board For Bathroom & Kitchen | 4d | 2025-05-13 | 2025-05-17 | B13-V09~V16-1290, B13-V01~V08-1300 | 6d | 0d | Gypsum Board For Bathrooms & Kitchen [8] | 11,052.24 |  |
| B13-V09~V16-1310 |  | Putty Filler For Gypsm Board Ceiling | 6d | 2025-05-18 | 2025-05-24 | B13-V09~V16-1300, B13-V01~V08-1310 | 6d | 0d | Putty Filler 1st Layer Roof all Rooms [8]; Putty Filler 1st Layer Roof all Bathrooms & Kitchen [8]; Putty Filler1st Layer walls [8] | 62,182.52 |  |
| B13-V09~V16-1320 |  | Fixing Shower Glass | 4d | 2025-05-25 | 2025-05-28 | B13-V09~V16-1310, B13-V01~V08-1320 | 13d | 0d | Shower Glass [8] | 22,372.88 |  |
| B13-V09~V16-1330 |  | Interior Wall Putty Filler | 6d | 2025-05-25 | 2025-05-31 | B13-V09~V16-1310, B13-V09~V16-1240, B13-V01~V08-1330 | 6d | 0d | Putty Filler 2ed Layer Roof & WAlls GF [8]; Putty Filler 2ed Layer Roof & WAlls FF [8] | 62,150.21 |  |
| B13-V09~V16-1340 |  | Installation Of Sanitry Fixture | 6d | 2025-05-29 | 2025-06-04 | B13-V09~V16-1320, B13-V01~V08-1340 | 13d | 0d | Mech Fixtures & Accessories [8] | 98,438.1 |  |
| B13-V09~V16-1350 |  | 1st Face Paint | 5d | 2025-06-01 | 2025-06-05 | B13-V09~V16-1330, B13-V01~V08-1350 | 6d | 0d |  |  |  |
| B13-V09~V16-1360 |  | Installation Of Aluminum Windows | 6d | 2025-06-01 | 2025-06-07 | B13-V09~V16-1330, B13-V01~V08-1360 | 15d | 1d | Aluminum Windows [8] | 84,797.8 |  |
| B13-V09~V16-1370 |  | Installation Of Elec Fixture & Accessories | 6d | 2025-06-01 | 2025-06-07 | B13-V09~V16-1310, B13-V09~V16-1330, B13-V09~V16-1260, B13-V01~V08-1370 | 28d | 1d | Elec Fixtures & Accessories Villa & Yard [8]; Elec Cables GF & FF & Earthing [8] | 53,681.46 |  |
| B13-V09~V16-1380 |  | Installation Of Water Tank-Heater & Pumps | 6d | 2025-06-05 | 2025-06-11 | B13-V09~V16-1340, B13-V01~V08-1380, B13-V09~V16-1220 | 13d | 0d | Water Tank & booster Pump [8]; Lower Pump [8]; Heater [8] | 129,730.28 |  |
| B13-V09~V16-1390 |  | Installation Of Parquet | 4d | 2025-06-07 | 2025-06-10 | B13-V09~V16-1350, B13-V01~V08-1390 | 6d | 0d | Installation Of Parquet [8] | 52,978.96 |  |
| B13-V09~V16-1400 |  | Installation Of Wooden Doors | 6d | 2025-06-11 | 2025-06-17 | B13-V09~V16-1390, B13-V01~V08-1400 | 6d | 0d | Wooden Doors Accessories all Villa [8]; Wooden Doors Kitchen & Bathroom without Accessories [8]; Exterior Wooden Doors [8] | 142,109.01 |  |
| B13-V09~V16-1410 |  | Final Face Paint | 6d | 2025-06-18 | 2025-06-24 | B13-V09~V16-1360, B13-V09~V16-1400, B13-V01~V08-1410 | 6d | 1d | Final Face Paint Villa [8] | 31,090.55 |  |

| ID | WBS | Activity | Duration | Start | Finish | Predecessors | Total float | Free float | Resources | Cost |
| --- | --- | --- | --- | --- | --- | --- | --- | --- | --- | --- |
|  | 3 | **Fence & Courtyard Works** |  | 2025-03-15 | 2025-06-17 |  |  |  |  |  |
| B13-V09~V16-1420 |  | Pouring Bedding Concrete For Fence Fondations | 2d | 2025-03-15 | 2025-03-16 | B13-V09~V16-1120, B13-V01~V08-1420 | 9d | 0d | Excavation Fence Foundations [8] | 4,519.28 |
| B13-V09~V16-1430 |  | RC Concrete For Fence Fondations | 6d | 2025-03-17 | 2025-03-23 | B13-V09~V16-1420, B13-V01~V08-1430 | 9d | 0d | Fence Fondations-Eastern side [8]; Fence Fondations-Westren side [8]; Fence Fondations-Back side [8] | 13,420.32 |
| B13-V09~V16-1440 |  | Steel Fixing & Carpentry For Fence Columns | 6d | 2025-03-24 | 2025-03-30 | B13-V09~V16-1430, B13-V01~V08-1440 | 9d | 0d |  |  |
| B13-V09~V16-1450 |  | Establishing Elec For Fence Columns | 4d | 2025-03-31 | 2025-04-03 | B13-V09~V16-1440, B13-V01~V08-1450 | 9d | 0d |  |  |
| B13-V09~V16-1460 |  | Pouring Concrete For Fence Columns | 1d | 2025-04-05 | 2025-04-05 | B13-V09~V16-1450, B13-V01~V08-1460 | 9d | 0d | Fence Columns-Eastern side [8]; Fence Columns-Westren side [8]; Fence Columns-Back side [8] | 9,665.04 |
| B13-V09~V16-1470 |  | Installation Precast Panel For Fence | 5d | 2025-04-06 | 2025-04-10 | B13-V09~V16-1460, B13-V01~V08-1470 | 9d | 0d | Hollow Core Walls [8] | 71,593.2 |
| B13-V09~V16-1480 |  | Bitumen Coating For Fence Fondations | 4d | 2025-04-12 | 2025-04-15 | B13-V09~V16-1470, B13-V01~V08-1480 | 9d | 0d |  |  |
| B13-V09~V16-1490 |  | Pouring Bedding Concrete For "Front" Fence Fondations | 1d | 2025-04-12 | 2025-04-12 | B13-V09~V16-1470, B13-V01~V08-1490 | 21d | 0d |  |  |
| B13-V09~V16-1500 |  | RC Concrete For "Front" Fence Fondations | 4d | 2025-04-13 | 2025-04-16 | B13-V09~V16-1490, B13-V01~V08-1500 | 21d | 0d | Front Fence Fondations [8] | 8,904.4 |
| B13-V09~V16-1510 |  | Outdoor Drainage & Water Line | 5d | 2025-04-16 | 2025-04-21 | B13-V09~V16-1480, B13-V09~V16-1140, B13-V01~V08-1510 | 9d | 0d | Outdoor Drainage [8]; Outdoor Water Line [8] | 13,423.68 |
| B13-V09~V16-1520 |  | Steel Fixing & Carpentry For "Front" Fence Columns | 4d | 2025-04-17 | 2025-04-21 | B13-V09~V16-1500, B13-V01~V08-1520 | 21d | 0d |  |  |
| B13-V09~V16-1530 |  | Establishing Elec For "Front" Fence Columns | 4d | 2025-04-22 | 2025-04-26 | B13-V09~V16-1520, B13-V01~V08-1530 | 21d | 0d |  |  |
| B13-V09~V16-1540 |  | Establishing Elec For Fence & Yard | 2d | 2025-04-22 | 2025-04-23 | B13-V09~V16-1510, B13-V01~V08-1540 | 9d | 0d | Elec Establishment Fence & Yard [8] | 17,898.32 |
| B13-V09~V16-1550 |  | Backfilling the Yard | 4d | 2025-04-24 | 2025-04-28 | B13-V09~V16-1540, B13-V01~V08-1550 | 9d | 0d | Backfilling the Yard [8] | 10,560 |
| B13-V09~V16-1560 |  | Pouring Concrete Wall Of "Front" Fence Columns | 2d | 2025-04-27 | 2025-04-28 | B13-V09~V16-1530, B13-V01~V08-1560 | 21d | 0d | Front Fence Walls [8] | 17,898.32 |
| B13-V09~V16-1570 |  | Pouring Concrete Crown Of "Front" Fence Columns | 3d | 2025-04-29 | 2025-05-01 | B13-V09~V16-1560, B13-V01~V08-1570 | 21d | 0d | Fence Columns - C Chanel [8] | 3,310.37 |
| B13-V09~V16-1580 |  | Bardoura Works For Yard | 5d | 2025-04-29 | 2025-05-04 | B13-V09~V16-1550, B13-V01~V08-1580 | 9d | 0d | Bardoura Works For Yard [8] | 14,408.16 |
| B13-V09~V16-1590 |  | Pouring Concrete Flower Basin Of "Front" Fence Columns | 4d | 2025-05-03 | 2025-05-06 | B13-V09~V16-1570, B13-V01~V08-1590 | 21d | 0d |  |  |
| B13-V09~V16-1600 |  | Antitermite Treatment For Yard | 1d | 2025-05-05 | 2025-05-05 | B13-V09~V16-1580, B13-V01~V08-1600 | 9d | 0d | Antitermite Treatment For Yard [8] |  |
| B13-V09~V16-1610 |  | Pouring Concrete For Yard | 1d | 2025-05-06 | 2025-05-06 | B13-V09~V16-1600, B13-V01~V08-1610 | 9d | 0d |  |  |
| B13-V09~V16-1620 |  | Block Work For Flower Basin | 5d | 2025-05-07 | 2025-05-12 | B13-V09~V16-1610, B13-V01~V08-1620 | 9d | 0d |  |  |
| B13-V09~V16-1630 |  | Plastering Work For Flower Basin | 4d | 2025-05-13 | 2025-05-17 | B13-V09~V16-1620, B13-V01~V08-1630 | 9d | 0d |  |  |
| B13-V09~V16-1640 |  | Interlock Works For The Yard | 6d | 2025-05-18 | 2025-05-24 | B13-V09~V16-1630, B13-V01~V08-1640 | 9d | 0d | Interlock Works For The Yard [8] | 36,776.32 |
| B13-V09~V16-1650 |  | External Grading Works For The Villa | 4d | 2025-05-25 | 2025-05-28 | B13-V09~V16-1640, B13-V01~V08-1650 | 11d | 0d | External Grading Works For The Villa [8] | 3,221.68 |
| B13-V09~V16-1660 |  | Installation The Exterior Door & Garage Door | 5d | 2025-05-25 | 2025-05-29 | B13-V09~V16-1640, B13-V01~V08-1660 | 14d | 2d | Installation The Exterior Door [8]; Installation The Exterior Garage Door [8] | 40,002.72 |
| B13-V09~V16-1670 |  | Fixing Floor Drain For The Yard | 2d | 2025-05-25 | 2025-05-26 | B13-V09~V16-1640, B13-V01~V08-1670 | 17d | 5d | Floor Drain & Clean Out [8] | 13,423.76 |
| B13-V09~V16-1680 |  | Granite Surronds Around The Villa | 4d | 2025-05-29 | 2025-06-02 | B13-V09~V16-1650, B13-V01~V08-1680 | 11d | 2d | Granite Surronds Around The Villa [8] | 25,818.32 |
| B13-V09~V16-1690 |  | Painting The Base Surface Of The Fence | 2d | 2025-05-29 | 2025-05-31 | B13-V09~V16-1750, B13-V01~V08-1690 | 9d | 0d |  |  |
| B13-V09~V16-1700 |  | Painting The Final Face Of The Fence | 4d | 2025-06-01 | 2025-06-04 | B13-V09~V16-1690, B13-V01~V08-1700 | 9d | 0d | Painting Final Face Of The Fence [8] | 37,586.48 |
| B13-V09~V16-1710 |  | Exterior Painting Of The Villa | 7d | 2025-06-05 | 2025-06-12 | B13-V09~V16-1680, B13-V09~V16-1700, B13-V09~V16-1660, B13-V09~V16-1670, B13-V01~V08-1710 | 9d | 0d | Exterior Painting Of The Villa [8]; Exterior Painting Staircase House [8] | 105,684.16 |
| B13-V09~V16-1720 |  | Installation Elec Fixtures & Accessories For The Yard | 4d | 2025-06-14 | 2025-06-17 | B13-V09~V16-1700, B13-V09~V16-1710, B13-V01~V08-1720 | 26d | 0d | Elec feeding panels GF & FF [8] | 22,372.88 |

| ID | WBS | Activity | Duration | Start | Finish | Predecessors | Total float | Free float | Resources | Cost | Department-1 |
| --- | --- | --- | --- | --- | --- | --- | --- | --- | --- | --- | --- |
|  | 5 | **External Sidewalk Works** |  | 2025-05-07 | 2025-06-22 |  |  |  |  |  |  |
| B13-V09~V16-1730 |  | Connection The Drain To The Piblic Network | 3d | 2025-05-07 | 2025-05-10 | B13-V09~V16-1510, B13-V09~V16-1590, B13-V01~V08-1730 | 21d | 4d | Connection Drain To The Piblic Network [8]; Connection Water To The Piblic Network [8] | 13,420.32 |  |
| B13-V09~V16-1740 |  | Pardora Works For The External Sidewalk | 2d | 2025-05-25 | 2025-05-26 | B13-V09~V16-1640, B13-V09~V16-1730, B13-V01~V08-1740 | 9d | 0d |  |  |  |
| B13-V09~V16-1750 |  | Interlock Works For The Exerrnal Sidewalk | 2d | 2025-05-27 | 2025-05-28 | B13-V09~V16-1740, B13-V01~V08-1750 | 9d | 0d |  |  |  |
| B13-V09~V16-1760 |  | Pulling The Villa's Main Elec Cable | 4d | 2025-06-18 | 2025-06-22 | B13-V09~V16-1750, B13-V09~V16-1720, B13-V01~V08-1760 | 26d | 0d | Elec Work Testing [8] | 22,819.84 |  |
|  | 6 | **Final Testing & Handover** |  | 2025-06-12 | 2025-07-09 |  |  |  |  |  |  |
| B13-V09~V16-1770 |  | Mech Work Testing & Handover | 5d | 2025-06-12 | 2025-06-17 | B13-V09~V16-1730, B13-V09~V16-1340, B13-V09~V16-1380, B13-V01~V08-1770 | 35d | 2d | Mech Work Testing & Handover [8] | 14,318.64 |  |
| B13-V09~V16-1780 |  | Arch Snaglist & Handover | 5d | 2025-06-18 | 2025-06-23 | B13-V09~V16-1750, B13-V09~V16-1710, B13-V09~V16-1400, B13-V01~V08-1780 | 30d | 2d | Arch Snaglist & Handover [8] | 77,320.64 |  |
| B13-V09~V16-1790 |  | ElecWork Testing & Handover | 5d | 2025-06-23 | 2025-06-28 | B13-V09~V16-1760, B13-V09~V16-1370, B13-V01~V08-1790 | 26d | 0d | Elec Work Handover [8] | 23,804.72 |  |
| B13-V09~V16-1800 |  | Final Handover Of The Villa To The Consltant | 5d | 2025-06-29 | 2025-07-03 | B13-V09~V16-1780, B13-V09~V16-1790, B13-V09~V16-1770, B13-V09~V16-1410, B13-V01~V08-1800 | 26d | 0d |  |  |  |
| B13-V09~V16-1810 |  | Customer Delivery | 5d | 2025-07-05 | 2025-07-09 | B13-V09~V16-1800, B13-V01~V08-1810 | 26d | 2d |  |  |  |
|  | 19 | **B13-V17~V24** |  | 2024-12-02 | 2025-07-17 |  |  |  |  |  |  |
|  | 2 | **Under Grond Slap Works** |  | 2024-12-02 | 2025-01-11 |  |  |  |  |  |  |
| B13-V17~V24-1000 |  | Excavation&Compaction of Fondation | 6d | 2024-12-02 | 2024-12-08 | B13-V09~V16-1000 | 53d | 0d | Clearing & Groubbing [8]; Excavation & Leveling [8]; Stone Layer [8]; A3 Layer [8]; A1-a 1st Layer [8]; A1-a 2ed Layer [8] | 163,545.76 | Civil |
| B13-V17~V24-1010 |  | Pouring Concrete For Bedding | 2d | 2024-12-09 | 2024-12-10 | B13-V17~V24-1000, B13-V09~V16-1010 | 53d | 0d | PC Carpentry [8]; PC Concrete [8]; RC 18 MPA [9 M3] | 37,899.68 | Civil |
| B13-V17~V24-1020 |  | Reinforcement Concrete For Foundation | 5d | 2024-12-11 | 2024-12-16 | B13-V17~V24-1010, B13-V09~V16-1020 | 53d | 0d | RC Foundation Carpentry [8]; RC Foundation Steel [8]; RC Foundation Concrete [8] | 201,355.92 | Civil |
| B13-V17~V24-1030 |  | Steel Fixing& Carpenter work for Beams | 4d | 2024-12-17 | 2024-12-21 | B13-V17~V24-1020, B13-V09~V16-1030 | 53d | 0d | RC Grade Beam Carpentry & Steel [8] | 44,745.76 | Civil |
| B13-V17~V24-1040 |  | Mech&Elec Establishment for Beams | 3d | 2024-12-22 | 2024-12-24 | B13-V17~V24-1030, B13-V09~V16-1040 | 53d | 0d |  |  | Mech |
| B13-V17~V24-1050 |  | Pouring Concrete For Beams | 1d | 2024-12-25 | 2024-12-25 | B13-V17~V24-1040, B13-V09~V16-1050 | 53d | 0d | RC Grade Beam Concrete [8] | 77,141.68 | Civil |
| B13-V17~V24-1060 |  | Bitmen Coating For Fondation&Beams | 3d | 2024-12-26 | 2024-12-29 | B13-V17~V24-1050, B13-V09~V16-1060 | 53d | 0d | Bitumen Coating Foundations & Grade Beams [8] | 22,372.32 | Civil |
| B13-V17~V24-1070 |  | Backfilling Inside Fondations | 4d | 2024-12-30 | 2025-01-02 | B13-V17~V24-1060, B13-V09~V16-1070 | 53d | 0d | Backfilling 1st Layer [8]; Backfilling 2ed Layer [8] | 11,186.4 | Civil |
| B13-V17~V24-1080 |  | Mech Works Under Grond Slap | 3d | 2025-01-04 | 2025-01-06 | B13-V17~V24-1070, B13-V09~V16-1080 | 53d | 0d | Mech Establishment Under Ground Slap [8] | 13,423.42 | Mech |
| B13-V17~V24-1090 |  | Steel Fixing& Carpenter work for Ground Slap | 3d | 2025-01-07 | 2025-01-09 | B13-V17~V24-1080, B13-V09~V16-1090 | 53d | 0d | Steel & Carpentry For Ground Slap [8] | 10,246.54 | Civil |
| B13-V17~V24-1100 |  | Anti Termite Treatment For Ground Slap | 1d | 2025-01-11 | 2025-01-11 | B13-V17~V24-1090, B13-V09~V16-1100 | 53d | 0d | Anti Termite Treatment nder Ground Slap [8] | 2,237.28 | Civil |
| B13-V17~V24-1110 |  | Pouring Concrete For Ground Slap | 1d | 2025-01-11 | 2025-01-11 | B13-V17~V24-1100 FF, B13-V17~V24-1090, B13-V09~V16-1110 | 53d | 5d | Concrete For Ground Slap [8] | 58,169.52 | Civil |

| ID | WBS | Activity | Duration | Start | Finish | Predecessors | Total float | Free float | Resources | Cost | Department-1 |
| --- | --- | --- | --- | --- | --- | --- | --- | --- | --- | --- | --- |
|  | 4 | **Precast Works** |  | 2025-03-15 | 2025-03-22 |  |  |  |  |  |  |
| B13-V17~V24-1120 |  | Precast Constrction | 7d | 2025-03-15 | 2025-03-22 | B13-V17~V24-1110, B13-V09~V16-1120 | 0d |  | Precast Walls GF [8]; Hollow Core Slap GF [8]; Precast Stairs & staircase House [8]; Thermal insollation Outside Walls [8]; Concrete structure joints [8]; Precast Walls FF [8]; Hollow Core Slap FF [8] | 1,513,762.87 | Civil |
|  | 1 | **Works Inside The Villa** |  | 2025-03-23 | 2025-07-02 |  |  |  |  |  |  |
| B13-V17~V24-1130 |  | Block Work For GF & Estabishment 1F | 6d | 2025-03-23 | 2025-03-29 | B13-V17~V24-1120, B13-V09~V16-1130 | 5d | 0d | Block GF [8] | 13,647.1 | Arc |
| B13-V17~V24-1140 |  | L.L & H.L Drainage | 6d | 2025-03-30 | 2025-04-05 | B13-V17~V24-1130, B13-V09~V16-1140 | 5d | 0d | HL Drainage [8]; L.L Drainage [8] | 89,489.28 | Mech |
| B13-V17~V24-1150 |  | Elec Establishment For GF & 1F | 3d | 2025-03-30 | 2025-04-01 | B13-V17~V24-1130, B13-V09~V16-1150 | 8d | 3d | Elec Establishment GF [8] | 26,840.73 | Elec |
| B13-V17~V24-1160 |  | Screed Work For 1F & Roof | 6d | 2025-04-06 | 2025-04-12 | B13-V17~V24-1140, B13-V17~V24-1150, B13-V09~V16-1160 | 5d | 0d | Screed 1st Floor [8]; Screed Roof Floor [8]; Leveling Screed 1st Floor [8]; Leveling Screed Roof Floor [8] | 268,467.85 | Civil |
| B13-V17~V24-1170 |  | Water Tank & Heater Foundations | 4d | 2025-04-13 | 2025-04-16 | B13-V17~V24-1160, B13-V09~V16-1170 | 9d | 0d |  |  | Civil |
| B13-V17~V24-1180 |  | Block Works For 1F | 3d | 2025-04-13 | 2025-04-15 | B13-V17~V24-1160, B13-V09~V16-1180 | 5d | 0d | Block FF [8] | 20,537.81 | Arc |
| B13-V17~V24-1190 |  | Water Line Network | 6d | 2025-04-16 | 2025-04-22 | B13-V17~V24-1180, B13-V09~V16-1190 | 5d | 0d | Water Line Network [8] | 40,261.13 | Mech |
| B13-V17~V24-1200 |  | Continue Elec Establishment For GF & 1F | 3d | 2025-04-16 | 2025-04-19 | B13-V17~V24-1180, B13-V09~V16-1200 | 8d | 3d | Elec Establishment FF [8] | 26,840.73 | Elec |
| B13-V17~V24-1210 |  | Thermal Insulation For Roof | 5d | 2025-04-17 | 2025-04-22 | B13-V17~V24-1170, B13-V09~V16-1210 | 9d | 0d | Roof Insulation [8] | 32,530.16 | Arc |
| B13-V17~V24-1220 |  | Roof Floor Tiles | 6d | 2025-04-23 | 2025-04-29 | B13-V17~V24-1210, B13-V09~V16-1220 | 9d | 1d | Roof Tiles [8]; Roof Tiles Joints [8]; Re_Test Roof Insulation [8] | 63,179.38 | Arc |
| B13-V17~V24-1230 |  | Plaster Work For Villa | 6d | 2025-04-23 | 2025-04-29 | B13-V17~V24-1190, B13-V17~V24-1200, B13-V09~V16-1230 | 5d | 0d | Establishing a plastering GF [8]; Establishing a plastering FF [8]; Plastering GF [8]; Plastering FF [8] | 49,263.81 |  |
| B13-V17~V24-1240 |  | Marbale Stairs & Handrails | 6d | 2025-04-30 | 2025-05-06 | B13-V17~V24-1230, B13-V09~V16-1240 | 27d | 1d | Marbale Stairs [8]; Stairs Handrails SS [8] | 91,494.69 |  |
| B13-V17~V24-1250 |  | Water Proofing Of Bathrooms | 4d | 2025-04-30 | 2025-05-04 | B13-V17~V24-1230, B13-V09~V16-1250 | 5d | 0d | Bathrooms InsulationGF & FF [8] | 134.24 |  |
| B13-V17~V24-1260 |  | Pulling The Elec Wires | 4d | 2025-04-30 | 2025-05-04 | B13-V17~V24-1230, B13-V09~V16-1260 | 15d | 3d | Elec Wires GF [8]; Elec Wires FF [8] | 80,542.4 |  |
| B13-V17~V24-1270 |  | Bathroom Tiles | 4d | 2025-05-05 | 2025-05-08 | B13-V17~V24-1250, B13-V17~V24-1220, B13-V09~V16-1270 | 5d | 0d | Ceramic Walls Kitchen [8]; Ceramic Walls Bathrooms GF [8]; Ceramic Walls Bathrooms FF [8]; Ceramic Tiles Bathrooms GF [8]; Ceramic Tiles Kitchen GF [8]; Ceramic Tiles Store GF [8] | 73,204.08 |  |
| B13-V17~V24-1280 |  | Structure For Gypsum | 6d | 2025-05-10 | 2025-05-15 | B13-V17~V24-1270, B13-V09~V16-1280 | 5d | 0d | Structure For Gypsum GF Rooms [8]; Structure For Gypsum FF Rooms [8]; Structure For Gypsum Bathrooms & Kitchen [8] | 33,550.81 |  |
| B13-V17~V24-1290 |  | Gypsum Board For Room | 4d | 2025-05-17 | 2025-05-20 | B13-V17~V24-1280, B13-V17~V24-1260, B13-V09~V16-1290 | 5d | 0d | Gypsum Board For GF Room [8]; Gypsum Board For FF Room [8] | 35,796.64 |  |
| B13-V17~V24-1300 |  | Installation Of Gypsum Board For Bathroom & Kitchen | 4d | 2025-05-21 | 2025-05-25 | B13-V17~V24-1290, B13-V09~V16-1300 | 5d | 0d | Gypsum Board For Bathrooms & Kitchen [8] | 11,052.24 |  |
| B13-V17~V24-1310 |  | Putty Filler For Gypsm Board Ceiling | 6d | 2025-05-26 | 2025-06-01 | B13-V17~V24-1300, B13-V09~V16-1310 | 5d | 0d | Putty Filler 1st Layer Roof all Rooms [8]; Putty Filler 1st Layer Roof all Bathrooms & Kitchen [8]; Putty Filler1st Layer walls [8] | 62,182.52 |  |
| B13-V17~V24-1320 |  | Fixing Shower Glass | 4d | 2025-06-02 | 2025-06-05 | B13-V17~V24-1310, B13-V09~V16-1320 | 12d | 0d | Shower Glass [8] | 22,372.88 |  |
| B13-V17~V24-1330 |  | Interior Wall Putty Filler | 6d | 2025-06-02 | 2025-06-08 | B13-V17~V24-1310, B13-V17~V24-1240, B13-V09~V16-1330 | 5d | 0d | Putty Filler 2ed Layer Roof & WAlls GF [8]; Putty Filler 2ed Layer Roof & WAlls FF [8] | 62,150.21 |  |
| B13-V17~V24-1340 |  | Installation Of Sanitry Fixture | 6d | 2025-06-07 | 2025-06-12 | B13-V17~V24-1320, B13-V09~V16-1340 | 12d | 0d | Mech Fixtures & Accessories [8] | 98,438.1 |  |
| B13-V17~V24-1350 |  | 1st Face Paint | 5d | 2025-06-09 | 2025-06-14 | B13-V17~V24-1330, B13-V09~V16-1350 | 5d | 0d |  |  |  |
| B13-V17~V24-1360 |  | Installation Of Aluminum Windows | 6d | 2025-06-09 | 2025-06-15 | B13-V17~V24-1330, B13-V09~V16-1360 | 14d | 1d | Aluminum Windows [8] | 84,797.8 |  |
| B13-V17~V24-1370 |  | Installation Of Elec Fixture & Accessories | 6d | 2025-06-09 | 2025-06-15 | B13-V17~V24-1310, B13-V17~V24-1330, B13-V17~V24-1260, B13-V09~V16-1370 | 27d | 1d | Elec Fixtures & Accessories Villa & Yard [8]; Elec Cables GF & FF & Earthing [8] | 53,681.46 |  |
| B13-V17~V24-1380 |  | Installation Of Water Tank-Heater & Pumps | 6d | 2025-06-14 | 2025-06-19 | B13-V17~V24-1340, B13-V09~V16-1380, B13-V17~V24-1220 | 12d | 0d | Water Tank & booster Pump [8]; Lower Pump [8]; Heater [8] | 129,730.28 |  |
| B13-V17~V24-1390 |  | Installation Of Parquet | 4d | 2025-06-15 | 2025-06-18 | B13-V17~V24-1350, B13-V09~V16-1390 | 5d | 0d | Installation Of Parquet [8] | 52,978.96 |  |
| B13-V17~V24-1400 |  | Installation Of Wooden Doors | 6d | 2025-06-19 | 2025-06-25 | B13-V17~V24-1390, B13-V09~V16-1400 | 5d | 0d | Wooden Doors Accessories all Villa [8]; Wooden Doors Kitchen & Bathroom without Accessories [8]; Exterior Wooden Doors [8] | 142,109.01 |  |
| B13-V17~V24-1410 |  | Final Face Paint | 6d | 2025-06-26 | 2025-07-02 | B13-V17~V24-1360, B13-V17~V24-1400, B13-V09~V16-1410 | 5d | 1d | Final Face Paint Villa [8] | 31,090.55 |  |

| ID | WBS | Activity | Duration | Start | Finish | Predecessors | Total float | Free float | Resources | Cost |
| --- | --- | --- | --- | --- | --- | --- | --- | --- | --- | --- |
|  | 3 | **Fence & Courtyard Works** |  | 2025-03-23 | 2025-06-25 |  |  |  |  |  |
| B13-V17~V24-1420 |  | Pouring Bedding Concrete For Fence Fondations | 2d | 2025-03-23 | 2025-03-24 | B13-V17~V24-1120, B13-V09~V16-1420 | 9d | 0d | Excavation Fence Foundations [8] | 4,519.28 |
| B13-V17~V24-1430 |  | RC Concrete For Fence Fondations | 6d | 2025-03-25 | 2025-03-31 | B13-V17~V24-1420, B13-V09~V16-1430 | 9d | 0d | Fence Fondations-Eastern side [8]; Fence Fondations-Westren side [8]; Fence Fondations-Back side [8] | 13,420.32 |
| B13-V17~V24-1440 |  | Steel Fixing & Carpentry For Fence Columns | 6d | 2025-04-01 | 2025-04-07 | B13-V17~V24-1430, B13-V09~V16-1440 | 9d | 0d |  |  |
| B13-V17~V24-1450 |  | Establishing Elec For Fence Columns | 4d | 2025-04-08 | 2025-04-12 | B13-V17~V24-1440, B13-V09~V16-1450 | 9d | 0d |  |  |
| B13-V17~V24-1460 |  | Pouring Concrete For Fence Columns | 1d | 2025-04-13 | 2025-04-13 | B13-V17~V24-1450, B13-V09~V16-1460 | 9d | 0d | Fence Columns-Eastern side [8]; Fence Columns-Westren side [8]; Fence Columns-Back side [8] | 9,665.04 |
| B13-V17~V24-1470 |  | Installation Precast Panel For Fence | 5d | 2025-04-14 | 2025-04-19 | B13-V17~V24-1460, B13-V09~V16-1470 | 9d | 0d | Hollow Core Walls [8] | 71,593.2 |
| B13-V17~V24-1480 |  | Bitumen Coating For Fence Fondations | 4d | 2025-04-20 | 2025-04-23 | B13-V17~V24-1470, B13-V09~V16-1480 | 9d | 0d |  |  |
| B13-V17~V24-1490 |  | Pouring Bedding Concrete For "Front" Fence Fondations | 1d | 2025-04-20 | 2025-04-20 | B13-V17~V24-1470, B13-V09~V16-1490 | 21d | 0d |  |  |
| B13-V17~V24-1500 |  | RC Concrete For "Front" Fence Fondations | 4d | 2025-04-21 | 2025-04-24 | B13-V17~V24-1490, B13-V09~V16-1500 | 21d | 0d | Front Fence Fondations [8] | 8,904.4 |
| B13-V17~V24-1510 |  | Outdoor Drainage & Water Line | 5d | 2025-04-24 | 2025-04-29 | B13-V17~V24-1480, B13-V17~V24-1140, B13-V09~V16-1510 | 9d | 0d | Outdoor Drainage [8]; Outdoor Water Line [8] | 13,423.68 |
| B13-V17~V24-1520 |  | Steel Fixing & Carpentry For "Front" Fence Columns | 4d | 2025-04-26 | 2025-04-29 | B13-V17~V24-1500, B13-V09~V16-1520 | 21d | 0d |  |  |
| B13-V17~V24-1530 |  | Establishing Elec For "Front" Fence Columns | 4d | 2025-04-30 | 2025-05-04 | B13-V17~V24-1520, B13-V09~V16-1530 | 21d | 0d |  |  |
| B13-V17~V24-1540 |  | Establishing Elec For Fence & Yard | 2d | 2025-04-30 | 2025-05-01 | B13-V17~V24-1510, B13-V09~V16-1540 | 9d | 0d | Elec Establishment Fence & Yard [8] | 17,898.32 |
| B13-V17~V24-1550 |  | Backfilling the Yard | 4d | 2025-05-03 | 2025-05-06 | B13-V17~V24-1540, B13-V09~V16-1550 | 9d | 0d | Backfilling the Yard [8] | 10,560 |
| B13-V17~V24-1560 |  | Pouring Concrete Wall Of "Front" Fence Columns | 2d | 2025-05-05 | 2025-05-06 | B13-V17~V24-1530, B13-V09~V16-1560 | 21d | 0d | Front Fence Walls [8] | 17,898.32 |
| B13-V17~V24-1570 |  | Pouring Concrete Crown Of "Front" Fence Columns | 3d | 2025-05-07 | 2025-05-10 | B13-V17~V24-1560, B13-V09~V16-1570 | 21d | 0d | Fence Columns - C Chanel [8] | 3,310.37 |
| B13-V17~V24-1580 |  | Bardoura Works For Yard | 5d | 2025-05-07 | 2025-05-12 | B13-V17~V24-1550, B13-V09~V16-1580 | 9d | 0d | Bardoura Works For Yard [8] | 14,408.16 |
| B13-V17~V24-1590 |  | Pouring Concrete Flower Basin Of "Front" Fence Columns | 4d | 2025-05-11 | 2025-05-14 | B13-V17~V24-1570, B13-V09~V16-1590 | 21d | 0d |  |  |
| B13-V17~V24-1600 |  | Antitermite Treatment For Yard | 1d | 2025-05-13 | 2025-05-13 | B13-V17~V24-1580, B13-V09~V16-1600 | 9d | 0d | Antitermite Treatment For Yard [8] |  |
| B13-V17~V24-1610 |  | Pouring Concrete For Yard | 1d | 2025-05-14 | 2025-05-14 | B13-V17~V24-1600, B13-V09~V16-1610 | 9d | 0d |  |  |
| B13-V17~V24-1620 |  | Block Work For Flower Basin | 5d | 2025-05-15 | 2025-05-20 | B13-V17~V24-1610, B13-V09~V16-1620 | 9d | 0d |  |  |
| B13-V17~V24-1630 |  | Plastering Work For Flower Basin | 4d | 2025-05-21 | 2025-05-25 | B13-V17~V24-1620, B13-V09~V16-1630 | 9d | 0d |  |  |
| B13-V17~V24-1640 |  | Interlock Works For The Yard | 6d | 2025-05-26 | 2025-06-01 | B13-V17~V24-1630, B13-V09~V16-1640 | 9d | 0d | Interlock Works For The Yard [8] | 36,776.32 |
| B13-V17~V24-1650 |  | External Grading Works For The Villa | 4d | 2025-06-02 | 2025-06-05 | B13-V17~V24-1640, B13-V09~V16-1650 | 11d | 0d | External Grading Works For The Villa [8] | 3,221.68 |
| B13-V17~V24-1660 |  | Installation The Exterior Door & Garage Door | 5d | 2025-06-02 | 2025-06-07 | B13-V17~V24-1640, B13-V09~V16-1660 | 14d | 2d | Installation The Exterior Door [8]; Installation The Exterior Garage Door [8] | 40,002.72 |
| B13-V17~V24-1670 |  | Fixing Floor Drain For The Yard | 2d | 2025-06-02 | 2025-06-03 | B13-V17~V24-1640, B13-V09~V16-1670 | 17d | 5d | Floor Drain & Clean Out [8] | 13,423.76 |
| B13-V17~V24-1680 |  | Granite Surronds Around The Villa | 4d | 2025-06-07 | 2025-06-10 | B13-V17~V24-1650, B13-V09~V16-1680 | 11d | 2d | Granite Surronds Around The Villa [8] | 25,818.32 |
| B13-V17~V24-1690 |  | Painting The Base Surface Of The Fence | 2d | 2025-06-07 | 2025-06-08 | B13-V17~V24-1750, B13-V09~V16-1690 | 9d | 0d |  |  |
| B13-V17~V24-1700 |  | Painting The Final Face Of The Fence | 4d | 2025-06-09 | 2025-06-12 | B13-V17~V24-1690, B13-V09~V16-1700 | 9d | 0d | Painting Final Face Of The Fence [8] | 37,586.48 |
| B13-V17~V24-1710 |  | Exterior Painting Of The Villa | 7d | 2025-06-14 | 2025-06-21 | B13-V17~V24-1680, B13-V17~V24-1700, B13-V17~V24-1660, B13-V17~V24-1670, B13-V09~V16-1710 | 9d | 0d | Exterior Painting Of The Villa [8]; Exterior Painting Staircase House [8] | 105,684.16 |
| B13-V17~V24-1720 |  | Installation Elec Fixtures & Accessories For The Yard | 4d | 2025-06-22 | 2025-06-25 | B13-V17~V24-1700, B13-V17~V24-1710, B13-V09~V16-1720 | 24d | 0d | Elec feeding panels GF & FF [8] | 22,372.88 |

| ID | WBS | Activity | Duration | Start | Finish | Predecessors | Total float | Free float | Resources | Cost | Department-1 |
| --- | --- | --- | --- | --- | --- | --- | --- | --- | --- | --- | --- |
|  | 5 | **External Sidewalk Works** |  | 2025-05-15 | 2025-06-30 |  |  |  |  |  |  |
| B13-V17~V24-1730 |  | Connection The Drain To The Piblic Network | 3d | 2025-05-15 | 2025-05-18 | B13-V17~V24-1510, B13-V17~V24-1590, B13-V09~V16-1730 | 21d | 4d | Connection Drain To The Piblic Network [8]; Connection Water To The Piblic Network [8] | 13,420.32 |  |
| B13-V17~V24-1740 |  | Pardora Works For The External Sidewalk | 2d | 2025-06-02 | 2025-06-03 | B13-V17~V24-1640, B13-V17~V24-1730, B13-V09~V16-1740 | 9d | 0d |  |  |  |
| B13-V17~V24-1750 |  | Interlock Works For The Exerrnal Sidewalk | 2d | 2025-06-04 | 2025-06-05 | B13-V17~V24-1740, B13-V09~V16-1750 | 9d | 0d |  |  |  |
| B13-V17~V24-1760 |  | Pulling The Villa's Main Elec Cable | 4d | 2025-06-26 | 2025-06-30 | B13-V17~V24-1750, B13-V17~V24-1720, B13-V09~V16-1760 | 24d | 0d | Elec Work Testing [8] | 22,819.84 |  |
|  | 6 | **Final Testing & Handover** |  | 2025-06-21 | 2025-07-17 |  |  |  |  |  |  |
| B13-V17~V24-1770 |  | Mech Work Testing & Handover | 5d | 2025-06-21 | 2025-06-25 | B13-V17~V24-1730, B13-V17~V24-1340, B13-V17~V24-1380, B13-V09~V16-1770 | 33d | 2d | Mech Work Testing & Handover [8] | 14,318.64 |  |
| B13-V17~V24-1780 |  | Arch Snaglist & Handover | 5d | 2025-06-26 | 2025-07-01 | B13-V17~V24-1750, B13-V17~V24-1710, B13-V17~V24-1400, B13-V09~V16-1780 | 28d | 2d | Arch Snaglist & Handover [8] | 77,320.64 |  |
| B13-V17~V24-1790 |  | ElecWork Testing & Handover | 5d | 2025-07-01 | 2025-07-06 | B13-V17~V24-1760, B13-V17~V24-1370, B13-V09~V16-1790 | 24d | 0d | Elec Work Handover [8] | 23,804.72 |  |
| B13-V17~V24-1800 |  | Final Handover Of The Villa To The Consltant | 5d | 2025-07-07 | 2025-07-12 | B13-V17~V24-1780, B13-V17~V24-1790, B13-V17~V24-1770, B13-V17~V24-1410, B13-V09~V16-1800 | 24d | 0d |  |  |  |
| B13-V17~V24-1810 |  | Customer Delivery | 5d | 2025-07-13 | 2025-07-17 | B13-V17~V24-1800, B13-V09~V16-1810 | 24d | 2d |  |  |  |
|  | 20 | **B13-V25~V32** |  | 2024-12-09 | 2025-07-26 |  |  |  |  |  |  |
|  | 2 | **Under Grond Slap Works** |  | 2024-12-09 | 2025-01-18 |  |  |  |  |  |  |
| B13-V25~V32-1000 |  | Excavation&Compaction of Fondation | 6d | 2024-12-09 | 2024-12-15 | B13-V17~V24-1000 | 54d | 0d | Clearing & Groubbing [8]; Excavation & Leveling [8]; Stone Layer [8]; A3 Layer [8]; A1-a 1st Layer [8]; A1-a 2ed Layer [8] | 163,545.76 | Civil |
| B13-V25~V32-1010 |  | Pouring Concrete For Bedding | 2d | 2024-12-16 | 2024-12-17 | B13-V25~V32-1000, B13-V17~V24-1010 | 54d | 0d | PC Carpentry [8]; PC Concrete [8]; RC 18 MPA [9 M3] | 37,899.68 | Civil |
| B13-V25~V32-1020 |  | Reinforcement Concrete For Foundation | 5d | 2024-12-18 | 2024-12-23 | B13-V25~V32-1010, B13-V17~V24-1020 | 54d | 0d | RC Foundation Carpentry [8]; RC Foundation Steel [8]; RC Foundation Concrete [8] | 201,355.92 | Civil |
| B13-V25~V32-1030 |  | Steel Fixing& Carpenter work for Beams | 4d | 2024-12-24 | 2024-12-28 | B13-V25~V32-1020, B13-V17~V24-1030 | 54d | 0d | RC Grade Beam Carpentry & Steel [8] | 44,745.76 | Civil |
| B13-V25~V32-1040 |  | Mech&Elec Establishment for Beams | 3d | 2024-12-29 | 2024-12-31 | B13-V25~V32-1030, B13-V17~V24-1040 | 54d | 0d |  |  | Mech |
| B13-V25~V32-1050 |  | Pouring Concrete For Beams | 1d | 2025-01-01 | 2025-01-01 | B13-V25~V32-1040, B13-V17~V24-1050 | 54d | 0d | RC Grade Beam Concrete [8] | 77,141.68 | Civil |
| B13-V25~V32-1060 |  | Bitmen Coating For Fondation&Beams | 3d | 2025-01-02 | 2025-01-05 | B13-V25~V32-1050, B13-V17~V24-1060 | 54d | 0d | Bitumen Coating Foundations & Grade Beams [8] | 22,372.32 | Civil |
| B13-V25~V32-1070 |  | Backfilling Inside Fondations | 4d | 2025-01-06 | 2025-01-09 | B13-V25~V32-1060, B13-V17~V24-1070 | 54d | 0d | Backfilling 1st Layer [8]; Backfilling 2ed Layer [8] | 11,186.4 | Civil |
| B13-V25~V32-1080 |  | Mech Works Under Grond Slap | 3d | 2025-01-11 | 2025-01-13 | B13-V25~V32-1070, B13-V17~V24-1080 | 54d | 0d | Mech Establishment Under Ground Slap [8] | 13,423.42 | Mech |
| B13-V25~V32-1090 |  | Steel Fixing& Carpenter work for Ground Slap | 3d | 2025-01-14 | 2025-01-16 | B13-V25~V32-1080, B13-V17~V24-1090 | 54d | 0d | Steel & Carpentry For Ground Slap [8] | 10,246.54 | Civil |
| B13-V25~V32-1100 |  | Anti Termite Treatment For Ground Slap | 1d | 2025-01-18 | 2025-01-18 | B13-V25~V32-1090, B13-V17~V24-1100 | 54d | 0d | Anti Termite Treatment nder Ground Slap [8] | 2,237.28 | Civil |
| B13-V25~V32-1110 |  | Pouring Concrete For Ground Slap | 1d | 2025-01-18 | 2025-01-18 | B13-V25~V32-1100 FF, B13-V25~V32-1090, B13-V17~V24-1110 | 54d | 5d | Concrete For Ground Slap [8] | 58,169.52 | Civil |

| ID | WBS | Activity | Duration | Start | Finish | Predecessors | Total float | Free float | Resources | Cost | Department-1 |
| --- | --- | --- | --- | --- | --- | --- | --- | --- | --- | --- | --- |
|  | 4 | **Precast Works** |  | 2025-03-23 | 2025-03-30 |  |  |  |  |  |  |
| B13-V25~V32-1120 |  | Precast Constrction | 7d | 2025-03-23 | 2025-03-30 | B13-V25~V32-1110, B13-V17~V24-1120 | 0d |  | Precast Walls GF [8]; Hollow Core Slap GF [8]; Precast Stairs & staircase House [8]; Thermal insollation Outside Walls [8]; Concrete structure joints [8]; Precast Walls FF [8]; Hollow Core Slap FF [8] | 1,513,762.87 | Civil |
|  | 1 | **Works Inside The Villa** |  | 2025-03-31 | 2025-07-10 |  |  |  |  |  |  |
| B13-V25~V32-1130 |  | Block Work For GF & Estabishment 1F | 6d | 2025-03-31 | 2025-04-06 | B13-V25~V32-1120, B13-V17~V24-1130 | 4d | 0d | Block GF [8] | 13,647.1 | Arc |
| B13-V25~V32-1140 |  | L.L & H.L Drainage | 6d | 2025-04-07 | 2025-04-13 | B13-V25~V32-1130, B13-V17~V24-1140 | 4d | 0d | HL Drainage [8]; L.L Drainage [8] | 89,489.28 | Mech |
| B13-V25~V32-1150 |  | Elec Establishment For GF & 1F | 3d | 2025-04-07 | 2025-04-09 | B13-V25~V32-1130, B13-V17~V24-1150 | 7d | 3d | Elec Establishment GF [8] | 26,840.73 | Elec |
| B13-V25~V32-1160 |  | Screed Work For 1F & Roof | 6d | 2025-04-14 | 2025-04-20 | B13-V25~V32-1140, B13-V25~V32-1150, B13-V17~V24-1160 | 4d | 0d | Screed 1st Floor [8]; Screed Roof Floor [8]; Leveling Screed 1st Floor [8]; Leveling Screed Roof Floor [8] | 268,467.85 | Civil |
| B13-V25~V32-1170 |  | Water Tank & Heater Foundations | 4d | 2025-04-21 | 2025-04-24 | B13-V25~V32-1160, B13-V17~V24-1170 | 8d | 0d |  |  | Civil |
| B13-V25~V32-1180 |  | Block Works For 1F | 3d | 2025-04-21 | 2025-04-23 | B13-V25~V32-1160, B13-V17~V24-1180 | 4d | 0d | Block FF [8] | 20,537.81 | Arc |
| B13-V25~V32-1190 |  | Water Line Network | 6d | 2025-04-24 | 2025-04-30 | B13-V25~V32-1180, B13-V17~V24-1190 | 4d | 0d | Water Line Network [8] | 40,261.13 | Mech |
| B13-V25~V32-1200 |  | Continue Elec Establishment For GF & 1F | 3d | 2025-04-24 | 2025-04-27 | B13-V25~V32-1180, B13-V17~V24-1200 | 7d | 3d | Elec Establishment FF [8] | 26,840.73 | Elec |
| B13-V25~V32-1210 |  | Thermal Insulation For Roof | 5d | 2025-04-26 | 2025-04-30 | B13-V25~V32-1170, B13-V17~V24-1210 | 8d | 0d | Roof Insulation [8] | 32,530.16 | Arc |
| B13-V25~V32-1220 |  | Roof Floor Tiles | 6d | 2025-05-01 | 2025-05-07 | B13-V25~V32-1210, B13-V17~V24-1220 | 8d | 1d | Roof Tiles [8]; Roof Tiles Joints [8]; Re_Test Roof Insulation [8] | 63,179.38 | Arc |
| B13-V25~V32-1230 |  | Plaster Work For Villa | 6d | 2025-05-01 | 2025-05-07 | B13-V25~V32-1190, B13-V25~V32-1200, B13-V17~V24-1230 | 4d | 0d | Establishing a plastering GF [8]; Establishing a plastering FF [8]; Plastering GF [8]; Plastering FF [8] | 49,263.81 |  |
| B13-V25~V32-1240 |  | Marbale Stairs & Handrails | 6d | 2025-05-08 | 2025-05-14 | B13-V25~V32-1230, B13-V17~V24-1240 | 26d | 1d | Marbale Stairs [8]; Stairs Handrails SS [8] | 91,494.69 |  |
| B13-V25~V32-1250 |  | Water Proofing Of Bathrooms | 4d | 2025-05-08 | 2025-05-12 | B13-V25~V32-1230, B13-V17~V24-1250 | 4d | 0d | Bathrooms InsulationGF & FF [8] | 134.24 |  |
| B13-V25~V32-1260 |  | Pulling The Elec Wires | 4d | 2025-05-08 | 2025-05-12 | B13-V25~V32-1230, B13-V17~V24-1260 | 14d | 3d | Elec Wires GF [8]; Elec Wires FF [8] | 80,542.4 |  |
| B13-V25~V32-1270 |  | Bathroom Tiles | 4d | 2025-05-13 | 2025-05-17 | B13-V25~V32-1250, B13-V25~V32-1220, B13-V17~V24-1270 | 4d | 0d | Ceramic Walls Kitchen [8]; Ceramic Walls Bathrooms GF [8]; Ceramic Walls Bathrooms FF [8]; Ceramic Tiles Bathrooms GF [8]; Ceramic Tiles Kitchen GF [8]; Ceramic Tiles Store GF [8] | 73,204.08 |  |
| B13-V25~V32-1280 |  | Structure For Gypsum | 6d | 2025-05-18 | 2025-05-24 | B13-V25~V32-1270, B13-V17~V24-1280 | 4d | 0d | Structure For Gypsum GF Rooms [8]; Structure For Gypsum FF Rooms [8]; Structure For Gypsum Bathrooms & Kitchen [8] | 33,550.81 |  |
| B13-V25~V32-1290 |  | Gypsum Board For Room | 4d | 2025-05-25 | 2025-05-28 | B13-V25~V32-1280, B13-V25~V32-1260, B13-V17~V24-1290 | 4d | 0d | Gypsum Board For GF Room [8]; Gypsum Board For FF Room [8] | 35,796.64 |  |
| B13-V25~V32-1300 |  | Installation Of Gypsum Board For Bathroom & Kitchen | 4d | 2025-05-29 | 2025-06-02 | B13-V25~V32-1290, B13-V17~V24-1300 | 4d | 0d | Gypsum Board For Bathrooms & Kitchen [8] | 11,052.24 |  |
| B13-V25~V32-1310 |  | Putty Filler For Gypsm Board Ceiling | 6d | 2025-06-03 | 2025-06-09 | B13-V25~V32-1300, B13-V17~V24-1310 | 4d | 0d | Putty Filler 1st Layer Roof all Rooms [8]; Putty Filler 1st Layer Roof all Bathrooms & Kitchen [8]; Putty Filler1st Layer walls [8] | 62,182.52 |  |
| B13-V25~V32-1320 |  | Fixing Shower Glass | 4d | 2025-06-10 | 2025-06-14 | B13-V25~V32-1310, B13-V17~V24-1320 | 11d | 0d | Shower Glass [8] | 22,372.88 |  |
| B13-V25~V32-1330 |  | Interior Wall Putty Filler | 6d | 2025-06-10 | 2025-06-16 | B13-V25~V32-1310, B13-V25~V32-1240, B13-V17~V24-1330 | 4d | 0d | Putty Filler 2ed Layer Roof & WAlls GF [8]; Putty Filler 2ed Layer Roof & WAlls FF [8] | 62,150.21 |  |
| B13-V25~V32-1340 |  | Installation Of Sanitry Fixture | 6d | 2025-06-15 | 2025-06-21 | B13-V25~V32-1320, B13-V17~V24-1340 | 11d | 0d | Mech Fixtures & Accessories [8] | 98,438.1 |  |
| B13-V25~V32-1350 |  | 1st Face Paint | 5d | 2025-06-17 | 2025-06-22 | B13-V25~V32-1330, B13-V17~V24-1350 | 4d | 0d |  |  |  |
| B13-V25~V32-1360 |  | Installation Of Aluminum Windows | 6d | 2025-06-17 | 2025-06-23 | B13-V25~V32-1330, B13-V17~V24-1360 | 13d | 1d | Aluminum Windows [8] | 84,797.8 |  |
| B13-V25~V32-1370 |  | Installation Of Elec Fixture & Accessories | 6d | 2025-06-17 | 2025-06-23 | B13-V25~V32-1310, B13-V25~V32-1330, B13-V25~V32-1260, B13-V17~V24-1370 | 26d | 1d | Elec Fixtures & Accessories Villa & Yard [8]; Elec Cables GF & FF & Earthing [8] | 53,681.46 |  |
| B13-V25~V32-1380 |  | Installation Of Water Tank-Heater & Pumps | 6d | 2025-06-22 | 2025-06-28 | B13-V25~V32-1340, B13-V17~V24-1380, B13-V25~V32-1220 | 11d | 0d | Water Tank & booster Pump [8]; Lower Pump [8]; Heater [8] | 129,730.28 |  |
| B13-V25~V32-1390 |  | Installation Of Parquet | 4d | 2025-06-23 | 2025-06-26 | B13-V25~V32-1350, B13-V17~V24-1390 | 4d | 0d | Installation Of Parquet [8] | 52,978.96 |  |
| B13-V25~V32-1400 |  | Installation Of Wooden Doors | 6d | 2025-06-28 | 2025-07-03 | B13-V25~V32-1390, B13-V17~V24-1400 | 4d | 0d | Wooden Doors Accessories all Villa [8]; Wooden Doors Kitchen & Bathroom without Accessories [8]; Exterior Wooden Doors [8] | 142,109.01 |  |
| B13-V25~V32-1410 |  | Final Face Paint | 6d | 2025-07-05 | 2025-07-10 | B13-V25~V32-1360, B13-V25~V32-1400, B13-V17~V24-1410 | 4d | 1d | Final Face Paint Villa [8] | 31,090.55 |  |

| ID | WBS | Activity | Duration | Start | Finish | Predecessors | Total float | Free float | Resources | Cost |
| --- | --- | --- | --- | --- | --- | --- | --- | --- | --- | --- |
|  | 3 | **Fence & Courtyard Works** |  | 2025-03-31 | 2025-07-03 |  |  |  |  |  |
| B13-V25~V32-1420 |  | Pouring Bedding Concrete For Fence Fondations | 2d | 2025-03-31 | 2025-04-01 | B13-V25~V32-1120, B13-V17~V24-1420 | 9d | 0d | Excavation Fence Foundations [8] | 4,519.28 |
| B13-V25~V32-1430 |  | RC Concrete For Fence Fondations | 6d | 2025-04-02 | 2025-04-08 | B13-V25~V32-1420, B13-V17~V24-1430 | 9d | 0d | Fence Fondations-Eastern side [8]; Fence Fondations-Westren side [8]; Fence Fondations-Back side [8] | 13,420.32 |
| B13-V25~V32-1440 |  | Steel Fixing & Carpentry For Fence Columns | 6d | 2025-04-09 | 2025-04-15 | B13-V25~V32-1430, B13-V17~V24-1440 | 9d | 0d |  |  |
| B13-V25~V32-1450 |  | Establishing Elec For Fence Columns | 4d | 2025-04-16 | 2025-04-20 | B13-V25~V32-1440, B13-V17~V24-1450 | 9d | 0d |  |  |
| B13-V25~V32-1460 |  | Pouring Concrete For Fence Columns | 1d | 2025-04-21 | 2025-04-21 | B13-V25~V32-1450, B13-V17~V24-1460 | 9d | 0d | Fence Columns-Eastern side [8]; Fence Columns-Westren side [8]; Fence Columns-Back side [8] | 9,665.04 |
| B13-V25~V32-1470 |  | Installation Precast Panel For Fence | 5d | 2025-04-22 | 2025-04-27 | B13-V25~V32-1460, B13-V17~V24-1470 | 9d | 0d | Hollow Core Walls [8] | 71,593.2 |
| B13-V25~V32-1480 |  | Bitumen Coating For Fence Fondations | 4d | 2025-04-28 | 2025-05-01 | B13-V25~V32-1470, B13-V17~V24-1480 | 9d | 0d |  |  |
| B13-V25~V32-1490 |  | Pouring Bedding Concrete For "Front" Fence Fondations | 1d | 2025-04-28 | 2025-04-28 | B13-V25~V32-1470, B13-V17~V24-1490 | 21d | 0d |  |  |
| B13-V25~V32-1500 |  | RC Concrete For "Front" Fence Fondations | 4d | 2025-04-29 | 2025-05-03 | B13-V25~V32-1490, B13-V17~V24-1500 | 21d | 0d | Front Fence Fondations [8] | 8,904.4 |
| B13-V25~V32-1510 |  | Outdoor Drainage & Water Line | 5d | 2025-05-03 | 2025-05-07 | B13-V25~V32-1480, B13-V25~V32-1140, B13-V17~V24-1510 | 9d | 0d | Outdoor Drainage [8]; Outdoor Water Line [8] | 13,423.68 |
| B13-V25~V32-1520 |  | Steel Fixing & Carpentry For "Front" Fence Columns | 4d | 2025-05-04 | 2025-05-07 | B13-V25~V32-1500, B13-V17~V24-1520 | 21d | 0d |  |  |
| B13-V25~V32-1530 |  | Establishing Elec For "Front" Fence Columns | 4d | 2025-05-08 | 2025-05-12 | B13-V25~V32-1520, B13-V17~V24-1530 | 21d | 0d |  |  |
| B13-V25~V32-1540 |  | Establishing Elec For Fence & Yard | 2d | 2025-05-08 | 2025-05-10 | B13-V25~V32-1510, B13-V17~V24-1540 | 9d | 0d | Elec Establishment Fence & Yard [8] | 17,898.32 |
| B13-V25~V32-1550 |  | Backfilling the Yard | 4d | 2025-05-11 | 2025-05-14 | B13-V25~V32-1540, B13-V17~V24-1550 | 9d | 0d | Backfilling the Yard [8] | 10,560 |
| B13-V25~V32-1560 |  | Pouring Concrete Wall Of "Front" Fence Columns | 2d | 2025-05-13 | 2025-05-14 | B13-V25~V32-1530, B13-V17~V24-1560 | 21d | 0d | Front Fence Walls [8] | 17,898.32 |
| B13-V25~V32-1570 |  | Pouring Concrete Crown Of "Front" Fence Columns | 3d | 2025-05-15 | 2025-05-18 | B13-V25~V32-1560, B13-V17~V24-1570 | 21d | 0d | Fence Columns - C Chanel [8] | 3,310.37 |
| B13-V25~V32-1580 |  | Bardoura Works For Yard | 5d | 2025-05-15 | 2025-05-20 | B13-V25~V32-1550, B13-V17~V24-1580 | 9d | 0d | Bardoura Works For Yard [8] | 14,408.16 |
| B13-V25~V32-1590 |  | Pouring Concrete Flower Basin Of "Front" Fence Columns | 4d | 2025-05-19 | 2025-05-22 | B13-V25~V32-1570, B13-V17~V24-1590 | 21d | 0d |  |  |
| B13-V25~V32-1600 |  | Antitermite Treatment For Yard | 1d | 2025-05-21 | 2025-05-21 | B13-V25~V32-1580, B13-V17~V24-1600 | 9d | 0d | Antitermite Treatment For Yard [8] |  |
| B13-V25~V32-1610 |  | Pouring Concrete For Yard | 1d | 2025-05-22 | 2025-05-22 | B13-V25~V32-1600, B13-V17~V24-1610 | 9d | 0d |  |  |
| B13-V25~V32-1620 |  | Block Work For Flower Basin | 5d | 2025-05-24 | 2025-05-28 | B13-V25~V32-1610, B13-V17~V24-1620 | 9d | 0d |  |  |
| B13-V25~V32-1630 |  | Plastering Work For Flower Basin | 4d | 2025-05-29 | 2025-06-02 | B13-V25~V32-1620, B13-V17~V24-1630 | 9d | 0d |  |  |
| B13-V25~V32-1640 |  | Interlock Works For The Yard | 6d | 2025-06-03 | 2025-06-09 | B13-V25~V32-1630, B13-V17~V24-1640 | 9d | 0d | Interlock Works For The Yard [8] | 36,776.32 |
| B13-V25~V32-1650 |  | External Grading Works For The Villa | 4d | 2025-06-10 | 2025-06-14 | B13-V25~V32-1640, B13-V17~V24-1650 | 11d | 0d | External Grading Works For The Villa [8] | 3,221.68 |
| B13-V25~V32-1660 |  | Installation The Exterior Door & Garage Door | 5d | 2025-06-10 | 2025-06-15 | B13-V25~V32-1640, B13-V17~V24-1660 | 14d | 2d | Installation The Exterior Door [8]; Installation The Exterior Garage Door [8] | 40,002.72 |
| B13-V25~V32-1670 |  | Fixing Floor Drain For The Yard | 2d | 2025-06-10 | 2025-06-11 | B13-V25~V32-1640, B13-V17~V24-1670 | 17d | 5d | Floor Drain & Clean Out [8] | 13,423.76 |
| B13-V25~V32-1680 |  | Granite Surronds Around The Villa | 4d | 2025-06-15 | 2025-06-18 | B13-V25~V32-1650, B13-V17~V24-1680 | 11d | 2d | Granite Surronds Around The Villa [8] | 25,818.32 |
| B13-V25~V32-1690 |  | Painting The Base Surface Of The Fence | 2d | 2025-06-15 | 2025-06-16 | B13-V25~V32-1750, B13-V17~V24-1690 | 9d | 0d |  |  |
| B13-V25~V32-1700 |  | Painting The Final Face Of The Fence | 4d | 2025-06-17 | 2025-06-21 | B13-V25~V32-1690, B13-V17~V24-1700 | 9d | 0d | Painting Final Face Of The Fence [8] | 37,586.48 |
| B13-V25~V32-1710 |  | Exterior Painting Of The Villa | 7d | 2025-06-22 | 2025-06-29 | B13-V25~V32-1680, B13-V25~V32-1700, B13-V25~V32-1660, B13-V25~V32-1670, B13-V17~V24-1710 | 9d | 0d | Exterior Painting Of The Villa [8]; Exterior Painting Staircase House [8] | 105,684.16 |
| B13-V25~V32-1720 |  | Installation Elec Fixtures & Accessories For The Yard | 4d | 2025-06-30 | 2025-07-03 | B13-V25~V32-1700, B13-V25~V32-1710, B13-V17~V24-1720 | 22d | 0d | Elec feeding panels GF & FF [8] | 22,372.88 |

| ID | WBS | Activity | Duration | Start | Finish | Predecessors | Total float | Free float | Resources | Cost | Department-1 |
| --- | --- | --- | --- | --- | --- | --- | --- | --- | --- | --- | --- |
|  | 5 | **External Sidewalk Works** |  | 2025-05-24 | 2025-07-08 |  |  |  |  |  |  |
| B13-V25~V32-1730 |  | Connection The Drain To The Piblic Network | 3d | 2025-05-24 | 2025-05-26 | B13-V25~V32-1510, B13-V25~V32-1590, B13-V17~V24-1730 | 21d | 4d | Connection Drain To The Piblic Network [8]; Connection Water To The Piblic Network [8] | 13,420.32 |  |
| B13-V25~V32-1740 |  | Pardora Works For The External Sidewalk | 2d | 2025-06-10 | 2025-06-11 | B13-V25~V32-1640, B13-V25~V32-1730, B13-V17~V24-1740 | 9d | 0d |  |  |  |
| B13-V25~V32-1750 |  | Interlock Works For The Exerrnal Sidewalk | 2d | 2025-06-12 | 2025-06-14 | B13-V25~V32-1740, B13-V17~V24-1750 | 9d | 0d |  |  |  |
| B13-V25~V32-1760 |  | Pulling The Villa's Main Elec Cable | 4d | 2025-07-05 | 2025-07-08 | B13-V25~V32-1750, B13-V25~V32-1720 | 22d | 0d | Elec Work Testing [8] | 22,819.84 |  |
|  | 6 | **Final Testing & Handover** |  | 2025-06-29 | 2025-07-26 |  |  |  |  |  |  |
| B13-V25~V32-1770 |  | Mech Work Testing & Handover | 5d | 2025-06-29 | 2025-07-03 | B13-V25~V32-1730, B13-V25~V32-1340, B13-V25~V32-1380, B13-V17~V24-1770 | 31d | 2d | Mech Work Testing & Handover [8] | 14,318.64 |  |
| B13-V25~V32-1780 |  | Arch Snaglist & Handover | 5d | 2025-07-05 | 2025-07-09 | B13-V25~V32-1750, B13-V25~V32-1710, B13-V25~V32-1400, B13-V17~V24-1780 | 26d | 2d | Arch Snaglist & Handover [8] | 77,320.64 |  |
| B13-V25~V32-1790 |  | ElecWork Testing & Handover | 5d | 2025-07-09 | 2025-07-14 | B13-V25~V32-1760, B13-V25~V32-1370, B13-V17~V24-1790 | 22d | 0d | Elec Work Handover [8] | 23,804.72 |  |
| B13-V25~V32-1800 |  | Final Handover Of The Villa To The Consltant | 5d | 2025-07-15 | 2025-07-20 | B13-V25~V32-1780, B13-V25~V32-1790, B13-V25~V32-1770, B13-V25~V32-1410, B13-V17~V24-1800 | 22d | 0d |  |  |  |
| B13-V25~V32-1810 |  | Customer Delivery | 5d | 2025-07-21 | 2025-07-26 | B13-V25~V32-1800, B13-V17~V24-1810 | 22d | 1d |  |  |  |
|  | 21 | **B14-V01~V08** |  | 2024-12-16 | 2025-08-02 |  |  |  |  |  |  |
|  | 2 | **Under Grond Slap Works** |  | 2024-12-16 | 2025-01-25 |  |  |  |  |  |  |
| B14-V01~V08-1000 |  | Excavation&Compaction of Fondation | 6d | 2024-12-16 | 2024-12-22 | B13-V25~V32-1000 | 55d | 0d | Clearing & Groubbing [8]; Excavation & Leveling [8]; Stone Layer [8]; A3 Layer [8]; A1-a 1st Layer [8]; A1-a 2ed Layer [8] | 163,545.76 | Civil |
| B14-V01~V08-1010 |  | Pouring Concrete For Bedding | 2d | 2024-12-23 | 2024-12-24 | B14-V01~V08-1000, B13-V25~V32-1010 | 55d | 0d | PC Carpentry [8]; PC Concrete [8]; RC 18 MPA [9 M3] | 37,899.68 | Civil |
| B14-V01~V08-1020 |  | Reinforcement Concrete For Foundation | 5d | 2024-12-25 | 2024-12-30 | B14-V01~V08-1010, B13-V25~V32-1020 | 55d | 0d | RC Foundation Carpentry [8]; RC Foundation Steel [8]; RC Foundation Concrete [8] | 201,355.92 | Civil |
| B14-V01~V08-1030 |  | Steel Fixing& Carpenter work for Beams | 4d | 2024-12-31 | 2025-01-04 | B14-V01~V08-1020, B13-V25~V32-1030 | 55d | 0d | RC Grade Beam Carpentry & Steel [8] | 44,745.76 | Civil |
| B14-V01~V08-1040 |  | Mech&Elec Establishment for Beams | 3d | 2025-01-05 | 2025-01-07 | B14-V01~V08-1030, B13-V25~V32-1040 | 55d | 0d |  |  | Mech |
| B14-V01~V08-1050 |  | Pouring Concrete For Beams | 1d | 2025-01-08 | 2025-01-08 | B14-V01~V08-1040, B13-V25~V32-1050 | 55d | 0d | RC Grade Beam Concrete [8] | 77,141.68 | Civil |
| B14-V01~V08-1060 |  | Bitmen Coating For Fondation&Beams | 3d | 2025-01-09 | 2025-01-12 | B14-V01~V08-1050, B13-V25~V32-1060 | 55d | 0d | Bitumen Coating Foundations & Grade Beams [8] | 22,372.32 | Civil |
| B14-V01~V08-1070 |  | Backfilling Inside Fondations | 4d | 2025-01-13 | 2025-01-16 | B14-V01~V08-1060, B13-V25~V32-1070 | 55d | 0d | Backfilling 1st Layer [8]; Backfilling 2ed Layer [8] | 11,186.4 | Civil |
| B14-V01~V08-1080 |  | Mech Works Under Grond Slap | 3d | 2025-01-18 | 2025-01-20 | B14-V01~V08-1070, B13-V25~V32-1080 | 55d | 0d | Mech Establishment Under Ground Slap [8] | 13,423.42 | Mech |
| B14-V01~V08-1090 |  | Steel Fixing& Carpenter work for Ground Slap | 3d | 2025-01-21 | 2025-01-23 | B14-V01~V08-1080, B13-V25~V32-1090 | 55d | 0d | Steel & Carpentry For Ground Slap [8] | 10,246.54 | Civil |
| B14-V01~V08-1100 |  | Anti Termite Treatment For Ground Slap | 1d | 2025-01-25 | 2025-01-25 | B14-V01~V08-1090, B13-V25~V32-1100 | 55d | 0d | Anti Termite Treatment nder Ground Slap [8] | 2,237.28 | Civil |
| B14-V01~V08-1110 |  | Pouring Concrete For Ground Slap | 1d | 2025-01-25 | 2025-01-25 | B14-V01~V08-1100 FF, B14-V01~V08-1090, B13-V25~V32-1110 | 55d | 5d | Concrete For Ground Slap [8] | 58,169.52 | Civil |

| ID | WBS | Activity | Duration | Start | Finish | Predecessors | Total float | Free float | Resources | Cost | Department-1 |
| --- | --- | --- | --- | --- | --- | --- | --- | --- | --- | --- | --- |
|  | 4 | **Precast Works** |  | 2025-03-31 | 2025-04-07 |  |  |  |  |  |  |
| B14-V01~V08-1120 |  | Precast Constrction | 7d | 2025-03-31 | 2025-04-07 | B14-V01~V08-1110, B13-V25~V32-1120 | 0d |  | Precast Walls GF [8]; Hollow Core Slap GF [8]; Precast Stairs & staircase House [8]; Thermal insollation Outside Walls [8]; Concrete structure joints [8]; Precast Walls FF [8]; Hollow Core Slap FF [8] | 1,513,762.87 | Civil |
|  | 1 | **Works Inside The Villa** |  | 2025-04-08 | 2025-07-19 |  |  |  |  |  |  |
| B14-V01~V08-1130 |  | Block Work For GF & Estabishment 1F | 6d | 2025-04-08 | 2025-04-14 | B14-V01~V08-1120, B13-V25~V32-1130 | 3d | 0d | Block GF [8] | 13,647.1 | Arc |
| B14-V01~V08-1140 |  | L.L & H.L Drainage | 6d | 2025-04-15 | 2025-04-21 | B14-V01~V08-1130, B13-V25~V32-1140 | 3d | 0d | HL Drainage [8]; L.L Drainage [8] | 89,489.28 | Mech |
| B14-V01~V08-1150 |  | Elec Establishment For GF & 1F | 3d | 2025-04-15 | 2025-04-17 | B14-V01~V08-1130, B13-V25~V32-1150 | 6d | 3d | Elec Establishment GF [8] | 26,840.73 | Elec |
| B14-V01~V08-1160 |  | Screed Work For 1F & Roof | 6d | 2025-04-22 | 2025-04-28 | B14-V01~V08-1140, B14-V01~V08-1150, B13-V25~V32-1160 | 3d | 0d | Screed 1st Floor [8]; Screed Roof Floor [8]; Leveling Screed 1st Floor [8]; Leveling Screed Roof Floor [8] | 268,467.85 | Civil |
| B14-V01~V08-1170 |  | Water Tank & Heater Foundations | 4d | 2025-04-29 | 2025-05-03 | B14-V01~V08-1160, B13-V25~V32-1170 | 7d | 0d |  |  | Civil |
| B14-V01~V08-1180 |  | Block Works For 1F | 3d | 2025-04-29 | 2025-05-01 | B14-V01~V08-1160, B13-V25~V32-1180 | 3d | 0d | Block FF [8] | 20,537.81 | Arc |
| B14-V01~V08-1190 |  | Water Line Network | 6d | 2025-05-03 | 2025-05-08 | B14-V01~V08-1180, B13-V25~V32-1190 | 3d | 0d | Water Line Network [8] | 40,261.13 | Mech |
| B14-V01~V08-1200 |  | Continue Elec Establishment For GF & 1F | 3d | 2025-05-03 | 2025-05-05 | B14-V01~V08-1180, B13-V25~V32-1200 | 6d | 3d | Elec Establishment FF [8] | 26,840.73 | Elec |
| B14-V01~V08-1210 |  | Thermal Insulation For Roof | 5d | 2025-05-04 | 2025-05-08 | B14-V01~V08-1170, B13-V25~V32-1210 | 7d | 0d | Roof Insulation [8] | 32,530.16 | Arc |
| B14-V01~V08-1220 |  | Roof Floor Tiles | 6d | 2025-05-10 | 2025-05-15 | B14-V01~V08-1210, B13-V25~V32-1220 | 7d | 1d | Roof Tiles [8]; Roof Tiles Joints [8]; Re_Test Roof Insulation [8] | 63,179.38 | Arc |
| B14-V01~V08-1230 |  | Plaster Work For Villa | 6d | 2025-05-10 | 2025-05-15 | B14-V01~V08-1190, B14-V01~V08-1200, B13-V25~V32-1230 | 3d | 0d | Establishing a plastering GF [8]; Establishing a plastering FF [8]; Plastering GF [8]; Plastering FF [8] | 49,263.81 |  |
| B14-V01~V08-1240 |  | Marbale Stairs & Handrails | 6d | 2025-05-17 | 2025-05-22 | B14-V01~V08-1230, B13-V25~V32-1240 | 25d | 1d | Marbale Stairs [8]; Stairs Handrails SS [8] | 91,494.69 |  |
| B14-V01~V08-1250 |  | Water Proofing Of Bathrooms | 4d | 2025-05-17 | 2025-05-20 | B14-V01~V08-1230, B13-V25~V32-1250 | 3d | 0d | Bathrooms InsulationGF & FF [8] | 134.24 |  |
| B14-V01~V08-1260 |  | Pulling The Elec Wires | 4d | 2025-05-17 | 2025-05-20 | B14-V01~V08-1230, B13-V25~V32-1260 | 13d | 3d | Elec Wires GF [8]; Elec Wires FF [8] | 80,542.4 |  |
| B14-V01~V08-1270 |  | Bathroom Tiles | 4d | 2025-05-21 | 2025-05-25 | B14-V01~V08-1250, B14-V01~V08-1220, B13-V25~V32-1270 | 3d | 0d | Ceramic Walls Kitchen [8]; Ceramic Walls Bathrooms GF [8]; Ceramic Walls Bathrooms FF [8]; Ceramic Tiles Bathrooms GF [8]; Ceramic Tiles Kitchen GF [8]; Ceramic Tiles Store GF [8] | 73,204.08 |  |
| B14-V01~V08-1280 |  | Structure For Gypsum | 6d | 2025-05-26 | 2025-06-01 | B14-V01~V08-1270, B13-V25~V32-1280 | 3d | 0d | Structure For Gypsum GF Rooms [8]; Structure For Gypsum FF Rooms [8]; Structure For Gypsum Bathrooms & Kitchen [8] | 33,550.81 |  |
| B14-V01~V08-1290 |  | Gypsum Board For Room | 4d | 2025-06-02 | 2025-06-05 | B14-V01~V08-1280, B14-V01~V08-1260, B13-V25~V32-1290 | 3d | 0d | Gypsum Board For GF Room [8]; Gypsum Board For FF Room [8] | 35,796.64 |  |
| B14-V01~V08-1300 |  | Installation Of Gypsum Board For Bathroom & Kitchen | 4d | 2025-06-07 | 2025-06-10 | B14-V01~V08-1290, B13-V25~V32-1300 | 3d | 0d | Gypsum Board For Bathrooms & Kitchen [8] | 11,052.24 |  |
| B14-V01~V08-1310 |  | Putty Filler For Gypsm Board Ceiling | 6d | 2025-06-11 | 2025-06-17 | B14-V01~V08-1300, B13-V25~V32-1310 | 3d | 0d | Putty Filler 1st Layer Roof all Rooms [8]; Putty Filler 1st Layer Roof all Bathrooms & Kitchen [8]; Putty Filler1st Layer walls [8] | 62,182.52 |  |
| B14-V01~V08-1320 |  | Fixing Shower Glass | 4d | 2025-06-18 | 2025-06-22 | B14-V01~V08-1310, B13-V25~V32-1320 | 10d | 0d | Shower Glass [8] | 22,372.88 |  |
| B14-V01~V08-1330 |  | Interior Wall Putty Filler | 6d | 2025-06-18 | 2025-06-24 | B14-V01~V08-1310, B14-V01~V08-1240, B13-V25~V32-1330 | 3d | 0d | Putty Filler 2ed Layer Roof & WAlls GF [8]; Putty Filler 2ed Layer Roof & WAlls FF [8] | 62,150.21 |  |
| B14-V01~V08-1340 |  | Installation Of Sanitry Fixture | 6d | 2025-06-23 | 2025-06-29 | B14-V01~V08-1320, B13-V25~V32-1340 | 10d | 0d | Mech Fixtures & Accessories [8] | 98,438.1 |  |
| B14-V01~V08-1350 |  | 1st Face Paint | 5d | 2025-06-25 | 2025-06-30 | B14-V01~V08-1330, B13-V25~V32-1350 | 3d | 0d |  |  |  |
| B14-V01~V08-1360 |  | Installation Of Aluminum Windows | 6d | 2025-06-25 | 2025-07-01 | B14-V01~V08-1330, B13-V25~V32-1360 | 12d | 1d | Aluminum Windows [8] | 84,797.8 |  |
| B14-V01~V08-1370 |  | Installation Of Elec Fixture & Accessories | 6d | 2025-06-25 | 2025-07-01 | B14-V01~V08-1310, B14-V01~V08-1330, B14-V01~V08-1260, B13-V25~V32-1370 | 25d | 1d | Elec Fixtures & Accessories Villa & Yard [8]; Elec Cables GF & FF & Earthing [8] | 53,681.46 |  |
| B14-V01~V08-1380 |  | Installation Of Water Tank-Heater & Pumps | 6d | 2025-06-30 | 2025-07-06 | B14-V01~V08-1340, B13-V25~V32-1380, B14-V01~V08-1220 | 10d | 0d | Water Tank & booster Pump [8]; Lower Pump [8]; Heater [8] | 129,730.28 |  |
| B14-V01~V08-1390 |  | Installation Of Parquet | 4d | 2025-07-01 | 2025-07-05 | B14-V01~V08-1350, B13-V25~V32-1390 | 3d | 0d | Installation Of Parquet [8] | 52,978.96 |  |
| B14-V01~V08-1400 |  | Installation Of Wooden Doors | 6d | 2025-07-06 | 2025-07-12 | B14-V01~V08-1390, B13-V25~V32-1400 | 3d | 0d | Wooden Doors Accessories all Villa [8]; Wooden Doors Kitchen & Bathroom without Accessories [8]; Exterior Wooden Doors [8] | 142,109.01 |  |
| B14-V01~V08-1410 |  | Final Face Paint | 6d | 2025-07-13 | 2025-07-19 | B14-V01~V08-1360, B14-V01~V08-1400, B13-V25~V32-1410 | 3d | 1d | Final Face Paint Villa [8] | 31,090.55 |  |

| ID | WBS | Activity | Duration | Start | Finish | Predecessors | Total float | Free float | Resources | Cost |
| --- | --- | --- | --- | --- | --- | --- | --- | --- | --- | --- |
|  | 3 | **Fence & Courtyard Works** |  | 2025-04-08 | 2025-07-12 |  |  |  |  |  |
| B14-V01~V08-1420 |  | Pouring Bedding Concrete For Fence Fondations | 2d | 2025-04-08 | 2025-04-09 | B14-V01~V08-1120, B13-V25~V32-1420 | 9d | 0d | Excavation Fence Foundations [8] | 4,519.28 |
| B14-V01~V08-1430 |  | RC Concrete For Fence Fondations | 6d | 2025-04-10 | 2025-04-16 | B14-V01~V08-1420, B13-V25~V32-1430 | 9d | 0d | Fence Fondations-Eastern side [8]; Fence Fondations-Westren side [8]; Fence Fondations-Back side [8] | 13,420.32 |
| B14-V01~V08-1440 |  | Steel Fixing & Carpentry For Fence Columns | 6d | 2025-04-17 | 2025-04-23 | B14-V01~V08-1430, B13-V25~V32-1440 | 9d | 0d |  |  |
| B14-V01~V08-1450 |  | Establishing Elec For Fence Columns | 4d | 2025-04-24 | 2025-04-28 | B14-V01~V08-1440, B13-V25~V32-1450 | 9d | 0d |  |  |
| B14-V01~V08-1460 |  | Pouring Concrete For Fence Columns | 1d | 2025-04-29 | 2025-04-29 | B14-V01~V08-1450, B13-V25~V32-1460 | 9d | 0d | Fence Columns-Eastern side [8]; Fence Columns-Westren side [8]; Fence Columns-Back side [8] | 9,665.04 |
| B14-V01~V08-1470 |  | Installation Precast Panel For Fence | 5d | 2025-04-30 | 2025-05-05 | B14-V01~V08-1460, B13-V25~V32-1470 | 9d | 0d | Hollow Core Walls [8] | 71,593.2 |
| B14-V01~V08-1480 |  | Bitumen Coating For Fence Fondations | 4d | 2025-05-06 | 2025-05-10 | B14-V01~V08-1470, B13-V25~V32-1480 | 9d | 0d |  |  |
| B14-V01~V08-1490 |  | Pouring Bedding Concrete For "Front" Fence Fondations | 1d | 2025-05-06 | 2025-05-06 | B14-V01~V08-1470, B13-V25~V32-1490 | 21d | 0d |  |  |
| B14-V01~V08-1500 |  | RC Concrete For "Front" Fence Fondations | 4d | 2025-05-07 | 2025-05-11 | B14-V01~V08-1490, B13-V25~V32-1500 | 21d | 0d | Front Fence Fondations [8] | 8,904.4 |
| B14-V01~V08-1510 |  | Outdoor Drainage & Water Line | 5d | 2025-05-11 | 2025-05-15 | B14-V01~V08-1480, B14-V01~V08-1140, B13-V25~V32-1510 | 9d | 0d | Outdoor Drainage [8]; Outdoor Water Line [8] | 13,423.68 |
| B14-V01~V08-1520 |  | Steel Fixing & Carpentry For "Front" Fence Columns | 4d | 2025-05-12 | 2025-05-15 | B14-V01~V08-1500, B13-V25~V32-1520 | 21d | 0d |  |  |
| B14-V01~V08-1530 |  | Establishing Elec For "Front" Fence Columns | 4d | 2025-05-17 | 2025-05-20 | B14-V01~V08-1520, B13-V25~V32-1530 | 21d | 0d |  |  |
| B14-V01~V08-1540 |  | Establishing Elec For Fence & Yard | 2d | 2025-05-17 | 2025-05-18 | B14-V01~V08-1510, B13-V25~V32-1540 | 9d | 0d | Elec Establishment Fence & Yard [8] | 17,898.32 |
| B14-V01~V08-1550 |  | Backfilling the Yard | 4d | 2025-05-19 | 2025-05-22 | B14-V01~V08-1540, B13-V25~V32-1550 | 9d | 0d | Backfilling the Yard [8] | 10,560 |
| B14-V01~V08-1560 |  | Pouring Concrete Wall Of "Front" Fence Columns | 2d | 2025-05-21 | 2025-05-22 | B14-V01~V08-1530, B13-V25~V32-1560 | 21d | 0d | Front Fence Walls [8] | 17,898.32 |
| B14-V01~V08-1570 |  | Pouring Concrete Crown Of "Front" Fence Columns | 3d | 2025-05-24 | 2025-05-26 | B14-V01~V08-1560, B13-V25~V32-1570 | 21d | 0d | Fence Columns - C Chanel [8] | 3,310.37 |
| B14-V01~V08-1580 |  | Bardoura Works For Yard | 5d | 2025-05-24 | 2025-05-28 | B14-V01~V08-1550, B13-V25~V32-1580 | 9d | 0d | Bardoura Works For Yard [8] | 14,408.16 |
| B14-V01~V08-1590 |  | Pouring Concrete Flower Basin Of "Front" Fence Columns | 4d | 2025-05-27 | 2025-05-31 | B14-V01~V08-1570, B13-V25~V32-1590 | 21d | 0d |  |  |
| B14-V01~V08-1600 |  | Antitermite Treatment For Yard | 1d | 2025-05-29 | 2025-05-29 | B14-V01~V08-1580, B13-V25~V32-1600 | 9d | 0d | Antitermite Treatment For Yard [8] |  |
| B14-V01~V08-1610 |  | Pouring Concrete For Yard | 1d | 2025-05-31 | 2025-05-31 | B14-V01~V08-1600, B13-V25~V32-1610 | 9d | 0d |  |  |
| B14-V01~V08-1620 |  | Block Work For Flower Basin | 5d | 2025-06-01 | 2025-06-05 | B14-V01~V08-1610, B13-V25~V32-1620 | 9d | 0d |  |  |
| B14-V01~V08-1630 |  | Plastering Work For Flower Basin | 4d | 2025-06-07 | 2025-06-10 | B14-V01~V08-1620, B13-V25~V32-1630 | 9d | 0d |  |  |
| B14-V01~V08-1640 |  | Interlock Works For The Yard | 6d | 2025-06-11 | 2025-06-17 | B14-V01~V08-1630, B13-V25~V32-1640 | 9d | 0d | Interlock Works For The Yard [8] | 36,776.32 |
| B14-V01~V08-1650 |  | External Grading Works For The Villa | 4d | 2025-06-18 | 2025-06-22 | B14-V01~V08-1640, B13-V25~V32-1650 | 11d | 0d | External Grading Works For The Villa [8] | 3,221.68 |
| B14-V01~V08-1660 |  | Installation The Exterior Door & Garage Door | 5d | 2025-06-18 | 2025-06-23 | B14-V01~V08-1640, B13-V25~V32-1660 | 14d | 2d | Installation The Exterior Door [8]; Installation The Exterior Garage Door [8] | 40,002.72 |
| B14-V01~V08-1670 |  | Fixing Floor Drain For The Yard | 2d | 2025-06-18 | 2025-06-19 | B14-V01~V08-1640, B13-V25~V32-1670 | 17d | 5d | Floor Drain & Clean Out [8] | 13,423.76 |
| B14-V01~V08-1680 |  | Granite Surronds Around The Villa | 4d | 2025-06-23 | 2025-06-26 | B14-V01~V08-1650, B13-V25~V32-1680 | 11d | 2d | Granite Surronds Around The Villa [8] | 25,818.32 |
| B14-V01~V08-1690 |  | Painting The Base Surface Of The Fence | 2d | 2025-06-23 | 2025-06-24 | B14-V01~V08-1750, B13-V25~V32-1690 | 9d | 0d |  |  |
| B14-V01~V08-1700 |  | Painting The Final Face Of The Fence | 4d | 2025-06-25 | 2025-06-29 | B14-V01~V08-1690, B13-V25~V32-1700 | 9d | 0d | Painting Final Face Of The Fence [8] | 37,586.48 |
| B14-V01~V08-1710 |  | Exterior Painting Of The Villa | 7d | 2025-06-30 | 2025-07-07 | B14-V01~V08-1680, B14-V01~V08-1700, B14-V01~V08-1660, B14-V01~V08-1670, B13-V25~V32-1710 | 9d | 0d | Exterior Painting Of The Villa [8]; Exterior Painting Staircase House [8] | 105,684.16 |
| B14-V01~V08-1720 |  | Installation Elec Fixtures & Accessories For The Yard | 4d | 2025-07-08 | 2025-07-12 | B14-V01~V08-1700, B14-V01~V08-1710, B13-V25~V32-1720 | 21d | 0d | Elec feeding panels GF & FF [8] | 22,372.88 |

| ID | WBS | Activity | Duration | Start | Finish | Predecessors | Total float | Free float | Resources | Cost | Department-1 |
| --- | --- | --- | --- | --- | --- | --- | --- | --- | --- | --- | --- |
|  | 5 | **External Sidewalk Works** |  | 2025-06-01 | 2025-07-16 |  |  |  |  |  |  |
| B14-V01~V08-1730 |  | Connection The Drain To The Piblic Network | 3d | 2025-06-01 | 2025-06-03 | B14-V01~V08-1510, B14-V01~V08-1590, B13-V25~V32-1730 | 21d | 4d | Connection Drain To The Piblic Network [8]; Connection Water To The Piblic Network [8] | 13,420.32 |  |
| B14-V01~V08-1740 |  | Pardora Works For The External Sidewalk | 2d | 2025-06-18 | 2025-06-19 | B14-V01~V08-1640, B14-V01~V08-1730, B13-V25~V32-1740 | 9d | 0d |  |  |  |
| B14-V01~V08-1750 |  | Interlock Works For The Exerrnal Sidewalk | 2d | 2025-06-21 | 2025-06-22 | B14-V01~V08-1740, B13-V25~V32-1750 | 9d | 0d |  |  |  |
| B14-V01~V08-1760 |  | Pulling The Villa's Main Elec Cable | 4d | 2025-07-13 | 2025-07-16 | B14-V01~V08-1750, B14-V01~V08-1720, B13-V25~V32-1760 | 21d | 0d | Elec Work Testing [8] | 22,819.84 |  |
|  | 6 | **Final Testing & Handover** |  | 2025-07-07 | 2025-08-02 |  |  |  |  |  |  |
| B14-V01~V08-1770 |  | Mech Work Testing & Handover | 5d | 2025-07-07 | 2025-07-12 | B14-V01~V08-1730, B14-V01~V08-1340, B14-V01~V08-1380, B13-V25~V32-1770 | 29d | 2d | Mech Work Testing & Handover [8] | 14,318.64 |  |
| B14-V01~V08-1780 |  | Arch Snaglist & Handover | 5d | 2025-07-13 | 2025-07-17 | B14-V01~V08-1750, B14-V01~V08-1710, B14-V01~V08-1400, B13-V25~V32-1780 | 24d | 2d | Arch Snaglist & Handover [8] | 77,320.64 |  |
| B14-V01~V08-1790 |  | ElecWork Testing & Handover | 4d | 2025-07-17 | 2025-07-21 | B14-V01~V08-1760, B14-V01~V08-1370, B13-V25~V32-1790 | 21d | 0d | Elec Work Handover [8] | 23,804.72 |  |
| B14-V01~V08-1800 |  | Final Handover Of The Villa To The Consltant | 5d | 2025-07-22 | 2025-07-27 | B14-V01~V08-1780, B14-V01~V08-1790, B14-V01~V08-1770, B14-V01~V08-1410, B13-V25~V32-1800 | 21d | 0d |  |  |  |
| B14-V01~V08-1810 |  | Customer Delivery | 5d | 2025-07-28 | 2025-08-02 | B14-V01~V08-1800, B13-V25~V32-1810 | 21d | 2d |  |  |  |
|  | 22 | **B14-V09~V16** |  | 2024-12-23 | 2025-08-10 |  |  |  |  |  |  |
|  | 2 | **Under Grond Slap Works** |  | 2024-12-23 | 2025-02-01 |  |  |  |  |  |  |
| B14-V09~V16-1000 |  | Excavation&Compaction of Fondation | 6d | 2024-12-23 | 2024-12-29 | B14-V01~V08-1000 | 56d | 0d | Clearing & Groubbing [8]; Excavation & Leveling [8]; Stone Layer [8]; A3 Layer [8]; A1-a 1st Layer [8]; A1-a 2ed Layer [8] | 163,545.76 | Civil |
| B14-V09~V16-1010 |  | Pouring Concrete For Bedding | 2d | 2024-12-30 | 2024-12-31 | B14-V09~V16-1000, B14-V01~V08-1010 | 56d | 0d | PC Carpentry [8]; PC Concrete [8]; RC 18 MPA [9 M3] | 37,899.68 | Civil |
| B14-V09~V16-1020 |  | Reinforcement Concrete For Foundation | 5d | 2025-01-01 | 2025-01-06 | B14-V09~V16-1010, B14-V01~V08-1020 | 56d | 0d | RC Foundation Carpentry [8]; RC Foundation Steel [8]; RC Foundation Concrete [8] | 201,355.92 | Civil |
| B14-V09~V16-1030 |  | Steel Fixing& Carpenter work for Beams | 4d | 2025-01-07 | 2025-01-11 | B14-V09~V16-1020, B14-V01~V08-1030 | 56d | 0d | RC Grade Beam Carpentry & Steel [8] | 44,745.76 | Civil |
| B14-V09~V16-1040 |  | Mech&Elec Establishment for Beams | 3d | 2025-01-12 | 2025-01-14 | B14-V09~V16-1030, B14-V01~V08-1040 | 56d | 0d |  |  | Mech |
| B14-V09~V16-1050 |  | Pouring Concrete For Beams | 1d | 2025-01-15 | 2025-01-15 | B14-V09~V16-1040, B14-V01~V08-1050 | 56d | 0d | RC Grade Beam Concrete [8] | 77,141.68 | Civil |
| B14-V09~V16-1060 |  | Bitmen Coating For Fondation&Beams | 3d | 2025-01-16 | 2025-01-19 | B14-V09~V16-1050, B14-V01~V08-1060 | 56d | 0d | Bitumen Coating Foundations & Grade Beams [8] | 22,372.32 | Civil |
| B14-V09~V16-1070 |  | Backfilling Inside Fondations | 4d | 2025-01-20 | 2025-01-23 | B14-V09~V16-1060, B14-V01~V08-1070 | 56d | 0d | Backfilling 1st Layer [8]; Backfilling 2ed Layer [8] | 11,186.4 | Civil |
| B14-V09~V16-1080 |  | Mech Works Under Grond Slap | 3d | 2025-01-25 | 2025-01-27 | B14-V09~V16-1070, B14-V01~V08-1080 | 56d | 0d | Mech Establishment Under Ground Slap [8] | 13,423.42 | Mech |
| B14-V09~V16-1090 |  | Steel Fixing& Carpenter work for Ground Slap | 3d | 2025-01-28 | 2025-01-30 | B14-V09~V16-1080, B14-V01~V08-1090 | 56d | 0d | Steel & Carpentry For Ground Slap [8] | 10,246.54 | Civil |
| B14-V09~V16-1100 |  | Anti Termite Treatment For Ground Slap | 1d | 2025-02-01 | 2025-02-01 | B14-V09~V16-1090, B14-V01~V08-1100 | 56d | 0d | Anti Termite Treatment nder Ground Slap [8] | 2,237.28 | Civil |
| B14-V09~V16-1110 |  | Pouring Concrete For Ground Slap | 1d | 2025-02-01 | 2025-02-01 | B14-V09~V16-1100 FF, B14-V09~V16-1090, B14-V01~V08-1110 | 56d | 5d | Concrete For Ground Slap [8] | 58,169.52 | Civil |

| ID | WBS | Activity | Duration | Start | Finish | Predecessors | Total float | Free float | Resources | Cost | Department-1 |
| --- | --- | --- | --- | --- | --- | --- | --- | --- | --- | --- | --- |
|  | 4 | **Precast Works** |  | 2025-04-08 | 2025-04-15 |  |  |  |  |  |  |
| B14-V09~V16-1120 |  | Precast Constrction | 7d | 2025-04-08 | 2025-04-15 | B14-V09~V16-1110, B14-V01~V08-1120 | 0d |  | Precast Walls GF [8]; Hollow Core Slap GF [8]; Precast Stairs & staircase House [8]; Thermal insollation Outside Walls [8]; Concrete structure joints [8]; Precast Walls FF [8]; Hollow Core Slap FF [8] | 1,513,762.87 | Civil |
|  | 1 | **Works Inside The Villa** |  | 2025-04-16 | 2025-07-27 |  |  |  |  |  |  |
| B14-V09~V16-1130 |  | Block Work For GF & Estabishment 1F | 6d | 2025-04-16 | 2025-04-22 | B14-V09~V16-1120, B14-V01~V08-1130 | 2d | 0d | Block GF [8] | 13,647.1 | Arc |
| B14-V09~V16-1140 |  | L.L & H.L Drainage | 6d | 2025-04-23 | 2025-04-29 | B14-V09~V16-1130, B14-V01~V08-1140 | 2d | 0d | HL Drainage [8]; L.L Drainage [8] | 89,489.28 | Mech |
| B14-V09~V16-1150 |  | Elec Establishment For GF & 1F | 3d | 2025-04-23 | 2025-04-26 | B14-V09~V16-1130, B14-V01~V08-1150 | 5d | 3d | Elec Establishment GF [8] | 26,840.73 | Elec |
| B14-V09~V16-1160 |  | Screed Work For 1F & Roof | 6d | 2025-04-30 | 2025-05-06 | B14-V09~V16-1140, B14-V09~V16-1150, B14-V01~V08-1160 | 2d | 0d | Screed 1st Floor [8]; Screed Roof Floor [8]; Leveling Screed 1st Floor [8]; Leveling Screed Roof Floor [8] | 268,467.85 | Civil |
| B14-V09~V16-1170 |  | Water Tank & Heater Foundations | 4d | 2025-05-07 | 2025-05-11 | B14-V09~V16-1160, B14-V01~V08-1170 | 6d | 0d |  |  | Civil |
| B14-V09~V16-1180 |  | Block Works For 1F | 3d | 2025-05-07 | 2025-05-10 | B14-V09~V16-1160, B14-V01~V08-1180 | 2d | 0d | Block FF [8] | 20,537.81 | Arc |
| B14-V09~V16-1190 |  | Water Line Network | 6d | 2025-05-11 | 2025-05-17 | B14-V09~V16-1180, B14-V01~V08-1190 | 2d | 0d | Water Line Network [8] | 40,261.13 | Mech |
| B14-V09~V16-1200 |  | Continue Elec Establishment For GF & 1F | 3d | 2025-05-11 | 2025-05-13 | B14-V09~V16-1180, B14-V01~V08-1200 | 5d | 3d | Elec Establishment FF [8] | 26,840.73 | Elec |
| B14-V09~V16-1210 |  | Thermal Insulation For Roof | 5d | 2025-05-12 | 2025-05-17 | B14-V09~V16-1170, B14-V01~V08-1210 | 6d | 0d | Roof Insulation [8] | 32,530.16 | Arc |
| B14-V09~V16-1220 |  | Roof Floor Tiles | 6d | 2025-05-18 | 2025-05-24 | B14-V09~V16-1210, B14-V01~V08-1220 | 6d | 1d | Roof Tiles [8]; Roof Tiles Joints [8]; Re_Test Roof Insulation [8] | 63,179.38 | Arc |
| B14-V09~V16-1230 |  | Plaster Work For Villa | 6d | 2025-05-18 | 2025-05-24 | B14-V09~V16-1190, B14-V09~V16-1200, B14-V01~V08-1230 | 2d | 0d | Establishing a plastering GF [8]; Establishing a plastering FF [8]; Plastering GF [8]; Plastering FF [8] | 49,263.81 |  |
| B14-V09~V16-1240 |  | Marbale Stairs & Handrails | 6d | 2025-05-25 | 2025-05-31 | B14-V09~V16-1230, B14-V01~V08-1240 | 24d | 1d | Marbale Stairs [8]; Stairs Handrails SS [8] | 91,494.69 |  |
| B14-V09~V16-1250 |  | Water Proofing Of Bathrooms | 4d | 2025-05-25 | 2025-05-28 | B14-V09~V16-1230, B14-V01~V08-1250 | 2d | 0d | Bathrooms InsulationGF & FF [8] | 134.24 |  |
| B14-V09~V16-1260 |  | Pulling The Elec Wires | 4d | 2025-05-25 | 2025-05-28 | B14-V09~V16-1230, B14-V01~V08-1260 | 12d | 3d | Elec Wires GF [8]; Elec Wires FF [8] | 80,542.4 |  |
| B14-V09~V16-1270 |  | Bathroom Tiles | 4d | 2025-05-29 | 2025-06-02 | B14-V09~V16-1250, B14-V09~V16-1220, B14-V01~V08-1270 | 2d | 0d | Ceramic Walls Kitchen [8]; Ceramic Walls Bathrooms GF [8]; Ceramic Walls Bathrooms FF [8]; Ceramic Tiles Bathrooms GF [8]; Ceramic Tiles Kitchen GF [8]; Ceramic Tiles Store GF [8] | 73,204.08 |  |
| B14-V09~V16-1280 |  | Structure For Gypsum | 6d | 2025-06-03 | 2025-06-09 | B14-V09~V16-1270, B14-V01~V08-1280 | 2d | 0d | Structure For Gypsum GF Rooms [8]; Structure For Gypsum FF Rooms [8]; Structure For Gypsum Bathrooms & Kitchen [8] | 33,550.81 |  |
| B14-V09~V16-1290 |  | Gypsum Board For Room | 4d | 2025-06-10 | 2025-06-14 | B14-V09~V16-1280, B14-V09~V16-1260, B14-V01~V08-1290 | 2d | 0d | Gypsum Board For GF Room [8]; Gypsum Board For FF Room [8] | 35,796.64 |  |
| B14-V09~V16-1300 |  | Installation Of Gypsum Board For Bathroom & Kitchen | 4d | 2025-06-15 | 2025-06-18 | B14-V09~V16-1290, B14-V01~V08-1300 | 2d | 0d | Gypsum Board For Bathrooms & Kitchen [8] | 11,052.24 |  |
| B14-V09~V16-1310 |  | Putty Filler For Gypsm Board Ceiling | 6d | 2025-06-19 | 2025-06-25 | B14-V09~V16-1300, B14-V01~V08-1310 | 2d | 0d | Putty Filler 1st Layer Roof all Rooms [8]; Putty Filler 1st Layer Roof all Bathrooms & Kitchen [8]; Putty Filler1st Layer walls [8] | 62,182.52 |  |
| B14-V09~V16-1320 |  | Fixing Shower Glass | 4d | 2025-06-26 | 2025-06-30 | B14-V09~V16-1310, B14-V01~V08-1320 | 9d | 0d | Shower Glass [8] | 22,372.88 |  |
| B14-V09~V16-1330 |  | Interior Wall Putty Filler | 6d | 2025-06-26 | 2025-07-02 | B14-V09~V16-1310, B14-V09~V16-1240, B14-V01~V08-1330 | 2d | 0d | Putty Filler 2ed Layer Roof & WAlls GF [8]; Putty Filler 2ed Layer Roof & WAlls FF [8] | 62,150.21 |  |
| B14-V09~V16-1340 |  | Installation Of Sanitry Fixture | 6d | 2025-07-01 | 2025-07-07 | B14-V09~V16-1320, B14-V01~V08-1340 | 9d | 0d | Mech Fixtures & Accessories [8] | 98,438.1 |  |
| B14-V09~V16-1350 |  | 1st Face Paint | 5d | 2025-07-03 | 2025-07-08 | B14-V09~V16-1330, B14-V01~V08-1350 | 2d | 0d |  |  |  |
| B14-V09~V16-1360 |  | Installation Of Aluminum Windows | 6d | 2025-07-03 | 2025-07-09 | B14-V09~V16-1330, B14-V01~V08-1360 | 11d | 1d | Aluminum Windows [8] | 84,797.8 |  |
| B14-V09~V16-1370 |  | Installation Of Elec Fixture & Accessories | 6d | 2025-07-03 | 2025-07-09 | B14-V09~V16-1310, B14-V09~V16-1330, B14-V09~V16-1260, B14-V01~V08-1370 | 24d | 1d | Elec Fixtures & Accessories Villa & Yard [8]; Elec Cables GF & FF & Earthing [8] | 53,681.46 |  |
| B14-V09~V16-1380 |  | Installation Of Water Tank-Heater & Pumps | 6d | 2025-07-08 | 2025-07-14 | B14-V09~V16-1340, B14-V01~V08-1380, B14-V09~V16-1220 | 9d | 0d | Water Tank & booster Pump [8]; Lower Pump [8]; Heater [8] | 129,730.28 |  |
| B14-V09~V16-1390 |  | Installation Of Parquet | 4d | 2025-07-09 | 2025-07-13 | B14-V09~V16-1350, B14-V01~V08-1390 | 2d | 0d | Installation Of Parquet [8] | 52,978.96 |  |
| B14-V09~V16-1400 |  | Installation Of Wooden Doors | 6d | 2025-07-14 | 2025-07-20 | B14-V09~V16-1390, B14-V01~V08-1400 | 2d | 0d | Wooden Doors Accessories all Villa [8]; Wooden Doors Kitchen & Bathroom without Accessories [8]; Exterior Wooden Doors [8] | 142,109.01 |  |
| B14-V09~V16-1410 |  | Final Face Paint | 6d | 2025-07-21 | 2025-07-27 | B14-V09~V16-1360, B14-V09~V16-1400, B14-V01~V08-1410 | 2d | 1d | Final Face Paint Villa [8] | 31,090.55 |  |

| ID | WBS | Activity | Duration | Start | Finish | Predecessors | Total float | Free float | Resources | Cost |
| --- | --- | --- | --- | --- | --- | --- | --- | --- | --- | --- |
|  | 3 | **Fence & Courtyard Works** |  | 2025-04-16 | 2025-07-20 |  |  |  |  |  |
| B14-V09~V16-1420 |  | Pouring Bedding Concrete For Fence Fondations | 2d | 2025-04-16 | 2025-04-17 | B14-V09~V16-1120, B14-V01~V08-1420 | 9d | 0d | Excavation Fence Foundations [8] | 4,519.28 |
| B14-V09~V16-1430 |  | RC Concrete For Fence Fondations | 6d | 2025-04-19 | 2025-04-24 | B14-V09~V16-1420, B14-V01~V08-1430 | 9d | 0d | Fence Fondations-Eastern side [8]; Fence Fondations-Westren side [8]; Fence Fondations-Back side [8] | 13,420.32 |
| B14-V09~V16-1440 |  | Steel Fixing & Carpentry For Fence Columns | 6d | 2025-04-26 | 2025-05-01 | B14-V09~V16-1430, B14-V01~V08-1440 | 9d | 0d |  |  |
| B14-V09~V16-1450 |  | Establishing Elec For Fence Columns | 4d | 2025-05-03 | 2025-05-06 | B14-V09~V16-1440, B14-V01~V08-1450 | 9d | 0d |  |  |
| B14-V09~V16-1460 |  | Pouring Concrete For Fence Columns | 1d | 2025-05-07 | 2025-05-07 | B14-V09~V16-1450, B14-V01~V08-1460 | 9d | 0d | Fence Columns-Eastern side [8]; Fence Columns-Westren side [8]; Fence Columns-Back side [8] | 9,665.04 |
| B14-V09~V16-1470 |  | Installation Precast Panel For Fence | 5d | 2025-05-08 | 2025-05-13 | B14-V09~V16-1460, B14-V01~V08-1470 | 9d | 0d | Hollow Core Walls [8] | 71,593.2 |
| B14-V09~V16-1480 |  | Bitumen Coating For Fence Fondations | 4d | 2025-05-14 | 2025-05-18 | B14-V09~V16-1470, B14-V01~V08-1480 | 9d | 0d |  |  |
| B14-V09~V16-1490 |  | Pouring Bedding Concrete For "Front" Fence Fondations | 1d | 2025-05-14 | 2025-05-14 | B14-V09~V16-1470, B14-V01~V08-1490 | 21d | 0d |  |  |
| B14-V09~V16-1500 |  | RC Concrete For "Front" Fence Fondations | 4d | 2025-05-15 | 2025-05-19 | B14-V09~V16-1490, B14-V01~V08-1500 | 21d | 0d | Front Fence Fondations [8] | 8,904.4 |
| B14-V09~V16-1510 |  | Outdoor Drainage & Water Line | 5d | 2025-05-19 | 2025-05-24 | B14-V09~V16-1480, B14-V09~V16-1140, B14-V01~V08-1510 | 9d | 0d | Outdoor Drainage [8]; Outdoor Water Line [8] | 13,423.68 |
| B14-V09~V16-1520 |  | Steel Fixing & Carpentry For "Front" Fence Columns | 4d | 2025-05-20 | 2025-05-24 | B14-V09~V16-1500, B14-V01~V08-1520 | 21d | 0d |  |  |
| B14-V09~V16-1530 |  | Establishing Elec For "Front" Fence Columns | 4d | 2025-05-25 | 2025-05-28 | B14-V09~V16-1520, B14-V01~V08-1530 | 21d | 0d |  |  |
| B14-V09~V16-1540 |  | Establishing Elec For Fence & Yard | 2d | 2025-05-25 | 2025-05-26 | B14-V09~V16-1510, B14-V01~V08-1540 | 9d | 0d | Elec Establishment Fence & Yard [8] | 17,898.32 |
| B14-V09~V16-1550 |  | Backfilling the Yard | 4d | 2025-05-27 | 2025-05-31 | B14-V09~V16-1540, B14-V01~V08-1550 | 9d | 0d | Backfilling the Yard [8] | 10,560 |
| B14-V09~V16-1560 |  | Pouring Concrete Wall Of "Front" Fence Columns | 2d | 2025-05-29 | 2025-05-31 | B14-V09~V16-1530, B14-V01~V08-1560 | 21d | 0d | Front Fence Walls [8] | 17,898.32 |
| B14-V09~V16-1570 |  | Pouring Concrete Crown Of "Front" Fence Columns | 3d | 2025-06-01 | 2025-06-03 | B14-V09~V16-1560, B14-V01~V08-1570 | 21d | 0d | Fence Columns - C Chanel [8] | 3,310.37 |
| B14-V09~V16-1580 |  | Bardoura Works For Yard | 5d | 2025-06-01 | 2025-06-05 | B14-V09~V16-1550, B14-V01~V08-1580 | 9d | 0d | Bardoura Works For Yard [8] | 14,408.16 |
| B14-V09~V16-1590 |  | Pouring Concrete Flower Basin Of "Front" Fence Columns | 4d | 2025-06-04 | 2025-06-08 | B14-V09~V16-1570, B14-V01~V08-1590 | 21d | 0d |  |  |
| B14-V09~V16-1600 |  | Antitermite Treatment For Yard | 1d | 2025-06-07 | 2025-06-07 | B14-V09~V16-1580, B14-V01~V08-1600 | 9d | 0d | Antitermite Treatment For Yard [8] |  |
| B14-V09~V16-1610 |  | Pouring Concrete For Yard | 1d | 2025-06-08 | 2025-06-08 | B14-V09~V16-1600, B14-V01~V08-1610 | 9d | 0d |  |  |
| B14-V09~V16-1620 |  | Block Work For Flower Basin | 5d | 2025-06-09 | 2025-06-14 | B14-V09~V16-1610, B14-V01~V08-1620 | 9d | 0d |  |  |
| B14-V09~V16-1630 |  | Plastering Work For Flower Basin | 4d | 2025-06-15 | 2025-06-18 | B14-V09~V16-1620, B14-V01~V08-1630 | 9d | 0d |  |  |
| B14-V09~V16-1640 |  | Interlock Works For The Yard | 6d | 2025-06-19 | 2025-06-25 | B14-V09~V16-1630, B14-V01~V08-1640 | 9d | 0d | Interlock Works For The Yard [8] | 36,776.32 |
| B14-V09~V16-1650 |  | External Grading Works For The Villa | 4d | 2025-06-26 | 2025-06-30 | B14-V09~V16-1640, B14-V01~V08-1650 | 11d | 0d | External Grading Works For The Villa [8] | 3,221.68 |
| B14-V09~V16-1660 |  | Installation The Exterior Door & Garage Door | 5d | 2025-06-26 | 2025-07-01 | B14-V09~V16-1640, B14-V01~V08-1660 | 14d | 2d | Installation The Exterior Door [8]; Installation The Exterior Garage Door [8] | 40,002.72 |
| B14-V09~V16-1670 |  | Fixing Floor Drain For The Yard | 2d | 2025-06-26 | 2025-06-28 | B14-V09~V16-1640, B14-V01~V08-1670 | 17d | 5d | Floor Drain & Clean Out [8] | 13,423.76 |
| B14-V09~V16-1680 |  | Granite Surronds Around The Villa | 4d | 2025-07-01 | 2025-07-05 | B14-V09~V16-1650, B14-V01~V08-1680 | 11d | 2d | Granite Surronds Around The Villa [8] | 25,818.32 |
| B14-V09~V16-1690 |  | Painting The Base Surface Of The Fence | 2d | 2025-07-01 | 2025-07-02 | B14-V09~V16-1750, B14-V01~V08-1690 | 9d | 0d |  |  |
| B14-V09~V16-1700 |  | Painting The Final Face Of The Fence | 4d | 2025-07-03 | 2025-07-07 | B14-V09~V16-1690, B14-V01~V08-1700 | 9d | 0d | Painting Final Face Of The Fence [8] | 37,586.48 |
| B14-V09~V16-1710 |  | Exterior Painting Of The Villa | 7d | 2025-07-08 | 2025-07-15 | B14-V09~V16-1680, B14-V09~V16-1700, B14-V09~V16-1660, B14-V09~V16-1670, B14-V01~V08-1710 | 9d | 0d | Exterior Painting Of The Villa [8]; Exterior Painting Staircase House [8] | 105,684.16 |
| B14-V09~V16-1720 |  | Installation Elec Fixtures & Accessories For The Yard | 4d | 2025-07-16 | 2025-07-20 | B14-V09~V16-1700, B14-V09~V16-1710, B14-V01~V08-1720 | 19d | 0d | Elec feeding panels GF & FF [8] | 22,372.88 |

| ID | WBS | Activity | Duration | Start | Finish | Predecessors | Total float | Free float | Resources | Cost | Department-1 |
| --- | --- | --- | --- | --- | --- | --- | --- | --- | --- | --- | --- |
|  | 5 | **External Sidewalk Works** |  | 2025-06-09 | 2025-07-24 |  |  |  |  |  |  |
| B14-V09~V16-1730 |  | Connection The Drain To The Piblic Network | 3d | 2025-06-09 | 2025-06-11 | B14-V09~V16-1510, B14-V09~V16-1590, B14-V01~V08-1730 | 21d | 4d | Connection Drain To The Piblic Network [8]; Connection Water To The Piblic Network [8] | 13,420.32 |  |
| B14-V09~V16-1740 |  | Pardora Works For The External Sidewalk | 2d | 2025-06-26 | 2025-06-28 | B14-V09~V16-1640, B14-V09~V16-1730, B14-V01~V08-1740 | 9d | 0d |  |  |  |
| B14-V09~V16-1750 |  | Interlock Works For The Exerrnal Sidewalk | 2d | 2025-06-29 | 2025-06-30 | B14-V09~V16-1740, B14-V01~V08-1750 | 9d | 0d |  |  |  |
| B14-V09~V16-1760 |  | Pulling The Villa's Main Elec Cable | 4d | 2025-07-21 | 2025-07-24 | B14-V09~V16-1750, B14-V09~V16-1720, B14-V01~V08-1760 | 19d | 0d | Elec Work Testing [8] | 22,819.84 |  |
|  | 6 | **Final Testing & Handover** |  | 2025-07-15 | 2025-08-10 |  |  |  |  |  |  |
| B14-V09~V16-1770 |  | Mech Work Testing & Handover | 5d | 2025-07-15 | 2025-07-20 | B14-V09~V16-1730, B14-V09~V16-1340, B14-V09~V16-1380, B14-V01~V08-1770 | 27d | 2d | Mech Work Testing & Handover [8] | 14,318.64 |  |
| B14-V09~V16-1780 |  | Arch Snaglist & Handover | 5d | 2025-07-21 | 2025-07-26 | B14-V09~V16-1750, B14-V09~V16-1710, B14-V09~V16-1400, B14-V01~V08-1780 | 22d | 2d | Arch Snaglist & Handover [8] | 77,320.64 |  |
| B14-V09~V16-1790 |  | ElecWork Testing & Handover | 4d | 2025-07-26 | 2025-07-29 | B14-V09~V16-1760, B14-V09~V16-1370, B14-V01~V08-1790 | 19d | 0d | Elec Work Handover [8] | 23,804.72 |  |
| B14-V09~V16-1800 |  | Final Handover Of The Villa To The Consltant | 5d | 2025-07-30 | 2025-08-04 | B14-V09~V16-1780, B14-V09~V16-1790, B14-V09~V16-1770, B14-V09~V16-1410, B14-V01~V08-1800 | 19d | 0d |  |  |  |
| B14-V09~V16-1810 |  | Customer Delivery | 5d | 2025-08-05 | 2025-08-10 | B14-V09~V16-1800, B14-V01~V08-1810 | 19d | 2d |  |  |  |
|  | 23 | **B14-V17~V24** |  | 2024-12-30 | 2025-08-18 |  |  |  |  |  |  |
|  | 2 | **Under Grond Slap Works** |  | 2024-12-30 | 2025-02-08 |  |  |  |  |  |  |
| B14-V17~V24-1000 |  | Excavation&Compaction of Fondation | 6d | 2024-12-30 | 2025-01-05 | B14-V09~V16-1000 | 57d | 0d | Clearing & Groubbing [8]; Excavation & Leveling [8]; Stone Layer [8]; A3 Layer [8]; A1-a 1st Layer [8]; A1-a 2ed Layer [8] | 163,545.76 | Civil |
| B14-V17~V24-1010 |  | Pouring Concrete For Bedding | 2d | 2025-01-06 | 2025-01-07 | B14-V17~V24-1000, B14-V09~V16-1010 | 57d | 0d | PC Carpentry [8]; PC Concrete [8]; RC 18 MPA [9 M3] | 37,899.68 | Civil |
| B14-V17~V24-1020 |  | Reinforcement Concrete For Foundation | 5d | 2025-01-08 | 2025-01-13 | B14-V17~V24-1010, B14-V09~V16-1020 | 57d | 0d | RC Foundation Carpentry [8]; RC Foundation Steel [8]; RC Foundation Concrete [8] | 201,355.92 | Civil |
| B14-V17~V24-1030 |  | Steel Fixing& Carpenter work for Beams | 4d | 2025-01-14 | 2025-01-18 | B14-V17~V24-1020, B14-V09~V16-1030 | 57d | 0d | RC Grade Beam Carpentry & Steel [8] | 44,745.76 | Civil |
| B14-V17~V24-1040 |  | Mech&Elec Establishment for Beams | 3d | 2025-01-19 | 2025-01-21 | B14-V17~V24-1030, B14-V09~V16-1040 | 57d | 0d |  |  | Mech |
| B14-V17~V24-1050 |  | Pouring Concrete For Beams | 1d | 2025-01-22 | 2025-01-22 | B14-V17~V24-1040, B14-V09~V16-1050 | 57d | 0d | RC Grade Beam Concrete [8] | 77,141.68 | Civil |
| B14-V17~V24-1060 |  | Bitmen Coating For Fondation&Beams | 3d | 2025-01-23 | 2025-01-26 | B14-V17~V24-1050, B14-V09~V16-1060 | 57d | 0d | Bitumen Coating Foundations & Grade Beams [8] | 22,372.32 | Civil |
| B14-V17~V24-1070 |  | Backfilling Inside Fondations | 4d | 2025-01-27 | 2025-01-30 | B14-V17~V24-1060, B14-V09~V16-1070 | 57d | 0d | Backfilling 1st Layer [8]; Backfilling 2ed Layer [8] | 11,186.4 | Civil |
| B14-V17~V24-1080 |  | Mech Works Under Grond Slap | 3d | 2025-02-01 | 2025-02-03 | B14-V17~V24-1070, B14-V09~V16-1080 | 57d | 0d | Mech Establishment Under Ground Slap [8] | 13,423.42 | Mech |
| B14-V17~V24-1090 |  | Steel Fixing& Carpenter work for Ground Slap | 3d | 2025-02-04 | 2025-02-06 | B14-V17~V24-1080, B14-V09~V16-1090 | 57d | 0d | Steel & Carpentry For Ground Slap [8] | 10,246.54 | Civil |
| B14-V17~V24-1100 |  | Anti Termite Treatment For Ground Slap | 1d | 2025-02-08 | 2025-02-08 | B14-V17~V24-1090, B14-V09~V16-1100 | 57d | 0d | Anti Termite Treatment nder Ground Slap [8] | 2,237.28 | Civil |
| B14-V17~V24-1110 |  | Pouring Concrete For Ground Slap | 1d | 2025-02-08 | 2025-02-08 | B14-V17~V24-1100 FF, B14-V17~V24-1090, B14-V09~V16-1110 | 57d | 5d | Concrete For Ground Slap [8] | 58,169.52 | Civil |

| ID | WBS | Activity | Duration | Start | Finish | Predecessors | Total float | Free float | Resources | Cost | Department-1 |
| --- | --- | --- | --- | --- | --- | --- | --- | --- | --- | --- | --- |
|  | 4 | **Precast Works** |  | 2025-04-16 | 2025-04-23 |  |  |  |  |  |  |
| B14-V17~V24-1120 |  | Precast Constrction | 7d | 2025-04-16 | 2025-04-23 | B14-V17~V24-1110, B14-V09~V16-1120 | 0d |  | Precast Walls GF [8]; Hollow Core Slap GF [8]; Precast Stairs & staircase House [8]; Thermal insollation Outside Walls [8]; Concrete structure joints [8]; Precast Walls FF [8]; Hollow Core Slap FF [8] | 1,513,762.87 | Civil |
|  | 1 | **Works Inside The Villa** |  | 2025-04-24 | 2025-08-04 |  |  |  |  |  |  |
| B14-V17~V24-1130 |  | Block Work For GF & Estabishment 1F | 6d | 2025-04-24 | 2025-04-30 | B14-V17~V24-1120, B14-V09~V16-1130 | 1d | 0d | Block GF [8] | 13,647.1 | Arc |
| B14-V17~V24-1140 |  | L.L & H.L Drainage | 6d | 2025-05-01 | 2025-05-07 | B14-V17~V24-1130, B14-V09~V16-1140 | 1d | 0d | HL Drainage [8]; L.L Drainage [8] | 89,489.28 | Mech |
| B14-V17~V24-1150 |  | Elec Establishment For GF & 1F | 3d | 2025-05-01 | 2025-05-04 | B14-V17~V24-1130, B14-V09~V16-1150 | 4d | 3d | Elec Establishment GF [8] | 26,840.73 | Elec |
| B14-V17~V24-1160 |  | Screed Work For 1F & Roof | 6d | 2025-05-08 | 2025-05-14 | B14-V17~V24-1140, B14-V17~V24-1150, B14-V09~V16-1160 | 1d | 0d | Screed 1st Floor [8]; Screed Roof Floor [8]; Leveling Screed 1st Floor [8]; Leveling Screed Roof Floor [8] | 268,467.85 | Civil |
| B14-V17~V24-1170 |  | Water Tank & Heater Foundations | 4d | 2025-05-15 | 2025-05-19 | B14-V17~V24-1160, B14-V09~V16-1170 | 5d | 0d |  |  | Civil |
| B14-V17~V24-1180 |  | Block Works For 1F | 3d | 2025-05-15 | 2025-05-18 | B14-V17~V24-1160, B14-V09~V16-1180 | 1d | 0d | Block FF [8] | 20,537.81 | Arc |
| B14-V17~V24-1190 |  | Water Line Network | 6d | 2025-05-19 | 2025-05-25 | B14-V17~V24-1180, B14-V09~V16-1190 | 1d | 0d | Water Line Network [8] | 40,261.13 | Mech |
| B14-V17~V24-1200 |  | Continue Elec Establishment For GF & 1F | 3d | 2025-05-19 | 2025-05-21 | B14-V17~V24-1180, B14-V09~V16-1200 | 4d | 3d | Elec Establishment FF [8] | 26,840.73 | Elec |
| B14-V17~V24-1210 |  | Thermal Insulation For Roof | 5d | 2025-05-20 | 2025-05-25 | B14-V17~V24-1170, B14-V09~V16-1210 | 5d | 0d | Roof Insulation [8] | 32,530.16 | Arc |
| B14-V17~V24-1220 |  | Roof Floor Tiles | 6d | 2025-05-26 | 2025-06-01 | B14-V17~V24-1210, B14-V09~V16-1220 | 5d | 1d | Roof Tiles [8]; Roof Tiles Joints [8]; Re_Test Roof Insulation [8] | 63,179.38 | Arc |
| B14-V17~V24-1230 |  | Plaster Work For Villa | 6d | 2025-05-26 | 2025-06-01 | B14-V17~V24-1190, B14-V17~V24-1200, B14-V09~V16-1230 | 1d | 0d | Establishing a plastering GF [8]; Establishing a plastering FF [8]; Plastering GF [8]; Plastering FF [8] | 49,263.81 |  |
| B14-V17~V24-1240 |  | Marbale Stairs & Handrails | 6d | 2025-06-02 | 2025-06-08 | B14-V17~V24-1230, B14-V09~V16-1240 | 23d | 1d | Marbale Stairs [8]; Stairs Handrails SS [8] | 91,494.69 |  |
| B14-V17~V24-1250 |  | Water Proofing Of Bathrooms | 4d | 2025-06-02 | 2025-06-05 | B14-V17~V24-1230, B14-V09~V16-1250 | 1d | 0d | Bathrooms InsulationGF & FF [8] | 134.24 |  |
| B14-V17~V24-1260 |  | Pulling The Elec Wires | 4d | 2025-06-02 | 2025-06-05 | B14-V17~V24-1230, B14-V09~V16-1260 | 11d | 3d | Elec Wires GF [8]; Elec Wires FF [8] | 80,542.4 |  |
| B14-V17~V24-1270 |  | Bathroom Tiles | 4d | 2025-06-07 | 2025-06-10 | B14-V17~V24-1250, B14-V17~V24-1220, B14-V09~V16-1270 | 1d | 0d | Ceramic Walls Kitchen [8]; Ceramic Walls Bathrooms GF [8]; Ceramic Walls Bathrooms FF [8]; Ceramic Tiles Bathrooms GF [8]; Ceramic Tiles Kitchen GF [8]; Ceramic Tiles Store GF [8] | 73,204.08 |  |
| B14-V17~V24-1280 |  | Structure For Gypsum | 6d | 2025-06-11 | 2025-06-17 | B14-V17~V24-1270, B14-V09~V16-1280 | 1d | 0d | Structure For Gypsum GF Rooms [8]; Structure For Gypsum FF Rooms [8]; Structure For Gypsum Bathrooms & Kitchen [8] | 33,550.81 |  |
| B14-V17~V24-1290 |  | Gypsum Board For Room | 4d | 2025-06-18 | 2025-06-22 | B14-V17~V24-1280, B14-V17~V24-1260, B14-V09~V16-1290 | 1d | 0d | Gypsum Board For GF Room [8]; Gypsum Board For FF Room [8] | 35,796.64 |  |
| B14-V17~V24-1300 |  | Installation Of Gypsum Board For Bathroom & Kitchen | 4d | 2025-06-23 | 2025-06-26 | B14-V17~V24-1290, B14-V09~V16-1300 | 1d | 0d | Gypsum Board For Bathrooms & Kitchen [8] | 11,052.24 |  |
| B14-V17~V24-1310 |  | Putty Filler For Gypsm Board Ceiling | 6d | 2025-06-28 | 2025-07-03 | B14-V17~V24-1300, B14-V09~V16-1310 | 1d | 0d | Putty Filler 1st Layer Roof all Rooms [8]; Putty Filler 1st Layer Roof all Bathrooms & Kitchen [8]; Putty Filler1st Layer walls [8] | 62,182.52 |  |
| B14-V17~V24-1320 |  | Fixing Shower Glass | 4d | 2025-07-05 | 2025-07-08 | B14-V17~V24-1310, B14-V09~V16-1320 | 8d | 0d | Shower Glass [8] | 22,372.88 |  |
| B14-V17~V24-1330 |  | Interior Wall Putty Filler | 6d | 2025-07-05 | 2025-07-10 | B14-V17~V24-1310, B14-V17~V24-1240, B14-V09~V16-1330 | 1d | 0d | Putty Filler 2ed Layer Roof & WAlls GF [8]; Putty Filler 2ed Layer Roof & WAlls FF [8] | 62,150.21 |  |
| B14-V17~V24-1340 |  | Installation Of Sanitry Fixture | 6d | 2025-07-09 | 2025-07-15 | B14-V17~V24-1320, B14-V09~V16-1340 | 8d | 0d | Mech Fixtures & Accessories [8] | 98,438.1 |  |
| B14-V17~V24-1350 |  | 1st Face Paint | 5d | 2025-07-12 | 2025-07-16 | B14-V17~V24-1330, B14-V09~V16-1350 | 1d | 0d |  |  |  |
| B14-V17~V24-1360 |  | Installation Of Aluminum Windows | 6d | 2025-07-12 | 2025-07-17 | B14-V17~V24-1330, B14-V09~V16-1360 | 10d | 1d | Aluminum Windows [8] | 84,797.8 |  |
| B14-V17~V24-1370 |  | Installation Of Elec Fixture & Accessories | 6d | 2025-07-12 | 2025-07-17 | B14-V17~V24-1310, B14-V17~V24-1330, B14-V17~V24-1260, B14-V09~V16-1370 | 23d | 1d | Elec Fixtures & Accessories Villa & Yard [8]; Elec Cables GF & FF & Earthing [8] | 53,681.46 |  |
| B14-V17~V24-1380 |  | Installation Of Water Tank-Heater & Pumps | 6d | 2025-07-16 | 2025-07-22 | B14-V17~V24-1340, B14-V09~V16-1380, B14-V17~V24-1220 | 8d | 0d | Water Tank & booster Pump [8]; Lower Pump [8]; Heater [8] | 129,730.28 |  |
| B14-V17~V24-1390 |  | Installation Of Parquet | 4d | 2025-07-17 | 2025-07-21 | B14-V17~V24-1350, B14-V09~V16-1390 | 1d | 0d | Installation Of Parquet [8] | 52,978.96 |  |
| B14-V17~V24-1400 |  | Installation Of Wooden Doors | 6d | 2025-07-22 | 2025-07-28 | B14-V17~V24-1390, B14-V09~V16-1400 | 1d | 0d | Wooden Doors Accessories all Villa [8]; Wooden Doors Kitchen & Bathroom without Accessories [8]; Exterior Wooden Doors [8] | 142,109.01 |  |
| B14-V17~V24-1410 |  | Final Face Paint | 6d | 2025-07-29 | 2025-08-04 | B14-V17~V24-1360, B14-V17~V24-1400, B14-V09~V16-1410 | 1d |  | Final Face Paint Villa [8] | 31,090.55 |  |

| ID | WBS | Activity | Duration | Start | Finish | Predecessors | Total float | Free float | Resources | Cost |
| --- | --- | --- | --- | --- | --- | --- | --- | --- | --- | --- |
|  | 3 | **Fence & Courtyard Works** |  | 2025-04-24 | 2025-07-28 |  |  |  |  |  |
| B14-V17~V24-1420 |  | Pouring Bedding Concrete For Fence Fondations | 2d | 2025-04-24 | 2025-04-26 | B14-V17~V24-1120, B14-V09~V16-1420 | 9d | 0d | Excavation Fence Foundations [8] | 4,519.28 |
| B14-V17~V24-1430 |  | RC Concrete For Fence Fondations | 6d | 2025-04-27 | 2025-05-03 | B14-V17~V24-1420, B14-V09~V16-1430 | 9d | 0d | Fence Fondations-Eastern side [8]; Fence Fondations-Westren side [8]; Fence Fondations-Back side [8] | 13,420.32 |
| B14-V17~V24-1440 |  | Steel Fixing & Carpentry For Fence Columns | 6d | 2025-05-04 | 2025-05-10 | B14-V17~V24-1430, B14-V09~V16-1440 | 9d | 0d |  |  |
| B14-V17~V24-1450 |  | Establishing Elec For Fence Columns | 4d | 2025-05-11 | 2025-05-14 | B14-V17~V24-1440, B14-V09~V16-1450 | 9d | 0d |  |  |
| B14-V17~V24-1460 |  | Pouring Concrete For Fence Columns | 1d | 2025-05-15 | 2025-05-15 | B14-V17~V24-1450, B14-V09~V16-1460 | 9d | 0d | Fence Columns-Eastern side [8]; Fence Columns-Westren side [8]; Fence Columns-Back side [8] | 9,665.04 |
| B14-V17~V24-1470 |  | Installation Precast Panel For Fence | 5d | 2025-05-17 | 2025-05-21 | B14-V17~V24-1460, B14-V09~V16-1470 | 9d | 0d | Hollow Core Walls [8] | 71,593.2 |
| B14-V17~V24-1480 |  | Bitumen Coating For Fence Fondations | 4d | 2025-05-22 | 2025-05-26 | B14-V17~V24-1470, B14-V09~V16-1480 | 9d | 0d |  |  |
| B14-V17~V24-1490 |  | Pouring Bedding Concrete For "Front" Fence Fondations | 1d | 2025-05-22 | 2025-05-22 | B14-V17~V24-1470, B14-V09~V16-1490 | 21d | 0d |  |  |
| B14-V17~V24-1500 |  | RC Concrete For "Front" Fence Fondations | 4d | 2025-05-24 | 2025-05-27 | B14-V17~V24-1490, B14-V09~V16-1500 | 21d | 0d | Front Fence Fondations [8] | 8,904.4 |
| B14-V17~V24-1510 |  | Outdoor Drainage & Water Line | 5d | 2025-05-27 | 2025-06-01 | B14-V17~V24-1480, B14-V17~V24-1140, B14-V09~V16-1510 | 9d | 0d | Outdoor Drainage [8]; Outdoor Water Line [8] | 13,423.68 |
| B14-V17~V24-1520 |  | Steel Fixing & Carpentry For "Front" Fence Columns | 4d | 2025-05-28 | 2025-06-01 | B14-V17~V24-1500, B14-V09~V16-1520 | 21d | 0d |  |  |
| B14-V17~V24-1530 |  | Establishing Elec For "Front" Fence Columns | 4d | 2025-06-02 | 2025-06-05 | B14-V17~V24-1520, B14-V09~V16-1530 | 21d | 0d |  |  |
| B14-V17~V24-1540 |  | Establishing Elec For Fence & Yard | 2d | 2025-06-02 | 2025-06-03 | B14-V17~V24-1510, B14-V09~V16-1540 | 9d | 0d | Elec Establishment Fence & Yard [8] | 17,898.32 |
| B14-V17~V24-1550 |  | Backfilling the Yard | 4d | 2025-06-04 | 2025-06-08 | B14-V17~V24-1540, B14-V09~V16-1550 | 9d | 0d | Backfilling the Yard [8] | 10,560 |
| B14-V17~V24-1560 |  | Pouring Concrete Wall Of "Front" Fence Columns | 2d | 2025-06-07 | 2025-06-08 | B14-V17~V24-1530, B14-V09~V16-1560 | 21d | 0d | Front Fence Walls [8] | 17,898.32 |
| B14-V17~V24-1570 |  | Pouring Concrete Crown Of "Front" Fence Columns | 3d | 2025-06-09 | 2025-06-11 | B14-V17~V24-1560, B14-V09~V16-1570 | 21d | 0d | Fence Columns - C Chanel [8] | 3,310.37 |
| B14-V17~V24-1580 |  | Bardoura Works For Yard | 5d | 2025-06-09 | 2025-06-14 | B14-V17~V24-1550, B14-V09~V16-1580 | 9d | 0d | Bardoura Works For Yard [8] | 14,408.16 |
| B14-V17~V24-1590 |  | Pouring Concrete Flower Basin Of "Front" Fence Columns | 4d | 2025-06-12 | 2025-06-16 | B14-V17~V24-1570, B14-V09~V16-1590 | 21d | 0d |  |  |
| B14-V17~V24-1600 |  | Antitermite Treatment For Yard | 1d | 2025-06-15 | 2025-06-15 | B14-V17~V24-1580, B14-V09~V16-1600 | 9d | 0d | Antitermite Treatment For Yard [8] |  |
| B14-V17~V24-1610 |  | Pouring Concrete For Yard | 1d | 2025-06-16 | 2025-06-16 | B14-V17~V24-1600, B14-V09~V16-1610 | 9d | 0d |  |  |
| B14-V17~V24-1620 |  | Block Work For Flower Basin | 5d | 2025-06-17 | 2025-06-22 | B14-V17~V24-1610, B14-V09~V16-1620 | 9d | 0d |  |  |
| B14-V17~V24-1630 |  | Plastering Work For Flower Basin | 4d | 2025-06-23 | 2025-06-26 | B14-V17~V24-1620, B14-V09~V16-1630 | 9d | 0d |  |  |
| B14-V17~V24-1640 |  | Interlock Works For The Yard | 6d | 2025-06-28 | 2025-07-03 | B14-V17~V24-1630, B14-V09~V16-1640 | 9d | 0d | Interlock Works For The Yard [8] | 36,776.32 |
| B14-V17~V24-1650 |  | External Grading Works For The Villa | 4d | 2025-07-05 | 2025-07-08 | B14-V17~V24-1640, B14-V09~V16-1650 | 11d | 0d | External Grading Works For The Villa [8] | 3,221.68 |
| B14-V17~V24-1660 |  | Installation The Exterior Door & Garage Door | 5d | 2025-07-05 | 2025-07-09 | B14-V17~V24-1640, B14-V09~V16-1660 | 14d | 2d | Installation The Exterior Door [8]; Installation The Exterior Garage Door [8] | 40,002.72 |
| B14-V17~V24-1670 |  | Fixing Floor Drain For The Yard | 2d | 2025-07-05 | 2025-07-06 | B14-V17~V24-1640, B14-V09~V16-1670 | 17d | 5d | Floor Drain & Clean Out [8] | 13,423.76 |
| B14-V17~V24-1680 |  | Granite Surronds Around The Villa | 4d | 2025-07-09 | 2025-07-13 | B14-V17~V24-1650, B14-V09~V16-1680 | 11d | 2d | Granite Surronds Around The Villa [8] | 25,818.32 |
| B14-V17~V24-1690 |  | Painting The Base Surface Of The Fence | 2d | 2025-07-09 | 2025-07-10 | B14-V17~V24-1750, B14-V09~V16-1690 | 9d | 0d |  |  |
| B14-V17~V24-1700 |  | Painting The Final Face Of The Fence | 4d | 2025-07-12 | 2025-07-15 | B14-V17~V24-1690, B14-V09~V16-1700 | 9d | 0d | Painting Final Face Of The Fence [8] | 37,586.48 |
| B14-V17~V24-1710 |  | Exterior Painting Of The Villa | 7d | 2025-07-16 | 2025-07-23 | B14-V17~V24-1680, B14-V17~V24-1700, B14-V17~V24-1660, B14-V17~V24-1670, B14-V09~V16-1710 | 9d | 0d | Exterior Painting Of The Villa [8]; Exterior Painting Staircase House [8] | 105,684.16 |
| B14-V17~V24-1720 |  | Installation Elec Fixtures & Accessories For The Yard | 4d | 2025-07-24 | 2025-07-28 | B14-V17~V24-1700, B14-V17~V24-1710, B14-V09~V16-1720 | 17d | 0d | Elec feeding panels GF & FF [8] | 22,372.88 |

| ID | WBS | Activity | Duration | Start | Finish | Predecessors | Total float | Free float | Resources | Cost | Department-1 |
| --- | --- | --- | --- | --- | --- | --- | --- | --- | --- | --- | --- |
|  | 5 | **External Sidewalk Works** |  | 2025-06-17 | 2025-08-02 |  |  |  |  |  |  |
| B14-V17~V24-1730 |  | Connection The Drain To The Piblic Network | 3d | 2025-06-17 | 2025-06-19 | B14-V17~V24-1510, B14-V17~V24-1590, B14-V09~V16-1730 | 21d | 4d | Connection Drain To The Piblic Network [8]; Connection Water To The Piblic Network [8] | 13,420.32 |  |
| B14-V17~V24-1740 |  | Pardora Works For The External Sidewalk | 2d | 2025-07-05 | 2025-07-06 | B14-V17~V24-1640, B14-V17~V24-1730, B14-V09~V16-1740 | 9d | 0d |  |  |  |
| B14-V17~V24-1750 |  | Interlock Works For The Exerrnal Sidewalk | 2d | 2025-07-07 | 2025-07-08 | B14-V17~V24-1740, B14-V09~V16-1750 | 9d | 0d |  |  |  |
| B14-V17~V24-1760 |  | Pulling The Villa's Main Elec Cable | 4d | 2025-07-29 | 2025-08-02 | B14-V17~V24-1750, B14-V17~V24-1720, B14-V09~V16-1760 | 17d | 0d | Elec Work Testing [8] | 22,819.84 |  |
|  | 6 | **Final Testing & Handover** |  | 2025-07-23 | 2025-08-18 |  |  |  |  |  |  |
| B14-V17~V24-1770 |  | Mech Work Testing & Handover | 5d | 2025-07-23 | 2025-07-28 | B14-V17~V24-1730, B14-V17~V24-1340, B14-V17~V24-1380, B14-V09~V16-1770 | 25d | 2d | Mech Work Testing & Handover [8] | 14,318.64 |  |
| B14-V17~V24-1780 |  | Arch Snaglist & Handover | 5d | 2025-07-29 | 2025-08-03 | B14-V17~V24-1750, B14-V17~V24-1710, B14-V17~V24-1400, B14-V09~V16-1780 | 20d | 2d | Arch Snaglist & Handover [8] | 77,320.64 |  |
| B14-V17~V24-1790 |  | ElecWork Testing & Handover | 4d | 2025-08-03 | 2025-08-06 | B14-V17~V24-1760, B14-V17~V24-1370, B14-V09~V16-1790 | 17d | 0d | Elec Work Handover [8] | 23,804.72 |  |
| B14-V17~V24-1800 |  | Final Handover Of The Villa To The Consltant | 5d | 2025-08-07 | 2025-08-12 | B14-V17~V24-1780, B14-V17~V24-1790, B14-V17~V24-1770, B14-V17~V24-1410, B14-V09~V16-1800 | 17d | 0d |  |  |  |
| B14-V17~V24-1810 |  | Customer Delivery | 5d | 2025-08-13 | 2025-08-18 | B14-V17~V24-1800, B14-V09~V16-1810 | 17d | 2d |  |  |  |
|  | 24 | **B14-V25~V32** |  | 2025-01-06 | 2025-08-26 |  |  |  |  |  |  |
|  | 2 | **Under Grond Slap Works** |  | 2025-01-06 | 2025-02-15 |  |  |  |  |  |  |
| B14-V25~V32-1000 |  | Excavation&Compaction of Fondation | 6d | 2025-01-06 | 2025-01-12 | B14-V17~V24-1000 | 58d | 0d | Clearing & Groubbing [8]; Excavation & Leveling [8]; Stone Layer [8]; A3 Layer [8]; A1-a 1st Layer [8]; A1-a 2ed Layer [8] | 163,545.76 | Civil |
| B14-V25~V32-1010 |  | Pouring Concrete For Bedding | 2d | 2025-01-13 | 2025-01-14 | B14-V25~V32-1000, B14-V17~V24-1010 | 58d | 0d | PC Carpentry [8]; PC Concrete [8]; RC 18 MPA [9 M3] | 37,899.68 | Civil |
| B14-V25~V32-1020 |  | Reinforcement Concrete For Foundation | 5d | 2025-01-15 | 2025-01-20 | B14-V25~V32-1010, B14-V17~V24-1020 | 58d | 0d | RC Foundation Carpentry [8]; RC Foundation Steel [8]; RC Foundation Concrete [8] | 201,355.92 | Civil |
| B14-V25~V32-1030 |  | Steel Fixing& Carpenter work for Beams | 4d | 2025-01-21 | 2025-01-25 | B14-V25~V32-1020, B14-V17~V24-1030 | 58d | 0d | RC Grade Beam Carpentry & Steel [8] | 44,745.76 | Civil |
| B14-V25~V32-1040 |  | Mech&Elec Establishment for Beams | 3d | 2025-01-26 | 2025-01-28 | B14-V25~V32-1030, B14-V17~V24-1040 | 58d | 0d |  |  | Mech |
| B14-V25~V32-1050 |  | Pouring Concrete For Beams | 1d | 2025-01-29 | 2025-01-29 | B14-V25~V32-1040, B14-V17~V24-1050 | 58d | 0d | RC Grade Beam Concrete [8] | 77,141.68 | Civil |
| B14-V25~V32-1060 |  | Bitmen Coating For Fondation&Beams | 3d | 2025-01-30 | 2025-02-02 | B14-V25~V32-1050, B14-V17~V24-1060 | 58d | 0d | Bitumen Coating Foundations & Grade Beams [8] | 22,372.32 | Civil |
| B14-V25~V32-1070 |  | Backfilling Inside Fondations | 4d | 2025-02-03 | 2025-02-06 | B14-V25~V32-1060, B14-V17~V24-1070 | 58d | 0d | Backfilling 1st Layer [8]; Backfilling 2ed Layer [8] | 11,186.4 | Civil |
| B14-V25~V32-1080 |  | Mech Works Under Grond Slap | 3d | 2025-02-08 | 2025-02-10 | B14-V25~V32-1070, B14-V17~V24-1080 | 58d | 0d | Mech Establishment Under Ground Slap [8] | 13,423.42 | Mech |
| B14-V25~V32-1090 |  | Steel Fixing& Carpenter work for Ground Slap | 3d | 2025-02-11 | 2025-02-13 | B14-V25~V32-1080, B14-V17~V24-1090 | 58d | 0d | Steel & Carpentry For Ground Slap [8] | 10,246.54 | Civil |
| B14-V25~V32-1100 |  | Anti Termite Treatment For Ground Slap | 1d | 2025-02-15 | 2025-02-15 | B14-V25~V32-1090, B14-V17~V24-1100 | 58d | 0d | Anti Termite Treatment nder Ground Slap [8] | 2,237.28 | Civil |
| B14-V25~V32-1110 |  | Pouring Concrete For Ground Slap | 1d | 2025-02-15 | 2025-02-15 | B14-V25~V32-1100 FF, B14-V25~V32-1090, B14-V17~V24-1110 | 58d | 5d | Concrete For Ground Slap [8] | 58,169.52 | Civil |

| ID | WBS | Activity | Duration | Start | Finish | Predecessors | Total float | Free float | Resources | Cost | Department-1 |
| --- | --- | --- | --- | --- | --- | --- | --- | --- | --- | --- | --- |
|  | 4 | **Precast Works** |  | 2025-04-24 | 2025-05-01 |  |  |  |  |  |  |
| B14-V25~V32-1120 |  | Precast Constrction | 7d | 2025-04-24 | 2025-05-01 | B14-V25~V32-1110, B14-V17~V24-1120 | 0d |  | Precast Walls GF [8]; Hollow Core Slap GF [8]; Precast Stairs & staircase House [8]; Thermal insollation Outside Walls [8]; Concrete structure joints [8]; Precast Walls FF [8]; Hollow Core Slap FF [8] | 1,513,762.87 | Civil |
|  | 1 | **Works Inside The Villa** |  | 2025-05-03 | 2025-08-12 |  |  |  |  |  |  |
| B14-V25~V32-1130 |  | Block Work For GF & Estabishment 1F | 6d | 2025-05-03 | 2025-05-08 | B14-V25~V32-1120, B14-V17~V24-1130 | 0d |  | Block GF [8] | 13,647.1 | Arc |
| B14-V25~V32-1140 |  | L.L & H.L Drainage | 6d | 2025-05-10 | 2025-05-15 | B14-V25~V32-1130, B14-V17~V24-1140 | 0d |  | HL Drainage [8]; L.L Drainage [8] | 89,489.28 | Mech |
| B14-V25~V32-1150 |  | Elec Establishment For GF & 1F | 3d | 2025-05-10 | 2025-05-12 | B14-V25~V32-1130, B14-V17~V24-1150 | 3d |  | Elec Establishment GF [8] | 26,840.73 | Elec |
| B14-V25~V32-1160 |  | Screed Work For 1F & Roof | 6d | 2025-05-17 | 2025-05-22 | B14-V25~V32-1140, B14-V25~V32-1150, B14-V17~V24-1160 | 0d |  | Screed 1st Floor [8]; Screed Roof Floor [8]; Leveling Screed 1st Floor [8]; Leveling Screed Roof Floor [8] | 268,467.85 | Civil |
| B14-V25~V32-1170 |  | Water Tank & Heater Foundations | 4d | 2025-05-24 | 2025-05-27 | B14-V25~V32-1160, B14-V17~V24-1170 | 4d | 0d |  |  | Civil |
| B14-V25~V32-1180 |  | Block Works For 1F | 3d | 2025-05-24 | 2025-05-26 | B14-V25~V32-1160, B14-V17~V24-1180 | 0d |  | Block FF [8] | 20,537.81 | Arc |
| B14-V25~V32-1190 |  | Water Line Network | 6d | 2025-05-27 | 2025-06-02 | B14-V25~V32-1180, B14-V17~V24-1190 | 0d |  | Water Line Network [8] | 40,261.13 | Mech |
| B14-V25~V32-1200 |  | Continue Elec Establishment For GF & 1F | 3d | 2025-05-27 | 2025-05-29 | B14-V25~V32-1180, B14-V17~V24-1200 | 3d |  | Elec Establishment FF [8] | 26,840.73 | Elec |
| B14-V25~V32-1210 |  | Thermal Insulation For Roof | 5d | 2025-05-28 | 2025-06-02 | B14-V25~V32-1170, B14-V17~V24-1210 | 4d | 0d | Roof Insulation [8] | 32,530.16 | Arc |
| B14-V25~V32-1220 |  | Roof Floor Tiles | 6d | 2025-06-03 | 2025-06-09 | B14-V25~V32-1210, B14-V17~V24-1220 | 4d | 0d | Roof Tiles [8]; Roof Tiles Joints [8]; Re_Test Roof Insulation [8] | 63,179.38 | Arc |
| B14-V25~V32-1230 |  | Plaster Work For Villa | 6d | 2025-06-03 | 2025-06-09 | B14-V25~V32-1190, B14-V25~V32-1200, B14-V17~V24-1230 | 0d |  | Establishing a plastering GF [8]; Establishing a plastering FF [8]; Plastering GF [8]; Plastering FF [8] | 49,263.81 |  |
| B14-V25~V32-1240 |  | Marbale Stairs & Handrails | 6d | 2025-06-10 | 2025-06-16 | B14-V25~V32-1230, B14-V17~V24-1240 | 22d | 0d | Marbale Stairs [8]; Stairs Handrails SS [8] | 91,494.69 |  |
| B14-V25~V32-1250 |  | Water Proofing Of Bathrooms | 4d | 2025-06-10 | 2025-06-14 | B14-V25~V32-1230, B14-V17~V24-1250 | 0d |  | Bathrooms InsulationGF & FF [8] | 134.24 |  |
| B14-V25~V32-1260 |  | Pulling The Elec Wires | 4d | 2025-06-10 | 2025-06-14 | B14-V25~V32-1230, B14-V17~V24-1260 | 10d | 2d | Elec Wires GF [8]; Elec Wires FF [8] | 80,542.4 |  |
| B14-V25~V32-1270 |  | Bathroom Tiles | 4d | 2025-06-15 | 2025-06-18 | B14-V25~V32-1250, B14-V25~V32-1220, B14-V17~V24-1270 | 0d |  | Ceramic Walls Kitchen [8]; Ceramic Walls Bathrooms GF [8]; Ceramic Walls Bathrooms FF [8]; Ceramic Tiles Bathrooms GF [8]; Ceramic Tiles Kitchen GF [8]; Ceramic Tiles Store GF [8] | 73,204.08 |  |
| B14-V25~V32-1280 |  | Structure For Gypsum | 6d | 2025-06-19 | 2025-06-25 | B14-V25~V32-1270, B14-V17~V24-1280 | 0d |  | Structure For Gypsum GF Rooms [8]; Structure For Gypsum FF Rooms [8]; Structure For Gypsum Bathrooms & Kitchen [8] | 33,550.81 |  |
| B14-V25~V32-1290 |  | Gypsum Board For Room | 4d | 2025-06-26 | 2025-06-30 | B14-V25~V32-1280, B14-V25~V32-1260, B14-V17~V24-1290 | 0d |  | Gypsum Board For GF Room [8]; Gypsum Board For FF Room [8] | 35,796.64 |  |
| B14-V25~V32-1300 |  | Installation Of Gypsum Board For Bathroom & Kitchen | 4d | 2025-07-01 | 2025-07-05 | B14-V25~V32-1290, B14-V17~V24-1300 | 0d |  | Gypsum Board For Bathrooms & Kitchen [8] | 11,052.24 |  |
| B14-V25~V32-1310 |  | Putty Filler For Gypsm Board Ceiling | 6d | 2025-07-06 | 2025-07-12 | B14-V25~V32-1300, B14-V17~V24-1310 | 0d |  | Putty Filler 1st Layer Roof all Rooms [8]; Putty Filler 1st Layer Roof all Bathrooms & Kitchen [8]; Putty Filler1st Layer walls [8] | 62,182.52 |  |
| B14-V25~V32-1320 |  | Fixing Shower Glass | 4d | 2025-07-13 | 2025-07-16 | B14-V25~V32-1310, B14-V17~V24-1320 | 7d | 0d | Shower Glass [8] | 22,372.88 |  |
| B14-V25~V32-1330 |  | Interior Wall Putty Filler | 6d | 2025-07-13 | 2025-07-19 | B14-V25~V32-1310, B14-V25~V32-1240, B14-V17~V24-1330 | 0d |  | Putty Filler 2ed Layer Roof & WAlls GF [8]; Putty Filler 2ed Layer Roof & WAlls FF [8] | 62,150.21 |  |
| B14-V25~V32-1340 |  | Installation Of Sanitry Fixture | 6d | 2025-07-17 | 2025-07-23 | B14-V25~V32-1320, B14-V17~V24-1340 | 7d | 0d | Mech Fixtures & Accessories [8] | 98,438.1 |  |
| B14-V25~V32-1350 |  | 1st Face Paint | 5d | 2025-07-20 | 2025-07-24 | B14-V25~V32-1330, B14-V17~V24-1350 | 0d |  |  |  |  |
| B14-V25~V32-1360 |  | Installation Of Aluminum Windows | 6d | 2025-07-20 | 2025-07-26 | B14-V25~V32-1330, B14-V17~V24-1360 | 9d | 0d | Aluminum Windows [8] | 84,797.8 |  |
| B14-V25~V32-1370 |  | Installation Of Elec Fixture & Accessories | 6d | 2025-07-20 | 2025-07-26 | B14-V25~V32-1310, B14-V25~V32-1330, B14-V25~V32-1260, B14-V17~V24-1370 | 22d | 0d | Elec Fixtures & Accessories Villa & Yard [8]; Elec Cables GF & FF & Earthing [8] | 53,681.46 |  |
| B14-V25~V32-1380 |  | Installation Of Water Tank-Heater & Pumps | 6d | 2025-07-24 | 2025-07-30 | B14-V25~V32-1340, B14-V17~V24-1380, B14-V25~V32-1220 | 7d | 0d | Water Tank & booster Pump [8]; Lower Pump [8]; Heater [8] | 129,730.28 |  |
| B14-V25~V32-1390 |  | Installation Of Parquet | 4d | 2025-07-26 | 2025-07-29 | B14-V25~V32-1350, B14-V17~V24-1390 | 0d |  | Installation Of Parquet [8] | 52,978.96 |  |
| B14-V25~V32-1400 |  | Installation Of Wooden Doors | 6d | 2025-07-30 | 2025-08-05 | B14-V25~V32-1390, B14-V17~V24-1400 | 0d |  | Wooden Doors Accessories all Villa [8]; Wooden Doors Kitchen & Bathroom without Accessories [8]; Exterior Wooden Doors [8] | 142,109.01 |  |
| B14-V25~V32-1410 |  | Final Face Paint | 6d | 2025-08-06 | 2025-08-12 | B14-V25~V32-1360, B14-V25~V32-1400, B14-V17~V24-1410 | 0d |  | Final Face Paint Villa [8] | 31,090.55 |  |

| ID | WBS | Activity | Duration | Start | Finish | Predecessors | Total float | Free float | Resources | Cost |
| --- | --- | --- | --- | --- | --- | --- | --- | --- | --- | --- |
|  | 3 | **Fence & Courtyard Works** |  | 2025-05-03 | 2025-08-05 |  |  |  |  |  |
| B14-V25~V32-1420 |  | Pouring Bedding Concrete For Fence Fondations | 2d | 2025-05-03 | 2025-05-04 | B14-V25~V32-1120, B14-V17~V24-1420 | 9d | 0d | Excavation Fence Foundations [8] | 4,519.28 |
| B14-V25~V32-1430 |  | RC Concrete For Fence Fondations | 6d | 2025-05-05 | 2025-05-11 | B14-V25~V32-1420, B14-V17~V24-1430 | 9d | 0d | Fence Fondations-Eastern side [8]; Fence Fondations-Westren side [8]; Fence Fondations-Back side [8] | 13,420.32 |
| B14-V25~V32-1440 |  | Steel Fixing & Carpentry For Fence Columns | 6d | 2025-05-12 | 2025-05-18 | B14-V25~V32-1430, B14-V17~V24-1440 | 9d | 0d |  |  |
| B14-V25~V32-1450 |  | Establishing Elec For Fence Columns | 4d | 2025-05-19 | 2025-05-22 | B14-V25~V32-1440, B14-V17~V24-1450 | 9d | 0d |  |  |
| B14-V25~V32-1460 |  | Pouring Concrete For Fence Columns | 1d | 2025-05-24 | 2025-05-24 | B14-V25~V32-1450, B14-V17~V24-1460 | 9d | 0d | Fence Columns-Eastern side [8]; Fence Columns-Westren side [8]; Fence Columns-Back side [8] | 9,665.04 |
| B14-V25~V32-1470 |  | Installation Precast Panel For Fence | 5d | 2025-05-25 | 2025-05-29 | B14-V25~V32-1460, B14-V17~V24-1470 | 9d | 0d | Hollow Core Walls [8] | 71,593.2 |
| B14-V25~V32-1480 |  | Bitumen Coating For Fence Fondations | 4d | 2025-05-31 | 2025-06-03 | B14-V25~V32-1470, B14-V17~V24-1480 | 9d | 0d |  |  |
| B14-V25~V32-1490 |  | Pouring Bedding Concrete For "Front" Fence Fondations | 1d | 2025-05-31 | 2025-05-31 | B14-V25~V32-1470, B14-V17~V24-1490 | 21d | 0d |  |  |
| B14-V25~V32-1500 |  | RC Concrete For "Front" Fence Fondations | 4d | 2025-06-01 | 2025-06-04 | B14-V25~V32-1490, B14-V17~V24-1500 | 21d | 0d | Front Fence Fondations [8] | 8,904.4 |
| B14-V25~V32-1510 |  | Outdoor Drainage & Water Line | 5d | 2025-06-04 | 2025-06-09 | B14-V25~V32-1480, B14-V25~V32-1140, B14-V17~V24-1510 | 9d | 0d | Outdoor Drainage [8]; Outdoor Water Line [8] | 13,423.68 |
| B14-V25~V32-1520 |  | Steel Fixing & Carpentry For "Front" Fence Columns | 4d | 2025-06-05 | 2025-06-09 | B14-V25~V32-1500, B14-V17~V24-1520 | 21d | 0d |  |  |
| B14-V25~V32-1530 |  | Establishing Elec For "Front" Fence Columns | 4d | 2025-06-10 | 2025-06-14 | B14-V25~V32-1520, B14-V17~V24-1530 | 21d | 0d |  |  |
| B14-V25~V32-1540 |  | Establishing Elec For Fence & Yard | 2d | 2025-06-10 | 2025-06-11 | B14-V25~V32-1510, B14-V17~V24-1540 | 9d | 0d | Elec Establishment Fence & Yard [8] | 17,898.32 |
| B14-V25~V32-1550 |  | Backfilling the Yard | 4d | 2025-06-12 | 2025-06-16 | B14-V25~V32-1540, B14-V17~V24-1550 | 9d | 0d | Backfilling the Yard [8] | 10,560 |
| B14-V25~V32-1560 |  | Pouring Concrete Wall Of "Front" Fence Columns | 2d | 2025-06-15 | 2025-06-16 | B14-V25~V32-1530, B14-V17~V24-1560 | 21d | 0d | Front Fence Walls [8] | 17,898.32 |
| B14-V25~V32-1570 |  | Pouring Concrete Crown Of "Front" Fence Columns | 3d | 2025-06-17 | 2025-06-19 | B14-V25~V32-1560, B14-V17~V24-1570 | 21d | 0d | Fence Columns - C Chanel [8] | 3,310.37 |
| B14-V25~V32-1580 |  | Bardoura Works For Yard | 5d | 2025-06-17 | 2025-06-22 | B14-V25~V32-1550, B14-V17~V24-1580 | 9d | 0d | Bardoura Works For Yard [8] | 14,408.16 |
| B14-V25~V32-1590 |  | Pouring Concrete Flower Basin Of "Front" Fence Columns | 4d | 2025-06-21 | 2025-06-24 | B14-V25~V32-1570, B14-V17~V24-1590 | 21d | 0d |  |  |
| B14-V25~V32-1600 |  | Antitermite Treatment For Yard | 1d | 2025-06-23 | 2025-06-23 | B14-V25~V32-1580, B14-V17~V24-1600 | 9d | 0d | Antitermite Treatment For Yard [8] |  |
| B14-V25~V32-1610 |  | Pouring Concrete For Yard | 1d | 2025-06-24 | 2025-06-24 | B14-V25~V32-1600, B14-V17~V24-1610 | 9d | 0d |  |  |
| B14-V25~V32-1620 |  | Block Work For Flower Basin | 5d | 2025-06-25 | 2025-06-30 | B14-V25~V32-1610, B14-V17~V24-1620 | 9d | 0d |  |  |
| B14-V25~V32-1630 |  | Plastering Work For Flower Basin | 4d | 2025-07-01 | 2025-07-05 | B14-V25~V32-1620, B14-V17~V24-1630 | 9d | 0d |  |  |
| B14-V25~V32-1640 |  | Interlock Works For The Yard | 6d | 2025-07-06 | 2025-07-12 | B14-V25~V32-1630, B14-V17~V24-1640 | 9d | 0d | Interlock Works For The Yard [8] | 36,776.32 |
| B14-V25~V32-1650 |  | External Grading Works For The Villa | 4d | 2025-07-13 | 2025-07-16 | B14-V25~V32-1640, B14-V17~V24-1650 | 11d | 0d | External Grading Works For The Villa [8] | 3,221.68 |
| B14-V25~V32-1660 |  | Installation The Exterior Door & Garage Door | 5d | 2025-07-13 | 2025-07-17 | B14-V25~V32-1640, B14-V17~V24-1660 | 14d | 1d | Installation The Exterior Door [8]; Installation The Exterior Garage Door [8] | 40,002.72 |
| B14-V25~V32-1670 |  | Fixing Floor Drain For The Yard | 2d | 2025-07-13 | 2025-07-14 | B14-V25~V32-1640, B14-V17~V24-1670 | 17d | 4d | Floor Drain & Clean Out [8] | 13,423.76 |
| B14-V25~V32-1680 |  | Granite Surronds Around The Villa | 4d | 2025-07-17 | 2025-07-21 | B14-V25~V32-1650, B14-V17~V24-1680 | 11d | 2d | Granite Surronds Around The Villa [8] | 25,818.32 |
| B14-V25~V32-1690 |  | Painting The Base Surface Of The Fence | 2d | 2025-07-17 | 2025-07-19 | B14-V25~V32-1750, B14-V17~V24-1690 | 9d | 0d |  |  |
| B14-V25~V32-1700 |  | Painting The Final Face Of The Fence | 4d | 2025-07-20 | 2025-07-23 | B14-V25~V32-1690, B14-V17~V24-1700 | 9d | 0d | Painting Final Face Of The Fence [8] | 37,586.48 |
| B14-V25~V32-1710 |  | Exterior Painting Of The Villa | 7d | 2025-07-24 | 2025-07-31 | B14-V25~V32-1680, B14-V25~V32-1700, B14-V25~V32-1660, B14-V25~V32-1670, B14-V17~V24-1710 | 9d | 0d | Exterior Painting Of The Villa [8]; Exterior Painting Staircase House [8] | 105,684.16 |
| B14-V25~V32-1720 |  | Installation Elec Fixtures & Accessories For The Yard | 4d | 2025-08-02 | 2025-08-05 | B14-V25~V32-1700, B14-V25~V32-1710, B14-V17~V24-1720 | 15d | 0d | Elec feeding panels GF & FF [8] | 22,372.88 |

| ID | WBS | Activity | Duration | Start | Finish | Predecessors | Total float | Free float | Resources | Cost | Department-1 |
| --- | --- | --- | --- | --- | --- | --- | --- | --- | --- | --- | --- |
|  | 5 | **External Sidewalk Works** |  | 2025-06-25 | 2025-08-10 |  |  |  |  |  |  |
| B14-V25~V32-1730 |  | Connection The Drain To The Piblic Network | 3d | 2025-06-25 | 2025-06-28 | B14-V25~V32-1510, B14-V25~V32-1590, B14-V17~V24-1730 | 21d | 3d | Connection Drain To The Piblic Network [8]; Connection Water To The Piblic Network [8] | 13,420.32 |  |
| B14-V25~V32-1740 |  | Pardora Works For The External Sidewalk | 2d | 2025-07-13 | 2025-07-14 | B14-V25~V32-1640, B14-V25~V32-1730, B14-V17~V24-1740 | 9d | 0d |  |  |  |
| B14-V25~V32-1750 |  | Interlock Works For The Exerrnal Sidewalk | 2d | 2025-07-15 | 2025-07-16 | B14-V25~V32-1740, B14-V17~V24-1750 | 9d | 0d |  |  |  |
| B14-V25~V32-1760 |  | Pulling The Villa's Main Elec Cable | 4d | 2025-08-06 | 2025-08-10 | B14-V25~V32-1750, B14-V25~V32-1720, B14-V17~V24-1760 | 15d | 0d | Elec Work Testing [8] | 22,819.84 |  |
|  | 6 | **Final Testing & Handover** |  | 2025-07-31 | 2025-08-26 |  |  |  |  |  |  |
| B14-V25~V32-1770 |  | Mech Work Testing & Handover | 5d | 2025-07-31 | 2025-08-05 | B14-V25~V32-1730, B14-V25~V32-1340, B14-V25~V32-1380, B14-V17~V24-1770 | 23d | 1d | Mech Work Testing & Handover [8] | 14,318.64 |  |
| B14-V25~V32-1780 |  | Arch Snaglist & Handover | 5d | 2025-08-06 | 2025-08-11 | B14-V25~V32-1750, B14-V25~V32-1710, B14-V25~V32-1400, B14-V17~V24-1780 | 18d | 1d | Arch Snaglist & Handover [8] | 77,320.64 |  |
| B14-V25~V32-1790 |  | ElecWork Testing & Handover | 4d | 2025-08-11 | 2025-08-14 | B14-V25~V32-1760, B14-V25~V32-1370, B14-V17~V24-1790 | 15d | 0d | Elec Work Handover [8] | 23,804.72 |  |
| B14-V25~V32-1800 |  | Final Handover Of The Villa To The Consltant | 5d | 2025-08-16 | 2025-08-20 | B14-V25~V32-1780, B14-V25~V32-1790, B14-V25~V32-1770, B14-V25~V32-1410, B14-V17~V24-1800 | 15d | 0d |  |  |  |
| B14-V25~V32-1810 |  | Customer Delivery | 5d | 2025-08-21 | 2025-08-26 | B14-V25~V32-1800, B14-V17~V24-1810 | 15d | 0d |  |  |  |
|  | 25 | **B15-V01~V08** |  | 2025-01-13 | 2025-09-01 |  |  |  |  |  |  |
|  | 2 | **Under Grond Slap Works** |  | 2025-01-13 | 2025-02-22 |  |  |  |  |  |  |
| B15-V01~V08-1000 |  | Excavation&Compaction of Fondation | 6d | 2025-01-13 | 2025-01-19 | B14-V25~V32-1000 | 59d | 0d | Clearing & Groubbing [8]; Excavation & Leveling [8]; Stone Layer [8]; A3 Layer [8]; A1-a 1st Layer [8]; A1-a 2ed Layer [8] | 163,545.76 | Civil |
| B15-V01~V08-1010 |  | Pouring Concrete For Bedding | 2d | 2025-01-20 | 2025-01-21 | B15-V01~V08-1000, B14-V25~V32-1010 | 59d | 0d | PC Carpentry [8]; PC Concrete [8]; RC 18 MPA [9 M3] | 37,899.68 | Civil |
| B15-V01~V08-1020 |  | Reinforcement Concrete For Foundation | 5d | 2025-01-22 | 2025-01-27 | B15-V01~V08-1010, B14-V25~V32-1020 | 59d | 0d | RC Foundation Carpentry [8]; RC Foundation Steel [8]; RC Foundation Concrete [8] | 201,355.92 | Civil |
| B15-V01~V08-1030 |  | Steel Fixing& Carpenter work for Beams | 4d | 2025-01-28 | 2025-02-01 | B15-V01~V08-1020, B14-V25~V32-1030 | 59d | 0d | RC Grade Beam Carpentry & Steel [8] | 44,745.76 | Civil |
| B15-V01~V08-1040 |  | Mech&Elec Establishment for Beams | 3d | 2025-02-02 | 2025-02-04 | B15-V01~V08-1030, B14-V25~V32-1040 | 59d | 0d |  |  | Mech |
| B15-V01~V08-1050 |  | Pouring Concrete For Beams | 1d | 2025-02-05 | 2025-02-05 | B15-V01~V08-1040, B14-V25~V32-1050 | 59d | 0d | RC Grade Beam Concrete [8] | 77,141.68 | Civil |
| B15-V01~V08-1060 |  | Bitmen Coating For Fondation&Beams | 3d | 2025-02-06 | 2025-02-09 | B15-V01~V08-1050, B14-V25~V32-1060 | 59d | 0d | Bitumen Coating Foundations & Grade Beams [8] | 22,372.32 | Civil |
| B15-V01~V08-1070 |  | Backfilling Inside Fondations | 4d | 2025-02-10 | 2025-02-13 | B15-V01~V08-1060, B14-V25~V32-1070 | 59d | 0d | Backfilling 1st Layer [8]; Backfilling 2ed Layer [8] | 11,186.4 | Civil |
| B15-V01~V08-1080 |  | Mech Works Under Grond Slap | 3d | 2025-02-15 | 2025-02-17 | B15-V01~V08-1070, B14-V25~V32-1080 | 59d | 0d | Mech Establishment Under Ground Slap [8] | 13,423.42 | Mech |
| B15-V01~V08-1090 |  | Steel Fixing& Carpenter work for Ground Slap | 3d | 2025-02-18 | 2025-02-20 | B15-V01~V08-1080, B14-V25~V32-1090 | 59d | 0d | Steel & Carpentry For Ground Slap [8] | 10,246.54 | Civil |
| B15-V01~V08-1100 |  | Anti Termite Treatment For Ground Slap | 1d | 2025-02-22 | 2025-02-22 | B15-V01~V08-1090, B14-V25~V32-1100 | 59d | 0d | Anti Termite Treatment nder Ground Slap [8] | 2,237.28 | Civil |
| B15-V01~V08-1110 |  | Pouring Concrete For Ground Slap | 1d | 2025-02-22 | 2025-02-22 | B15-V01~V08-1100 FF, B15-V01~V08-1090, B14-V25~V32-1110 | 59d | 5d | Concrete For Ground Slap [8] | 58,169.52 | Civil |

| ID | WBS | Activity | Duration | Start | Finish | Predecessors | Total float | Free float | Resources | Cost | Department-1 |
| --- | --- | --- | --- | --- | --- | --- | --- | --- | --- | --- | --- |
|  | 4 | **Precast Works** |  | 2025-05-03 | 2025-05-08 |  |  |  |  |  |  |
| B15-V01~V08-1120 |  | Precast Constrction | 6d | 2025-05-03 | 2025-05-08 | B15-V01~V08-1110, B14-V25~V32-1120 | 0d |  | Precast Walls GF [8]; Hollow Core Slap GF [8]; Precast Stairs & staircase House [8]; Thermal insollation Outside Walls [8]; Concrete structure joints [8]; Precast Walls FF [8]; Hollow Core Slap FF [8] | 1,513,726.7 | Civil |
|  | 1 | **Works Inside The Villa** |  | 2025-05-10 | 2025-08-19 |  |  |  |  |  |  |
| B15-V01~V08-1130 |  | Block Work For GF & Estabishment 1F | 6d | 2025-05-10 | 2025-05-15 | B15-V01~V08-1120, B14-V25~V32-1130 | 0d |  | Block GF [8] | 13,647.1 | Arc |
| B15-V01~V08-1140 |  | L.L & H.L Drainage | 6d | 2025-05-17 | 2025-05-22 | B15-V01~V08-1130, B14-V25~V32-1140 | 0d |  | HL Drainage [8]; L.L Drainage [8] | 89,489.28 | Mech |
| B15-V01~V08-1150 |  | Elec Establishment For GF & 1F | 3d | 2025-05-17 | 2025-05-19 | B15-V01~V08-1130, B14-V25~V32-1150 | 3d |  | Elec Establishment GF [8] | 26,840.73 | Elec |
| B15-V01~V08-1160 |  | Screed Work For 1F & Roof | 6d | 2025-05-24 | 2025-05-29 | B15-V01~V08-1140, B15-V01~V08-1150, B14-V25~V32-1160 | 0d |  | Screed 1st Floor [8]; Screed Roof Floor [8]; Leveling Screed 1st Floor [8]; Leveling Screed Roof Floor [8] | 268,467.85 | Civil |
| B15-V01~V08-1170 |  | Water Tank & Heater Foundations | 4d | 2025-05-31 | 2025-06-03 | B15-V01~V08-1160, B14-V25~V32-1170 | 4d | 0d |  |  | Civil |
| B15-V01~V08-1180 |  | Block Works For 1F | 3d | 2025-05-31 | 2025-06-02 | B15-V01~V08-1160, B14-V25~V32-1180 | 0d |  | Block FF [8] | 20,537.81 | Arc |
| B15-V01~V08-1190 |  | Water Line Network | 6d | 2025-06-03 | 2025-06-09 | B15-V01~V08-1180, B14-V25~V32-1190 | 0d |  | Water Line Network [8] | 40,261.13 | Mech |
| B15-V01~V08-1200 |  | Continue Elec Establishment For GF & 1F | 3d | 2025-06-03 | 2025-06-05 | B15-V01~V08-1180, B14-V25~V32-1200 | 3d |  | Elec Establishment FF [8] | 26,840.73 | Elec |
| B15-V01~V08-1210 |  | Thermal Insulation For Roof | 5d | 2025-06-04 | 2025-06-09 | B15-V01~V08-1170, B14-V25~V32-1210 | 4d | 0d | Roof Insulation [8] | 32,530.16 | Arc |
| B15-V01~V08-1220 |  | Roof Floor Tiles | 6d | 2025-06-10 | 2025-06-16 | B15-V01~V08-1210, B14-V25~V32-1220 | 4d | 0d | Roof Tiles [8]; Roof Tiles Joints [8]; Re_Test Roof Insulation [8] | 63,179.38 | Arc |
| B15-V01~V08-1230 |  | Plaster Work For Villa | 6d | 2025-06-10 | 2025-06-16 | B15-V01~V08-1190, B15-V01~V08-1200, B14-V25~V32-1230 | 0d |  | Establishing a plastering GF [8]; Establishing a plastering FF [8]; Plastering GF [8]; Plastering FF [8] | 49,263.81 |  |
| B15-V01~V08-1240 |  | Marbale Stairs & Handrails | 6d | 2025-06-17 | 2025-06-23 | B15-V01~V08-1230, B14-V25~V32-1240 | 22d | 0d | Marbale Stairs [8]; Stairs Handrails SS [8] | 91,494.69 |  |
| B15-V01~V08-1250 |  | Water Proofing Of Bathrooms | 4d | 2025-06-17 | 2025-06-21 | B15-V01~V08-1230, B14-V25~V32-1250 | 0d |  | Bathrooms InsulationGF & FF [8] | 134.24 |  |
| B15-V01~V08-1260 |  | Pulling The Elec Wires | 4d | 2025-06-17 | 2025-06-21 | B15-V01~V08-1230, B14-V25~V32-1260 | 10d | 2d | Elec Wires GF [8]; Elec Wires FF [8] | 80,542.4 |  |
| B15-V01~V08-1270 |  | Bathroom Tiles | 4d | 2025-06-22 | 2025-06-25 | B15-V01~V08-1250, B15-V01~V08-1220, B14-V25~V32-1270 | 0d |  | Ceramic Walls Kitchen [8]; Ceramic Walls Bathrooms GF [8]; Ceramic Walls Bathrooms FF [8]; Ceramic Tiles Bathrooms GF [8]; Ceramic Tiles Kitchen GF [8]; Ceramic Tiles Store GF [8] | 73,204.08 |  |
| B15-V01~V08-1280 |  | Structure For Gypsum | 6d | 2025-06-26 | 2025-07-02 | B15-V01~V08-1270, B14-V25~V32-1280 | 0d |  | Structure For Gypsum GF Rooms [8]; Structure For Gypsum FF Rooms [8]; Structure For Gypsum Bathrooms & Kitchen [8] | 33,550.81 |  |
| B15-V01~V08-1290 |  | Gypsum Board For Room | 4d | 2025-07-03 | 2025-07-07 | B15-V01~V08-1280, B15-V01~V08-1260, B14-V25~V32-1290 | 0d |  | Gypsum Board For GF Room [8]; Gypsum Board For FF Room [8] | 35,796.64 |  |
| B15-V01~V08-1300 |  | Installation Of Gypsum Board For Bathroom & Kitchen | 4d | 2025-07-08 | 2025-07-12 | B15-V01~V08-1290, B14-V25~V32-1300 | 0d |  | Gypsum Board For Bathrooms & Kitchen [8] | 11,052.24 |  |
| B15-V01~V08-1310 |  | Putty Filler For Gypsm Board Ceiling | 6d | 2025-07-13 | 2025-07-19 | B15-V01~V08-1300, B14-V25~V32-1310 | 0d |  | Putty Filler 1st Layer Roof all Rooms [8]; Putty Filler 1st Layer Roof all Bathrooms & Kitchen [8]; Putty Filler1st Layer walls [8] | 62,182.52 |  |
| B15-V01~V08-1320 |  | Fixing Shower Glass | 4d | 2025-07-20 | 2025-07-23 | B15-V01~V08-1310, B14-V25~V32-1320 | 7d | 0d | Shower Glass [8] | 22,372.88 |  |
| B15-V01~V08-1330 |  | Interior Wall Putty Filler | 6d | 2025-07-20 | 2025-07-26 | B15-V01~V08-1310, B15-V01~V08-1240, B14-V25~V32-1330 | 0d |  | Putty Filler 2ed Layer Roof & WAlls GF [8]; Putty Filler 2ed Layer Roof & WAlls FF [8] | 62,150.21 |  |
| B15-V01~V08-1340 |  | Installation Of Sanitry Fixture | 6d | 2025-07-24 | 2025-07-30 | B15-V01~V08-1320, B14-V25~V32-1340 | 7d | 0d | Mech Fixtures & Accessories [8] | 98,438.1 |  |
| B15-V01~V08-1350 |  | 1st Face Paint | 5d | 2025-07-27 | 2025-07-31 | B15-V01~V08-1330, B14-V25~V32-1350 | 0d |  |  |  |  |
| B15-V01~V08-1360 |  | Installation Of Aluminum Windows | 6d | 2025-07-27 | 2025-08-02 | B15-V01~V08-1330, B14-V25~V32-1360 | 9d | 0d | Aluminum Windows [8] | 84,797.8 |  |
| B15-V01~V08-1370 |  | Installation Of Elec Fixture & Accessories | 6d | 2025-07-27 | 2025-08-02 | B15-V01~V08-1310, B15-V01~V08-1330, B15-V01~V08-1260, B14-V25~V32-1370 | 22d | 0d | Elec Fixtures & Accessories Villa & Yard [8]; Elec Cables GF & FF & Earthing [8] | 53,681.46 |  |
| B15-V01~V08-1380 |  | Installation Of Water Tank-Heater & Pumps | 6d | 2025-07-31 | 2025-08-06 | B15-V01~V08-1340, B14-V25~V32-1380, B15-V01~V08-1220 | 7d | 0d | Water Tank & booster Pump [8]; Lower Pump [8]; Heater [8] | 129,730.28 |  |
| B15-V01~V08-1390 |  | Installation Of Parquet | 4d | 2025-08-02 | 2025-08-05 | B15-V01~V08-1350, B14-V25~V32-1390 | 0d |  | Installation Of Parquet [8] | 52,978.96 |  |
| B15-V01~V08-1400 |  | Installation Of Wooden Doors | 6d | 2025-08-06 | 2025-08-12 | B15-V01~V08-1390, B14-V25~V32-1400 | 0d |  | Wooden Doors Accessories all Villa [8]; Wooden Doors Kitchen & Bathroom without Accessories [8]; Exterior Wooden Doors [8] | 142,109.01 |  |
| B15-V01~V08-1410 |  | Final Face Paint | 6d | 2025-08-13 | 2025-08-19 | B15-V01~V08-1360, B15-V01~V08-1400, B14-V25~V32-1410 | 0d |  | Final Face Paint Villa [8] | 31,090.55 |  |

| ID | WBS | Activity | Duration | Start | Finish | Predecessors | Total float | Free float | Resources | Cost |
| --- | --- | --- | --- | --- | --- | --- | --- | --- | --- | --- |
|  | 3 | **Fence & Courtyard Works** |  | 2025-05-10 | 2025-08-12 |  |  |  |  |  |
| B15-V01~V08-1420 |  | Pouring Bedding Concrete For Fence Fondations | 2d | 2025-05-10 | 2025-05-11 | B15-V01~V08-1120, B14-V25~V32-1420 | 10d | 0d | Excavation Fence Foundations [8] | 4,519.28 |
| B15-V01~V08-1430 |  | RC Concrete For Fence Fondations | 6d | 2025-05-12 | 2025-05-18 | B15-V01~V08-1420, B14-V25~V32-1430 | 10d | 0d | Fence Fondations-Eastern side [8]; Fence Fondations-Westren side [8]; Fence Fondations-Back side [8] | 13,420.32 |
| B15-V01~V08-1440 |  | Steel Fixing & Carpentry For Fence Columns | 6d | 2025-05-19 | 2025-05-25 | B15-V01~V08-1430, B14-V25~V32-1440 | 10d | 0d |  |  |
| B15-V01~V08-1450 |  | Establishing Elec For Fence Columns | 4d | 2025-05-26 | 2025-05-29 | B15-V01~V08-1440, B14-V25~V32-1450 | 10d | 0d |  |  |
| B15-V01~V08-1460 |  | Pouring Concrete For Fence Columns | 1d | 2025-05-31 | 2025-05-31 | B15-V01~V08-1450, B14-V25~V32-1460 | 10d | 0d | Fence Columns-Eastern side [8]; Fence Columns-Westren side [8]; Fence Columns-Back side [8] | 9,665.04 |
| B15-V01~V08-1470 |  | Installation Precast Panel For Fence | 5d | 2025-06-01 | 2025-06-05 | B15-V01~V08-1460, B14-V25~V32-1470 | 10d | 0d | Hollow Core Walls [8] | 71,593.2 |
| B15-V01~V08-1480 |  | Bitumen Coating For Fence Fondations | 4d | 2025-06-07 | 2025-06-10 | B15-V01~V08-1470, B14-V25~V32-1480 | 10d | 0d |  |  |
| B15-V01~V08-1490 |  | Pouring Bedding Concrete For "Front" Fence Fondations | 1d | 2025-06-07 | 2025-06-07 | B15-V01~V08-1470, B14-V25~V32-1490 | 22d | 0d |  |  |
| B15-V01~V08-1500 |  | RC Concrete For "Front" Fence Fondations | 4d | 2025-06-08 | 2025-06-11 | B15-V01~V08-1490, B14-V25~V32-1500 | 22d | 0d | Front Fence Fondations [8] | 8,904.4 |
| B15-V01~V08-1510 |  | Outdoor Drainage & Water Line | 5d | 2025-06-11 | 2025-06-16 | B15-V01~V08-1480, B15-V01~V08-1140, B14-V25~V32-1510 | 10d | 0d | Outdoor Drainage [8]; Outdoor Water Line [8] | 13,423.68 |
| B15-V01~V08-1520 |  | Steel Fixing & Carpentry For "Front" Fence Columns | 4d | 2025-06-12 | 2025-06-16 | B15-V01~V08-1500, B14-V25~V32-1520 | 22d | 0d |  |  |
| B15-V01~V08-1530 |  | Establishing Elec For "Front" Fence Columns | 4d | 2025-06-17 | 2025-06-21 | B15-V01~V08-1520, B14-V25~V32-1530 | 22d | 0d |  |  |
| B15-V01~V08-1540 |  | Establishing Elec For Fence & Yard | 2d | 2025-06-17 | 2025-06-18 | B15-V01~V08-1510, B14-V25~V32-1540 | 10d | 0d | Elec Establishment Fence & Yard [8] | 17,898.32 |
| B15-V01~V08-1550 |  | Backfilling the Yard | 4d | 2025-06-19 | 2025-06-23 | B15-V01~V08-1540, B14-V25~V32-1550 | 10d | 0d | Backfilling the Yard [8] | 10,560 |
| B15-V01~V08-1560 |  | Pouring Concrete Wall Of "Front" Fence Columns | 2d | 2025-06-22 | 2025-06-23 | B15-V01~V08-1530, B14-V25~V32-1560 | 22d | 0d | Front Fence Walls [8] | 17,898.32 |
| B15-V01~V08-1570 |  | Pouring Concrete Crown Of "Front" Fence Columns | 3d | 2025-06-24 | 2025-06-26 | B15-V01~V08-1560, B14-V25~V32-1570 | 22d | 0d | Fence Columns - C Chanel [8] | 3,310.37 |
| B15-V01~V08-1580 |  | Bardoura Works For Yard | 5d | 2025-06-24 | 2025-06-29 | B15-V01~V08-1550, B14-V25~V32-1580 | 10d | 0d | Bardoura Works For Yard [8] | 14,408.16 |
| B15-V01~V08-1590 |  | Pouring Concrete Flower Basin Of "Front" Fence Columns | 4d | 2025-06-28 | 2025-07-01 | B15-V01~V08-1570, B14-V25~V32-1590 | 22d | 0d |  |  |
| B15-V01~V08-1600 |  | Antitermite Treatment For Yard | 1d | 2025-06-30 | 2025-06-30 | B15-V01~V08-1580, B14-V25~V32-1600 | 10d | 0d | Antitermite Treatment For Yard [8] |  |
| B15-V01~V08-1610 |  | Pouring Concrete For Yard | 1d | 2025-07-01 | 2025-07-01 | B15-V01~V08-1600, B14-V25~V32-1610 | 10d | 0d |  |  |
| B15-V01~V08-1620 |  | Block Work For Flower Basin | 5d | 2025-07-02 | 2025-07-07 | B15-V01~V08-1610, B14-V25~V32-1620 | 10d | 0d |  |  |
| B15-V01~V08-1630 |  | Plastering Work For Flower Basin | 4d | 2025-07-08 | 2025-07-12 | B15-V01~V08-1620, B14-V25~V32-1630 | 10d | 0d |  |  |
| B15-V01~V08-1640 |  | Interlock Works For The Yard | 6d | 2025-07-13 | 2025-07-19 | B15-V01~V08-1630, B14-V25~V32-1640 | 10d | 0d | Interlock Works For The Yard [8] | 36,776.32 |
| B15-V01~V08-1650 |  | External Grading Works For The Villa | 4d | 2025-07-20 | 2025-07-23 | B15-V01~V08-1640, B14-V25~V32-1650 | 12d | 0d | External Grading Works For The Villa [8] | 3,221.68 |
| B15-V01~V08-1660 |  | Installation The Exterior Door & Garage Door | 5d | 2025-07-20 | 2025-07-24 | B15-V01~V08-1640, B14-V25~V32-1660 | 15d | 1d | Installation The Exterior Door [8]; Installation The Exterior Garage Door [8] | 40,002.72 |
| B15-V01~V08-1670 |  | Fixing Floor Drain For The Yard | 2d | 2025-07-20 | 2025-07-21 | B15-V01~V08-1640, B14-V25~V32-1670 | 18d | 4d | Floor Drain & Clean Out [8] | 13,423.76 |
| B15-V01~V08-1680 |  | Granite Surronds Around The Villa | 4d | 2025-07-24 | 2025-07-28 | B15-V01~V08-1650, B14-V25~V32-1680 | 12d | 2d | Granite Surronds Around The Villa [8] | 25,818.32 |
| B15-V01~V08-1690 |  | Painting The Base Surface Of The Fence | 2d | 2025-07-24 | 2025-07-26 | B15-V01~V08-1750, B14-V25~V32-1690 | 10d | 0d |  |  |
| B15-V01~V08-1700 |  | Painting The Final Face Of The Fence | 4d | 2025-07-27 | 2025-07-30 | B15-V01~V08-1690, B14-V25~V32-1700 | 10d | 1d | Painting Final Face Of The Fence [8] | 37,586.48 |
| B15-V01~V08-1710 |  | Exterior Painting Of The Villa | 6d | 2025-08-02 | 2025-08-07 | B15-V01~V08-1680, B15-V01~V08-1700, B15-V01~V08-1660, B15-V01~V08-1670, B14-V25~V32-1710 | 9d | 0d | Exterior Painting Of The Villa [8]; Exterior Painting Staircase House [8] | 105,687.03 |
| B15-V01~V08-1720 |  | Installation Elec Fixtures & Accessories For The Yard | 4d | 2025-08-09 | 2025-08-12 | B15-V01~V08-1700, B15-V01~V08-1710, B14-V25~V32-1720 | 16d | 0d | Elec feeding panels GF & FF [8] | 22,372.88 |

| ID | WBS | Activity | Duration | Start | Finish | Predecessors | Total float | Free float | Resources | Cost | Department-1 |
| --- | --- | --- | --- | --- | --- | --- | --- | --- | --- | --- | --- |
|  | 5 | **External Sidewalk Works** |  | 2025-07-02 | 2025-08-17 |  |  |  |  |  |  |
| B15-V01~V08-1730 |  | Connection The Drain To The Piblic Network | 3d | 2025-07-02 | 2025-07-05 | B15-V01~V08-1510, B15-V01~V08-1590, B14-V25~V32-1730 | 22d | 3d | Connection Drain To The Piblic Network [8]; Connection Water To The Piblic Network [8] | 13,420.32 |  |
| B15-V01~V08-1740 |  | Pardora Works For The External Sidewalk | 2d | 2025-07-20 | 2025-07-21 | B15-V01~V08-1640, B15-V01~V08-1730, B14-V25~V32-1740 | 10d | 0d |  |  |  |
| B15-V01~V08-1750 |  | Interlock Works For The Exerrnal Sidewalk | 2d | 2025-07-22 | 2025-07-23 | B15-V01~V08-1740, B14-V25~V32-1750 | 10d | 0d |  |  |  |
| B15-V01~V08-1760 |  | Pulling The Villa's Main Elec Cable | 4d | 2025-08-13 | 2025-08-17 | B15-V01~V08-1750, B15-V01~V08-1720, B14-V25~V32-1760 | 16d | 0d | Elec Work Testing [8] | 22,819.84 |  |
|  | 6 | **Final Testing & Handover** |  | 2025-08-07 | 2025-09-01 |  |  |  |  |  |  |
| B15-V01~V08-1770 |  | Mech Work Testing & Handover | 5d | 2025-08-07 | 2025-08-12 | B15-V01~V08-1730, B15-V01~V08-1340, B15-V01~V08-1380, B14-V25~V32-1770 | 23d | 1d | Mech Work Testing & Handover [8] | 14,318.64 |  |
| B15-V01~V08-1780 |  | Arch Snaglist & Handover | 4d | 2025-08-13 | 2025-08-17 | B15-V01~V08-1750, B15-V01~V08-1710, B15-V01~V08-1400, B14-V25~V32-1780 | 19d | 2d | Arch Snaglist & Handover [8] | 77,320.64 |  |
| B15-V01~V08-1790 |  | ElecWork Testing & Handover | 3d | 2025-08-18 | 2025-08-20 | B15-V01~V08-1760, B15-V01~V08-1370, B14-V25~V32-1790 | 16d | 0d | Elec Work Handover [8] | 23,804.72 |  |
| B15-V01~V08-1800 |  | Final Handover Of The Villa To The Consltant | 4d | 2025-08-21 | 2025-08-25 | B15-V01~V08-1780, B15-V01~V08-1790, B15-V01~V08-1770, B15-V01~V08-1410, B14-V25~V32-1800 | 16d | 1d |  |  |  |
| B15-V01~V08-1810 |  | Customer Delivery | 5d | 2025-08-27 | 2025-09-01 | B15-V01~V08-1800, B14-V25~V32-1810 | 15d | 0d |  |  |  |
|  | 26 | **B15-V09~V16** |  | 2025-01-20 | 2025-09-07 |  |  |  |  |  |  |
|  | 2 | **Under Grond Slap Works** |  | 2025-01-20 | 2025-03-01 |  |  |  |  |  |  |
| B15-V09~V16-1000 |  | Excavation&Compaction of Fondation | 6d | 2025-01-20 | 2025-01-26 | B15-V01~V08-1000 | 59d | 0d | Clearing & Groubbing [8]; Excavation & Leveling [8]; Stone Layer [8]; A3 Layer [8]; A1-a 1st Layer [8]; A1-a 2ed Layer [8] | 163,545.76 | Civil |
| B15-V09~V16-1010 |  | Pouring Concrete For Bedding | 2d | 2025-01-27 | 2025-01-28 | B15-V09~V16-1000, B15-V01~V08-1010 | 59d | 0d | PC Carpentry [8]; PC Concrete [8]; RC 18 MPA [9 M3] | 37,899.68 | Civil |
| B15-V09~V16-1020 |  | Reinforcement Concrete For Foundation | 5d | 2025-01-29 | 2025-02-03 | B15-V09~V16-1010, B15-V01~V08-1020 | 59d | 0d | RC Foundation Carpentry [8]; RC Foundation Steel [8]; RC Foundation Concrete [8] | 201,355.92 | Civil |
| B15-V09~V16-1030 |  | Steel Fixing& Carpenter work for Beams | 4d | 2025-02-04 | 2025-02-08 | B15-V09~V16-1020, B15-V01~V08-1030 | 59d | 0d | RC Grade Beam Carpentry & Steel [8] | 44,745.76 | Civil |
| B15-V09~V16-1040 |  | Mech&Elec Establishment for Beams | 3d | 2025-02-09 | 2025-02-11 | B15-V09~V16-1030, B15-V01~V08-1040 | 59d | 0d |  |  | Mech |
| B15-V09~V16-1050 |  | Pouring Concrete For Beams | 1d | 2025-02-12 | 2025-02-12 | B15-V09~V16-1040, B15-V01~V08-1050 | 59d | 0d | RC Grade Beam Concrete [8] | 77,141.68 | Civil |
| B15-V09~V16-1060 |  | Bitmen Coating For Fondation&Beams | 3d | 2025-02-13 | 2025-02-16 | B15-V09~V16-1050, B15-V01~V08-1060 | 59d | 0d | Bitumen Coating Foundations & Grade Beams [8] | 22,372.32 | Civil |
| B15-V09~V16-1070 |  | Backfilling Inside Fondations | 4d | 2025-02-17 | 2025-02-20 | B15-V09~V16-1060, B15-V01~V08-1070 | 59d | 0d | Backfilling 1st Layer [8]; Backfilling 2ed Layer [8] | 11,186.4 | Civil |
| B15-V09~V16-1080 |  | Mech Works Under Grond Slap | 3d | 2025-02-22 | 2025-02-24 | B15-V09~V16-1070, B15-V01~V08-1080 | 59d | 0d | Mech Establishment Under Ground Slap [8] | 13,423.42 | Mech |
| B15-V09~V16-1090 |  | Steel Fixing& Carpenter work for Ground Slap | 3d | 2025-02-25 | 2025-02-27 | B15-V09~V16-1080, B15-V01~V08-1090 | 59d | 0d | Steel & Carpentry For Ground Slap [8] | 10,246.54 | Civil |
| B15-V09~V16-1100 |  | Anti Termite Treatment For Ground Slap | 1d | 2025-03-01 | 2025-03-01 | B15-V09~V16-1090, B15-V01~V08-1100 | 59d | 0d | Anti Termite Treatment nder Ground Slap [8] | 2,237.28 | Civil |
| B15-V09~V16-1110 |  | Pouring Concrete For Ground Slap | 1d | 2025-03-01 | 2025-03-01 | B15-V09~V16-1100 FF, B15-V09~V16-1090, B15-V01~V08-1110 | 59d | 5d | Concrete For Ground Slap [8] | 58,169.52 | Civil |

| ID | WBS | Activity | Duration | Start | Finish | Predecessors | Total float | Free float | Resources | Cost | Department-1 |
| --- | --- | --- | --- | --- | --- | --- | --- | --- | --- | --- | --- |
|  | 4 | **Precast Works** |  | 2025-05-10 | 2025-05-15 |  |  |  |  |  |  |
| B15-V09~V16-1120 |  | Precast Constrction | 6d | 2025-05-10 | 2025-05-15 | B15-V09~V16-1110, B15-V01~V08-1120 | 0d |  | Precast Walls GF [8]; Hollow Core Slap GF [8]; Precast Stairs & staircase House [8]; Thermal insollation Outside Walls [8]; Concrete structure joints [8]; Precast Walls FF [8]; Hollow Core Slap FF [8] | 1,513,460.1 | Civil |
|  | 1 | **Works Inside The Villa** |  | 2025-05-17 | 2025-08-26 |  |  |  |  |  |  |
| B15-V09~V16-1130 |  | Block Work For GF & Estabishment 1F | 6d | 2025-05-17 | 2025-05-22 | B15-V09~V16-1120, B15-V01~V08-1130 | 0d |  | Block GF [8] | 13,647.1 | Arc |
| B15-V09~V16-1140 |  | L.L & H.L Drainage | 6d | 2025-05-24 | 2025-05-29 | B15-V09~V16-1130, B15-V01~V08-1140 | 0d |  | HL Drainage [8]; L.L Drainage [8] | 89,489.28 | Mech |
| B15-V09~V16-1150 |  | Elec Establishment For GF & 1F | 3d | 2025-05-24 | 2025-05-26 | B15-V09~V16-1130, B15-V01~V08-1150 | 3d |  | Elec Establishment GF [8] | 26,840.73 | Elec |
| B15-V09~V16-1160 |  | Screed Work For 1F & Roof | 6d | 2025-05-31 | 2025-06-05 | B15-V09~V16-1140, B15-V09~V16-1150, B15-V01~V08-1160 | 0d |  | Screed 1st Floor [8]; Screed Roof Floor [8]; Leveling Screed 1st Floor [8]; Leveling Screed Roof Floor [8] | 268,467.85 | Civil |
| B15-V09~V16-1170 |  | Water Tank & Heater Foundations | 4d | 2025-06-07 | 2025-06-10 | B15-V09~V16-1160, B15-V01~V08-1170 | 4d | 0d |  |  | Civil |
| B15-V09~V16-1180 |  | Block Works For 1F | 3d | 2025-06-07 | 2025-06-09 | B15-V09~V16-1160, B15-V01~V08-1180 | 0d |  | Block FF [8] | 20,537.81 | Arc |
| B15-V09~V16-1190 |  | Water Line Network | 6d | 2025-06-10 | 2025-06-16 | B15-V09~V16-1180, B15-V01~V08-1190 | 0d |  | Water Line Network [8] | 40,261.13 | Mech |
| B15-V09~V16-1200 |  | Continue Elec Establishment For GF & 1F | 3d | 2025-06-10 | 2025-06-12 | B15-V09~V16-1180, B15-V01~V08-1200 | 3d |  | Elec Establishment FF [8] | 26,840.73 | Elec |
| B15-V09~V16-1210 |  | Thermal Insulation For Roof | 5d | 2025-06-11 | 2025-06-16 | B15-V09~V16-1170, B15-V01~V08-1210 | 4d | 0d | Roof Insulation [8] | 32,530.16 | Arc |
| B15-V09~V16-1220 |  | Roof Floor Tiles | 6d | 2025-06-17 | 2025-06-23 | B15-V09~V16-1210, B15-V01~V08-1220 | 4d | 0d | Roof Tiles [8]; Roof Tiles Joints [8]; Re_Test Roof Insulation [8] | 63,179.38 | Arc |
| B15-V09~V16-1230 |  | Plaster Work For Villa | 6d | 2025-06-17 | 2025-06-23 | B15-V09~V16-1190, B15-V09~V16-1200, B15-V01~V08-1230 | 0d |  | Establishing a plastering GF [8]; Establishing a plastering FF [8]; Plastering GF [8]; Plastering FF [8] | 49,263.81 |  |
| B15-V09~V16-1240 |  | Marbale Stairs & Handrails | 6d | 2025-06-24 | 2025-06-30 | B15-V09~V16-1230, B15-V01~V08-1240 | 22d | 0d | Marbale Stairs [8]; Stairs Handrails SS [8] | 91,494.69 |  |
| B15-V09~V16-1250 |  | Water Proofing Of Bathrooms | 4d | 2025-06-24 | 2025-06-28 | B15-V09~V16-1230, B15-V01~V08-1250 | 0d |  | Bathrooms InsulationGF & FF [8] | 134.24 |  |
| B15-V09~V16-1260 |  | Pulling The Elec Wires | 4d | 2025-06-24 | 2025-06-28 | B15-V09~V16-1230, B15-V01~V08-1260 | 10d | 2d | Elec Wires GF [8]; Elec Wires FF [8] | 80,542.4 |  |
| B15-V09~V16-1270 |  | Bathroom Tiles | 4d | 2025-06-29 | 2025-07-02 | B15-V09~V16-1250, B15-V09~V16-1220, B15-V01~V08-1270 | 0d |  | Ceramic Walls Kitchen [8]; Ceramic Walls Bathrooms GF [8]; Ceramic Walls Bathrooms FF [8]; Ceramic Tiles Bathrooms GF [8]; Ceramic Tiles Kitchen GF [8]; Ceramic Tiles Store GF [8] | 73,204.08 |  |
| B15-V09~V16-1280 |  | Structure For Gypsum | 6d | 2025-07-03 | 2025-07-09 | B15-V09~V16-1270, B15-V01~V08-1280 | 0d |  | Structure For Gypsum GF Rooms [8]; Structure For Gypsum FF Rooms [8]; Structure For Gypsum Bathrooms & Kitchen [8] | 33,550.81 |  |
| B15-V09~V16-1290 |  | Gypsum Board For Room | 4d | 2025-07-10 | 2025-07-14 | B15-V09~V16-1280, B15-V09~V16-1260, B15-V01~V08-1290 | 0d |  | Gypsum Board For GF Room [8]; Gypsum Board For FF Room [8] | 35,796.64 |  |
| B15-V09~V16-1300 |  | Installation Of Gypsum Board For Bathroom & Kitchen | 4d | 2025-07-15 | 2025-07-19 | B15-V09~V16-1290, B15-V01~V08-1300 | 0d |  | Gypsum Board For Bathrooms & Kitchen [8] | 11,052.24 |  |
| B15-V09~V16-1310 |  | Putty Filler For Gypsm Board Ceiling | 6d | 2025-07-20 | 2025-07-26 | B15-V09~V16-1300, B15-V01~V08-1310 | 0d |  | Putty Filler 1st Layer Roof all Rooms [8]; Putty Filler 1st Layer Roof all Bathrooms & Kitchen [8]; Putty Filler1st Layer walls [8] | 62,182.52 |  |
| B15-V09~V16-1320 |  | Fixing Shower Glass | 4d | 2025-07-27 | 2025-07-30 | B15-V09~V16-1310, B15-V01~V08-1320 | 7d | 0d | Shower Glass [8] | 22,372.88 |  |
| B15-V09~V16-1330 |  | Interior Wall Putty Filler | 6d | 2025-07-27 | 2025-08-02 | B15-V09~V16-1310, B15-V09~V16-1240, B15-V01~V08-1330 | 0d |  | Putty Filler 2ed Layer Roof & WAlls GF [8]; Putty Filler 2ed Layer Roof & WAlls FF [8] | 62,150.21 |  |
| B15-V09~V16-1340 |  | Installation Of Sanitry Fixture | 6d | 2025-07-31 | 2025-08-06 | B15-V09~V16-1320, B15-V01~V08-1340 | 7d | 0d | Mech Fixtures & Accessories [8] | 98,438.1 |  |
| B15-V09~V16-1350 |  | 1st Face Paint | 5d | 2025-08-03 | 2025-08-07 | B15-V09~V16-1330, B15-V01~V08-1350 | 0d |  |  |  |  |
| B15-V09~V16-1360 |  | Installation Of Aluminum Windows | 6d | 2025-08-03 | 2025-08-09 | B15-V09~V16-1330, B15-V01~V08-1360 | 9d | 0d | Aluminum Windows [8] | 84,797.8 |  |
| B15-V09~V16-1370 |  | Installation Of Elec Fixture & Accessories | 6d | 2025-08-03 | 2025-08-09 | B15-V09~V16-1310, B15-V09~V16-1330, B15-V09~V16-1260, B15-V01~V08-1370 | 22d | 0d | Elec Fixtures & Accessories Villa & Yard [8]; Elec Cables GF & FF & Earthing [8] | 53,681.46 |  |
| B15-V09~V16-1380 |  | Installation Of Water Tank-Heater & Pumps | 6d | 2025-08-07 | 2025-08-13 | B15-V09~V16-1340, B15-V01~V08-1380, B15-V09~V16-1220 | 7d | 0d | Water Tank & booster Pump [8]; Lower Pump [8]; Heater [8] | 129,730.28 |  |
| B15-V09~V16-1390 |  | Installation Of Parquet | 4d | 2025-08-09 | 2025-08-12 | B15-V09~V16-1350, B15-V01~V08-1390 | 0d |  | Installation Of Parquet [8] | 52,978.96 |  |
| B15-V09~V16-1400 |  | Installation Of Wooden Doors | 6d | 2025-08-13 | 2025-08-19 | B15-V09~V16-1390, B15-V01~V08-1400 | 0d |  | Wooden Doors Accessories all Villa [8]; Wooden Doors Kitchen & Bathroom without Accessories [8]; Exterior Wooden Doors [8] | 142,109.01 |  |
| B15-V09~V16-1410 |  | Final Face Paint | 6d | 2025-08-20 | 2025-08-26 | B15-V09~V16-1360, B15-V09~V16-1400, B15-V01~V08-1410 | 0d |  | Final Face Paint Villa [8] | 31,090.55 |  |

| ID | WBS | Activity | Duration | Start | Finish | Predecessors | Total float | Free float | Resources | Cost |
| --- | --- | --- | --- | --- | --- | --- | --- | --- | --- | --- |
|  | 3 | **Fence & Courtyard Works** |  | 2025-05-17 | 2025-08-19 |  |  |  |  |  |
| B15-V09~V16-1420 |  | Pouring Bedding Concrete For Fence Fondations | 2d | 2025-05-17 | 2025-05-18 | B15-V09~V16-1120, B15-V01~V08-1420 | 10d | 0d | Excavation Fence Foundations [8] | 4,519.28 |
| B15-V09~V16-1430 |  | RC Concrete For Fence Fondations | 6d | 2025-05-19 | 2025-05-25 | B15-V09~V16-1420, B15-V01~V08-1430 | 10d | 0d | Fence Fondations-Eastern side [8]; Fence Fondations-Westren side [8]; Fence Fondations-Back side [8] | 13,420.32 |
| B15-V09~V16-1440 |  | Steel Fixing & Carpentry For Fence Columns | 6d | 2025-05-26 | 2025-06-01 | B15-V09~V16-1430, B15-V01~V08-1440 | 10d | 0d |  |  |
| B15-V09~V16-1450 |  | Establishing Elec For Fence Columns | 4d | 2025-06-02 | 2025-06-05 | B15-V09~V16-1440, B15-V01~V08-1450 | 10d | 0d |  |  |
| B15-V09~V16-1460 |  | Pouring Concrete For Fence Columns | 1d | 2025-06-07 | 2025-06-07 | B15-V09~V16-1450, B15-V01~V08-1460 | 10d | 0d | Fence Columns-Eastern side [8]; Fence Columns-Westren side [8]; Fence Columns-Back side [8] | 9,665.04 |
| B15-V09~V16-1470 |  | Installation Precast Panel For Fence | 5d | 2025-06-08 | 2025-06-12 | B15-V09~V16-1460, B15-V01~V08-1470 | 10d | 0d | Hollow Core Walls [8] | 71,593.2 |
| B15-V09~V16-1480 |  | Bitumen Coating For Fence Fondations | 4d | 2025-06-14 | 2025-06-17 | B15-V09~V16-1470, B15-V01~V08-1480 | 10d | 0d |  |  |
| B15-V09~V16-1490 |  | Pouring Bedding Concrete For "Front" Fence Fondations | 1d | 2025-06-14 | 2025-06-14 | B15-V09~V16-1470, B15-V01~V08-1490 | 22d | 0d |  |  |
| B15-V09~V16-1500 |  | RC Concrete For "Front" Fence Fondations | 4d | 2025-06-15 | 2025-06-18 | B15-V09~V16-1490, B15-V01~V08-1500 | 22d | 0d | Front Fence Fondations [8] | 8,904.4 |
| B15-V09~V16-1510 |  | Outdoor Drainage & Water Line | 5d | 2025-06-18 | 2025-06-23 | B15-V09~V16-1480, B15-V09~V16-1140, B15-V01~V08-1510 | 10d | 0d | Outdoor Drainage [8]; Outdoor Water Line [8] | 13,423.68 |
| B15-V09~V16-1520 |  | Steel Fixing & Carpentry For "Front" Fence Columns | 4d | 2025-06-19 | 2025-06-23 | B15-V09~V16-1500, B15-V01~V08-1520 | 22d | 0d |  |  |
| B15-V09~V16-1530 |  | Establishing Elec For "Front" Fence Columns | 4d | 2025-06-24 | 2025-06-28 | B15-V09~V16-1520, B15-V01~V08-1530 | 22d | 0d |  |  |
| B15-V09~V16-1540 |  | Establishing Elec For Fence & Yard | 2d | 2025-06-24 | 2025-06-25 | B15-V09~V16-1510, B15-V01~V08-1540 | 10d | 0d | Elec Establishment Fence & Yard [8] | 17,898.32 |
| B15-V09~V16-1550 |  | Backfilling the Yard | 4d | 2025-06-26 | 2025-06-30 | B15-V09~V16-1540, B15-V01~V08-1550 | 10d | 0d | Backfilling the Yard [8] | 10,560 |
| B15-V09~V16-1560 |  | Pouring Concrete Wall Of "Front" Fence Columns | 2d | 2025-06-29 | 2025-06-30 | B15-V09~V16-1530, B15-V01~V08-1560 | 22d | 0d | Front Fence Walls [8] | 17,898.32 |
| B15-V09~V16-1570 |  | Pouring Concrete Crown Of "Front" Fence Columns | 3d | 2025-07-01 | 2025-07-03 | B15-V09~V16-1560, B15-V01~V08-1570 | 22d | 0d | Fence Columns - C Chanel [8] | 3,310.37 |
| B15-V09~V16-1580 |  | Bardoura Works For Yard | 5d | 2025-07-01 | 2025-07-06 | B15-V09~V16-1550, B15-V01~V08-1580 | 10d | 0d | Bardoura Works For Yard [8] | 14,408.16 |
| B15-V09~V16-1590 |  | Pouring Concrete Flower Basin Of "Front" Fence Columns | 4d | 2025-07-05 | 2025-07-08 | B15-V09~V16-1570, B15-V01~V08-1590 | 22d | 0d |  |  |
| B15-V09~V16-1600 |  | Antitermite Treatment For Yard | 1d | 2025-07-07 | 2025-07-07 | B15-V09~V16-1580, B15-V01~V08-1600 | 10d | 0d | Antitermite Treatment For Yard [8] |  |
| B15-V09~V16-1610 |  | Pouring Concrete For Yard | 1d | 2025-07-08 | 2025-07-08 | B15-V09~V16-1600, B15-V01~V08-1610 | 10d | 0d |  |  |
| B15-V09~V16-1620 |  | Block Work For Flower Basin | 5d | 2025-07-09 | 2025-07-14 | B15-V09~V16-1610, B15-V01~V08-1620 | 10d | 0d |  |  |
| B15-V09~V16-1630 |  | Plastering Work For Flower Basin | 4d | 2025-07-15 | 2025-07-19 | B15-V09~V16-1620, B15-V01~V08-1630 | 10d | 0d |  |  |
| B15-V09~V16-1640 |  | Interlock Works For The Yard | 6d | 2025-07-20 | 2025-07-26 | B15-V09~V16-1630, B15-V01~V08-1640 | 10d | 0d | Interlock Works For The Yard [8] | 36,776.32 |
| B15-V09~V16-1650 |  | External Grading Works For The Villa | 4d | 2025-07-27 | 2025-07-30 | B15-V09~V16-1640, B15-V01~V08-1650 | 12d | 0d | External Grading Works For The Villa [8] | 3,221.68 |
| B15-V09~V16-1660 |  | Installation The Exterior Door & Garage Door | 5d | 2025-07-27 | 2025-07-31 | B15-V09~V16-1640, B15-V01~V08-1660 | 15d | 1d | Installation The Exterior Door [8]; Installation The Exterior Garage Door [8] | 40,002.72 |
| B15-V09~V16-1670 |  | Fixing Floor Drain For The Yard | 2d | 2025-07-27 | 2025-07-28 | B15-V09~V16-1640, B15-V01~V08-1670 | 18d | 4d | Floor Drain & Clean Out [8] | 13,423.76 |
| B15-V09~V16-1680 |  | Granite Surronds Around The Villa | 4d | 2025-07-31 | 2025-08-04 | B15-V09~V16-1650, B15-V01~V08-1680 | 12d | 2d | Granite Surronds Around The Villa [8] | 25,818.32 |
| B15-V09~V16-1690 |  | Painting The Base Surface Of The Fence | 2d | 2025-07-31 | 2025-08-02 | B15-V09~V16-1750, B15-V01~V08-1690 | 10d | 0d |  |  |
| B15-V09~V16-1700 |  | Painting The Final Face Of The Fence | 4d | 2025-08-03 | 2025-08-06 | B15-V09~V16-1690, B15-V01~V08-1700 | 10d | 1d | Painting Final Face Of The Fence [8] | 37,586.48 |
| B15-V09~V16-1710 |  | Exterior Painting Of The Villa | 6d | 2025-08-09 | 2025-08-14 | B15-V09~V16-1680, B15-V09~V16-1700, B15-V09~V16-1660, B15-V09~V16-1670, B15-V01~V08-1710 | 9d | 0d | Exterior Painting Of The Villa [8]; Exterior Painting Staircase House [8] | 105,684.66 |
| B15-V09~V16-1720 |  | Installation Elec Fixtures & Accessories For The Yard | 4d | 2025-08-16 | 2025-08-19 | B15-V09~V16-1700, B15-V09~V16-1710, B15-V01~V08-1720 | 15d | 0d | Elec feeding panels GF & FF [8] | 22,372.88 |

| ID | WBS | Activity | Duration | Start | Finish | Predecessors | Total float | Free float | Resources | Cost | Department-1 |
| --- | --- | --- | --- | --- | --- | --- | --- | --- | --- | --- | --- |
|  | 5 | **External Sidewalk Works** |  | 2025-07-09 | 2025-08-24 |  |  |  |  |  |  |
| B15-V09~V16-1730 |  | Connection The Drain To The Piblic Network | 3d | 2025-07-09 | 2025-07-12 | B15-V09~V16-1510, B15-V09~V16-1590, B15-V01~V08-1730 | 22d | 3d | Connection Drain To The Piblic Network [8]; Connection Water To The Piblic Network [8] | 13,420.32 |  |
| B15-V09~V16-1740 |  | Pardora Works For The External Sidewalk | 2d | 2025-07-27 | 2025-07-28 | B15-V09~V16-1640, B15-V09~V16-1730, B15-V01~V08-1740 | 10d | 0d |  |  |  |
| B15-V09~V16-1750 |  | Interlock Works For The Exerrnal Sidewalk | 2d | 2025-07-29 | 2025-07-30 | B15-V09~V16-1740, B15-V01~V08-1750 | 10d | 0d |  |  |  |
| B15-V09~V16-1760 |  | Pulling The Villa's Main Elec Cable | 4d | 2025-08-20 | 2025-08-24 | B15-V09~V16-1750, B15-V09~V16-1720, B15-V01~V08-1760 | 15d | 0d | Elec Work Testing [8] | 22,819.84 |  |
|  | 6 | **Final Testing & Handover** |  | 2025-08-14 | 2025-09-07 |  |  |  |  |  |  |
| B15-V09~V16-1770 |  | Mech Work Testing & Handover | 5d | 2025-08-14 | 2025-08-19 | B15-V09~V16-1730, B15-V09~V16-1340, B15-V09~V16-1380, B15-V01~V08-1770 | 22d | 1d | Mech Work Testing & Handover [8] | 14,318.64 |  |
| B15-V09~V16-1780 |  | Arch Snaglist & Handover | 4d | 2025-08-20 | 2025-08-24 | B15-V09~V16-1750, B15-V09~V16-1710, B15-V09~V16-1400, B15-V01~V08-1780 | 18d | 2d | Arch Snaglist & Handover [8] | 77,320.64 |  |
| B15-V09~V16-1790 |  | ElecWork Testing & Handover | 3d | 2025-08-25 | 2025-08-27 | B15-V09~V16-1760, B15-V09~V16-1370, B15-V01~V08-1790 | 15d | 0d | Elec Work Handover [8] | 23,804.12 |  |
| B15-V09~V16-1800 |  | Final Handover Of The Villa To The Consltant | 4d | 2025-08-28 | 2025-09-01 | B15-V09~V16-1780, B15-V09~V16-1790, B15-V09~V16-1770, B15-V09~V16-1410, B15-V01~V08-1800 | 15d | 0d |  |  |  |
| B15-V09~V16-1810 |  | Customer Delivery | 5d | 2025-09-02 | 2025-09-07 | B15-V09~V16-1800, B15-V01~V08-1810 | 15d | 1d |  |  |  |
|  | 27 | **B15-V17~V24** |  | 2025-01-27 | 2025-09-14 |  |  |  |  |  |  |
|  | 2 | **Under Grond Slap Works** |  | 2025-01-27 | 2025-03-08 |  |  |  |  |  |  |
| B15-V17~V24-1000 |  | Excavation&Compaction of Fondation | 6d | 2025-01-27 | 2025-02-02 | B15-V09~V16-1000 | 59d | 0d | Clearing & Groubbing [8]; Excavation & Leveling [8]; Stone Layer [8]; A3 Layer [8]; A1-a 1st Layer [8]; A1-a 2ed Layer [8] | 163,545.76 | Civil |
| B15-V17~V24-1010 |  | Pouring Concrete For Bedding | 2d | 2025-02-03 | 2025-02-04 | B15-V17~V24-1000, B15-V09~V16-1010 | 59d | 0d | PC Carpentry [8]; PC Concrete [8]; RC 18 MPA [9 M3] | 37,899.68 | Civil |
| B15-V17~V24-1020 |  | Reinforcement Concrete For Foundation | 5d | 2025-02-05 | 2025-02-10 | B15-V17~V24-1010, B15-V09~V16-1020 | 59d | 0d | RC Foundation Carpentry [8]; RC Foundation Steel [8]; RC Foundation Concrete [8] | 201,355.92 | Civil |
| B15-V17~V24-1030 |  | Steel Fixing& Carpenter work for Beams | 4d | 2025-02-11 | 2025-02-15 | B15-V17~V24-1020, B15-V09~V16-1030 | 59d | 0d | RC Grade Beam Carpentry & Steel [8] | 44,745.76 | Civil |
| B15-V17~V24-1040 |  | Mech&Elec Establishment for Beams | 3d | 2025-02-16 | 2025-02-18 | B15-V17~V24-1030, B15-V09~V16-1040 | 59d | 0d |  |  | Mech |
| B15-V17~V24-1050 |  | Pouring Concrete For Beams | 1d | 2025-02-19 | 2025-02-19 | B15-V17~V24-1040, B15-V09~V16-1050 | 59d | 0d | RC Grade Beam Concrete [8] | 77,141.68 | Civil |
| B15-V17~V24-1060 |  | Bitmen Coating For Fondation&Beams | 3d | 2025-02-20 | 2025-02-23 | B15-V17~V24-1050, B15-V09~V16-1060 | 59d | 0d | Bitumen Coating Foundations & Grade Beams [8] | 22,372.32 | Civil |
| B15-V17~V24-1070 |  | Backfilling Inside Fondations | 4d | 2025-02-24 | 2025-02-27 | B15-V17~V24-1060, B15-V09~V16-1070 | 59d | 0d | Backfilling 1st Layer [8]; Backfilling 2ed Layer [8] | 11,186.4 | Civil |
| B15-V17~V24-1080 |  | Mech Works Under Grond Slap | 3d | 2025-03-01 | 2025-03-03 | B15-V17~V24-1070, B15-V09~V16-1080 | 59d | 0d | Mech Establishment Under Ground Slap [8] | 13,423.42 | Mech |
| B15-V17~V24-1090 |  | Steel Fixing& Carpenter work for Ground Slap | 3d | 2025-03-04 | 2025-03-06 | B15-V17~V24-1080, B15-V09~V16-1090 | 59d | 0d | Steel & Carpentry For Ground Slap [8] | 10,246.54 | Civil |
| B15-V17~V24-1100 |  | Anti Termite Treatment For Ground Slap | 1d | 2025-03-08 | 2025-03-08 | B15-V17~V24-1090, B15-V09~V16-1100 | 59d | 0d | Anti Termite Treatment nder Ground Slap [8] | 2,237.28 | Civil |
| B15-V17~V24-1110 |  | Pouring Concrete For Ground Slap | 1d | 2025-03-08 | 2025-03-08 | B15-V17~V24-1100 FF, B15-V17~V24-1090, B15-V09~V16-1110 | 59d | 5d | Concrete For Ground Slap [8] | 58,169.52 | Civil |

| ID | WBS | Activity | Duration | Start | Finish | Predecessors | Total float | Free float | Resources | Cost | Department-1 |
| --- | --- | --- | --- | --- | --- | --- | --- | --- | --- | --- | --- |
|  | 4 | **Precast Works** |  | 2025-05-17 | 2025-05-22 |  |  |  |  |  |  |
| B15-V17~V24-1120 |  | Precast Constrction | 6d | 2025-05-17 | 2025-05-22 | B15-V17~V24-1110, B15-V09~V16-1120 | 0d |  | Precast Walls GF [8]; Hollow Core Slap GF [8]; Precast Stairs & staircase House [8]; Thermal insollation Outside Walls [8]; Concrete structure joints [8]; Precast Walls FF [8]; Hollow Core Slap FF [8] | 1,513,460.1 | Civil |
|  | 1 | **Works Inside The Villa** |  | 2025-05-24 | 2025-09-02 |  |  |  |  |  |  |
| B15-V17~V24-1130 |  | Block Work For GF & Estabishment 1F | 6d | 2025-05-24 | 2025-05-29 | B15-V17~V24-1120, B15-V09~V16-1130 | 0d |  | Block GF [8] | 13,647.1 | Arc |
| B15-V17~V24-1140 |  | L.L & H.L Drainage | 6d | 2025-05-31 | 2025-06-05 | B15-V17~V24-1130, B15-V09~V16-1140 | 0d |  | HL Drainage [8]; L.L Drainage [8] | 89,489.28 | Mech |
| B15-V17~V24-1150 |  | Elec Establishment For GF & 1F | 3d | 2025-05-31 | 2025-06-02 | B15-V17~V24-1130, B15-V09~V16-1150 | 3d |  | Elec Establishment GF [8] | 26,840.73 | Elec |
| B15-V17~V24-1160 |  | Screed Work For 1F & Roof | 6d | 2025-06-07 | 2025-06-12 | B15-V17~V24-1140, B15-V17~V24-1150, B15-V09~V16-1160 | 0d |  | Screed 1st Floor [8]; Screed Roof Floor [8]; Leveling Screed 1st Floor [8]; Leveling Screed Roof Floor [8] | 268,467.85 | Civil |
| B15-V17~V24-1170 |  | Water Tank & Heater Foundations | 4d | 2025-06-14 | 2025-06-17 | B15-V17~V24-1160, B15-V09~V16-1170 | 4d | 0d |  |  | Civil |
| B15-V17~V24-1180 |  | Block Works For 1F | 3d | 2025-06-14 | 2025-06-16 | B15-V17~V24-1160, B15-V09~V16-1180 | 0d |  | Block FF [8] | 20,537.81 | Arc |
| B15-V17~V24-1190 |  | Water Line Network | 6d | 2025-06-17 | 2025-06-23 | B15-V17~V24-1180, B15-V09~V16-1190 | 0d |  | Water Line Network [8] | 40,261.13 | Mech |
| B15-V17~V24-1200 |  | Continue Elec Establishment For GF & 1F | 3d | 2025-06-17 | 2025-06-19 | B15-V17~V24-1180, B15-V09~V16-1200 | 3d |  | Elec Establishment FF [8] | 26,840.73 | Elec |
| B15-V17~V24-1210 |  | Thermal Insulation For Roof | 5d | 2025-06-18 | 2025-06-23 | B15-V17~V24-1170, B15-V09~V16-1210 | 4d | 0d | Roof Insulation [8] | 32,530.16 | Arc |
| B15-V17~V24-1220 |  | Roof Floor Tiles | 6d | 2025-06-24 | 2025-06-30 | B15-V17~V24-1210, B15-V09~V16-1220 | 4d | 0d | Roof Tiles [8]; Roof Tiles Joints [8]; Re_Test Roof Insulation [8] | 63,179.38 | Arc |
| B15-V17~V24-1230 |  | Plaster Work For Villa | 6d | 2025-06-24 | 2025-06-30 | B15-V17~V24-1190, B15-V17~V24-1200, B15-V09~V16-1230 | 0d |  | Establishing a plastering GF [8]; Establishing a plastering FF [8]; Plastering GF [8]; Plastering FF [8] | 49,263.81 |  |
| B15-V17~V24-1240 |  | Marbale Stairs & Handrails | 6d | 2025-07-01 | 2025-07-07 | B15-V17~V24-1230, B15-V09~V16-1240 | 22d | 0d | Marbale Stairs [8]; Stairs Handrails SS [8] | 91,494.69 |  |
| B15-V17~V24-1250 |  | Water Proofing Of Bathrooms | 4d | 2025-07-01 | 2025-07-05 | B15-V17~V24-1230, B15-V09~V16-1250 | 0d |  | Bathrooms InsulationGF & FF [8] | 134.24 |  |
| B15-V17~V24-1260 |  | Pulling The Elec Wires | 4d | 2025-07-01 | 2025-07-05 | B15-V17~V24-1230, B15-V09~V16-1260 | 10d | 2d | Elec Wires GF [8]; Elec Wires FF [8] | 80,542.4 |  |
| B15-V17~V24-1270 |  | Bathroom Tiles | 4d | 2025-07-06 | 2025-07-09 | B15-V17~V24-1250, B15-V17~V24-1220, B15-V09~V16-1270 | 0d |  | Ceramic Walls Kitchen [8]; Ceramic Walls Bathrooms GF [8]; Ceramic Walls Bathrooms FF [8]; Ceramic Tiles Bathrooms GF [8]; Ceramic Tiles Kitchen GF [8]; Ceramic Tiles Store GF [8] | 73,204.08 |  |
| B15-V17~V24-1280 |  | Structure For Gypsum | 6d | 2025-07-10 | 2025-07-16 | B15-V17~V24-1270, B15-V09~V16-1280 | 0d |  | Structure For Gypsum GF Rooms [8]; Structure For Gypsum FF Rooms [8]; Structure For Gypsum Bathrooms & Kitchen [8] | 33,550.81 |  |
| B15-V17~V24-1290 |  | Gypsum Board For Room | 4d | 2025-07-17 | 2025-07-21 | B15-V17~V24-1280, B15-V17~V24-1260, B15-V09~V16-1290 | 0d |  | Gypsum Board For GF Room [8]; Gypsum Board For FF Room [8] | 35,796.64 |  |
| B15-V17~V24-1300 |  | Installation Of Gypsum Board For Bathroom & Kitchen | 4d | 2025-07-22 | 2025-07-26 | B15-V17~V24-1290, B15-V09~V16-1300 | 0d |  | Gypsum Board For Bathrooms & Kitchen [8] | 11,052.24 |  |
| B15-V17~V24-1310 |  | Putty Filler For Gypsm Board Ceiling | 6d | 2025-07-27 | 2025-08-02 | B15-V17~V24-1300, B15-V09~V16-1310 | 0d |  | Putty Filler 1st Layer Roof all Rooms [8]; Putty Filler 1st Layer Roof all Bathrooms & Kitchen [8]; Putty Filler1st Layer walls [8] | 62,182.52 |  |
| B15-V17~V24-1320 |  | Fixing Shower Glass | 4d | 2025-08-03 | 2025-08-06 | B15-V17~V24-1310, B15-V09~V16-1320 | 7d | 0d | Shower Glass [8] | 22,372.88 |  |
| B15-V17~V24-1330 |  | Interior Wall Putty Filler | 6d | 2025-08-03 | 2025-08-09 | B15-V17~V24-1310, B15-V17~V24-1240, B15-V09~V16-1330 | 0d |  | Putty Filler 2ed Layer Roof & WAlls GF [8]; Putty Filler 2ed Layer Roof & WAlls FF [8] | 62,150.21 |  |
| B15-V17~V24-1340 |  | Installation Of Sanitry Fixture | 6d | 2025-08-07 | 2025-08-13 | B15-V17~V24-1320, B15-V09~V16-1340 | 7d | 0d | Mech Fixtures & Accessories [8] | 98,438.1 |  |
| B15-V17~V24-1350 |  | 1st Face Paint | 5d | 2025-08-10 | 2025-08-14 | B15-V17~V24-1330, B15-V09~V16-1350 | 0d |  |  |  |  |
| B15-V17~V24-1360 |  | Installation Of Aluminum Windows | 6d | 2025-08-10 | 2025-08-16 | B15-V17~V24-1330, B15-V09~V16-1360 | 9d | 0d | Aluminum Windows [8] | 84,797.8 |  |
| B15-V17~V24-1370 |  | Installation Of Elec Fixture & Accessories | 6d | 2025-08-10 | 2025-08-16 | B15-V17~V24-1310, B15-V17~V24-1330, B15-V17~V24-1260, B15-V09~V16-1370 | 22d | 0d | Elec Fixtures & Accessories Villa & Yard [8]; Elec Cables GF & FF & Earthing [8] | 53,681.46 |  |
| B15-V17~V24-1380 |  | Installation Of Water Tank-Heater & Pumps | 6d | 2025-08-14 | 2025-08-20 | B15-V17~V24-1340, B15-V09~V16-1380, B15-V17~V24-1220 | 7d | 0d | Water Tank & booster Pump [8]; Lower Pump [8]; Heater [8] | 129,730.28 |  |
| B15-V17~V24-1390 |  | Installation Of Parquet | 4d | 2025-08-16 | 2025-08-19 | B15-V17~V24-1350, B15-V09~V16-1390 | 0d |  | Installation Of Parquet [8] | 52,978.96 |  |
| B15-V17~V24-1400 |  | Installation Of Wooden Doors | 6d | 2025-08-20 | 2025-08-26 | B15-V17~V24-1390, B15-V09~V16-1400 | 0d |  | Wooden Doors Accessories all Villa [8]; Wooden Doors Kitchen & Bathroom without Accessories [8]; Exterior Wooden Doors [8] | 142,109.01 |  |
| B15-V17~V24-1410 |  | Final Face Paint | 6d | 2025-08-27 | 2025-09-02 | B15-V17~V24-1360, B15-V17~V24-1400, B15-V09~V16-1410 | 0d |  | Final Face Paint Villa [8] | 31,090.55 |  |

| ID | WBS | Activity | Duration | Start | Finish | Predecessors | Total float | Free float | Resources | Cost |
| --- | --- | --- | --- | --- | --- | --- | --- | --- | --- | --- |
|  | 3 | **Fence & Courtyard Works** |  | 2025-05-24 | 2025-08-26 |  |  |  |  |  |
| B15-V17~V24-1420 |  | Pouring Bedding Concrete For Fence Fondations | 2d | 2025-05-24 | 2025-05-25 | B15-V17~V24-1120, B15-V09~V16-1420 | 10d | 0d | Excavation Fence Foundations [8] | 4,519.28 |
| B15-V17~V24-1430 |  | RC Concrete For Fence Fondations | 6d | 2025-05-26 | 2025-06-01 | B15-V17~V24-1420, B15-V09~V16-1430 | 10d | 0d | Fence Fondations-Eastern side [8]; Fence Fondations-Westren side [8]; Fence Fondations-Back side [8] | 13,420.32 |
| B15-V17~V24-1440 |  | Steel Fixing & Carpentry For Fence Columns | 6d | 2025-06-02 | 2025-06-08 | B15-V17~V24-1430, B15-V09~V16-1440 | 10d | 0d |  |  |
| B15-V17~V24-1450 |  | Establishing Elec For Fence Columns | 4d | 2025-06-09 | 2025-06-12 | B15-V17~V24-1440, B15-V09~V16-1450 | 10d | 0d |  |  |
| B15-V17~V24-1460 |  | Pouring Concrete For Fence Columns | 1d | 2025-06-14 | 2025-06-14 | B15-V17~V24-1450, B15-V09~V16-1460 | 10d | 0d | Fence Columns-Eastern side [8]; Fence Columns-Westren side [8]; Fence Columns-Back side [8] | 9,665.04 |
| B15-V17~V24-1470 |  | Installation Precast Panel For Fence | 5d | 2025-06-15 | 2025-06-19 | B15-V17~V24-1460, B15-V09~V16-1470 | 10d | 0d | Hollow Core Walls [8] | 71,593.2 |
| B15-V17~V24-1480 |  | Bitumen Coating For Fence Fondations | 4d | 2025-06-21 | 2025-06-24 | B15-V17~V24-1470, B15-V09~V16-1480 | 10d | 0d |  |  |
| B15-V17~V24-1490 |  | Pouring Bedding Concrete For "Front" Fence Fondations | 1d | 2025-06-21 | 2025-06-21 | B15-V17~V24-1470, B15-V09~V16-1490 | 22d | 0d |  |  |
| B15-V17~V24-1500 |  | RC Concrete For "Front" Fence Fondations | 4d | 2025-06-22 | 2025-06-25 | B15-V17~V24-1490, B15-V09~V16-1500 | 22d | 0d | Front Fence Fondations [8] | 8,904.4 |
| B15-V17~V24-1510 |  | Outdoor Drainage & Water Line | 5d | 2025-06-25 | 2025-06-30 | B15-V17~V24-1480, B15-V17~V24-1140, B15-V09~V16-1510 | 10d | 0d | Outdoor Drainage [8]; Outdoor Water Line [8] | 13,423.68 |
| B15-V17~V24-1520 |  | Steel Fixing & Carpentry For "Front" Fence Columns | 4d | 2025-06-26 | 2025-06-30 | B15-V17~V24-1500, B15-V09~V16-1520 | 22d | 0d |  |  |
| B15-V17~V24-1530 |  | Establishing Elec For "Front" Fence Columns | 4d | 2025-07-01 | 2025-07-05 | B15-V17~V24-1520, B15-V09~V16-1530 | 22d | 0d |  |  |
| B15-V17~V24-1540 |  | Establishing Elec For Fence & Yard | 2d | 2025-07-01 | 2025-07-02 | B15-V17~V24-1510, B15-V09~V16-1540 | 10d | 0d | Elec Establishment Fence & Yard [8] | 17,898.32 |
| B15-V17~V24-1550 |  | Backfilling the Yard | 4d | 2025-07-03 | 2025-07-07 | B15-V17~V24-1540, B15-V09~V16-1550 | 10d | 0d | Backfilling the Yard [8] | 10,560 |
| B15-V17~V24-1560 |  | Pouring Concrete Wall Of "Front" Fence Columns | 2d | 2025-07-06 | 2025-07-07 | B15-V17~V24-1530, B15-V09~V16-1560 | 22d | 0d | Front Fence Walls [8] | 17,898.32 |
| B15-V17~V24-1570 |  | Pouring Concrete Crown Of "Front" Fence Columns | 3d | 2025-07-08 | 2025-07-10 | B15-V17~V24-1560, B15-V09~V16-1570 | 22d | 0d | Fence Columns - C Chanel [8] | 3,310.37 |
| B15-V17~V24-1580 |  | Bardoura Works For Yard | 5d | 2025-07-08 | 2025-07-13 | B15-V17~V24-1550, B15-V09~V16-1580 | 10d | 0d | Bardoura Works For Yard [8] | 14,408.16 |
| B15-V17~V24-1590 |  | Pouring Concrete Flower Basin Of "Front" Fence Columns | 4d | 2025-07-12 | 2025-07-15 | B15-V17~V24-1570, B15-V09~V16-1590 | 22d | 0d |  |  |
| B15-V17~V24-1600 |  | Antitermite Treatment For Yard | 1d | 2025-07-14 | 2025-07-14 | B15-V17~V24-1580, B15-V09~V16-1600 | 10d | 0d | Antitermite Treatment For Yard [8] |  |
| B15-V17~V24-1610 |  | Pouring Concrete For Yard | 1d | 2025-07-15 | 2025-07-15 | B15-V17~V24-1600, B15-V09~V16-1610 | 10d | 0d |  |  |
| B15-V17~V24-1620 |  | Block Work For Flower Basin | 5d | 2025-07-16 | 2025-07-21 | B15-V17~V24-1610, B15-V09~V16-1620 | 10d | 0d |  |  |
| B15-V17~V24-1630 |  | Plastering Work For Flower Basin | 4d | 2025-07-22 | 2025-07-26 | B15-V17~V24-1620, B15-V09~V16-1630 | 10d | 0d |  |  |
| B15-V17~V24-1640 |  | Interlock Works For The Yard | 6d | 2025-07-27 | 2025-08-02 | B15-V17~V24-1630, B15-V09~V16-1640 | 10d | 0d | Interlock Works For The Yard [8] | 36,776.32 |
| B15-V17~V24-1650 |  | External Grading Works For The Villa | 4d | 2025-08-03 | 2025-08-06 | B15-V17~V24-1640, B15-V09~V16-1650 | 12d | 0d | External Grading Works For The Villa [8] | 3,221.68 |
| B15-V17~V24-1660 |  | Installation The Exterior Door & Garage Door | 5d | 2025-08-03 | 2025-08-07 | B15-V17~V24-1640, B15-V09~V16-1660 | 15d | 1d | Installation The Exterior Door [8]; Installation The Exterior Garage Door [8] | 40,002.72 |
| B15-V17~V24-1670 |  | Fixing Floor Drain For The Yard | 2d | 2025-08-03 | 2025-08-04 | B15-V17~V24-1640, B15-V09~V16-1670 | 18d | 4d | Floor Drain & Clean Out [8] | 13,423.76 |
| B15-V17~V24-1680 |  | Granite Surronds Around The Villa | 4d | 2025-08-07 | 2025-08-11 | B15-V17~V24-1650, B15-V09~V16-1680 | 12d | 2d | Granite Surronds Around The Villa [8] | 25,818.32 |
| B15-V17~V24-1690 |  | Painting The Base Surface Of The Fence | 2d | 2025-08-07 | 2025-08-09 | B15-V17~V24-1750, B15-V09~V16-1690 | 10d | 0d |  |  |
| B15-V17~V24-1700 |  | Painting The Final Face Of The Fence | 4d | 2025-08-10 | 2025-08-13 | B15-V17~V24-1690, B15-V09~V16-1700 | 10d | 1d | Painting Final Face Of The Fence [8] | 37,586.48 |
| B15-V17~V24-1710 |  | Exterior Painting Of The Villa | 6d | 2025-08-16 | 2025-08-21 | B15-V17~V24-1680, B15-V17~V24-1700, B15-V17~V24-1660, B15-V17~V24-1670, B15-V09~V16-1710 | 9d | 0d | Exterior Painting Of The Villa [8]; Exterior Painting Staircase House [8] | 105,684.66 |
| B15-V17~V24-1720 |  | Installation Elec Fixtures & Accessories For The Yard | 4d | 2025-08-23 | 2025-08-26 | B15-V17~V24-1700, B15-V17~V24-1710, B15-V09~V16-1720 | 14d | 0d | Elec feeding panels GF & FF [8] | 22,372.88 |

| ID | WBS | Activity | Duration | Start | Finish | Predecessors | Total float | Free float | Resources | Cost | Department-1 |
| --- | --- | --- | --- | --- | --- | --- | --- | --- | --- | --- | --- |
|  | 5 | **External Sidewalk Works** |  | 2025-07-16 | 2025-08-31 |  |  |  |  |  |  |
| B15-V17~V24-1730 |  | Connection The Drain To The Piblic Network | 3d | 2025-07-16 | 2025-07-19 | B15-V17~V24-1510, B15-V17~V24-1590, B15-V09~V16-1730 | 22d | 3d | Connection Drain To The Piblic Network [8]; Connection Water To The Piblic Network [8] | 13,420.32 |  |
| B15-V17~V24-1740 |  | Pardora Works For The External Sidewalk | 2d | 2025-08-03 | 2025-08-04 | B15-V17~V24-1640, B15-V17~V24-1730, B15-V09~V16-1740 | 10d | 0d |  |  |  |
| B15-V17~V24-1750 |  | Interlock Works For The Exerrnal Sidewalk | 2d | 2025-08-05 | 2025-08-06 | B15-V17~V24-1740, B15-V09~V16-1750 | 10d | 0d |  |  |  |
| B15-V17~V24-1760 |  | Pulling The Villa's Main Elec Cable | 4d | 2025-08-27 | 2025-08-31 | B15-V17~V24-1750, B15-V17~V24-1720, B15-V09~V16-1760 | 14d | 0d | Elec Work Testing [8] | 22,819.84 |  |
|  | 6 | **Final Testing & Handover** |  | 2025-08-21 | 2025-09-14 |  |  |  |  |  |  |
| B15-V17~V24-1770 |  | Mech Work Testing & Handover | 5d | 2025-08-21 | 2025-08-26 | B15-V17~V24-1730, B15-V17~V24-1340, B15-V17~V24-1380, B15-V09~V16-1770 | 21d | 1d | Mech Work Testing & Handover [8] | 14,318.64 |  |
| B15-V17~V24-1780 |  | Arch Snaglist & Handover | 4d | 2025-08-27 | 2025-08-31 | B15-V17~V24-1750, B15-V17~V24-1710, B15-V17~V24-1400, B15-V09~V16-1780 | 17d | 2d | Arch Snaglist & Handover [8] | 77,320.64 |  |
| B15-V17~V24-1790 |  | ElecWork Testing & Handover | 3d | 2025-09-01 | 2025-09-03 | B15-V17~V24-1760, B15-V17~V24-1370, B15-V09~V16-1790 | 14d | 0d | Elec Work Handover [8] | 23,804.12 |  |
| B15-V17~V24-1800 |  | Final Handover Of The Villa To The Consltant | 4d | 2025-09-04 | 2025-09-08 | B15-V17~V24-1780, B15-V17~V24-1790, B15-V17~V24-1770, B15-V17~V24-1410, B15-V09~V16-1800 | 14d | 0d |  |  |  |
| B15-V17~V24-1810 |  | Customer Delivery | 5d | 2025-09-09 | 2025-09-14 | B15-V17~V24-1800, B15-V09~V16-1810 | 14d | 1d |  |  |  |
|  | 28 | **B15-V25~V32** |  | 2025-02-03 | 2025-09-21 |  |  |  |  |  |  |
|  | 2 | **Under Grond Slap Works** |  | 2025-02-03 | 2025-03-15 |  |  |  |  |  |  |
| B15-V25~V32-1000 |  | Excavation&Compaction of Fondation | 6d | 2025-02-03 | 2025-02-09 | B15-V17~V24-1000 | 59d | 0d | Clearing & Groubbing [8]; Excavation & Leveling [8]; Stone Layer [8]; A3 Layer [8]; A1-a 1st Layer [8]; A1-a 2ed Layer [8] | 163,545.76 | Civil |
| B15-V25~V32-1010 |  | Pouring Concrete For Bedding | 2d | 2025-02-10 | 2025-02-11 | B15-V25~V32-1000, B15-V17~V24-1010 | 59d | 0d | PC Carpentry [8]; PC Concrete [8]; RC 18 MPA [9 M3] | 37,899.68 | Civil |
| B15-V25~V32-1020 |  | Reinforcement Concrete For Foundation | 5d | 2025-02-12 | 2025-02-17 | B15-V25~V32-1010, B15-V17~V24-1020 | 59d | 0d | RC Foundation Carpentry [8]; RC Foundation Steel [8]; RC Foundation Concrete [8] | 201,355.92 | Civil |
| B15-V25~V32-1030 |  | Steel Fixing& Carpenter work for Beams | 4d | 2025-02-18 | 2025-02-22 | B15-V25~V32-1020, B15-V17~V24-1030 | 59d | 0d | RC Grade Beam Carpentry & Steel [8] | 44,745.76 | Civil |
| B15-V25~V32-1040 |  | Mech&Elec Establishment for Beams | 3d | 2025-02-23 | 2025-02-25 | B15-V25~V32-1030, B15-V17~V24-1040 | 59d | 0d |  |  | Mech |
| B15-V25~V32-1050 |  | Pouring Concrete For Beams | 1d | 2025-02-26 | 2025-02-26 | B15-V25~V32-1040, B15-V17~V24-1050 | 59d | 0d | RC Grade Beam Concrete [8] | 77,141.68 | Civil |
| B15-V25~V32-1060 |  | Bitmen Coating For Fondation&Beams | 3d | 2025-02-27 | 2025-03-02 | B15-V25~V32-1050, B15-V17~V24-1060 | 59d | 0d | Bitumen Coating Foundations & Grade Beams [8] | 22,372.32 | Civil |
| B15-V25~V32-1070 |  | Backfilling Inside Fondations | 4d | 2025-03-03 | 2025-03-06 | B15-V25~V32-1060, B15-V17~V24-1070 | 59d | 0d | Backfilling 1st Layer [8]; Backfilling 2ed Layer [8] | 11,186.4 | Civil |
| B15-V25~V32-1080 |  | Mech Works Under Grond Slap | 3d | 2025-03-08 | 2025-03-10 | B15-V25~V32-1070, B15-V17~V24-1080 | 59d | 0d | Mech Establishment Under Ground Slap [8] | 13,423.42 | Mech |
| B15-V25~V32-1090 |  | Steel Fixing& Carpenter work for Ground Slap | 3d | 2025-03-11 | 2025-03-13 | B15-V25~V32-1080, B15-V17~V24-1090 | 59d | 0d | Steel & Carpentry For Ground Slap [8] | 10,246.54 | Civil |
| B15-V25~V32-1100 |  | Anti Termite Treatment For Ground Slap | 1d | 2025-03-15 | 2025-03-15 | B15-V25~V32-1090, B15-V17~V24-1100 | 59d | 0d | Anti Termite Treatment nder Ground Slap [8] | 2,237.28 | Civil |
| B15-V25~V32-1110 |  | Pouring Concrete For Ground Slap | 1d | 2025-03-15 | 2025-03-15 | B15-V25~V32-1100 FF, B15-V25~V32-1090, B15-V17~V24-1110 | 59d | 5d | Concrete For Ground Slap [8] | 58,169.52 | Civil |

| ID | WBS | Activity | Duration | Start | Finish | Predecessors | Total float | Free float | Resources | Cost | Department-1 |
| --- | --- | --- | --- | --- | --- | --- | --- | --- | --- | --- | --- |
|  | 4 | **Precast Works** |  | 2025-05-24 | 2025-05-29 |  |  |  |  |  |  |
| B15-V25~V32-1120 |  | Precast Constrction | 6d | 2025-05-24 | 2025-05-29 | B15-V25~V32-1110, B15-V17~V24-1120 | 0d |  | Precast Walls GF [8]; Hollow Core Slap GF [8]; Precast Stairs & staircase House [8]; Thermal insollation Outside Walls [8]; Concrete structure joints [8]; Precast Walls FF [8]; Hollow Core Slap FF [8] | 1,513,460.1 | Civil |
|  | 1 | **Works Inside The Villa** |  | 2025-05-31 | 2025-09-09 |  |  |  |  |  |  |
| B15-V25~V32-1130 |  | Block Work For GF & Estabishment 1F | 6d | 2025-05-31 | 2025-06-05 | B15-V25~V32-1120, B15-V17~V24-1130 | 0d |  | Block GF [8] | 13,647.1 | Arc |
| B15-V25~V32-1140 |  | L.L & H.L Drainage | 6d | 2025-06-07 | 2025-06-12 | B15-V25~V32-1130, B15-V17~V24-1140 | 0d |  | HL Drainage [8]; L.L Drainage [8] | 89,489.28 | Mech |
| B15-V25~V32-1150 |  | Elec Establishment For GF & 1F | 3d | 2025-06-07 | 2025-06-09 | B15-V25~V32-1130, B15-V17~V24-1150 | 3d |  | Elec Establishment GF [8] | 26,840.73 | Elec |
| B15-V25~V32-1160 |  | Screed Work For 1F & Roof | 6d | 2025-06-14 | 2025-06-19 | B15-V25~V32-1140, B15-V25~V32-1150, B15-V17~V24-1160 | 0d |  | Screed 1st Floor [8]; Screed Roof Floor [8]; Leveling Screed 1st Floor [8]; Leveling Screed Roof Floor [8] | 268,467.85 | Civil |
| B15-V25~V32-1170 |  | Water Tank & Heater Foundations | 4d | 2025-06-21 | 2025-06-24 | B15-V25~V32-1160, B15-V17~V24-1170 | 4d | 0d |  |  | Civil |
| B15-V25~V32-1180 |  | Block Works For 1F | 3d | 2025-06-21 | 2025-06-23 | B15-V25~V32-1160, B15-V17~V24-1180 | 0d |  | Block FF [8] | 20,537.81 | Arc |
| B15-V25~V32-1190 |  | Water Line Network | 6d | 2025-06-24 | 2025-06-30 | B15-V25~V32-1180, B15-V17~V24-1190 | 0d |  | Water Line Network [8] | 40,261.13 | Mech |
| B15-V25~V32-1200 |  | Continue Elec Establishment For GF & 1F | 3d | 2025-06-24 | 2025-06-26 | B15-V25~V32-1180, B15-V17~V24-1200 | 3d |  | Elec Establishment FF [8] | 26,840.73 | Elec |
| B15-V25~V32-1210 |  | Thermal Insulation For Roof | 5d | 2025-06-25 | 2025-06-30 | B15-V25~V32-1170, B15-V17~V24-1210 | 4d | 0d | Roof Insulation [8] | 32,530.16 | Arc |
| B15-V25~V32-1220 |  | Roof Floor Tiles | 6d | 2025-07-01 | 2025-07-07 | B15-V25~V32-1210, B15-V17~V24-1220 | 4d | 0d | Roof Tiles [8]; Roof Tiles Joints [8]; Re_Test Roof Insulation [8] | 63,179.38 | Arc |
| B15-V25~V32-1230 |  | Plaster Work For Villa | 6d | 2025-07-01 | 2025-07-07 | B15-V25~V32-1190, B15-V25~V32-1200, B15-V17~V24-1230 | 0d |  | Establishing a plastering GF [8]; Establishing a plastering FF [8]; Plastering GF [8]; Plastering FF [8] | 49,263.81 |  |
| B15-V25~V32-1240 |  | Marbale Stairs & Handrails | 6d | 2025-07-08 | 2025-07-14 | B15-V25~V32-1230, B15-V17~V24-1240 | 22d | 0d | Marbale Stairs [8]; Stairs Handrails SS [8] | 91,494.69 |  |
| B15-V25~V32-1250 |  | Water Proofing Of Bathrooms | 4d | 2025-07-08 | 2025-07-12 | B15-V25~V32-1230, B15-V17~V24-1250 | 0d |  | Bathrooms InsulationGF & FF [8] | 134.24 |  |
| B15-V25~V32-1260 |  | Pulling The Elec Wires | 4d | 2025-07-08 | 2025-07-12 | B15-V25~V32-1230, B15-V17~V24-1260 | 10d | 2d | Elec Wires GF [8]; Elec Wires FF [8] | 80,542.4 |  |
| B15-V25~V32-1270 |  | Bathroom Tiles | 4d | 2025-07-13 | 2025-07-16 | B15-V25~V32-1250, B15-V25~V32-1220, B15-V17~V24-1270 | 0d |  | Ceramic Walls Kitchen [8]; Ceramic Walls Bathrooms GF [8]; Ceramic Walls Bathrooms FF [8]; Ceramic Tiles Bathrooms GF [8]; Ceramic Tiles Kitchen GF [8]; Ceramic Tiles Store GF [8] | 73,204.08 |  |
| B15-V25~V32-1280 |  | Structure For Gypsum | 6d | 2025-07-17 | 2025-07-23 | B15-V25~V32-1270, B15-V17~V24-1280 | 0d |  | Structure For Gypsum GF Rooms [8]; Structure For Gypsum FF Rooms [8]; Structure For Gypsum Bathrooms & Kitchen [8] | 33,550.81 |  |
| B15-V25~V32-1290 |  | Gypsum Board For Room | 4d | 2025-07-24 | 2025-07-28 | B15-V25~V32-1280, B15-V25~V32-1260, B15-V17~V24-1290 | 0d |  | Gypsum Board For GF Room [8]; Gypsum Board For FF Room [8] | 35,796.64 |  |
| B15-V25~V32-1300 |  | Installation Of Gypsum Board For Bathroom & Kitchen | 4d | 2025-07-29 | 2025-08-02 | B15-V25~V32-1290, B15-V17~V24-1300 | 0d |  | Gypsum Board For Bathrooms & Kitchen [8] | 11,052.24 |  |
| B15-V25~V32-1310 |  | Putty Filler For Gypsm Board Ceiling | 6d | 2025-08-03 | 2025-08-09 | B15-V25~V32-1300, B15-V17~V24-1310 | 0d |  | Putty Filler 1st Layer Roof all Rooms [8]; Putty Filler 1st Layer Roof all Bathrooms & Kitchen [8]; Putty Filler1st Layer walls [8] | 62,182.52 |  |
| B15-V25~V32-1320 |  | Fixing Shower Glass | 4d | 2025-08-10 | 2025-08-13 | B15-V25~V32-1310, B15-V17~V24-1320 | 7d | 0d | Shower Glass [8] | 22,372.88 |  |
| B15-V25~V32-1330 |  | Interior Wall Putty Filler | 6d | 2025-08-10 | 2025-08-16 | B15-V25~V32-1310, B15-V25~V32-1240, B15-V17~V24-1330 | 0d |  | Putty Filler 2ed Layer Roof & WAlls GF [8]; Putty Filler 2ed Layer Roof & WAlls FF [8] | 62,150.21 |  |
| B15-V25~V32-1340 |  | Installation Of Sanitry Fixture | 6d | 2025-08-14 | 2025-08-20 | B15-V25~V32-1320, B15-V17~V24-1340 | 7d | 0d | Mech Fixtures & Accessories [8] | 98,438.1 |  |
| B15-V25~V32-1350 |  | 1st Face Paint | 5d | 2025-08-17 | 2025-08-21 | B15-V25~V32-1330, B15-V17~V24-1350 | 0d |  |  |  |  |
| B15-V25~V32-1360 |  | Installation Of Aluminum Windows | 6d | 2025-08-17 | 2025-08-23 | B15-V25~V32-1330, B15-V17~V24-1360 | 9d | 0d | Aluminum Windows [8] | 84,797.8 |  |
| B15-V25~V32-1370 |  | Installation Of Elec Fixture & Accessories | 6d | 2025-08-17 | 2025-08-23 | B15-V25~V32-1310, B15-V25~V32-1330, B15-V25~V32-1260, B15-V17~V24-1370 | 22d | 0d | Elec Fixtures & Accessories Villa & Yard [8]; Elec Cables GF & FF & Earthing [8] | 53,681.46 |  |
| B15-V25~V32-1380 |  | Installation Of Water Tank-Heater & Pumps | 6d | 2025-08-21 | 2025-08-27 | B15-V25~V32-1340, B15-V17~V24-1380, B15-V25~V32-1220 | 7d | 0d | Water Tank & booster Pump [8]; Lower Pump [8]; Heater [8] | 129,730.28 |  |
| B15-V25~V32-1390 |  | Installation Of Parquet | 4d | 2025-08-23 | 2025-08-26 | B15-V25~V32-1350, B15-V17~V24-1390 | 0d |  | Installation Of Parquet [8] | 52,978.96 |  |
| B15-V25~V32-1400 |  | Installation Of Wooden Doors | 6d | 2025-08-27 | 2025-09-02 | B15-V25~V32-1390, B15-V17~V24-1400 | 0d |  | Wooden Doors Accessories all Villa [8]; Wooden Doors Kitchen & Bathroom without Accessories [8]; Exterior Wooden Doors [8] | 142,109.01 |  |
| B15-V25~V32-1410 |  | Final Face Paint | 6d | 2025-09-03 | 2025-09-09 | B15-V25~V32-1360, B15-V25~V32-1400, B15-V17~V24-1410 | 0d |  | Final Face Paint Villa [8] | 31,090.55 |  |

| ID | WBS | Activity | Duration | Start | Finish | Predecessors | Total float | Free float | Resources | Cost |
| --- | --- | --- | --- | --- | --- | --- | --- | --- | --- | --- |
|  | 3 | **Fence & Courtyard Works** |  | 2025-05-31 | 2025-09-02 |  |  |  |  |  |
| B15-V25~V32-1420 |  | Pouring Bedding Concrete For Fence Fondations | 2d | 2025-05-31 | 2025-06-01 | B15-V25~V32-1120, B15-V17~V24-1420 | 10d | 0d | Excavation Fence Foundations [8] | 4,519.28 |
| B15-V25~V32-1430 |  | RC Concrete For Fence Fondations | 6d | 2025-06-02 | 2025-06-08 | B15-V25~V32-1420, B15-V17~V24-1430 | 10d | 0d | Fence Fondations-Eastern side [8]; Fence Fondations-Westren side [8]; Fence Fondations-Back side [8] | 13,420.32 |
| B15-V25~V32-1440 |  | Steel Fixing & Carpentry For Fence Columns | 6d | 2025-06-09 | 2025-06-15 | B15-V25~V32-1430, B15-V17~V24-1440 | 10d | 0d |  |  |
| B15-V25~V32-1450 |  | Establishing Elec For Fence Columns | 4d | 2025-06-16 | 2025-06-19 | B15-V25~V32-1440, B15-V17~V24-1450 | 10d | 0d |  |  |
| B15-V25~V32-1460 |  | Pouring Concrete For Fence Columns | 1d | 2025-06-21 | 2025-06-21 | B15-V25~V32-1450, B15-V17~V24-1460 | 10d | 0d | Fence Columns-Eastern side [8]; Fence Columns-Westren side [8]; Fence Columns-Back side [8] | 9,665.04 |
| B15-V25~V32-1470 |  | Installation Precast Panel For Fence | 5d | 2025-06-22 | 2025-06-26 | B15-V25~V32-1460, B15-V17~V24-1470 | 10d | 0d | Hollow Core Walls [8] | 71,593.2 |
| B15-V25~V32-1480 |  | Bitumen Coating For Fence Fondations | 4d | 2025-06-28 | 2025-07-01 | B15-V25~V32-1470, B15-V17~V24-1480 | 10d | 0d |  |  |
| B15-V25~V32-1490 |  | Pouring Bedding Concrete For "Front" Fence Fondations | 1d | 2025-06-28 | 2025-06-28 | B15-V25~V32-1470, B15-V17~V24-1490 | 22d | 0d |  |  |
| B15-V25~V32-1500 |  | RC Concrete For "Front" Fence Fondations | 4d | 2025-06-29 | 2025-07-02 | B15-V25~V32-1490, B15-V17~V24-1500 | 22d | 0d | Front Fence Fondations [8] | 8,904.4 |
| B15-V25~V32-1510 |  | Outdoor Drainage & Water Line | 5d | 2025-07-02 | 2025-07-07 | B15-V25~V32-1480, B15-V25~V32-1140, B15-V17~V24-1510 | 10d | 0d | Outdoor Drainage [8]; Outdoor Water Line [8] | 13,423.68 |
| B15-V25~V32-1520 |  | Steel Fixing & Carpentry For "Front" Fence Columns | 4d | 2025-07-03 | 2025-07-07 | B15-V25~V32-1500, B15-V17~V24-1520 | 22d | 0d |  |  |
| B15-V25~V32-1530 |  | Establishing Elec For "Front" Fence Columns | 4d | 2025-07-08 | 2025-07-12 | B15-V25~V32-1520, B15-V17~V24-1530 | 22d | 0d |  |  |
| B15-V25~V32-1540 |  | Establishing Elec For Fence & Yard | 2d | 2025-07-08 | 2025-07-09 | B15-V25~V32-1510, B15-V17~V24-1540 | 10d | 0d | Elec Establishment Fence & Yard [8] | 17,898.32 |
| B15-V25~V32-1550 |  | Backfilling the Yard | 4d | 2025-07-10 | 2025-07-14 | B15-V25~V32-1540, B15-V17~V24-1550 | 10d | 0d | Backfilling the Yard [8] | 10,560 |
| B15-V25~V32-1560 |  | Pouring Concrete Wall Of "Front" Fence Columns | 2d | 2025-07-13 | 2025-07-14 | B15-V25~V32-1530, B15-V17~V24-1560 | 22d | 0d | Front Fence Walls [8] | 17,898.32 |
| B15-V25~V32-1570 |  | Pouring Concrete Crown Of "Front" Fence Columns | 3d | 2025-07-15 | 2025-07-17 | B15-V25~V32-1560, B15-V17~V24-1570 | 22d | 0d | Fence Columns - C Chanel [8] | 3,310.37 |
| B15-V25~V32-1580 |  | Bardoura Works For Yard | 5d | 2025-07-15 | 2025-07-20 | B15-V25~V32-1550, B15-V17~V24-1580 | 10d | 0d | Bardoura Works For Yard [8] | 14,408.16 |
| B15-V25~V32-1590 |  | Pouring Concrete Flower Basin Of "Front" Fence Columns | 4d | 2025-07-19 | 2025-07-22 | B15-V25~V32-1570, B15-V17~V24-1590 | 22d | 0d |  |  |
| B15-V25~V32-1600 |  | Antitermite Treatment For Yard | 1d | 2025-07-21 | 2025-07-21 | B15-V25~V32-1580, B15-V17~V24-1600 | 10d | 0d | Antitermite Treatment For Yard [8] |  |
| B15-V25~V32-1610 |  | Pouring Concrete For Yard | 1d | 2025-07-22 | 2025-07-22 | B15-V25~V32-1600, B15-V17~V24-1610 | 10d | 0d |  |  |
| B15-V25~V32-1620 |  | Block Work For Flower Basin | 5d | 2025-07-23 | 2025-07-28 | B15-V25~V32-1610, B15-V17~V24-1620 | 10d | 0d |  |  |
| B15-V25~V32-1630 |  | Plastering Work For Flower Basin | 4d | 2025-07-29 | 2025-08-02 | B15-V25~V32-1620, B15-V17~V24-1630 | 10d | 0d |  |  |
| B15-V25~V32-1640 |  | Interlock Works For The Yard | 6d | 2025-08-03 | 2025-08-09 | B15-V25~V32-1630, B15-V17~V24-1640 | 10d | 0d | Interlock Works For The Yard [8] | 36,776.32 |
| B15-V25~V32-1650 |  | External Grading Works For The Villa | 4d | 2025-08-10 | 2025-08-13 | B15-V25~V32-1640, B15-V17~V24-1650 | 12d | 0d | External Grading Works For The Villa [8] | 3,221.68 |
| B15-V25~V32-1660 |  | Installation The Exterior Door & Garage Door | 5d | 2025-08-10 | 2025-08-14 | B15-V25~V32-1640, B15-V17~V24-1660 | 15d | 1d | Installation The Exterior Door [8]; Installation The Exterior Garage Door [8] | 40,002.72 |
| B15-V25~V32-1670 |  | Fixing Floor Drain For The Yard | 2d | 2025-08-10 | 2025-08-11 | B15-V25~V32-1640, B15-V17~V24-1670 | 18d | 4d | Floor Drain & Clean Out [8] | 13,423.76 |
| B15-V25~V32-1680 |  | Granite Surronds Around The Villa | 4d | 2025-08-14 | 2025-08-18 | B15-V25~V32-1650, B15-V17~V24-1680 | 12d | 2d | Granite Surronds Around The Villa [8] | 25,818.32 |
| B15-V25~V32-1690 |  | Painting The Base Surface Of The Fence | 2d | 2025-08-14 | 2025-08-16 | B15-V25~V32-1750, B15-V17~V24-1690 | 10d | 0d |  |  |
| B15-V25~V32-1700 |  | Painting The Final Face Of The Fence | 4d | 2025-08-17 | 2025-08-20 | B15-V25~V32-1690, B15-V17~V24-1700 | 10d | 1d | Painting Final Face Of The Fence [8] | 37,586.48 |
| B15-V25~V32-1710 |  | Exterior Painting Of The Villa | 6d | 2025-08-23 | 2025-08-28 | B15-V25~V32-1680, B15-V25~V32-1700, B15-V25~V32-1660, B15-V25~V32-1670, B15-V17~V24-1710 | 9d | 0d | Exterior Painting Of The Villa [8]; Exterior Painting Staircase House [8] | 105,684.66 |
| B15-V25~V32-1720 |  | Installation Elec Fixtures & Accessories For The Yard | 4d | 2025-08-30 | 2025-09-02 | B15-V25~V32-1700, B15-V25~V32-1710, B15-V17~V24-1720 | 13d | 0d | Elec feeding panels GF & FF [8] | 22,372.88 |

| ID | WBS | Activity | Duration | Start | Finish | Predecessors | Total float | Free float | Resources | Cost | Department-1 |
| --- | --- | --- | --- | --- | --- | --- | --- | --- | --- | --- | --- |
|  | 5 | **External Sidewalk Works** |  | 2025-07-23 | 2025-09-07 |  |  |  |  |  |  |
| B15-V25~V32-1730 |  | Connection The Drain To The Piblic Network | 3d | 2025-07-23 | 2025-07-26 | B15-V25~V32-1510, B15-V25~V32-1590, B15-V17~V24-1730 | 22d | 3d | Connection Drain To The Piblic Network [8]; Connection Water To The Piblic Network [8] | 13,420.32 |  |
| B15-V25~V32-1740 |  | Pardora Works For The External Sidewalk | 2d | 2025-08-10 | 2025-08-11 | B15-V25~V32-1640, B15-V25~V32-1730, B15-V17~V24-1740 | 10d | 0d |  |  |  |
| B15-V25~V32-1750 |  | Interlock Works For The Exerrnal Sidewalk | 2d | 2025-08-12 | 2025-08-13 | B15-V25~V32-1740, B15-V17~V24-1750 | 10d | 0d |  |  |  |
| B15-V25~V32-1760 |  | Pulling The Villa's Main Elec Cable | 4d | 2025-09-03 | 2025-09-07 | B15-V25~V32-1750, B15-V25~V32-1720, B15-V17~V24-1760 | 13d | 0d | Elec Work Testing [8] | 22,819.84 |  |
|  | 6 | **Final Testing & Handover** |  | 2025-08-28 | 2025-09-21 |  |  |  |  |  |  |
| B15-V25~V32-1770 |  | Mech Work Testing & Handover | 5d | 2025-08-28 | 2025-09-02 | B15-V25~V32-1730, B15-V25~V32-1340, B15-V25~V32-1380, B15-V17~V24-1770 | 20d | 1d | Mech Work Testing & Handover [8] | 14,318.64 |  |
| B15-V25~V32-1780 |  | Arch Snaglist & Handover | 4d | 2025-09-03 | 2025-09-07 | B15-V25~V32-1750, B15-V25~V32-1710, B15-V25~V32-1400, B15-V17~V24-1780 | 16d | 2d | Arch Snaglist & Handover [8] | 77,320.64 |  |
| B15-V25~V32-1790 |  | ElecWork Testing & Handover | 3d | 2025-09-08 | 2025-09-10 | B15-V25~V32-1760, B15-V25~V32-1370, B15-V17~V24-1790 | 13d | 0d | Elec Work Handover [8] | 23,804.12 |  |
| B15-V25~V32-1800 |  | Final Handover Of The Villa To The Consltant | 4d | 2025-09-11 | 2025-09-15 | B15-V25~V32-1780, B15-V25~V32-1790, B15-V25~V32-1770, B15-V25~V32-1410, B15-V17~V24-1800 | 13d | 0d |  |  |  |
| B15-V25~V32-1810 |  | Customer Delivery | 5d | 2025-09-16 | 2025-09-21 | B15-V25~V32-1800, B15-V17~V24-1810 | 13d | 1d |  |  |  |
|  | 29 | **B16-V01~V08** |  | 2025-02-10 | 2025-09-28 |  |  |  |  |  |  |
|  | 2 | **Under Grond Slap Works** |  | 2025-02-10 | 2025-03-22 |  |  |  |  |  |  |
| B16-V01~V08-1000 |  | Excavation&Compaction of Fondation | 6d | 2025-02-10 | 2025-02-16 | B15-V25~V32-1000 | 59d | 0d | Clearing & Groubbing [8]; Excavation & Leveling [8]; Stone Layer [8]; A3 Layer [8]; A1-a 1st Layer [8]; A1-a 2ed Layer [8] | 163,545.76 | Civil |
| B16-V01~V08-1010 |  | Pouring Concrete For Bedding | 2d | 2025-02-17 | 2025-02-18 | B16-V01~V08-1000, B15-V25~V32-1010 | 59d | 0d | PC Carpentry [8]; PC Concrete [8]; RC 18 MPA [9 M3] | 37,899.68 | Civil |
| B16-V01~V08-1020 |  | Reinforcement Concrete For Foundation | 5d | 2025-02-19 | 2025-02-24 | B16-V01~V08-1010, B15-V25~V32-1020 | 59d | 0d | RC Foundation Carpentry [8]; RC Foundation Steel [8]; RC Foundation Concrete [8] | 201,355.92 | Civil |
| B16-V01~V08-1030 |  | Steel Fixing& Carpenter work for Beams | 4d | 2025-02-25 | 2025-03-01 | B16-V01~V08-1020, B15-V25~V32-1030 | 59d | 0d | RC Grade Beam Carpentry & Steel [8] | 44,745.76 | Civil |
| B16-V01~V08-1040 |  | Mech&Elec Establishment for Beams | 3d | 2025-03-02 | 2025-03-04 | B16-V01~V08-1030, B15-V25~V32-1040 | 59d | 0d |  |  | Mech |
| B16-V01~V08-1050 |  | Pouring Concrete For Beams | 1d | 2025-03-05 | 2025-03-05 | B16-V01~V08-1040, B15-V25~V32-1050 | 59d | 0d | RC Grade Beam Concrete [8] | 77,141.68 | Civil |
| B16-V01~V08-1060 |  | Bitmen Coating For Fondation&Beams | 3d | 2025-03-06 | 2025-03-09 | B16-V01~V08-1050, B15-V25~V32-1060 | 59d | 0d | Bitumen Coating Foundations & Grade Beams [8] | 22,372.32 | Civil |
| B16-V01~V08-1070 |  | Backfilling Inside Fondations | 4d | 2025-03-10 | 2025-03-13 | B16-V01~V08-1060, B15-V25~V32-1070 | 59d | 0d | Backfilling 1st Layer [8]; Backfilling 2ed Layer [8] | 11,186.4 | Civil |
| B16-V01~V08-1080 |  | Mech Works Under Grond Slap | 3d | 2025-03-15 | 2025-03-17 | B16-V01~V08-1070, B15-V25~V32-1080 | 59d | 0d | Mech Establishment Under Ground Slap [8] | 13,423.42 | Mech |
| B16-V01~V08-1090 |  | Steel Fixing& Carpenter work for Ground Slap | 3d | 2025-03-18 | 2025-03-20 | B16-V01~V08-1080, B15-V25~V32-1090 | 59d | 0d | Steel & Carpentry For Ground Slap [8] | 10,246.54 | Civil |
| B16-V01~V08-1100 |  | Anti Termite Treatment For Ground Slap | 1d | 2025-03-22 | 2025-03-22 | B16-V01~V08-1090, B15-V25~V32-1100 | 59d | 0d | Anti Termite Treatment nder Ground Slap [8] | 2,237.28 | Civil |
| B16-V01~V08-1110 |  | Pouring Concrete For Ground Slap | 1d | 2025-03-22 | 2025-03-22 | B16-V01~V08-1100 FF, B16-V01~V08-1090, B15-V25~V32-1110 | 59d | 5d | Concrete For Ground Slap [8] | 58,169.52 | Civil |

| ID | WBS | Activity | Duration | Start | Finish | Predecessors | Total float | Free float | Resources | Cost | Department-1 |
| --- | --- | --- | --- | --- | --- | --- | --- | --- | --- | --- | --- |
|  | 4 | **Precast Works** |  | 2025-05-31 | 2025-06-05 |  |  |  |  |  |  |
| B16-V01~V08-1120 |  | Precast Constrction | 6d | 2025-05-31 | 2025-06-05 | B16-V01~V08-1110, B15-V25~V32-1120 | 0d |  | Precast Walls GF [8]; Hollow Core Slap GF [8]; Precast Stairs & staircase House [8]; Thermal insollation Outside Walls [8]; Concrete structure joints [8]; Precast Walls FF [8]; Hollow Core Slap FF [8] | 1,513,460.1 | Civil |
|  | 1 | **Works Inside The Villa** |  | 2025-06-07 | 2025-09-16 |  |  |  |  |  |  |
| B16-V01~V08-1130 |  | Block Work For GF & Estabishment 1F | 6d | 2025-06-07 | 2025-06-12 | B16-V01~V08-1120, B15-V25~V32-1130 | 0d |  | Block GF [8] | 13,647.1 | Arc |
| B16-V01~V08-1140 |  | L.L & H.L Drainage | 6d | 2025-06-14 | 2025-06-19 | B16-V01~V08-1130, B15-V25~V32-1140 | 0d |  | HL Drainage [8]; L.L Drainage [8] | 89,489.28 | Mech |
| B16-V01~V08-1150 |  | Elec Establishment For GF & 1F | 3d | 2025-06-14 | 2025-06-16 | B16-V01~V08-1130, B15-V25~V32-1150 | 3d |  | Elec Establishment GF [8] | 26,840.73 | Elec |
| B16-V01~V08-1160 |  | Screed Work For 1F & Roof | 6d | 2025-06-21 | 2025-06-26 | B16-V01~V08-1140, B16-V01~V08-1150, B15-V25~V32-1160 | 0d |  | Screed 1st Floor [8]; Screed Roof Floor [8]; Leveling Screed 1st Floor [8]; Leveling Screed Roof Floor [8] | 268,467.85 | Civil |
| B16-V01~V08-1170 |  | Water Tank & Heater Foundations | 4d | 2025-06-28 | 2025-07-01 | B16-V01~V08-1160, B15-V25~V32-1170 | 4d | 0d |  |  | Civil |
| B16-V01~V08-1180 |  | Block Works For 1F | 3d | 2025-06-28 | 2025-06-30 | B16-V01~V08-1160, B15-V25~V32-1180 | 0d |  | Block FF [8] | 20,537.81 | Arc |
| B16-V01~V08-1190 |  | Water Line Network | 6d | 2025-07-01 | 2025-07-07 | B16-V01~V08-1180, B15-V25~V32-1190 | 0d |  | Water Line Network [8] | 40,261.13 | Mech |
| B16-V01~V08-1200 |  | Continue Elec Establishment For GF & 1F | 3d | 2025-07-01 | 2025-07-03 | B16-V01~V08-1180, B15-V25~V32-1200 | 3d |  | Elec Establishment FF [8] | 26,840.73 | Elec |
| B16-V01~V08-1210 |  | Thermal Insulation For Roof | 5d | 2025-07-02 | 2025-07-07 | B16-V01~V08-1170, B15-V25~V32-1210 | 4d | 0d | Roof Insulation [8] | 32,530.16 | Arc |
| B16-V01~V08-1220 |  | Roof Floor Tiles | 6d | 2025-07-08 | 2025-07-14 | B16-V01~V08-1210, B15-V25~V32-1220 | 4d | 0d | Roof Tiles [8]; Roof Tiles Joints [8]; Re_Test Roof Insulation [8] | 63,179.38 | Arc |
| B16-V01~V08-1230 |  | Plaster Work For Villa | 6d | 2025-07-08 | 2025-07-14 | B16-V01~V08-1190, B16-V01~V08-1200, B15-V25~V32-1230 | 0d |  | Establishing a plastering GF [8]; Establishing a plastering FF [8]; Plastering GF [8]; Plastering FF [8] | 49,263.81 |  |
| B16-V01~V08-1240 |  | Marbale Stairs & Handrails | 6d | 2025-07-15 | 2025-07-21 | B16-V01~V08-1230, B15-V25~V32-1240 | 22d | 0d | Marbale Stairs [8]; Stairs Handrails SS [8] | 91,494.69 |  |
| B16-V01~V08-1250 |  | Water Proofing Of Bathrooms | 4d | 2025-07-15 | 2025-07-19 | B16-V01~V08-1230, B15-V25~V32-1250 | 0d |  | Bathrooms InsulationGF & FF [8] | 134.24 |  |
| B16-V01~V08-1260 |  | Pulling The Elec Wires | 4d | 2025-07-15 | 2025-07-19 | B16-V01~V08-1230, B15-V25~V32-1260 | 10d | 2d | Elec Wires GF [8]; Elec Wires FF [8] | 80,542.4 |  |
| B16-V01~V08-1270 |  | Bathroom Tiles | 4d | 2025-07-20 | 2025-07-23 | B16-V01~V08-1250, B16-V01~V08-1220, B15-V25~V32-1270 | 0d |  | Ceramic Walls Kitchen [8]; Ceramic Walls Bathrooms GF [8]; Ceramic Walls Bathrooms FF [8]; Ceramic Tiles Bathrooms GF [8]; Ceramic Tiles Kitchen GF [8]; Ceramic Tiles Store GF [8] | 73,204.08 |  |
| B16-V01~V08-1280 |  | Structure For Gypsum | 6d | 2025-07-24 | 2025-07-30 | B16-V01~V08-1270, B15-V25~V32-1280 | 0d |  | Structure For Gypsum GF Rooms [8]; Structure For Gypsum FF Rooms [8]; Structure For Gypsum Bathrooms & Kitchen [8] | 33,550.81 |  |
| B16-V01~V08-1290 |  | Gypsum Board For Room | 4d | 2025-07-31 | 2025-08-04 | B16-V01~V08-1280, B16-V01~V08-1260, B15-V25~V32-1290 | 0d |  | Gypsum Board For GF Room [8]; Gypsum Board For FF Room [8] | 35,796.64 |  |
| B16-V01~V08-1300 |  | Installation Of Gypsum Board For Bathroom & Kitchen | 4d | 2025-08-05 | 2025-08-09 | B16-V01~V08-1290, B15-V25~V32-1300 | 0d |  | Gypsum Board For Bathrooms & Kitchen [8] | 11,052.24 |  |
| B16-V01~V08-1310 |  | Putty Filler For Gypsm Board Ceiling | 6d | 2025-08-10 | 2025-08-16 | B16-V01~V08-1300, B15-V25~V32-1310 | 0d |  | Putty Filler 1st Layer Roof all Rooms [8]; Putty Filler 1st Layer Roof all Bathrooms & Kitchen [8]; Putty Filler1st Layer walls [8] | 62,182.52 |  |
| B16-V01~V08-1320 |  | Fixing Shower Glass | 4d | 2025-08-17 | 2025-08-20 | B16-V01~V08-1310, B15-V25~V32-1320 | 7d | 0d | Shower Glass [8] | 22,372.88 |  |
| B16-V01~V08-1330 |  | Interior Wall Putty Filler | 6d | 2025-08-17 | 2025-08-23 | B16-V01~V08-1310, B16-V01~V08-1240, B15-V25~V32-1330 | 0d |  | Putty Filler 2ed Layer Roof & WAlls GF [8]; Putty Filler 2ed Layer Roof & WAlls FF [8] | 62,150.21 |  |
| B16-V01~V08-1340 |  | Installation Of Sanitry Fixture | 6d | 2025-08-21 | 2025-08-27 | B16-V01~V08-1320, B15-V25~V32-1340 | 7d | 0d | Mech Fixtures & Accessories [8] | 98,438.1 |  |
| B16-V01~V08-1350 |  | 1st Face Paint | 5d | 2025-08-24 | 2025-08-28 | B16-V01~V08-1330, B15-V25~V32-1350 | 0d |  |  |  |  |
| B16-V01~V08-1360 |  | Installation Of Aluminum Windows | 6d | 2025-08-24 | 2025-08-30 | B16-V01~V08-1330, B15-V25~V32-1360 | 9d | 0d | Aluminum Windows [8] | 84,797.8 |  |
| B16-V01~V08-1370 |  | Installation Of Elec Fixture & Accessories | 6d | 2025-08-24 | 2025-08-30 | B16-V01~V08-1310, B16-V01~V08-1330, B16-V01~V08-1260, B15-V25~V32-1370 | 22d | 0d | Elec Fixtures & Accessories Villa & Yard [8]; Elec Cables GF & FF & Earthing [8] | 53,681.46 |  |
| B16-V01~V08-1380 |  | Installation Of Water Tank-Heater & Pumps | 6d | 2025-08-28 | 2025-09-03 | B16-V01~V08-1340, B15-V25~V32-1380, B16-V01~V08-1220 | 7d | 0d | Water Tank & booster Pump [8]; Lower Pump [8]; Heater [8] | 129,730.28 |  |
| B16-V01~V08-1390 |  | Installation Of Parquet | 4d | 2025-08-30 | 2025-09-02 | B16-V01~V08-1350, B15-V25~V32-1390 | 0d |  | Installation Of Parquet [8] | 52,978.96 |  |
| B16-V01~V08-1400 |  | Installation Of Wooden Doors | 6d | 2025-09-03 | 2025-09-09 | B16-V01~V08-1390, B15-V25~V32-1400 | 0d |  | Wooden Doors Accessories all Villa [8]; Wooden Doors Kitchen & Bathroom without Accessories [8]; Exterior Wooden Doors [8] | 142,109.01 |  |
| B16-V01~V08-1410 |  | Final Face Paint | 6d | 2025-09-10 | 2025-09-16 | B16-V01~V08-1360, B16-V01~V08-1400, B15-V25~V32-1410 | 0d |  | Final Face Paint Villa [8] | 31,090.55 |  |

| ID | WBS | Activity | Duration | Start | Finish | Predecessors | Total float | Free float | Resources | Cost |
| --- | --- | --- | --- | --- | --- | --- | --- | --- | --- | --- |
|  | 3 | **Fence & Courtyard Works** |  | 2025-06-07 | 2025-09-09 |  |  |  |  |  |
| B16-V01~V08-1420 |  | Pouring Bedding Concrete For Fence Fondations | 2d | 2025-06-07 | 2025-06-08 | B16-V01~V08-1120, B15-V25~V32-1420 | 10d | 0d | Excavation Fence Foundations [8] | 4,519.28 |
| B16-V01~V08-1430 |  | RC Concrete For Fence Fondations | 6d | 2025-06-09 | 2025-06-15 | B16-V01~V08-1420, B15-V25~V32-1430 | 10d | 0d | Fence Fondations-Eastern side [8]; Fence Fondations-Westren side [8]; Fence Fondations-Back side [8] | 13,420.32 |
| B16-V01~V08-1440 |  | Steel Fixing & Carpentry For Fence Columns | 6d | 2025-06-16 | 2025-06-22 | B16-V01~V08-1430, B15-V25~V32-1440 | 10d | 0d |  |  |
| B16-V01~V08-1450 |  | Establishing Elec For Fence Columns | 4d | 2025-06-23 | 2025-06-26 | B16-V01~V08-1440, B15-V25~V32-1450 | 10d | 0d |  |  |
| B16-V01~V08-1460 |  | Pouring Concrete For Fence Columns | 1d | 2025-06-28 | 2025-06-28 | B16-V01~V08-1450, B15-V25~V32-1460 | 10d | 0d | Fence Columns-Eastern side [8]; Fence Columns-Westren side [8]; Fence Columns-Back side [8] | 9,665.04 |
| B16-V01~V08-1470 |  | Installation Precast Panel For Fence | 5d | 2025-06-29 | 2025-07-03 | B16-V01~V08-1460, B15-V25~V32-1470 | 10d | 0d | Hollow Core Walls [8] | 71,593.2 |
| B16-V01~V08-1480 |  | Bitumen Coating For Fence Fondations | 4d | 2025-07-05 | 2025-07-08 | B16-V01~V08-1470, B15-V25~V32-1480 | 10d | 0d |  |  |
| B16-V01~V08-1490 |  | Pouring Bedding Concrete For "Front" Fence Fondations | 1d | 2025-07-05 | 2025-07-05 | B16-V01~V08-1470, B15-V25~V32-1490 | 22d | 0d |  |  |
| B16-V01~V08-1500 |  | RC Concrete For "Front" Fence Fondations | 4d | 2025-07-06 | 2025-07-09 | B16-V01~V08-1490, B15-V25~V32-1500 | 22d | 0d | Front Fence Fondations [8] | 8,904.4 |
| B16-V01~V08-1510 |  | Outdoor Drainage & Water Line | 5d | 2025-07-09 | 2025-07-14 | B16-V01~V08-1480, B16-V01~V08-1140, B15-V25~V32-1510 | 10d | 0d | Outdoor Drainage [8]; Outdoor Water Line [8] | 13,423.68 |
| B16-V01~V08-1520 |  | Steel Fixing & Carpentry For "Front" Fence Columns | 4d | 2025-07-10 | 2025-07-14 | B16-V01~V08-1500, B15-V25~V32-1520 | 22d | 0d |  |  |
| B16-V01~V08-1530 |  | Establishing Elec For "Front" Fence Columns | 4d | 2025-07-15 | 2025-07-19 | B16-V01~V08-1520, B15-V25~V32-1530 | 22d | 0d |  |  |
| B16-V01~V08-1540 |  | Establishing Elec For Fence & Yard | 2d | 2025-07-15 | 2025-07-16 | B16-V01~V08-1510, B15-V25~V32-1540 | 10d | 0d | Elec Establishment Fence & Yard [8] | 17,898.32 |
| B16-V01~V08-1550 |  | Backfilling the Yard | 4d | 2025-07-17 | 2025-07-21 | B16-V01~V08-1540, B15-V25~V32-1550 | 10d | 0d | Backfilling the Yard [8] | 10,560 |
| B16-V01~V08-1560 |  | Pouring Concrete Wall Of "Front" Fence Columns | 2d | 2025-07-20 | 2025-07-21 | B16-V01~V08-1530, B15-V25~V32-1560 | 22d | 0d | Front Fence Walls [8] | 17,898.32 |
| B16-V01~V08-1570 |  | Pouring Concrete Crown Of "Front" Fence Columns | 3d | 2025-07-22 | 2025-07-24 | B16-V01~V08-1560, B15-V25~V32-1570 | 22d | 0d | Fence Columns - C Chanel [8] | 3,310.37 |
| B16-V01~V08-1580 |  | Bardoura Works For Yard | 5d | 2025-07-22 | 2025-07-27 | B16-V01~V08-1550, B15-V25~V32-1580 | 10d | 0d | Bardoura Works For Yard [8] | 14,408.16 |
| B16-V01~V08-1590 |  | Pouring Concrete Flower Basin Of "Front" Fence Columns | 4d | 2025-07-26 | 2025-07-29 | B16-V01~V08-1570, B15-V25~V32-1590 | 22d | 0d |  |  |
| B16-V01~V08-1600 |  | Antitermite Treatment For Yard | 1d | 2025-07-28 | 2025-07-28 | B16-V01~V08-1580, B15-V25~V32-1600 | 10d | 0d | Antitermite Treatment For Yard [8] |  |
| B16-V01~V08-1610 |  | Pouring Concrete For Yard | 1d | 2025-07-29 | 2025-07-29 | B16-V01~V08-1600, B15-V25~V32-1610 | 10d | 0d |  |  |
| B16-V01~V08-1620 |  | Block Work For Flower Basin | 5d | 2025-07-30 | 2025-08-04 | B16-V01~V08-1610, B15-V25~V32-1620 | 10d | 0d |  |  |
| B16-V01~V08-1630 |  | Plastering Work For Flower Basin | 4d | 2025-08-05 | 2025-08-09 | B16-V01~V08-1620, B15-V25~V32-1630 | 10d | 0d |  |  |
| B16-V01~V08-1640 |  | Interlock Works For The Yard | 6d | 2025-08-10 | 2025-08-16 | B16-V01~V08-1630, B15-V25~V32-1640 | 10d | 0d | Interlock Works For The Yard [8] | 36,776.32 |
| B16-V01~V08-1650 |  | External Grading Works For The Villa | 4d | 2025-08-17 | 2025-08-20 | B16-V01~V08-1640, B15-V25~V32-1650 | 12d | 0d | External Grading Works For The Villa [8] | 3,221.68 |
| B16-V01~V08-1660 |  | Installation The Exterior Door & Garage Door | 5d | 2025-08-17 | 2025-08-21 | B16-V01~V08-1640, B15-V25~V32-1660 | 15d | 1d | Installation The Exterior Door [8]; Installation The Exterior Garage Door [8] | 40,002.72 |
| B16-V01~V08-1670 |  | Fixing Floor Drain For The Yard | 2d | 2025-08-17 | 2025-08-18 | B16-V01~V08-1640, B15-V25~V32-1670 | 18d | 4d | Floor Drain & Clean Out [8] | 13,423.76 |
| B16-V01~V08-1680 |  | Granite Surronds Around The Villa | 4d | 2025-08-21 | 2025-08-25 | B16-V01~V08-1650, B15-V25~V32-1680 | 12d | 2d | Granite Surronds Around The Villa [8] | 25,818.32 |
| B16-V01~V08-1690 |  | Painting The Base Surface Of The Fence | 2d | 2025-08-21 | 2025-08-23 | B16-V01~V08-1750, B15-V25~V32-1690 | 10d | 0d |  |  |
| B16-V01~V08-1700 |  | Painting The Final Face Of The Fence | 4d | 2025-08-24 | 2025-08-27 | B16-V01~V08-1690, B15-V25~V32-1700 | 10d | 1d | Painting Final Face Of The Fence [8] | 37,586.48 |
| B16-V01~V08-1710 |  | Exterior Painting Of The Villa | 6d | 2025-08-30 | 2025-09-04 | B16-V01~V08-1680, B16-V01~V08-1700, B16-V01~V08-1660, B16-V01~V08-1670, B15-V25~V32-1710 | 9d | 0d | Exterior Painting Of The Villa [8]; Exterior Painting Staircase House [8] | 105,684.66 |
| B16-V01~V08-1720 |  | Installation Elec Fixtures & Accessories For The Yard | 4d | 2025-09-06 | 2025-09-09 | B16-V01~V08-1700, B16-V01~V08-1710, B15-V25~V32-1720 | 12d | 0d | Elec feeding panels GF & FF [8] | 22,372.88 |

| ID | WBS | Activity | Duration | Start | Finish | Predecessors | Total float | Free float | Resources | Cost | Department-1 |
| --- | --- | --- | --- | --- | --- | --- | --- | --- | --- | --- | --- |
|  | 5 | **External Sidewalk Works** |  | 2025-07-30 | 2025-09-14 |  |  |  |  |  |  |
| B16-V01~V08-1730 |  | Connection The Drain To The Piblic Network | 3d | 2025-07-30 | 2025-08-02 | B16-V01~V08-1510, B16-V01~V08-1590, B15-V25~V32-1730 | 22d | 3d | Connection Drain To The Piblic Network [8]; Connection Water To The Piblic Network [8] | 13,420.32 |  |
| B16-V01~V08-1740 |  | Pardora Works For The External Sidewalk | 2d | 2025-08-17 | 2025-08-18 | B16-V01~V08-1640, B16-V01~V08-1730, B15-V25~V32-1740 | 10d | 0d |  |  |  |
| B16-V01~V08-1750 |  | Interlock Works For The Exerrnal Sidewalk | 2d | 2025-08-19 | 2025-08-20 | B16-V01~V08-1740, B15-V25~V32-1750 | 10d | 0d |  |  |  |
| B16-V01~V08-1760 |  | Pulling The Villa's Main Elec Cable | 4d | 2025-09-10 | 2025-09-14 | B16-V01~V08-1750, B16-V01~V08-1720, B15-V25~V32-1760 | 12d | 0d | Elec Work Testing [8] | 22,819.84 |  |
|  | 6 | **Final Testing & Handover** |  | 2025-09-04 | 2025-09-28 |  |  |  |  |  |  |
| B16-V01~V08-1770 |  | Mech Work Testing & Handover | 5d | 2025-09-04 | 2025-09-09 | B16-V01~V08-1730, B16-V01~V08-1340, B16-V01~V08-1380, B15-V25~V32-1770 | 19d | 1d | Mech Work Testing & Handover [8] | 14,318.64 |  |
| B16-V01~V08-1780 |  | Arch Snaglist & Handover | 4d | 2025-09-10 | 2025-09-14 | B16-V01~V08-1750, B16-V01~V08-1710, B16-V01~V08-1400, B15-V25~V32-1780 | 15d | 2d | Arch Snaglist & Handover [8] | 77,320.64 |  |
| B16-V01~V08-1790 |  | ElecWork Testing & Handover | 3d | 2025-09-15 | 2025-09-17 | B16-V01~V08-1760, B16-V01~V08-1370, B15-V25~V32-1790 | 12d | 0d | Elec Work Handover [8] | 23,804.12 |  |
| B16-V01~V08-1800 |  | Final Handover Of The Villa To The Consltant | 4d | 2025-09-18 | 2025-09-22 | B16-V01~V08-1780, B16-V01~V08-1790, B16-V01~V08-1770, B16-V01~V08-1410, B15-V25~V32-1800 | 12d | 0d |  |  |  |
| B16-V01~V08-1810 |  | Customer Delivery | 5d | 2025-09-23 | 2025-09-28 | B16-V01~V08-1800, B15-V25~V32-1810 | 12d | 1d |  |  |  |
|  | 30 | **B16-V09~V16** |  | 2025-02-17 | 2025-10-05 |  |  |  |  |  |  |
|  | 2 | **Under Grond Slap Works** |  | 2025-02-17 | 2025-03-29 |  |  |  |  |  |  |
| B16-V09~V16-1000 |  | Excavation&Compaction of Fondation | 6d | 2025-02-17 | 2025-02-23 | B16-V01~V08-1000 | 59d | 0d | Clearing & Groubbing [8]; Excavation & Leveling [8]; Stone Layer [8]; A3 Layer [8]; A1-a 1st Layer [8]; A1-a 2ed Layer [8] | 163,545.76 | Civil |
| B16-V09~V16-1010 |  | Pouring Concrete For Bedding | 2d | 2025-02-24 | 2025-02-25 | B16-V09~V16-1000, B16-V01~V08-1010 | 59d | 0d | PC Carpentry [8]; PC Concrete [8]; RC 18 MPA [9 M3] | 37,899.68 | Civil |
| B16-V09~V16-1020 |  | Reinforcement Concrete For Foundation | 5d | 2025-02-26 | 2025-03-03 | B16-V09~V16-1010, B16-V01~V08-1020 | 59d | 0d | RC Foundation Carpentry [8]; RC Foundation Steel [8]; RC Foundation Concrete [8] | 201,355.92 | Civil |
| B16-V09~V16-1030 |  | Steel Fixing& Carpenter work for Beams | 4d | 2025-03-04 | 2025-03-08 | B16-V09~V16-1020, B16-V01~V08-1030 | 59d | 0d | RC Grade Beam Carpentry & Steel [8] | 44,745.76 | Civil |
| B16-V09~V16-1040 |  | Mech&Elec Establishment for Beams | 3d | 2025-03-09 | 2025-03-11 | B16-V09~V16-1030, B16-V01~V08-1040 | 59d | 0d |  |  | Mech |
| B16-V09~V16-1050 |  | Pouring Concrete For Beams | 1d | 2025-03-12 | 2025-03-12 | B16-V09~V16-1040, B16-V01~V08-1050 | 59d | 0d | RC Grade Beam Concrete [8] | 77,141.68 | Civil |
| B16-V09~V16-1060 |  | Bitmen Coating For Fondation&Beams | 3d | 2025-03-13 | 2025-03-16 | B16-V09~V16-1050, B16-V01~V08-1060 | 59d | 0d | Bitumen Coating Foundations & Grade Beams [8] | 22,372.32 | Civil |
| B16-V09~V16-1070 |  | Backfilling Inside Fondations | 4d | 2025-03-17 | 2025-03-20 | B16-V09~V16-1060, B16-V01~V08-1070 | 59d | 0d | Backfilling 1st Layer [8]; Backfilling 2ed Layer [8] | 11,186.4 | Civil |
| B16-V09~V16-1080 |  | Mech Works Under Grond Slap | 3d | 2025-03-22 | 2025-03-24 | B16-V09~V16-1070, B16-V01~V08-1080 | 59d | 0d | Mech Establishment Under Ground Slap [8] | 13,423.42 | Mech |
| B16-V09~V16-1090 |  | Steel Fixing& Carpenter work for Ground Slap | 3d | 2025-03-25 | 2025-03-27 | B16-V09~V16-1080, B16-V01~V08-1090 | 59d | 0d | Steel & Carpentry For Ground Slap [8] | 10,246.54 | Civil |
| B16-V09~V16-1100 |  | Anti Termite Treatment For Ground Slap | 1d | 2025-03-29 | 2025-03-29 | B16-V09~V16-1090, B16-V01~V08-1100 | 59d | 0d | Anti Termite Treatment nder Ground Slap [8] | 2,237.28 | Civil |
| B16-V09~V16-1110 |  | Pouring Concrete For Ground Slap | 1d | 2025-03-29 | 2025-03-29 | B16-V09~V16-1100 FF, B16-V09~V16-1090, B16-V01~V08-1110 | 59d | 5d | Concrete For Ground Slap [8] | 58,169.52 | Civil |

| ID | WBS | Activity | Duration | Start | Finish | Predecessors | Total float | Free float | Resources | Cost | Department-1 |
| --- | --- | --- | --- | --- | --- | --- | --- | --- | --- | --- | --- |
|  | 4 | **Precast Works** |  | 2025-06-07 | 2025-06-12 |  |  |  |  |  |  |
| B16-V09~V16-1120 |  | Precast Constrction | 6d | 2025-06-07 | 2025-06-12 | B16-V09~V16-1110, B16-V01~V08-1120 | 0d |  | Precast Walls GF [8]; Hollow Core Slap GF [8]; Precast Stairs & staircase House [8]; Thermal insollation Outside Walls [8]; Concrete structure joints [8]; Precast Walls FF [8]; Hollow Core Slap FF [8] | 1,513,460.1 | Civil |
|  | 1 | **Works Inside The Villa** |  | 2025-06-14 | 2025-09-23 |  |  |  |  |  |  |
| B16-V09~V16-1130 |  | Block Work For GF & Estabishment 1F | 6d | 2025-06-14 | 2025-06-19 | B16-V09~V16-1120, B16-V01~V08-1130 | 0d |  | Block GF [8] | 13,647.1 | Arc |
| B16-V09~V16-1140 |  | L.L & H.L Drainage | 6d | 2025-06-21 | 2025-06-26 | B16-V09~V16-1130, B16-V01~V08-1140 | 0d |  | HL Drainage [8]; L.L Drainage [8] | 89,489.28 | Mech |
| B16-V09~V16-1150 |  | Elec Establishment For GF & 1F | 3d | 2025-06-21 | 2025-06-23 | B16-V09~V16-1130, B16-V01~V08-1150 | 3d |  | Elec Establishment GF [8] | 26,840.73 | Elec |
| B16-V09~V16-1160 |  | Screed Work For 1F & Roof | 6d | 2025-06-28 | 2025-07-03 | B16-V09~V16-1140, B16-V09~V16-1150, B16-V01~V08-1160 | 0d |  | Screed 1st Floor [8]; Screed Roof Floor [8]; Leveling Screed 1st Floor [8]; Leveling Screed Roof Floor [8] | 268,467.85 | Civil |
| B16-V09~V16-1170 |  | Water Tank & Heater Foundations | 4d | 2025-07-05 | 2025-07-08 | B16-V09~V16-1160, B16-V01~V08-1170 | 4d | 0d |  |  | Civil |
| B16-V09~V16-1180 |  | Block Works For 1F | 3d | 2025-07-05 | 2025-07-07 | B16-V09~V16-1160, B16-V01~V08-1180 | 0d |  | Block FF [8] | 20,537.81 | Arc |
| B16-V09~V16-1190 |  | Water Line Network | 6d | 2025-07-08 | 2025-07-14 | B16-V09~V16-1180, B16-V01~V08-1190 | 0d |  | Water Line Network [8] | 40,261.13 | Mech |
| B16-V09~V16-1200 |  | Continue Elec Establishment For GF & 1F | 3d | 2025-07-08 | 2025-07-10 | B16-V09~V16-1180, B16-V01~V08-1200 | 3d |  | Elec Establishment FF [8] | 26,840.73 | Elec |
| B16-V09~V16-1210 |  | Thermal Insulation For Roof | 5d | 2025-07-09 | 2025-07-14 | B16-V09~V16-1170, B16-V01~V08-1210 | 4d | 0d | Roof Insulation [8] | 32,530.16 | Arc |
| B16-V09~V16-1220 |  | Roof Floor Tiles | 6d | 2025-07-15 | 2025-07-21 | B16-V09~V16-1210, B16-V01~V08-1220 | 4d | 0d | Roof Tiles [8]; Roof Tiles Joints [8]; Re_Test Roof Insulation [8] | 63,179.38 | Arc |
| B16-V09~V16-1230 |  | Plaster Work For Villa | 6d | 2025-07-15 | 2025-07-21 | B16-V09~V16-1190, B16-V09~V16-1200, B16-V01~V08-1230 | 0d |  | Establishing a plastering GF [8]; Establishing a plastering FF [8]; Plastering GF [8]; Plastering FF [8] | 49,263.81 |  |
| B16-V09~V16-1240 |  | Marbale Stairs & Handrails | 6d | 2025-07-22 | 2025-07-28 | B16-V09~V16-1230, B16-V01~V08-1240 | 22d | 0d | Marbale Stairs [8]; Stairs Handrails SS [8] | 91,494.69 |  |
| B16-V09~V16-1250 |  | Water Proofing Of Bathrooms | 4d | 2025-07-22 | 2025-07-26 | B16-V09~V16-1230, B16-V01~V08-1250 | 0d |  | Bathrooms InsulationGF & FF [8] | 134.24 |  |
| B16-V09~V16-1260 |  | Pulling The Elec Wires | 4d | 2025-07-22 | 2025-07-26 | B16-V09~V16-1230, B16-V01~V08-1260 | 10d | 2d | Elec Wires GF [8]; Elec Wires FF [8] | 80,542.4 |  |
| B16-V09~V16-1270 |  | Bathroom Tiles | 4d | 2025-07-27 | 2025-07-30 | B16-V09~V16-1250, B16-V09~V16-1220, B16-V01~V08-1270 | 0d |  | Ceramic Walls Kitchen [8]; Ceramic Walls Bathrooms GF [8]; Ceramic Walls Bathrooms FF [8]; Ceramic Tiles Bathrooms GF [8]; Ceramic Tiles Kitchen GF [8]; Ceramic Tiles Store GF [8] | 73,204.08 |  |
| B16-V09~V16-1280 |  | Structure For Gypsum | 6d | 2025-07-31 | 2025-08-06 | B16-V09~V16-1270, B16-V01~V08-1280 | 0d |  | Structure For Gypsum GF Rooms [8]; Structure For Gypsum FF Rooms [8]; Structure For Gypsum Bathrooms & Kitchen [8] | 33,550.81 |  |
| B16-V09~V16-1290 |  | Gypsum Board For Room | 4d | 2025-08-07 | 2025-08-11 | B16-V09~V16-1280, B16-V09~V16-1260, B16-V01~V08-1290 | 0d |  | Gypsum Board For GF Room [8]; Gypsum Board For FF Room [8] | 35,796.64 |  |
| B16-V09~V16-1300 |  | Installation Of Gypsum Board For Bathroom & Kitchen | 4d | 2025-08-12 | 2025-08-16 | B16-V09~V16-1290, B16-V01~V08-1300 | 0d |  | Gypsum Board For Bathrooms & Kitchen [8] | 11,052.24 |  |
| B16-V09~V16-1310 |  | Putty Filler For Gypsm Board Ceiling | 6d | 2025-08-17 | 2025-08-23 | B16-V09~V16-1300, B16-V01~V08-1310 | 0d |  | Putty Filler 1st Layer Roof all Rooms [8]; Putty Filler 1st Layer Roof all Bathrooms & Kitchen [8]; Putty Filler1st Layer walls [8] | 62,182.52 |  |
| B16-V09~V16-1320 |  | Fixing Shower Glass | 4d | 2025-08-24 | 2025-08-27 | B16-V09~V16-1310, B16-V01~V08-1320 | 7d | 0d | Shower Glass [8] | 22,372.88 |  |
| B16-V09~V16-1330 |  | Interior Wall Putty Filler | 6d | 2025-08-24 | 2025-08-30 | B16-V09~V16-1310, B16-V09~V16-1240, B16-V01~V08-1330 | 0d |  | Putty Filler 2ed Layer Roof & WAlls GF [8]; Putty Filler 2ed Layer Roof & WAlls FF [8] | 62,150.21 |  |
| B16-V09~V16-1340 |  | Installation Of Sanitry Fixture | 6d | 2025-08-28 | 2025-09-03 | B16-V09~V16-1320, B16-V01~V08-1340 | 7d | 0d | Mech Fixtures & Accessories [8] | 98,438.1 |  |
| B16-V09~V16-1350 |  | 1st Face Paint | 5d | 2025-08-31 | 2025-09-04 | B16-V09~V16-1330, B16-V01~V08-1350 | 0d |  |  |  |  |
| B16-V09~V16-1360 |  | Installation Of Aluminum Windows | 6d | 2025-08-31 | 2025-09-06 | B16-V09~V16-1330, B16-V01~V08-1360 | 9d | 0d | Aluminum Windows [8] | 84,797.8 |  |
| B16-V09~V16-1370 |  | Installation Of Elec Fixture & Accessories | 6d | 2025-08-31 | 2025-09-06 | B16-V09~V16-1310, B16-V09~V16-1330, B16-V09~V16-1260, B16-V01~V08-1370 | 22d | 0d | Elec Fixtures & Accessories Villa & Yard [8]; Elec Cables GF & FF & Earthing [8] | 53,681.46 |  |
| B16-V09~V16-1380 |  | Installation Of Water Tank-Heater & Pumps | 6d | 2025-09-04 | 2025-09-10 | B16-V09~V16-1340, B16-V01~V08-1380, B16-V09~V16-1220 | 7d | 0d | Water Tank & booster Pump [8]; Lower Pump [8]; Heater [8] | 129,730.28 |  |
| B16-V09~V16-1390 |  | Installation Of Parquet | 4d | 2025-09-06 | 2025-09-09 | B16-V09~V16-1350, B16-V01~V08-1390 | 0d |  | Installation Of Parquet [8] | 52,978.96 |  |
| B16-V09~V16-1400 |  | Installation Of Wooden Doors | 6d | 2025-09-10 | 2025-09-16 | B16-V09~V16-1390, B16-V01~V08-1400 | 0d |  | Wooden Doors Accessories all Villa [8]; Wooden Doors Kitchen & Bathroom without Accessories [8]; Exterior Wooden Doors [8] | 142,109.01 |  |
| B16-V09~V16-1410 |  | Final Face Paint | 6d | 2025-09-17 | 2025-09-23 | B16-V09~V16-1360, B16-V09~V16-1400, B16-V01~V08-1410 | 0d |  | Final Face Paint Villa [8] | 31,090.55 |  |

| ID | WBS | Activity | Duration | Start | Finish | Predecessors | Total float | Free float | Resources | Cost |
| --- | --- | --- | --- | --- | --- | --- | --- | --- | --- | --- |
|  | 3 | **Fence & Courtyard Works** |  | 2025-06-14 | 2025-09-16 |  |  |  |  |  |
| B16-V09~V16-1420 |  | Pouring Bedding Concrete For Fence Fondations | 2d | 2025-06-14 | 2025-06-15 | B16-V09~V16-1120, B16-V01~V08-1420 | 10d | 0d | Excavation Fence Foundations [8] | 4,519.28 |
| B16-V09~V16-1430 |  | RC Concrete For Fence Fondations | 6d | 2025-06-16 | 2025-06-22 | B16-V09~V16-1420, B16-V01~V08-1430 | 10d | 0d | Fence Fondations-Eastern side [8]; Fence Fondations-Westren side [8]; Fence Fondations-Back side [8] | 13,420.32 |
| B16-V09~V16-1440 |  | Steel Fixing & Carpentry For Fence Columns | 6d | 2025-06-23 | 2025-06-29 | B16-V09~V16-1430, B16-V01~V08-1440 | 10d | 0d |  |  |
| B16-V09~V16-1450 |  | Establishing Elec For Fence Columns | 4d | 2025-06-30 | 2025-07-03 | B16-V09~V16-1440, B16-V01~V08-1450 | 10d | 0d |  |  |
| B16-V09~V16-1460 |  | Pouring Concrete For Fence Columns | 1d | 2025-07-05 | 2025-07-05 | B16-V09~V16-1450, B16-V01~V08-1460 | 10d | 0d | Fence Columns-Eastern side [8]; Fence Columns-Westren side [8]; Fence Columns-Back side [8] | 9,665.04 |
| B16-V09~V16-1470 |  | Installation Precast Panel For Fence | 5d | 2025-07-06 | 2025-07-10 | B16-V09~V16-1460, B16-V01~V08-1470 | 10d | 0d | Hollow Core Walls [8] | 71,593.2 |
| B16-V09~V16-1480 |  | Bitumen Coating For Fence Fondations | 4d | 2025-07-12 | 2025-07-15 | B16-V09~V16-1470, B16-V01~V08-1480 | 10d | 0d |  |  |
| B16-V09~V16-1490 |  | Pouring Bedding Concrete For "Front" Fence Fondations | 1d | 2025-07-12 | 2025-07-12 | B16-V09~V16-1470, B16-V01~V08-1490 | 22d | 0d |  |  |
| B16-V09~V16-1500 |  | RC Concrete For "Front" Fence Fondations | 4d | 2025-07-13 | 2025-07-16 | B16-V09~V16-1490, B16-V01~V08-1500 | 22d | 0d | Front Fence Fondations [8] | 8,904.4 |
| B16-V09~V16-1510 |  | Outdoor Drainage & Water Line | 5d | 2025-07-16 | 2025-07-21 | B16-V09~V16-1480, B16-V09~V16-1140, B16-V01~V08-1510 | 10d | 0d | Outdoor Drainage [8]; Outdoor Water Line [8] | 13,423.68 |
| B16-V09~V16-1520 |  | Steel Fixing & Carpentry For "Front" Fence Columns | 4d | 2025-07-17 | 2025-07-21 | B16-V09~V16-1500, B16-V01~V08-1520 | 22d | 0d |  |  |
| B16-V09~V16-1530 |  | Establishing Elec For "Front" Fence Columns | 4d | 2025-07-22 | 2025-07-26 | B16-V09~V16-1520, B16-V01~V08-1530 | 22d | 0d |  |  |
| B16-V09~V16-1540 |  | Establishing Elec For Fence & Yard | 2d | 2025-07-22 | 2025-07-23 | B16-V09~V16-1510, B16-V01~V08-1540 | 10d | 0d | Elec Establishment Fence & Yard [8] | 17,898.32 |
| B16-V09~V16-1550 |  | Backfilling the Yard | 4d | 2025-07-24 | 2025-07-28 | B16-V09~V16-1540, B16-V01~V08-1550 | 10d | 0d | Backfilling the Yard [8] | 10,560 |
| B16-V09~V16-1560 |  | Pouring Concrete Wall Of "Front" Fence Columns | 2d | 2025-07-27 | 2025-07-28 | B16-V09~V16-1530, B16-V01~V08-1560 | 22d | 0d | Front Fence Walls [8] | 17,898.32 |
| B16-V09~V16-1570 |  | Pouring Concrete Crown Of "Front" Fence Columns | 3d | 2025-07-29 | 2025-07-31 | B16-V09~V16-1560, B16-V01~V08-1570 | 22d | 0d | Fence Columns - C Chanel [8] | 3,310.37 |
| B16-V09~V16-1580 |  | Bardoura Works For Yard | 5d | 2025-07-29 | 2025-08-03 | B16-V09~V16-1550, B16-V01~V08-1580 | 10d | 0d | Bardoura Works For Yard [8] | 14,408.16 |
| B16-V09~V16-1590 |  | Pouring Concrete Flower Basin Of "Front" Fence Columns | 4d | 2025-08-02 | 2025-08-05 | B16-V09~V16-1570, B16-V01~V08-1590 | 22d | 0d |  |  |
| B16-V09~V16-1600 |  | Antitermite Treatment For Yard | 1d | 2025-08-04 | 2025-08-04 | B16-V09~V16-1580, B16-V01~V08-1600 | 10d | 0d | Antitermite Treatment For Yard [8] |  |
| B16-V09~V16-1610 |  | Pouring Concrete For Yard | 1d | 2025-08-05 | 2025-08-05 | B16-V09~V16-1600, B16-V01~V08-1610 | 10d | 0d |  |  |
| B16-V09~V16-1620 |  | Block Work For Flower Basin | 5d | 2025-08-06 | 2025-08-11 | B16-V09~V16-1610, B16-V01~V08-1620 | 10d | 0d |  |  |
| B16-V09~V16-1630 |  | Plastering Work For Flower Basin | 4d | 2025-08-12 | 2025-08-16 | B16-V09~V16-1620, B16-V01~V08-1630 | 10d | 0d |  |  |
| B16-V09~V16-1640 |  | Interlock Works For The Yard | 6d | 2025-08-17 | 2025-08-23 | B16-V09~V16-1630, B16-V01~V08-1640 | 10d | 0d | Interlock Works For The Yard [8] | 36,776.32 |
| B16-V09~V16-1650 |  | External Grading Works For The Villa | 4d | 2025-08-24 | 2025-08-27 | B16-V09~V16-1640, B16-V01~V08-1650 | 12d | 0d | External Grading Works For The Villa [8] | 3,221.68 |
| B16-V09~V16-1660 |  | Installation The Exterior Door & Garage Door | 5d | 2025-08-24 | 2025-08-28 | B16-V09~V16-1640, B16-V01~V08-1660 | 15d | 1d | Installation The Exterior Door [8]; Installation The Exterior Garage Door [8] | 40,002.72 |
| B16-V09~V16-1670 |  | Fixing Floor Drain For The Yard | 2d | 2025-08-24 | 2025-08-25 | B16-V09~V16-1640, B16-V01~V08-1670 | 18d | 4d | Floor Drain & Clean Out [8] | 13,423.76 |
| B16-V09~V16-1680 |  | Granite Surronds Around The Villa | 4d | 2025-08-28 | 2025-09-01 | B16-V09~V16-1650, B16-V01~V08-1680 | 12d | 2d | Granite Surronds Around The Villa [8] | 25,818.32 |
| B16-V09~V16-1690 |  | Painting The Base Surface Of The Fence | 2d | 2025-08-28 | 2025-08-30 | B16-V09~V16-1750, B16-V01~V08-1690 | 10d | 0d |  |  |
| B16-V09~V16-1700 |  | Painting The Final Face Of The Fence | 4d | 2025-08-31 | 2025-09-03 | B16-V09~V16-1690, B16-V01~V08-1700 | 10d | 1d | Painting Final Face Of The Fence [8] | 37,586.48 |
| B16-V09~V16-1710 |  | Exterior Painting Of The Villa | 6d | 2025-09-06 | 2025-09-11 | B16-V09~V16-1680, B16-V09~V16-1700, B16-V09~V16-1660, B16-V09~V16-1670, B16-V01~V08-1710 | 9d | 0d | Exterior Painting Of The Villa [8]; Exterior Painting Staircase House [8] | 105,684.66 |
| B16-V09~V16-1720 |  | Installation Elec Fixtures & Accessories For The Yard | 4d | 2025-09-13 | 2025-09-16 | B16-V09~V16-1700, B16-V09~V16-1710, B16-V01~V08-1720 | 11d | 0d | Elec feeding panels GF & FF [8] | 22,372.88 |

| ID | WBS | Activity | Duration | Start | Finish | Predecessors | Total float | Free float | Resources | Cost | Department-1 |
| --- | --- | --- | --- | --- | --- | --- | --- | --- | --- | --- | --- |
|  | 5 | **External Sidewalk Works** |  | 2025-08-06 | 2025-09-21 |  |  |  |  |  |  |
| B16-V09~V16-1730 |  | Connection The Drain To The Piblic Network | 3d | 2025-08-06 | 2025-08-09 | B16-V09~V16-1510, B16-V09~V16-1590, B16-V01~V08-1730 | 22d | 3d | Connection Drain To The Piblic Network [8]; Connection Water To The Piblic Network [8] | 13,420.32 |  |
| B16-V09~V16-1740 |  | Pardora Works For The External Sidewalk | 2d | 2025-08-24 | 2025-08-25 | B16-V09~V16-1640, B16-V09~V16-1730, B16-V01~V08-1740 | 10d | 0d |  |  |  |
| B16-V09~V16-1750 |  | Interlock Works For The Exerrnal Sidewalk | 2d | 2025-08-26 | 2025-08-27 | B16-V09~V16-1740, B16-V01~V08-1750 | 10d | 0d |  |  |  |
| B16-V09~V16-1760 |  | Pulling The Villa's Main Elec Cable | 4d | 2025-09-17 | 2025-09-21 | B16-V09~V16-1750, B16-V09~V16-1720, B16-V01~V08-1760 | 11d | 0d | Elec Work Testing [8] | 22,819.84 |  |
|  | 6 | **Final Testing & Handover** |  | 2025-09-11 | 2025-10-05 |  |  |  |  |  |  |
| B16-V09~V16-1770 |  | Mech Work Testing & Handover | 5d | 2025-09-11 | 2025-09-16 | B16-V09~V16-1730, B16-V09~V16-1340, B16-V09~V16-1380, B16-V01~V08-1770 | 18d | 1d | Mech Work Testing & Handover [8] | 14,318.64 |  |
| B16-V09~V16-1780 |  | Arch Snaglist & Handover | 4d | 2025-09-17 | 2025-09-21 | B16-V09~V16-1750, B16-V09~V16-1710, B16-V09~V16-1400, B16-V01~V08-1780 | 14d | 2d | Arch Snaglist & Handover [8] | 77,320.64 |  |
| B16-V09~V16-1790 |  | ElecWork Testing & Handover | 3d | 2025-09-22 | 2025-09-24 | B16-V09~V16-1760, B16-V09~V16-1370, B16-V01~V08-1790 | 11d | 0d | Elec Work Handover [8] | 23,804.12 |  |
| B16-V09~V16-1800 |  | Final Handover Of The Villa To The Consltant | 4d | 2025-09-25 | 2025-09-29 | B16-V09~V16-1780, B16-V09~V16-1790, B16-V09~V16-1770, B16-V09~V16-1410, B16-V01~V08-1800 | 11d | 0d |  |  |  |
| B16-V09~V16-1810 |  | Customer Delivery | 5d | 2025-09-30 | 2025-10-05 | B16-V09~V16-1800, B16-V01~V08-1810 | 11d | 1d |  |  |  |
|  | 31 | **B16-V17~V24** |  | 2025-02-24 | 2025-10-12 |  |  |  |  |  |  |
|  | 2 | **Under Grond Slap Works** |  | 2025-02-24 | 2025-04-05 |  |  |  |  |  |  |
| B16-V17~V24-1000 |  | Excavation&Compaction of Fondation | 6d | 2025-02-24 | 2025-03-02 | B16-V09~V16-1000 | 59d | 0d | Clearing & Groubbing [8]; Excavation & Leveling [8]; Stone Layer [8]; A3 Layer [8]; A1-a 1st Layer [8]; A1-a 2ed Layer [8] | 163,545.76 | Civil |
| B16-V17~V24-1010 |  | Pouring Concrete For Bedding | 2d | 2025-03-03 | 2025-03-04 | B16-V17~V24-1000, B16-V09~V16-1010 | 59d | 0d | PC Carpentry [8]; PC Concrete [8]; RC 18 MPA [9 M3] | 37,899.68 | Civil |
| B16-V17~V24-1020 |  | Reinforcement Concrete For Foundation | 5d | 2025-03-05 | 2025-03-10 | B16-V17~V24-1010, B16-V09~V16-1020 | 59d | 0d | RC Foundation Carpentry [8]; RC Foundation Steel [8]; RC Foundation Concrete [8] | 201,355.92 | Civil |
| B16-V17~V24-1030 |  | Steel Fixing& Carpenter work for Beams | 4d | 2025-03-11 | 2025-03-15 | B16-V17~V24-1020, B16-V09~V16-1030 | 59d | 0d | RC Grade Beam Carpentry & Steel [8] | 44,745.76 | Civil |
| B16-V17~V24-1040 |  | Mech&Elec Establishment for Beams | 3d | 2025-03-16 | 2025-03-18 | B16-V17~V24-1030, B16-V09~V16-1040 | 59d | 0d |  |  | Mech |
| B16-V17~V24-1050 |  | Pouring Concrete For Beams | 1d | 2025-03-19 | 2025-03-19 | B16-V17~V24-1040, B16-V09~V16-1050 | 59d | 0d | RC Grade Beam Concrete [8] | 77,141.68 | Civil |
| B16-V17~V24-1060 |  | Bitmen Coating For Fondation&Beams | 3d | 2025-03-20 | 2025-03-23 | B16-V17~V24-1050, B16-V09~V16-1060 | 59d | 0d | Bitumen Coating Foundations & Grade Beams [8] | 22,372.32 | Civil |
| B16-V17~V24-1070 |  | Backfilling Inside Fondations | 4d | 2025-03-24 | 2025-03-27 | B16-V17~V24-1060, B16-V09~V16-1070 | 59d | 0d | Backfilling 1st Layer [8]; Backfilling 2ed Layer [8] | 11,186.4 | Civil |
| B16-V17~V24-1080 |  | Mech Works Under Grond Slap | 3d | 2025-03-29 | 2025-03-31 | B16-V17~V24-1070, B16-V09~V16-1080 | 59d | 0d | Mech Establishment Under Ground Slap [8] | 13,423.42 | Mech |
| B16-V17~V24-1090 |  | Steel Fixing& Carpenter work for Ground Slap | 3d | 2025-04-01 | 2025-04-03 | B16-V17~V24-1080, B16-V09~V16-1090 | 59d | 0d | Steel & Carpentry For Ground Slap [8] | 10,246.54 | Civil |
| B16-V17~V24-1100 |  | Anti Termite Treatment For Ground Slap | 1d | 2025-04-05 | 2025-04-05 | B16-V17~V24-1090, B16-V09~V16-1100 | 59d | 0d | Anti Termite Treatment nder Ground Slap [8] | 2,237.28 | Civil |
| B16-V17~V24-1110 |  | Pouring Concrete For Ground Slap | 1d | 2025-04-05 | 2025-04-05 | B16-V17~V24-1100 FF, B16-V17~V24-1090, B16-V09~V16-1110 | 59d | 5d | Concrete For Ground Slap [8] | 58,169.52 | Civil |

| ID | WBS | Activity | Duration | Start | Finish | Predecessors | Total float | Free float | Resources | Cost | Department-1 |
| --- | --- | --- | --- | --- | --- | --- | --- | --- | --- | --- | --- |
|  | 4 | **Precast Works** |  | 2025-06-14 | 2025-06-19 |  |  |  |  |  |  |
| B16-V17~V24-1120 |  | Precast Constrction | 6d | 2025-06-14 | 2025-06-19 | B16-V17~V24-1110, B16-V09~V16-1120 | 0d |  | Precast Walls GF [8]; Hollow Core Slap GF [8]; Precast Stairs & staircase House [8]; Thermal insollation Outside Walls [8]; Concrete structure joints [8]; Precast Walls FF [8]; Hollow Core Slap FF [8] | 1,513,460.1 | Civil |
|  | 1 | **Works Inside The Villa** |  | 2025-06-21 | 2025-09-30 |  |  |  |  |  |  |
| B16-V17~V24-1130 |  | Block Work For GF & Estabishment 1F | 6d | 2025-06-21 | 2025-06-26 | B16-V17~V24-1120, B16-V09~V16-1130 | 0d |  | Block GF [8] | 13,647.1 | Arc |
| B16-V17~V24-1140 |  | L.L & H.L Drainage | 6d | 2025-06-28 | 2025-07-03 | B16-V17~V24-1130, B16-V09~V16-1140 | 0d |  | HL Drainage [8]; L.L Drainage [8] | 89,489.28 | Mech |
| B16-V17~V24-1150 |  | Elec Establishment For GF & 1F | 3d | 2025-06-28 | 2025-06-30 | B16-V17~V24-1130, B16-V09~V16-1150 | 3d |  | Elec Establishment GF [8] | 26,840.73 | Elec |
| B16-V17~V24-1160 |  | Screed Work For 1F & Roof | 6d | 2025-07-05 | 2025-07-10 | B16-V17~V24-1140, B16-V17~V24-1150, B16-V09~V16-1160 | 0d |  | Screed 1st Floor [8]; Screed Roof Floor [8]; Leveling Screed 1st Floor [8]; Leveling Screed Roof Floor [8] | 268,467.85 | Civil |
| B16-V17~V24-1170 |  | Water Tank & Heater Foundations | 4d | 2025-07-12 | 2025-07-15 | B16-V17~V24-1160, B16-V09~V16-1170 | 4d | 0d |  |  | Civil |
| B16-V17~V24-1180 |  | Block Works For 1F | 3d | 2025-07-12 | 2025-07-14 | B16-V17~V24-1160, B16-V09~V16-1180 | 0d |  | Block FF [8] | 20,537.81 | Arc |
| B16-V17~V24-1190 |  | Water Line Network | 6d | 2025-07-15 | 2025-07-21 | B16-V17~V24-1180, B16-V09~V16-1190 | 0d |  | Water Line Network [8] | 40,261.13 | Mech |
| B16-V17~V24-1200 |  | Continue Elec Establishment For GF & 1F | 3d | 2025-07-15 | 2025-07-17 | B16-V17~V24-1180, B16-V09~V16-1200 | 3d |  | Elec Establishment FF [8] | 26,840.73 | Elec |
| B16-V17~V24-1210 |  | Thermal Insulation For Roof | 5d | 2025-07-16 | 2025-07-21 | B16-V17~V24-1170, B16-V09~V16-1210 | 4d | 0d | Roof Insulation [8] | 32,530.16 | Arc |
| B16-V17~V24-1220 |  | Roof Floor Tiles | 6d | 2025-07-22 | 2025-07-28 | B16-V17~V24-1210, B16-V09~V16-1220 | 4d | 0d | Roof Tiles [8]; Roof Tiles Joints [8]; Re_Test Roof Insulation [8] | 63,179.38 | Arc |
| B16-V17~V24-1230 |  | Plaster Work For Villa | 6d | 2025-07-22 | 2025-07-28 | B16-V17~V24-1190, B16-V17~V24-1200, B16-V09~V16-1230 | 0d |  | Establishing a plastering GF [8]; Establishing a plastering FF [8]; Plastering GF [8]; Plastering FF [8] | 49,263.81 |  |
| B16-V17~V24-1240 |  | Marbale Stairs & Handrails | 6d | 2025-07-29 | 2025-08-04 | B16-V17~V24-1230, B16-V09~V16-1240 | 22d | 0d | Marbale Stairs [8]; Stairs Handrails SS [8] | 91,494.69 |  |
| B16-V17~V24-1250 |  | Water Proofing Of Bathrooms | 4d | 2025-07-29 | 2025-08-02 | B16-V17~V24-1230, B16-V09~V16-1250 | 0d |  | Bathrooms InsulationGF & FF [8] | 134.24 |  |
| B16-V17~V24-1260 |  | Pulling The Elec Wires | 4d | 2025-07-29 | 2025-08-02 | B16-V17~V24-1230, B16-V09~V16-1260 | 10d | 2d | Elec Wires GF [8]; Elec Wires FF [8] | 80,542.4 |  |
| B16-V17~V24-1270 |  | Bathroom Tiles | 4d | 2025-08-03 | 2025-08-06 | B16-V17~V24-1250, B16-V17~V24-1220, B16-V09~V16-1270 | 0d |  | Ceramic Walls Kitchen [8]; Ceramic Walls Bathrooms GF [8]; Ceramic Walls Bathrooms FF [8]; Ceramic Tiles Bathrooms GF [8]; Ceramic Tiles Kitchen GF [8]; Ceramic Tiles Store GF [8] | 73,204.08 |  |
| B16-V17~V24-1280 |  | Structure For Gypsum | 6d | 2025-08-07 | 2025-08-13 | B16-V17~V24-1270, B16-V09~V16-1280 | 0d |  | Structure For Gypsum GF Rooms [8]; Structure For Gypsum FF Rooms [8]; Structure For Gypsum Bathrooms & Kitchen [8] | 33,550.81 |  |
| B16-V17~V24-1290 |  | Gypsum Board For Room | 4d | 2025-08-14 | 2025-08-18 | B16-V17~V24-1280, B16-V17~V24-1260, B16-V09~V16-1290 | 0d |  | Gypsum Board For GF Room [8]; Gypsum Board For FF Room [8] | 35,796.64 |  |
| B16-V17~V24-1300 |  | Installation Of Gypsum Board For Bathroom & Kitchen | 4d | 2025-08-19 | 2025-08-23 | B16-V17~V24-1290, B16-V09~V16-1300 | 0d |  | Gypsum Board For Bathrooms & Kitchen [8] | 11,052.24 |  |
| B16-V17~V24-1310 |  | Putty Filler For Gypsm Board Ceiling | 6d | 2025-08-24 | 2025-08-30 | B16-V17~V24-1300, B16-V09~V16-1310 | 0d |  | Putty Filler 1st Layer Roof all Rooms [8]; Putty Filler 1st Layer Roof all Bathrooms & Kitchen [8]; Putty Filler1st Layer walls [8] | 62,182.52 |  |
| B16-V17~V24-1320 |  | Fixing Shower Glass | 4d | 2025-08-31 | 2025-09-03 | B16-V17~V24-1310, B16-V09~V16-1320 | 7d | 0d | Shower Glass [8] | 22,372.88 |  |
| B16-V17~V24-1330 |  | Interior Wall Putty Filler | 6d | 2025-08-31 | 2025-09-06 | B16-V17~V24-1310, B16-V17~V24-1240, B16-V09~V16-1330 | 0d |  | Putty Filler 2ed Layer Roof & WAlls GF [8]; Putty Filler 2ed Layer Roof & WAlls FF [8] | 62,150.21 |  |
| B16-V17~V24-1340 |  | Installation Of Sanitry Fixture | 6d | 2025-09-04 | 2025-09-10 | B16-V17~V24-1320, B16-V09~V16-1340 | 7d | 0d | Mech Fixtures & Accessories [8] | 98,438.1 |  |
| B16-V17~V24-1350 |  | 1st Face Paint | 5d | 2025-09-07 | 2025-09-11 | B16-V17~V24-1330, B16-V09~V16-1350 | 0d |  |  |  |  |
| B16-V17~V24-1360 |  | Installation Of Aluminum Windows | 6d | 2025-09-07 | 2025-09-13 | B16-V17~V24-1330, B16-V09~V16-1360 | 9d | 0d | Aluminum Windows [8] | 84,797.8 |  |
| B16-V17~V24-1370 |  | Installation Of Elec Fixture & Accessories | 6d | 2025-09-07 | 2025-09-13 | B16-V17~V24-1310, B16-V17~V24-1330, B16-V17~V24-1260, B16-V09~V16-1370 | 22d | 0d | Elec Fixtures & Accessories Villa & Yard [8]; Elec Cables GF & FF & Earthing [8] | 53,681.46 |  |
| B16-V17~V24-1380 |  | Installation Of Water Tank-Heater & Pumps | 6d | 2025-09-11 | 2025-09-17 | B16-V17~V24-1340, B16-V09~V16-1380, B16-V17~V24-1220 | 7d | 0d | Water Tank & booster Pump [8]; Lower Pump [8]; Heater [8] | 129,730.28 |  |
| B16-V17~V24-1390 |  | Installation Of Parquet | 4d | 2025-09-13 | 2025-09-16 | B16-V17~V24-1350, B16-V09~V16-1390 | 0d |  | Installation Of Parquet [8] | 52,978.96 |  |
| B16-V17~V24-1400 |  | Installation Of Wooden Doors | 6d | 2025-09-17 | 2025-09-23 | B16-V17~V24-1390, B16-V09~V16-1400 | 0d |  | Wooden Doors Accessories all Villa [8]; Wooden Doors Kitchen & Bathroom without Accessories [8]; Exterior Wooden Doors [8] | 142,109.01 |  |
| B16-V17~V24-1410 |  | Final Face Paint | 6d | 2025-09-24 | 2025-09-30 | B16-V17~V24-1360, B16-V17~V24-1400, B16-V09~V16-1410 | 0d |  | Final Face Paint Villa [8] | 31,090.55 |  |

| ID | WBS | Activity | Duration | Start | Finish | Predecessors | Total float | Free float | Resources | Cost |
| --- | --- | --- | --- | --- | --- | --- | --- | --- | --- | --- |
|  | 3 | **Fence & Courtyard Works** |  | 2025-06-21 | 2025-09-23 |  |  |  |  |  |
| B16-V17~V24-1420 |  | Pouring Bedding Concrete For Fence Fondations | 2d | 2025-06-21 | 2025-06-22 | B16-V17~V24-1120, B16-V09~V16-1420 | 10d | 0d | Excavation Fence Foundations [8] | 4,519.28 |
| B16-V17~V24-1430 |  | RC Concrete For Fence Fondations | 6d | 2025-06-23 | 2025-06-29 | B16-V17~V24-1420, B16-V09~V16-1430 | 10d | 0d | Fence Fondations-Eastern side [8]; Fence Fondations-Westren side [8]; Fence Fondations-Back side [8] | 13,420.32 |
| B16-V17~V24-1440 |  | Steel Fixing & Carpentry For Fence Columns | 6d | 2025-06-30 | 2025-07-06 | B16-V17~V24-1430, B16-V09~V16-1440 | 10d | 0d |  |  |
| B16-V17~V24-1450 |  | Establishing Elec For Fence Columns | 4d | 2025-07-07 | 2025-07-10 | B16-V17~V24-1440, B16-V09~V16-1450 | 10d | 0d |  |  |
| B16-V17~V24-1460 |  | Pouring Concrete For Fence Columns | 1d | 2025-07-12 | 2025-07-12 | B16-V17~V24-1450, B16-V09~V16-1460 | 10d | 0d | Fence Columns-Eastern side [8]; Fence Columns-Westren side [8]; Fence Columns-Back side [8] | 9,665.04 |
| B16-V17~V24-1470 |  | Installation Precast Panel For Fence | 5d | 2025-07-13 | 2025-07-17 | B16-V17~V24-1460, B16-V09~V16-1470 | 10d | 0d | Hollow Core Walls [8] | 71,593.2 |
| B16-V17~V24-1480 |  | Bitumen Coating For Fence Fondations | 4d | 2025-07-19 | 2025-07-22 | B16-V17~V24-1470, B16-V09~V16-1480 | 10d | 0d |  |  |
| B16-V17~V24-1490 |  | Pouring Bedding Concrete For "Front" Fence Fondations | 1d | 2025-07-19 | 2025-07-19 | B16-V17~V24-1470, B16-V09~V16-1490 | 22d | 0d |  |  |
| B16-V17~V24-1500 |  | RC Concrete For "Front" Fence Fondations | 4d | 2025-07-20 | 2025-07-23 | B16-V17~V24-1490, B16-V09~V16-1500 | 22d | 0d | Front Fence Fondations [8] | 8,904.4 |
| B16-V17~V24-1510 |  | Outdoor Drainage & Water Line | 5d | 2025-07-23 | 2025-07-28 | B16-V17~V24-1480, B16-V17~V24-1140, B16-V09~V16-1510 | 10d | 0d | Outdoor Drainage [8]; Outdoor Water Line [8] | 13,423.68 |
| B16-V17~V24-1520 |  | Steel Fixing & Carpentry For "Front" Fence Columns | 4d | 2025-07-24 | 2025-07-28 | B16-V17~V24-1500, B16-V09~V16-1520 | 22d | 0d |  |  |
| B16-V17~V24-1530 |  | Establishing Elec For "Front" Fence Columns | 4d | 2025-07-29 | 2025-08-02 | B16-V17~V24-1520, B16-V09~V16-1530 | 22d | 0d |  |  |
| B16-V17~V24-1540 |  | Establishing Elec For Fence & Yard | 2d | 2025-07-29 | 2025-07-30 | B16-V17~V24-1510, B16-V09~V16-1540 | 10d | 0d | Elec Establishment Fence & Yard [8] | 17,898.32 |
| B16-V17~V24-1550 |  | Backfilling the Yard | 4d | 2025-07-31 | 2025-08-04 | B16-V17~V24-1540, B16-V09~V16-1550 | 10d | 0d | Backfilling the Yard [8] | 10,560 |
| B16-V17~V24-1560 |  | Pouring Concrete Wall Of "Front" Fence Columns | 2d | 2025-08-03 | 2025-08-04 | B16-V17~V24-1530, B16-V09~V16-1560 | 22d | 0d | Front Fence Walls [8] | 17,898.32 |
| B16-V17~V24-1570 |  | Pouring Concrete Crown Of "Front" Fence Columns | 3d | 2025-08-05 | 2025-08-07 | B16-V17~V24-1560, B16-V09~V16-1570 | 22d | 0d | Fence Columns - C Chanel [8] | 3,310.37 |
| B16-V17~V24-1580 |  | Bardoura Works For Yard | 5d | 2025-08-05 | 2025-08-10 | B16-V17~V24-1550, B16-V09~V16-1580 | 10d | 0d | Bardoura Works For Yard [8] | 14,408.16 |
| B16-V17~V24-1590 |  | Pouring Concrete Flower Basin Of "Front" Fence Columns | 4d | 2025-08-09 | 2025-08-12 | B16-V17~V24-1570, B16-V09~V16-1590 | 22d | 0d |  |  |
| B16-V17~V24-1600 |  | Antitermite Treatment For Yard | 1d | 2025-08-11 | 2025-08-11 | B16-V17~V24-1580, B16-V09~V16-1600 | 10d | 0d | Antitermite Treatment For Yard [8] |  |
| B16-V17~V24-1610 |  | Pouring Concrete For Yard | 1d | 2025-08-12 | 2025-08-12 | B16-V17~V24-1600, B16-V09~V16-1610 | 10d | 0d |  |  |
| B16-V17~V24-1620 |  | Block Work For Flower Basin | 5d | 2025-08-13 | 2025-08-18 | B16-V17~V24-1610, B16-V09~V16-1620 | 10d | 0d |  |  |
| B16-V17~V24-1630 |  | Plastering Work For Flower Basin | 4d | 2025-08-19 | 2025-08-23 | B16-V17~V24-1620, B16-V09~V16-1630 | 10d | 0d |  |  |
| B16-V17~V24-1640 |  | Interlock Works For The Yard | 6d | 2025-08-24 | 2025-08-30 | B16-V17~V24-1630, B16-V09~V16-1640 | 10d | 0d | Interlock Works For The Yard [8] | 36,776.32 |
| B16-V17~V24-1650 |  | External Grading Works For The Villa | 4d | 2025-08-31 | 2025-09-03 | B16-V17~V24-1640, B16-V09~V16-1650 | 12d | 0d | External Grading Works For The Villa [8] | 3,221.68 |
| B16-V17~V24-1660 |  | Installation The Exterior Door & Garage Door | 5d | 2025-08-31 | 2025-09-04 | B16-V17~V24-1640, B16-V09~V16-1660 | 15d | 1d | Installation The Exterior Door [8]; Installation The Exterior Garage Door [8] | 40,002.72 |
| B16-V17~V24-1670 |  | Fixing Floor Drain For The Yard | 2d | 2025-08-31 | 2025-09-01 | B16-V17~V24-1640, B16-V09~V16-1670 | 18d | 4d | Floor Drain & Clean Out [8] | 13,423.76 |
| B16-V17~V24-1680 |  | Granite Surronds Around The Villa | 4d | 2025-09-04 | 2025-09-08 | B16-V17~V24-1650, B16-V09~V16-1680 | 12d | 2d | Granite Surronds Around The Villa [8] | 25,818.32 |
| B16-V17~V24-1690 |  | Painting The Base Surface Of The Fence | 2d | 2025-09-04 | 2025-09-06 | B16-V17~V24-1750, B16-V09~V16-1690 | 10d | 0d |  |  |
| B16-V17~V24-1700 |  | Painting The Final Face Of The Fence | 4d | 2025-09-07 | 2025-09-10 | B16-V17~V24-1690, B16-V09~V16-1700 | 10d | 1d | Painting Final Face Of The Fence [8] | 37,586.48 |
| B16-V17~V24-1710 |  | Exterior Painting Of The Villa | 6d | 2025-09-13 | 2025-09-18 | B16-V17~V24-1680, B16-V17~V24-1700, B16-V17~V24-1660, B16-V17~V24-1670, B16-V09~V16-1710 | 9d | 0d | Exterior Painting Of The Villa [8]; Exterior Painting Staircase House [8] | 105,684.66 |
| B16-V17~V24-1720 |  | Installation Elec Fixtures & Accessories For The Yard | 4d | 2025-09-20 | 2025-09-23 | B16-V17~V24-1700, B16-V17~V24-1710, B16-V09~V16-1720 | 10d | 0d | Elec feeding panels GF & FF [8] | 22,372.88 |

| ID | WBS | Activity | Duration | Start | Finish | Predecessors | Total float | Free float | Resources | Cost | Department-1 |
| --- | --- | --- | --- | --- | --- | --- | --- | --- | --- | --- | --- |
|  | 5 | **External Sidewalk Works** |  | 2025-08-13 | 2025-09-28 |  |  |  |  |  |  |
| B16-V17~V24-1730 |  | Connection The Drain To The Piblic Network | 3d | 2025-08-13 | 2025-08-16 | B16-V17~V24-1510, B16-V17~V24-1590, B16-V09~V16-1730 | 22d | 3d | Connection Drain To The Piblic Network [8]; Connection Water To The Piblic Network [8] | 13,420.32 |  |
| B16-V17~V24-1740 |  | Pardora Works For The External Sidewalk | 2d | 2025-08-31 | 2025-09-01 | B16-V17~V24-1640, B16-V17~V24-1730, B16-V09~V16-1740 | 10d | 0d |  |  |  |
| B16-V17~V24-1750 |  | Interlock Works For The Exerrnal Sidewalk | 2d | 2025-09-02 | 2025-09-03 | B16-V17~V24-1740, B16-V09~V16-1750 | 10d | 0d |  |  |  |
| B16-V17~V24-1760 |  | Pulling The Villa's Main Elec Cable | 4d | 2025-09-24 | 2025-09-28 | B16-V17~V24-1750, B16-V17~V24-1720, B16-V09~V16-1760 | 10d | 0d | Elec Work Testing [8] | 22,819.84 |  |
|  | 6 | **Final Testing & Handover** |  | 2025-09-18 | 2025-10-12 |  |  |  |  |  |  |
| B16-V17~V24-1770 |  | Mech Work Testing & Handover | 5d | 2025-09-18 | 2025-09-23 | B16-V17~V24-1730, B16-V17~V24-1340, B16-V17~V24-1380, B16-V09~V16-1770 | 17d | 1d | Mech Work Testing & Handover [8] | 14,318.64 |  |
| B16-V17~V24-1780 |  | Arch Snaglist & Handover | 4d | 2025-09-24 | 2025-09-28 | B16-V17~V24-1750, B16-V17~V24-1710, B16-V17~V24-1400, B16-V09~V16-1780 | 13d | 2d | Arch Snaglist & Handover [8] | 77,320.64 |  |
| B16-V17~V24-1790 |  | ElecWork Testing & Handover | 3d | 2025-09-29 | 2025-10-01 | B16-V17~V24-1760, B16-V17~V24-1370, B16-V09~V16-1790 | 10d | 0d | Elec Work Handover [8] | 23,804.12 |  |
| B16-V17~V24-1800 |  | Final Handover Of The Villa To The Consltant | 4d | 2025-10-02 | 2025-10-06 | B16-V17~V24-1780, B16-V17~V24-1790, B16-V17~V24-1770, B16-V17~V24-1410, B16-V09~V16-1800 | 10d | 0d |  |  |  |
| B16-V17~V24-1810 |  | Customer Delivery | 5d | 2025-10-07 | 2025-10-12 | B16-V17~V24-1800, B16-V09~V16-1810 | 10d | 1d |  |  |  |
|  | 32 | **B16-V25~V32** |  | 2025-03-03 | 2025-10-19 |  |  |  |  |  |  |
|  | 2 | **Under Grond Slap Works** |  | 2025-03-03 | 2025-04-12 |  |  |  |  |  |  |
| B16-V25~V32-1000 |  | Excavation&Compaction of Fondation | 6d | 2025-03-03 | 2025-03-09 | B16-V17~V24-1000 | 59d | 0d | Clearing & Groubbing [8]; Excavation & Leveling [8]; Stone Layer [8]; A3 Layer [8]; A1-a 1st Layer [8]; A1-a 2ed Layer [8] | 163,545.76 | Civil |
| B16-V25~V32-1010 |  | Pouring Concrete For Bedding | 2d | 2025-03-10 | 2025-03-11 | B16-V25~V32-1000, B16-V17~V24-1010 | 59d | 0d | PC Carpentry [8]; PC Concrete [8]; RC 18 MPA [9 M3] | 37,899.68 | Civil |
| B16-V25~V32-1020 |  | Reinforcement Concrete For Foundation | 5d | 2025-03-12 | 2025-03-17 | B16-V25~V32-1010, B16-V17~V24-1020 | 59d | 0d | RC Foundation Carpentry [8]; RC Foundation Steel [8]; RC Foundation Concrete [8] | 201,355.92 | Civil |
| B16-V25~V32-1030 |  | Steel Fixing& Carpenter work for Beams | 4d | 2025-03-18 | 2025-03-22 | B16-V25~V32-1020, B16-V17~V24-1030 | 59d | 0d | RC Grade Beam Carpentry & Steel [8] | 44,745.76 | Civil |
| B16-V25~V32-1040 |  | Mech&Elec Establishment for Beams | 3d | 2025-03-23 | 2025-03-25 | B16-V25~V32-1030, B16-V17~V24-1040 | 59d | 0d |  |  | Mech |
| B16-V25~V32-1050 |  | Pouring Concrete For Beams | 1d | 2025-03-26 | 2025-03-26 | B16-V25~V32-1040, B16-V17~V24-1050 | 59d | 0d | RC Grade Beam Concrete [8] | 77,141.68 | Civil |
| B16-V25~V32-1060 |  | Bitmen Coating For Fondation&Beams | 3d | 2025-03-27 | 2025-03-30 | B16-V25~V32-1050, B16-V17~V24-1060 | 59d | 0d | Bitumen Coating Foundations & Grade Beams [8] | 22,372.32 | Civil |
| B16-V25~V32-1070 |  | Backfilling Inside Fondations | 4d | 2025-03-31 | 2025-04-03 | B16-V25~V32-1060, B16-V17~V24-1070 | 59d | 0d | Backfilling 1st Layer [8]; Backfilling 2ed Layer [8] | 11,186.4 | Civil |
| B16-V25~V32-1080 |  | Mech Works Under Grond Slap | 3d | 2025-04-05 | 2025-04-07 | B16-V25~V32-1070, B16-V17~V24-1080 | 59d | 0d | Mech Establishment Under Ground Slap [8] | 13,423.42 | Mech |
| B16-V25~V32-1090 |  | Steel Fixing& Carpenter work for Ground Slap | 3d | 2025-04-08 | 2025-04-10 | B16-V25~V32-1080, B16-V17~V24-1090 | 59d | 0d | Steel & Carpentry For Ground Slap [8] | 10,246.54 | Civil |
| B16-V25~V32-1100 |  | Anti Termite Treatment For Ground Slap | 1d | 2025-04-12 | 2025-04-12 | B16-V25~V32-1090, B16-V17~V24-1100 | 59d | 0d | Anti Termite Treatment nder Ground Slap [8] | 2,237.28 | Civil |
| B16-V25~V32-1110 |  | Pouring Concrete For Ground Slap | 1d | 2025-04-12 | 2025-04-12 | B16-V25~V32-1100 FF, B16-V25~V32-1090, B16-V17~V24-1110 | 59d | 5d | Concrete For Ground Slap [8] | 58,169.52 | Civil |

| ID | WBS | Activity | Duration | Start | Finish | Predecessors | Total float | Free float | Resources | Cost | Department-1 |
| --- | --- | --- | --- | --- | --- | --- | --- | --- | --- | --- | --- |
|  | 4 | **Precast Works** |  | 2025-06-21 | 2025-06-26 |  |  |  |  |  |  |
| B16-V25~V32-1120 |  | Precast Constrction | 6d | 2025-06-21 | 2025-06-26 | B16-V25~V32-1110, B16-V17~V24-1120 | 0d |  | Precast Walls GF [8]; Hollow Core Slap GF [8]; Precast Stairs & staircase House [8]; Thermal insollation Outside Walls [8]; Concrete structure joints [8]; Precast Walls FF [8]; Hollow Core Slap FF [8] | 1,513,460.1 | Civil |
|  | 1 | **Works Inside The Villa** |  | 2025-06-28 | 2025-10-07 |  |  |  |  |  |  |
| B16-V25~V32-1130 |  | Block Work For GF & Estabishment 1F | 6d | 2025-06-28 | 2025-07-03 | B16-V25~V32-1120, B16-V17~V24-1130 | 0d |  | Block GF [8] | 13,647.1 | Arc |
| B16-V25~V32-1140 |  | L.L & H.L Drainage | 6d | 2025-07-05 | 2025-07-10 | B16-V25~V32-1130, B16-V17~V24-1140 | 0d |  | HL Drainage [8]; L.L Drainage [8] | 89,489.28 | Mech |
| B16-V25~V32-1150 |  | Elec Establishment For GF & 1F | 3d | 2025-07-05 | 2025-07-07 | B16-V25~V32-1130, B16-V17~V24-1150 | 3d |  | Elec Establishment GF [8] | 26,840.73 | Elec |
| B16-V25~V32-1160 |  | Screed Work For 1F & Roof | 6d | 2025-07-12 | 2025-07-17 | B16-V25~V32-1140, B16-V25~V32-1150, B16-V17~V24-1160 | 0d |  | Screed 1st Floor [8]; Screed Roof Floor [8]; Leveling Screed 1st Floor [8]; Leveling Screed Roof Floor [8] | 268,467.85 | Civil |
| B16-V25~V32-1170 |  | Water Tank & Heater Foundations | 4d | 2025-07-19 | 2025-07-22 | B16-V25~V32-1160, B16-V17~V24-1170 | 4d | 0d |  |  | Civil |
| B16-V25~V32-1180 |  | Block Works For 1F | 3d | 2025-07-19 | 2025-07-21 | B16-V25~V32-1160, B16-V17~V24-1180 | 0d |  | Block FF [8] | 20,537.81 | Arc |
| B16-V25~V32-1190 |  | Water Line Network | 6d | 2025-07-22 | 2025-07-28 | B16-V25~V32-1180, B16-V17~V24-1190 | 0d |  | Water Line Network [8] | 40,261.13 | Mech |
| B16-V25~V32-1200 |  | Continue Elec Establishment For GF & 1F | 3d | 2025-07-22 | 2025-07-24 | B16-V25~V32-1180, B16-V17~V24-1200 | 3d |  | Elec Establishment FF [8] | 26,840.73 | Elec |
| B16-V25~V32-1210 |  | Thermal Insulation For Roof | 5d | 2025-07-23 | 2025-07-28 | B16-V25~V32-1170, B16-V17~V24-1210 | 4d | 0d | Roof Insulation [8] | 32,530.16 | Arc |
| B16-V25~V32-1220 |  | Roof Floor Tiles | 6d | 2025-07-29 | 2025-08-04 | B16-V25~V32-1210, B16-V17~V24-1220 | 4d | 0d | Roof Tiles [8]; Roof Tiles Joints [8]; Re_Test Roof Insulation [8] | 63,179.38 | Arc |
| B16-V25~V32-1230 |  | Plaster Work For Villa | 6d | 2025-07-29 | 2025-08-04 | B16-V25~V32-1190, B16-V25~V32-1200, B16-V17~V24-1230 | 0d |  | Establishing a plastering GF [8]; Establishing a plastering FF [8]; Plastering GF [8]; Plastering FF [8] | 49,263.81 |  |
| B16-V25~V32-1240 |  | Marbale Stairs & Handrails | 6d | 2025-08-05 | 2025-08-11 | B16-V25~V32-1230, B16-V17~V24-1240 | 22d | 0d | Marbale Stairs [8]; Stairs Handrails SS [8] | 91,494.69 |  |
| B16-V25~V32-1250 |  | Water Proofing Of Bathrooms | 4d | 2025-08-05 | 2025-08-09 | B16-V25~V32-1230, B16-V17~V24-1250 | 0d |  | Bathrooms InsulationGF & FF [8] | 134.24 |  |
| B16-V25~V32-1260 |  | Pulling The Elec Wires | 4d | 2025-08-05 | 2025-08-09 | B16-V25~V32-1230, B16-V17~V24-1260 | 10d | 2d | Elec Wires GF [8]; Elec Wires FF [8] | 80,542.4 |  |
| B16-V25~V32-1270 |  | Bathroom Tiles | 4d | 2025-08-10 | 2025-08-13 | B16-V25~V32-1250, B16-V25~V32-1220, B16-V17~V24-1270 | 0d |  | Ceramic Walls Kitchen [8]; Ceramic Walls Bathrooms GF [8]; Ceramic Walls Bathrooms FF [8]; Ceramic Tiles Bathrooms GF [8]; Ceramic Tiles Kitchen GF [8]; Ceramic Tiles Store GF [8] | 73,204.08 |  |
| B16-V25~V32-1280 |  | Structure For Gypsum | 6d | 2025-08-14 | 2025-08-20 | B16-V25~V32-1270, B16-V17~V24-1280 | 0d |  | Structure For Gypsum GF Rooms [8]; Structure For Gypsum FF Rooms [8]; Structure For Gypsum Bathrooms & Kitchen [8] | 33,550.81 |  |
| B16-V25~V32-1290 |  | Gypsum Board For Room | 4d | 2025-08-21 | 2025-08-25 | B16-V25~V32-1280, B16-V25~V32-1260, B16-V17~V24-1290 | 0d |  | Gypsum Board For GF Room [8]; Gypsum Board For FF Room [8] | 35,796.64 |  |
| B16-V25~V32-1300 |  | Installation Of Gypsum Board For Bathroom & Kitchen | 4d | 2025-08-26 | 2025-08-30 | B16-V25~V32-1290, B16-V17~V24-1300 | 0d |  | Gypsum Board For Bathrooms & Kitchen [8] | 11,052.24 |  |
| B16-V25~V32-1310 |  | Putty Filler For Gypsm Board Ceiling | 6d | 2025-08-31 | 2025-09-06 | B16-V25~V32-1300, B16-V17~V24-1310 | 0d |  | Putty Filler 1st Layer Roof all Rooms [8]; Putty Filler 1st Layer Roof all Bathrooms & Kitchen [8]; Putty Filler1st Layer walls [8] | 62,182.52 |  |
| B16-V25~V32-1320 |  | Fixing Shower Glass | 4d | 2025-09-07 | 2025-09-10 | B16-V25~V32-1310, B16-V17~V24-1320 | 7d | 0d | Shower Glass [8] | 22,372.88 |  |
| B16-V25~V32-1330 |  | Interior Wall Putty Filler | 6d | 2025-09-07 | 2025-09-13 | B16-V25~V32-1310, B16-V25~V32-1240, B16-V17~V24-1330 | 0d |  | Putty Filler 2ed Layer Roof & WAlls GF [8]; Putty Filler 2ed Layer Roof & WAlls FF [8] | 62,150.21 |  |
| B16-V25~V32-1340 |  | Installation Of Sanitry Fixture | 6d | 2025-09-11 | 2025-09-17 | B16-V25~V32-1320, B16-V17~V24-1340 | 7d | 0d | Mech Fixtures & Accessories [8] | 98,438.1 |  |
| B16-V25~V32-1350 |  | 1st Face Paint | 5d | 2025-09-14 | 2025-09-18 | B16-V25~V32-1330, B16-V17~V24-1350 | 0d |  |  |  |  |
| B16-V25~V32-1360 |  | Installation Of Aluminum Windows | 6d | 2025-09-14 | 2025-09-20 | B16-V25~V32-1330, B16-V17~V24-1360 | 9d | 0d | Aluminum Windows [8] | 84,797.8 |  |
| B16-V25~V32-1370 |  | Installation Of Elec Fixture & Accessories | 6d | 2025-09-14 | 2025-09-20 | B16-V25~V32-1310, B16-V25~V32-1330, B16-V25~V32-1260, B16-V17~V24-1370 | 22d | 0d | Elec Fixtures & Accessories Villa & Yard [8]; Elec Cables GF & FF & Earthing [8] | 53,681.46 |  |
| B16-V25~V32-1380 |  | Installation Of Water Tank-Heater & Pumps | 6d | 2025-09-18 | 2025-09-24 | B16-V25~V32-1340, B16-V17~V24-1380, B16-V25~V32-1220 | 7d | 0d | Water Tank & booster Pump [8]; Lower Pump [8]; Heater [8] | 129,730.28 |  |
| B16-V25~V32-1390 |  | Installation Of Parquet | 4d | 2025-09-20 | 2025-09-23 | B16-V25~V32-1350, B16-V17~V24-1390 | 0d |  | Installation Of Parquet [8] | 52,978.96 |  |
| B16-V25~V32-1400 |  | Installation Of Wooden Doors | 6d | 2025-09-24 | 2025-09-30 | B16-V25~V32-1390, B16-V17~V24-1400 | 0d |  | Wooden Doors Accessories all Villa [8]; Wooden Doors Kitchen & Bathroom without Accessories [8]; Exterior Wooden Doors [8] | 142,109.01 |  |
| B16-V25~V32-1410 |  | Final Face Paint | 6d | 2025-10-01 | 2025-10-07 | B16-V25~V32-1360, B16-V25~V32-1400, B16-V17~V24-1410 | 0d |  | Final Face Paint Villa [8] | 31,090.55 |  |

| ID | WBS | Activity | Duration | Start | Finish | Predecessors | Total float | Free float | Resources | Cost |
| --- | --- | --- | --- | --- | --- | --- | --- | --- | --- | --- |
|  | 3 | **Fence & Courtyard Works** |  | 2025-06-28 | 2025-09-30 |  |  |  |  |  |
| B16-V25~V32-1420 |  | Pouring Bedding Concrete For Fence Fondations | 2d | 2025-06-28 | 2025-06-29 | B16-V25~V32-1120, B16-V17~V24-1420 | 10d | 0d | Excavation Fence Foundations [8] | 4,519.28 |
| B16-V25~V32-1430 |  | RC Concrete For Fence Fondations | 6d | 2025-06-30 | 2025-07-06 | B16-V25~V32-1420, B16-V17~V24-1430 | 10d | 0d | Fence Fondations-Eastern side [8]; Fence Fondations-Westren side [8]; Fence Fondations-Back side [8] | 13,420.32 |
| B16-V25~V32-1440 |  | Steel Fixing & Carpentry For Fence Columns | 6d | 2025-07-07 | 2025-07-13 | B16-V25~V32-1430, B16-V17~V24-1440 | 10d | 0d |  |  |
| B16-V25~V32-1450 |  | Establishing Elec For Fence Columns | 4d | 2025-07-14 | 2025-07-17 | B16-V25~V32-1440, B16-V17~V24-1450 | 10d | 0d |  |  |
| B16-V25~V32-1460 |  | Pouring Concrete For Fence Columns | 1d | 2025-07-19 | 2025-07-19 | B16-V25~V32-1450, B16-V17~V24-1460 | 10d | 0d | Fence Columns-Eastern side [8]; Fence Columns-Westren side [8]; Fence Columns-Back side [8] | 9,665.04 |
| B16-V25~V32-1470 |  | Installation Precast Panel For Fence | 5d | 2025-07-20 | 2025-07-24 | B16-V25~V32-1460, B16-V17~V24-1470 | 10d | 0d | Hollow Core Walls [8] | 71,593.2 |
| B16-V25~V32-1480 |  | Bitumen Coating For Fence Fondations | 4d | 2025-07-26 | 2025-07-29 | B16-V25~V32-1470, B16-V17~V24-1480 | 10d | 0d |  |  |
| B16-V25~V32-1490 |  | Pouring Bedding Concrete For "Front" Fence Fondations | 1d | 2025-07-26 | 2025-07-26 | B16-V25~V32-1470, B16-V17~V24-1490 | 22d | 0d |  |  |
| B16-V25~V32-1500 |  | RC Concrete For "Front" Fence Fondations | 4d | 2025-07-27 | 2025-07-30 | B16-V25~V32-1490, B16-V17~V24-1500 | 22d | 0d | Front Fence Fondations [8] | 8,904.4 |
| B16-V25~V32-1510 |  | Outdoor Drainage & Water Line | 5d | 2025-07-30 | 2025-08-04 | B16-V25~V32-1480, B16-V25~V32-1140, B16-V17~V24-1510 | 10d | 0d | Outdoor Drainage [8]; Outdoor Water Line [8] | 13,423.68 |
| B16-V25~V32-1520 |  | Steel Fixing & Carpentry For "Front" Fence Columns | 4d | 2025-07-31 | 2025-08-04 | B16-V25~V32-1500, B16-V17~V24-1520 | 22d | 0d |  |  |
| B16-V25~V32-1530 |  | Establishing Elec For "Front" Fence Columns | 4d | 2025-08-05 | 2025-08-09 | B16-V25~V32-1520, B16-V17~V24-1530 | 22d | 0d |  |  |
| B16-V25~V32-1540 |  | Establishing Elec For Fence & Yard | 2d | 2025-08-05 | 2025-08-06 | B16-V25~V32-1510, B16-V17~V24-1540 | 10d | 0d | Elec Establishment Fence & Yard [8] | 17,898.32 |
| B16-V25~V32-1550 |  | Backfilling the Yard | 4d | 2025-08-07 | 2025-08-11 | B16-V25~V32-1540, B16-V17~V24-1550 | 10d | 0d | Backfilling the Yard [8] | 10,560 |
| B16-V25~V32-1560 |  | Pouring Concrete Wall Of "Front" Fence Columns | 2d | 2025-08-10 | 2025-08-11 | B16-V25~V32-1530, B16-V17~V24-1560 | 22d | 0d | Front Fence Walls [8] | 17,898.32 |
| B16-V25~V32-1570 |  | Pouring Concrete Crown Of "Front" Fence Columns | 3d | 2025-08-12 | 2025-08-14 | B16-V25~V32-1560, B16-V17~V24-1570 | 22d | 0d | Fence Columns - C Chanel [8] | 3,310.37 |
| B16-V25~V32-1580 |  | Bardoura Works For Yard | 5d | 2025-08-12 | 2025-08-17 | B16-V25~V32-1550, B16-V17~V24-1580 | 10d | 0d | Bardoura Works For Yard [8] | 14,408.16 |
| B16-V25~V32-1590 |  | Pouring Concrete Flower Basin Of "Front" Fence Columns | 4d | 2025-08-16 | 2025-08-19 | B16-V25~V32-1570, B16-V17~V24-1590 | 22d | 0d |  |  |
| B16-V25~V32-1600 |  | Antitermite Treatment For Yard | 1d | 2025-08-18 | 2025-08-18 | B16-V25~V32-1580, B16-V17~V24-1600 | 10d | 0d | Antitermite Treatment For Yard [8] |  |
| B16-V25~V32-1610 |  | Pouring Concrete For Yard | 1d | 2025-08-19 | 2025-08-19 | B16-V25~V32-1600, B16-V17~V24-1610 | 10d | 0d |  |  |
| B16-V25~V32-1620 |  | Block Work For Flower Basin | 5d | 2025-08-20 | 2025-08-25 | B16-V25~V32-1610, B16-V17~V24-1620 | 10d | 0d |  |  |
| B16-V25~V32-1630 |  | Plastering Work For Flower Basin | 4d | 2025-08-26 | 2025-08-30 | B16-V25~V32-1620, B16-V17~V24-1630 | 10d | 0d |  |  |
| B16-V25~V32-1640 |  | Interlock Works For The Yard | 6d | 2025-08-31 | 2025-09-06 | B16-V25~V32-1630, B16-V17~V24-1640 | 10d | 0d | Interlock Works For The Yard [8] | 36,776.32 |
| B16-V25~V32-1650 |  | External Grading Works For The Villa | 4d | 2025-09-07 | 2025-09-10 | B16-V25~V32-1640, B16-V17~V24-1650 | 12d | 0d | External Grading Works For The Villa [8] | 3,221.68 |
| B16-V25~V32-1660 |  | Installation The Exterior Door & Garage Door | 5d | 2025-09-07 | 2025-09-11 | B16-V25~V32-1640, B16-V17~V24-1660 | 15d | 0d | Installation The Exterior Door [8]; Installation The Exterior Garage Door [8] | 40,002.72 |
| B16-V25~V32-1670 |  | Fixing Floor Drain For The Yard | 2d | 2025-09-07 | 2025-09-08 | B16-V25~V32-1640, B16-V17~V24-1670 | 18d | 2d | Floor Drain & Clean Out [8] | 13,423.76 |
| B16-V25~V32-1680 |  | Granite Surronds Around The Villa | 4d | 2025-09-11 | 2025-09-15 | B16-V25~V32-1650, B16-V17~V24-1680 | 12d | 0d | Granite Surronds Around The Villa [8] | 25,818.32 |
| B16-V25~V32-1690 |  | Painting The Base Surface Of The Fence | 2d | 2025-09-11 | 2025-09-13 | B16-V25~V32-1750, B16-V17~V24-1690 | 10d | 0d |  |  |
| B16-V25~V32-1700 |  | Painting The Final Face Of The Fence | 4d | 2025-09-14 | 2025-09-17 | B16-V25~V32-1690, B16-V17~V24-1700 | 10d | 0d | Painting Final Face Of The Fence [8] | 37,586.48 |
| B16-V25~V32-1710 |  | Exterior Painting Of The Villa | 6d | 2025-09-20 | 2025-09-25 | B16-V25~V32-1680, B16-V25~V32-1700, B16-V25~V32-1660, B16-V25~V32-1670, B16-V17~V24-1710 | 9d | 0d | Exterior Painting Of The Villa [8]; Exterior Painting Staircase House [8] | 105,684.66 |
| B16-V25~V32-1720 |  | Installation Elec Fixtures & Accessories For The Yard | 4d | 2025-09-27 | 2025-09-30 | B16-V25~V32-1700, B16-V25~V32-1710, B16-V17~V24-1720 | 9d | 0d | Elec feeding panels GF & FF [8] | 22,372.88 |

| ID | WBS | Activity | Duration | Start | Finish | Predecessors | Total float | Free float | Resources | Cost | Department-1 |
| --- | --- | --- | --- | --- | --- | --- | --- | --- | --- | --- | --- |
|  | 5 | **External Sidewalk Works** |  | 2025-08-20 | 2025-10-05 |  |  |  |  |  |  |
| B16-V25~V32-1730 |  | Connection The Drain To The Piblic Network | 3d | 2025-08-20 | 2025-08-23 | B16-V25~V32-1510, B16-V25~V32-1590, B16-V17~V24-1730 | 22d | 1d | Connection Drain To The Piblic Network [8]; Connection Water To The Piblic Network [8] | 13,420.32 |  |
| B16-V25~V32-1740 |  | Pardora Works For The External Sidewalk | 2d | 2025-09-07 | 2025-09-08 | B16-V25~V32-1640, B16-V25~V32-1730, B16-V17~V24-1740 | 10d | 0d |  |  |  |
| B16-V25~V32-1750 |  | Interlock Works For The Exerrnal Sidewalk | 2d | 2025-09-09 | 2025-09-10 | B16-V25~V32-1740, B16-V17~V24-1750 | 10d | 0d |  |  |  |
| B16-V25~V32-1760 |  | Pulling The Villa's Main Elec Cable | 4d | 2025-10-01 | 2025-10-05 | B16-V25~V32-1750, B16-V25~V32-1720, B16-V17~V24-1760 | 9d | 0d | Elec Work Testing [8] | 22,819.84 |  |
|  | 6 | **Final Testing & Handover** |  | 2025-09-25 | 2025-10-19 |  |  |  |  |  |  |
| B16-V25~V32-1770 |  | Mech Work Testing & Handover | 5d | 2025-09-25 | 2025-09-30 | B16-V25~V32-1730, B16-V25~V32-1340, B16-V25~V32-1380, B16-V17~V24-1770 | 16d | 1d | Mech Work Testing & Handover [8] | 14,318.64 |  |
| B16-V25~V32-1780 |  | Arch Snaglist & Handover | 4d | 2025-10-01 | 2025-10-05 | B16-V25~V32-1750, B16-V25~V32-1710, B16-V25~V32-1400, B16-V17~V24-1780 | 12d | 2d | Arch Snaglist & Handover [8] | 77,320.64 |  |
| B16-V25~V32-1790 |  | ElecWork Testing & Handover | 3d | 2025-10-06 | 2025-10-08 | B16-V25~V32-1760, B16-V25~V32-1370, B16-V17~V24-1790 | 9d | 0d | Elec Work Handover [8] | 23,804.12 |  |
| B16-V25~V32-1800 |  | Final Handover Of The Villa To The Consltant | 4d | 2025-10-09 | 2025-10-13 | B16-V25~V32-1780, B16-V25~V32-1790, B16-V25~V32-1770, B16-V25~V32-1410, B16-V17~V24-1800 | 9d | 0d |  |  |  |
| B16-V25~V32-1810 |  | Customer Delivery | 5d | 2025-10-14 | 2025-10-19 | B16-V25~V32-1800, B16-V17~V24-1810 | 9d | 0d |  |  |  |
|  | 2 | **Contruction Works-2** |  | 2025-03-10 | 2025-12-27 |  |  |  |  |  |  |
|  | 32 | **B17-V01~V08** |  | 2025-03-10 | 2025-10-25 |  |  |  |  |  |  |
|  | 2 | **Under Grond Slap Works** |  | 2025-03-10 | 2025-04-19 |  |  |  |  |  |  |
| B17-V01~V08-1000 |  | Excavation&Compaction of Fondation | 6d | 2025-03-10 | 2025-03-16 | B16-V25~V32-1000 | 59d | 0d | Clearing & Groubbing [8]; Excavation & Leveling [8]; Stone Layer [8]; A3 Layer [8]; A1-a 1st Layer [8]; A1-a 2ed Layer [8] | 163,545.76 | Civil |
| B17-V01~V08-1010 |  | Pouring Concrete For Bedding | 2d | 2025-03-17 | 2025-03-18 | B17-V01~V08-1000, B16-V25~V32-1010 | 59d | 0d | PC Carpentry [8]; PC Concrete [8]; RC 18 MPA [9 M3] | 37,899.68 | Civil |
| B17-V01~V08-1020 |  | Reinforcement Concrete For Foundation | 5d | 2025-03-19 | 2025-03-24 | B17-V01~V08-1010, B16-V25~V32-1020 | 59d | 0d | RC Foundation Carpentry [8]; RC Foundation Steel [8]; RC Foundation Concrete [8] | 201,355.92 | Civil |
| B17-V01~V08-1030 |  | Steel Fixing& Carpenter work for Beams | 4d | 2025-03-25 | 2025-03-29 | B17-V01~V08-1020, B16-V25~V32-1030 | 59d | 0d | RC Grade Beam Carpentry & Steel [8] | 44,745.76 | Civil |
| B17-V01~V08-1040 |  | Mech&Elec Establishment for Beams | 3d | 2025-03-30 | 2025-04-01 | B17-V01~V08-1030, B16-V25~V32-1040 | 59d | 0d |  |  | Mech |
| B17-V01~V08-1050 |  | Pouring Concrete For Beams | 1d | 2025-04-02 | 2025-04-02 | B17-V01~V08-1040, B16-V25~V32-1050 | 59d | 0d | RC Grade Beam Concrete [8] | 77,141.68 | Civil |
| B17-V01~V08-1060 |  | Bitmen Coating For Fondation&Beams | 3d | 2025-04-03 | 2025-04-06 | B17-V01~V08-1050, B16-V25~V32-1060 | 59d | 0d | Bitumen Coating Foundations & Grade Beams [8] | 22,372.32 | Civil |
| B17-V01~V08-1070 |  | Backfilling Inside Fondations | 4d | 2025-04-07 | 2025-04-10 | B17-V01~V08-1060, B16-V25~V32-1070 | 59d | 0d | Backfilling 1st Layer [8]; Backfilling 2ed Layer [8] | 11,186.4 | Civil |
| B17-V01~V08-1080 |  | Mech Works Under Grond Slap | 3d | 2025-04-12 | 2025-04-14 | B17-V01~V08-1070, B16-V25~V32-1080 | 59d | 0d | Mech Establishment Under Ground Slap [8] | 13,423.42 | Mech |
| B17-V01~V08-1090 |  | Steel Fixing& Carpenter work for Ground Slap | 3d | 2025-04-15 | 2025-04-17 | B17-V01~V08-1080, B16-V25~V32-1090 | 59d | 0d | Steel & Carpentry For Ground Slap [8] | 10,246.54 | Civil |
| B17-V01~V08-1100 |  | Anti Termite Treatment For Ground Slap | 1d | 2025-04-19 | 2025-04-19 | B17-V01~V08-1090, B16-V25~V32-1100 | 59d | 0d | Anti Termite Treatment nder Ground Slap [8] | 2,237.28 | Civil |
| B17-V01~V08-1110 |  | Pouring Concrete For Ground Slap | 1d | 2025-04-19 | 2025-04-19 | B17-V01~V08-1100 FF, B17-V01~V08-1090, B16-V25~V32-1110 | 59d | 5d | Concrete For Ground Slap [8] | 58,169.52 | Civil |

| ID | WBS | Activity | Duration | Start | Finish | Predecessors | Total float | Free float | Resources | Cost | Department-1 |
| --- | --- | --- | --- | --- | --- | --- | --- | --- | --- | --- | --- |
|  | 4 | **Precast Works** |  | 2025-06-28 | 2025-07-03 |  |  |  |  |  |  |
| B17-V01~V08-1120 |  | Precast Constrction | 6d | 2025-06-28 | 2025-07-03 | B17-V01~V08-1110, B16-V25~V32-1120 | 0d |  | Precast Walls GF [8]; Hollow Core Slap GF [8]; Precast Stairs & staircase House [8]; Thermal insollation Outside Walls [8]; Concrete structure joints [8]; Precast Walls FF [8]; Hollow Core Slap FF [8] | 1,513,460.1 | Civil |
|  | 1 | **Works Inside The Villa** |  | 2025-07-05 | 2025-10-14 |  |  |  |  |  |  |
| B17-V01~V08-1130 |  | Block Work For GF & Estabishment 1F | 6d | 2025-07-05 | 2025-07-10 | B17-V01~V08-1120, B16-V25~V32-1130 | 0d |  | Block GF [8] | 13,647.1 | Arc |
| B17-V01~V08-1140 |  | L.L & H.L Drainage | 6d | 2025-07-12 | 2025-07-17 | B17-V01~V08-1130, B16-V25~V32-1140 | 0d |  | HL Drainage [8]; L.L Drainage [8] | 89,489.28 | Mech |
| B17-V01~V08-1150 |  | Elec Establishment For GF & 1F | 3d | 2025-07-12 | 2025-07-14 | B17-V01~V08-1130, B16-V25~V32-1150 | 3d |  | Elec Establishment GF [8] | 26,840.73 | Elec |
| B17-V01~V08-1160 |  | Screed Work For 1F & Roof | 6d | 2025-07-19 | 2025-07-24 | B17-V01~V08-1140, B17-V01~V08-1150, B16-V25~V32-1160 | 0d |  | Screed 1st Floor [8]; Screed Roof Floor [8]; Leveling Screed 1st Floor [8]; Leveling Screed Roof Floor [8] | 268,467.85 | Civil |
| B17-V01~V08-1170 |  | Water Tank & Heater Foundations | 4d | 2025-07-26 | 2025-07-29 | B17-V01~V08-1160, B16-V25~V32-1170 | 4d | 0d |  |  | Civil |
| B17-V01~V08-1180 |  | Block Works For 1F | 3d | 2025-07-26 | 2025-07-28 | B17-V01~V08-1160, B16-V25~V32-1180 | 0d |  | Block FF [8] | 20,537.81 | Arc |
| B17-V01~V08-1190 |  | Water Line Network | 6d | 2025-07-29 | 2025-08-04 | B17-V01~V08-1180, B16-V25~V32-1190 | 0d |  | Water Line Network [8] | 40,261.13 | Mech |
| B17-V01~V08-1200 |  | Continue Elec Establishment For GF & 1F | 3d | 2025-07-29 | 2025-07-31 | B17-V01~V08-1180, B16-V25~V32-1200 | 3d |  | Elec Establishment FF [8] | 26,840.73 | Elec |
| B17-V01~V08-1210 |  | Thermal Insulation For Roof | 5d | 2025-07-30 | 2025-08-04 | B17-V01~V08-1170, B16-V25~V32-1210 | 4d | 0d | Roof Insulation [8] | 32,530.16 | Arc |
| B17-V01~V08-1220 |  | Roof Floor Tiles | 6d | 2025-08-05 | 2025-08-11 | B17-V01~V08-1210, B16-V25~V32-1220 | 4d | 0d | Roof Tiles [8]; Roof Tiles Joints [8]; Re_Test Roof Insulation [8] | 63,179.38 | Arc |
| B17-V01~V08-1230 |  | Plaster Work For Villa | 6d | 2025-08-05 | 2025-08-11 | B17-V01~V08-1190, B17-V01~V08-1200, B16-V25~V32-1230 | 0d |  | Establishing a plastering GF [8]; Establishing a plastering FF [8]; Plastering GF [8]; Plastering FF [8] | 49,263.81 |  |
| B17-V01~V08-1240 |  | Marbale Stairs & Handrails | 6d | 2025-08-12 | 2025-08-18 | B17-V01~V08-1230, B16-V25~V32-1240 | 22d | 0d | Marbale Stairs [8]; Stairs Handrails SS [8] | 91,494.69 |  |
| B17-V01~V08-1250 |  | Water Proofing Of Bathrooms | 4d | 2025-08-12 | 2025-08-16 | B17-V01~V08-1230, B16-V25~V32-1250 | 0d |  | Bathrooms InsulationGF & FF [8] | 134.24 |  |
| B17-V01~V08-1260 |  | Pulling The Elec Wires | 4d | 2025-08-12 | 2025-08-16 | B17-V01~V08-1230, B16-V25~V32-1260 | 10d | 2d | Elec Wires GF [8]; Elec Wires FF [8] | 80,542.4 |  |
| B17-V01~V08-1270 |  | Bathroom Tiles | 4d | 2025-08-17 | 2025-08-20 | B17-V01~V08-1250, B17-V01~V08-1220, B16-V25~V32-1270 | 0d |  | Ceramic Walls Kitchen [8]; Ceramic Walls Bathrooms GF [8]; Ceramic Walls Bathrooms FF [8]; Ceramic Tiles Bathrooms GF [8]; Ceramic Tiles Kitchen GF [8]; Ceramic Tiles Store GF [8] | 73,204.08 |  |
| B17-V01~V08-1280 |  | Structure For Gypsum | 6d | 2025-08-21 | 2025-08-27 | B17-V01~V08-1270, B16-V25~V32-1280 | 0d |  | Structure For Gypsum GF Rooms [8]; Structure For Gypsum FF Rooms [8]; Structure For Gypsum Bathrooms & Kitchen [8] | 33,550.81 |  |
| B17-V01~V08-1290 |  | Gypsum Board For Room | 4d | 2025-08-28 | 2025-09-01 | B17-V01~V08-1280, B17-V01~V08-1260, B16-V25~V32-1290 | 0d |  | Gypsum Board For GF Room [8]; Gypsum Board For FF Room [8] | 35,796.64 |  |
| B17-V01~V08-1300 |  | Installation Of Gypsum Board For Bathroom & Kitchen | 4d | 2025-09-02 | 2025-09-06 | B17-V01~V08-1290, B16-V25~V32-1300 | 0d |  | Gypsum Board For Bathrooms & Kitchen [8] | 11,052.24 |  |
| B17-V01~V08-1310 |  | Putty Filler For Gypsm Board Ceiling | 6d | 2025-09-07 | 2025-09-13 | B17-V01~V08-1300, B16-V25~V32-1310 | 0d |  | Putty Filler 1st Layer Roof all Rooms [8]; Putty Filler 1st Layer Roof all Bathrooms & Kitchen [8]; Putty Filler1st Layer walls [8] | 62,182.52 |  |
| B17-V01~V08-1320 |  | Fixing Shower Glass | 4d | 2025-09-14 | 2025-09-17 | B17-V01~V08-1310, B16-V25~V32-1320 | 7d | 0d | Shower Glass [8] | 22,372.88 |  |
| B17-V01~V08-1330 |  | Interior Wall Putty Filler | 6d | 2025-09-14 | 2025-09-20 | B17-V01~V08-1310, B17-V01~V08-1240, B16-V25~V32-1330 | 0d |  | Putty Filler 2ed Layer Roof & WAlls GF [8]; Putty Filler 2ed Layer Roof & WAlls FF [8] | 62,150.21 |  |
| B17-V01~V08-1340 |  | Installation Of Sanitry Fixture | 6d | 2025-09-18 | 2025-09-24 | B17-V01~V08-1320, B16-V25~V32-1340 | 7d | 0d | Mech Fixtures & Accessories [8] | 98,438.1 |  |
| B17-V01~V08-1350 |  | 1st Face Paint | 5d | 2025-09-21 | 2025-09-25 | B17-V01~V08-1330, B16-V25~V32-1350 | 0d |  |  |  |  |
| B17-V01~V08-1360 |  | Installation Of Aluminum Windows | 6d | 2025-09-21 | 2025-09-27 | B17-V01~V08-1330, B16-V25~V32-1360 | 9d | 0d | Aluminum Windows [8] | 84,797.8 |  |
| B17-V01~V08-1370 |  | Installation Of Elec Fixture & Accessories | 5d | 2025-09-21 | 2025-09-25 | B17-V01~V08-1310, B17-V01~V08-1330, B17-V01~V08-1260, B16-V25~V32-1370 | 22d | 1d | Elec Fixtures & Accessories Villa & Yard [8]; Elec Cables GF & FF & Earthing [8] | 53,694.88 |  |
| B17-V01~V08-1380 |  | Installation Of Water Tank-Heater & Pumps | 6d | 2025-09-25 | 2025-10-01 | B17-V01~V08-1340, B17-V01~V08-1220, B16-V25~V32-1380 | 7d | 0d | Water Tank & booster Pump [8]; Lower Pump [8]; Heater [8] | 129,730.28 |  |
| B17-V01~V08-1390 |  | Installation Of Parquet | 4d | 2025-09-27 | 2025-09-30 | B17-V01~V08-1350, B16-V25~V32-1390 | 0d |  | Installation Of Parquet [8] | 52,978.96 |  |
| B17-V01~V08-1400 |  | Installation Of Wooden Doors | 6d | 2025-10-01 | 2025-10-07 | B17-V01~V08-1390, B16-V25~V32-1400 | 0d |  | Wooden Doors Accessories all Villa [8]; Wooden Doors Kitchen & Bathroom without Accessories [8]; Exterior Wooden Doors [8] | 142,109.01 |  |
| B17-V01~V08-1410 |  | Final Face Paint | 6d | 2025-10-08 | 2025-10-14 | B17-V01~V08-1360, B17-V01~V08-1400, B16-V25~V32-1410 | 0d |  | Final Face Paint Villa [8] | 31,090.55 |  |

| ID | WBS | Activity | Duration | Start | Finish | Predecessors | Total float | Free float | Resources | Cost |
| --- | --- | --- | --- | --- | --- | --- | --- | --- | --- | --- |
|  | 3 | **Fence & Courtyard Works** |  | 2025-07-05 | 2025-10-06 |  |  |  |  |  |
| B17-V01~V08-1420 |  | Pouring Bedding Concrete For Fence Fondations | 2d | 2025-07-05 | 2025-07-06 | B17-V01~V08-1120, B16-V25~V32-1420 | 18d | 0d | Excavation Fence Foundations [8] | 4,519.28 |
| B17-V01~V08-1430 |  | RC Concrete For Fence Fondations | 5d | 2025-07-07 | 2025-07-12 | B17-V01~V08-1420, B16-V25~V32-1430 | 18d | 1d | Fence Fondations-Eastern side [8]; Fence Fondations-Westren side [8]; Fence Fondations-Back side [8] | 13,423.68 |
| B17-V01~V08-1440 |  | Steel Fixing & Carpentry For Fence Columns | 5d | 2025-07-14 | 2025-07-19 | B17-V01~V08-1430, B16-V25~V32-1440 | 17d | 0d |  |  |
| B17-V01~V08-1450 |  | Establishing Elec For Fence Columns | 4d | 2025-07-20 | 2025-07-23 | B17-V01~V08-1440, B16-V25~V32-1450 | 17d | 0d |  |  |
| B17-V01~V08-1460 |  | Pouring Concrete For Fence Columns | 1d | 2025-07-24 | 2025-07-24 | B17-V01~V08-1450, B16-V25~V32-1460 | 17d | 0d | Fence Columns-Eastern side [8]; Fence Columns-Westren side [8]; Fence Columns-Back side [8] | 9,665.04 |
| B17-V01~V08-1470 |  | Installation Precast Panel For Fence | 4d | 2025-07-26 | 2025-07-29 | B17-V01~V08-1460, B16-V25~V32-1470 | 17d | 0d | Hollow Core Walls [8] | 71,593.2 |
| B17-V01~V08-1480 |  | Bitumen Coating For Fence Fondations | 4d | 2025-07-30 | 2025-08-03 | B17-V01~V08-1470, B16-V25~V32-1480 | 17d | 1d |  |  |
| B17-V01~V08-1490 |  | Pouring Bedding Concrete For "Front" Fence Fondations | 1d | 2025-07-30 | 2025-07-30 | B17-V01~V08-1470, B16-V25~V32-1490 | 24d | 0d |  |  |
| B17-V01~V08-1500 |  | RC Concrete For "Front" Fence Fondations | 4d | 2025-07-31 | 2025-08-04 | B17-V01~V08-1490, B16-V25~V32-1500 | 24d | 0d | Front Fence Fondations [8] | 8,904.4 |
| B17-V01~V08-1510 |  | Steel Fixing & Carpentry For "Front" Fence Columns | 4d | 2025-08-05 | 2025-08-09 | B17-V01~V08-1500, B16-V25~V32-1520 | 24d | 0d |  |  |
| B17-V01~V08-1520 |  | Outdoor Drainage & Water Line | 4d | 2025-08-05 | 2025-08-09 | B17-V01~V08-1480, B17-V01~V08-1140, B16-V25~V32-1510 | 16d | 0d | Outdoor Drainage [8]; Outdoor Water Line [8] | 13,423.68 |
| B17-V01~V08-1530 |  | Establishing Elec For "Front" Fence Columns | 4d | 2025-08-10 | 2025-08-13 | B17-V01~V08-1510, B16-V25~V32-1530 | 24d | 0d |  |  |
| B17-V01~V08-1540 |  | Establishing Elec For Fence & Yard | 2d | 2025-08-10 | 2025-08-11 | B17-V01~V08-1520, B16-V25~V32-1540 | 16d | 0d | Elec Establishment Fence & Yard [8] | 17,898.32 |
| B17-V01~V08-1550 |  | Backfilling the Yard | 4d | 2025-08-12 | 2025-08-16 | B17-V01~V08-1540, B16-V25~V32-1550 | 16d | 0d | Backfilling the Yard [8] | 10,560 |
| B17-V01~V08-1560 |  | Pouring Concrete Wall Of "Front" Fence Columns | 2d | 2025-08-14 | 2025-08-16 | B17-V01~V08-1530, B16-V25~V32-1560 | 24d | 0d | Front Fence Walls [8] | 17,898.32 |
| B17-V01~V08-1570 |  | Pouring Concrete Crown Of "Front" Fence Columns | 3d | 2025-08-17 | 2025-08-19 | B17-V01~V08-1560, B16-V25~V32-1570 | 24d | 0d | Fence Columns - C Chanel [8] | 3,310.37 |
| B17-V01~V08-1580 |  | Bardoura Works For Yard | 4d | 2025-08-18 | 2025-08-21 | B17-V01~V08-1550, B16-V25~V32-1580 | 15d | 0d | Bardoura Works For Yard [8] | 14,408.16 |
| B17-V01~V08-1590 |  | Pouring Concrete Flower Basin Of "Front" Fence Columns | 4d | 2025-08-20 | 2025-08-24 | B17-V01~V08-1570, B16-V25~V32-1590 | 24d | 0d |  |  |
| B17-V01~V08-1600 |  | Antitermite Treatment For Yard | 1d | 2025-08-23 | 2025-08-23 | B17-V01~V08-1580, B16-V25~V32-1600 | 15d | 0d | Antitermite Treatment For Yard [8] |  |
| B17-V01~V08-1610 |  | Pouring Concrete For Yard | 1d | 2025-08-24 | 2025-08-24 | B17-V01~V08-1600, B16-V25~V32-1610 | 15d | 1d |  |  |
| B17-V01~V08-1620 |  | Block Work For Flower Basin | 4d | 2025-08-26 | 2025-08-30 | B17-V01~V08-1610, B16-V25~V32-1620 | 14d | 0d |  |  |
| B17-V01~V08-1630 |  | Plastering Work For Flower Basin | 4d | 2025-08-31 | 2025-09-03 | B17-V01~V08-1620, B16-V25~V32-1630 | 14d | 0d |  |  |
| B17-V01~V08-1640 |  | Interlock Works For The Yard | 4d | 2025-09-07 | 2025-09-10 | B17-V01~V08-1630, B16-V25~V32-1640 | 12d | 0d | Interlock Works For The Yard [8] | 36,785.52 |
| B17-V01~V08-1650 |  | External Grading Works For The Villa | 4d | 2025-09-11 | 2025-09-15 | B17-V01~V08-1640, B16-V25~V32-1650 | 14d | 0d | External Grading Works For The Villa [8] | 3,221.68 |
| B17-V01~V08-1660 |  | Fixing Floor Drain For The Yard | 2d | 2025-09-11 | 2025-09-13 | B17-V01~V08-1640, B16-V25~V32-1670 | 20d | 2d | Floor Drain & Clean Out [8] | 13,423.76 |
| B17-V01~V08-1670 |  | Installation The Exterior Door & Garage Door | 5d | 2025-09-13 | 2025-09-17 | B17-V01~V08-1640, B16-V25~V32-1660 | 16d | 0d | Installation The Exterior Door [8]; Installation The Exterior Garage Door [8] | 40,002.72 |
| B17-V01~V08-1680 |  | Granite Surronds Around The Villa | 4d | 2025-09-16 | 2025-09-20 | B17-V01~V08-1650, B16-V25~V32-1680 | 14d | 0d | Granite Surronds Around The Villa [8] | 25,818.32 |
| B17-V01~V08-1690 |  | Painting The Base Surface Of The Fence | 2d | 2025-09-16 | 2025-09-17 | B17-V01~V08-1750, B16-V25~V32-1690 | 12d | 0d |  |  |
| B17-V01~V08-1700 |  | Painting The Final Face Of The Fence | 4d | 2025-09-18 | 2025-09-22 | B17-V01~V08-1690, B16-V25~V32-1700 | 12d | 0d | Painting Final Face Of The Fence [8] | 37,586.48 |
| B17-V01~V08-1710 |  | Exterior Painting Of The Villa | 5d | 2025-09-27 | 2025-10-01 | B17-V01~V08-1680, B17-V01~V08-1700, B17-V01~V08-1670, B17-V01~V08-1660, B16-V25~V32-1710 | 9d | 0d | Exterior Painting Of The Villa [8]; Exterior Painting Staircase House [8] | 105,689.44 |
| B17-V01~V08-1720 |  | Installation Elec Fixtures & Accessories For The Yard | 4d | 2025-10-02 | 2025-10-06 | B17-V01~V08-1700, B17-V01~V08-1710, B16-V25~V32-1720 | 9d | 0d | Elec feeding panels GF & FF [8] | 22,372.88 |

| ID | WBS | Activity | Duration | Start | Finish | Predecessors | Total float | Free float | Resources | Cost | Department-1 |
| --- | --- | --- | --- | --- | --- | --- | --- | --- | --- | --- | --- |
|  | 5 | **External Sidewalk Works** |  | 2025-08-25 | 2025-10-11 |  |  |  |  |  |  |
| B17-V01~V08-1730 |  | Connection The Drain To The Piblic Network | 3d | 2025-08-25 | 2025-08-27 | B17-V01~V08-1520, B17-V01~V08-1590, B16-V25~V32-1730 | 24d | 2d | Connection Drain To The Piblic Network [8]; Connection Water To The Piblic Network [8] | 13,420.32 |  |
| B17-V01~V08-1740 |  | Pardora Works For The External Sidewalk | 2d | 2025-09-11 | 2025-09-13 | B17-V01~V08-1640, B17-V01~V08-1730, B16-V25~V32-1740 | 12d | 0d |  |  |  |
| B17-V01~V08-1750 |  | Interlock Works For The Exerrnal Sidewalk | 2d | 2025-09-14 | 2025-09-15 | B17-V01~V08-1740, B16-V25~V32-1750 | 12d | 0d |  |  |  |
| B17-V01~V08-1760 |  | Pulling The Villa's Main Elec Cable | 4d | 2025-10-07 | 2025-10-11 | B17-V01~V08-1750, B17-V01~V08-1720, B16-V25~V32-1760 | 9d | 0d | Elec Work Testing [8] | 22,819.84 |  |
|  | 6 | **Final Testing & Handover** |  | 2025-10-02 | 2025-10-25 |  |  |  |  |  |  |
| B17-V01~V08-1770 |  | Mech Work Testing & Handover | 5d | 2025-10-02 | 2025-10-07 | B17-V01~V08-1730, B17-V01~V08-1340, B17-V01~V08-1380, B16-V25~V32-1770 | 15d | 1d | Mech Work Testing & Handover [8] | 14,318.64 |  |
| B17-V01~V08-1780 |  | Arch Snaglist & Handover | 4d | 2025-10-08 | 2025-10-12 | B17-V01~V08-1750, B17-V01~V08-1710, B17-V01~V08-1400, B16-V25~V32-1780 | 11d | 2d | Arch Snaglist & Handover [8] | 77,320.64 |  |
| B17-V01~V08-1790 |  | ElecWork Testing & Handover | 3d | 2025-10-12 | 2025-10-14 | B17-V01~V08-1760, B17-V01~V08-1370, B16-V25~V32-1790 | 9d | 0d | Elec Work Handover [8] | 23,804.12 |  |
| B17-V01~V08-1800 |  | Final Handover Of The Villa To The Consltant | 4d | 2025-10-15 | 2025-10-19 | B17-V01~V08-1780, B17-V01~V08-1790, B17-V01~V08-1770, B17-V01~V08-1410, B16-V25~V32-1800 | 9d | 0d |  |  |  |
| B17-V01~V08-1810 |  | Customer Delivery | 5d | 2025-10-20 | 2025-10-25 | B17-V01~V08-1800, B16-V25~V32-1810 | 9d | 1d |  |  |  |
|  | 1 | **B17-V09~V16** |  | 2025-03-17 | 2025-11-01 |  |  |  |  |  |  |
|  | 2 | **Under Grond Slap Works** |  | 2025-03-17 | 2025-04-26 |  |  |  |  |  |  |
| B17-V09~V16-1000 |  | Excavation&Compaction of Fondation | 6d | 2025-03-17 | 2025-03-23 | B17-V01~V08-1000 | 59d | 0d | Clearing & Groubbing [8]; Excavation & Leveling [8]; Stone Layer [8]; A3 Layer [8]; A1-a 1st Layer [8]; A1-a 2ed Layer [8] | 163,545.76 | Civil |
| B17-V09~V16-1010 |  | Pouring Concrete For Bedding | 2d | 2025-03-24 | 2025-03-25 | B17-V09~V16-1000, B17-V01~V08-1010 | 59d | 0d | PC Carpentry [8]; PC Concrete [8]; RC 18 MPA [9 M3] | 37,899.68 | Civil |
| B17-V09~V16-1020 |  | Reinforcement Concrete For Foundation | 5d | 2025-03-26 | 2025-03-31 | B17-V09~V16-1010, B17-V01~V08-1020 | 59d | 0d | RC Foundation Carpentry [8]; RC Foundation Steel [8]; RC Foundation Concrete [8] | 201,355.92 | Civil |
| B17-V09~V16-1030 |  | Steel Fixing& Carpenter work for Beams | 4d | 2025-04-01 | 2025-04-05 | B17-V09~V16-1020, B17-V01~V08-1030 | 59d | 0d | RC Grade Beam Carpentry & Steel [8] | 44,745.76 | Civil |
| B17-V09~V16-1040 |  | Mech&Elec Establishment for Beams | 3d | 2025-04-06 | 2025-04-08 | B17-V09~V16-1030, B17-V01~V08-1040 | 59d | 0d |  |  | Mech |
| B17-V09~V16-1050 |  | Pouring Concrete For Beams | 1d | 2025-04-09 | 2025-04-09 | B17-V09~V16-1040, B17-V01~V08-1050 | 59d | 0d | RC Grade Beam Concrete [8] | 77,141.68 | Civil |
| B17-V09~V16-1060 |  | Bitmen Coating For Fondation&Beams | 3d | 2025-04-10 | 2025-04-13 | B17-V09~V16-1050, B17-V01~V08-1060 | 59d | 0d | Bitumen Coating Foundations & Grade Beams [8] | 22,372.32 | Civil |
| B17-V09~V16-1070 |  | Backfilling Inside Fondations | 4d | 2025-04-14 | 2025-04-17 | B17-V09~V16-1060, B17-V01~V08-1070 | 59d | 0d | Backfilling 1st Layer [8]; Backfilling 2ed Layer [8] | 11,186.4 | Civil |
| B17-V09~V16-1080 |  | Mech Works Under Grond Slap | 3d | 2025-04-19 | 2025-04-21 | B17-V09~V16-1070, B17-V01~V08-1080 | 59d | 0d | Mech Establishment Under Ground Slap [8] | 13,423.42 | Mech |
| B17-V09~V16-1090 |  | Steel Fixing& Carpenter work for Ground Slap | 3d | 2025-04-22 | 2025-04-24 | B17-V09~V16-1080, B17-V01~V08-1090 | 59d | 0d | Steel & Carpentry For Ground Slap [8] | 10,246.54 | Civil |
| B17-V09~V16-1100 |  | Anti Termite Treatment For Ground Slap | 1d | 2025-04-26 | 2025-04-26 | B17-V09~V16-1090, B17-V01~V08-1100 | 59d | 0d | Anti Termite Treatment nder Ground Slap [8] | 2,237.28 | Civil |
| B17-V09~V16-1110 |  | Pouring Concrete For Ground Slap | 1d | 2025-04-26 | 2025-04-26 | B17-V09~V16-1100 FF, B17-V09~V16-1090, B17-V01~V08-1110 | 59d | 5d | Concrete For Ground Slap [8] | 58,169.52 | Civil |

| ID | WBS | Activity | Duration | Start | Finish | Predecessors | Total float | Free float | Resources | Cost | Department-1 |
| --- | --- | --- | --- | --- | --- | --- | --- | --- | --- | --- | --- |
|  | 4 | **Precast Works** |  | 2025-07-05 | 2025-07-10 |  |  |  |  |  |  |
| B17-V09~V16-1120 |  | Precast Constrction | 6d | 2025-07-05 | 2025-07-10 | B17-V09~V16-1110, B17-V01~V08-1120 | 0d |  | Precast Walls GF [8]; Hollow Core Slap GF [8]; Precast Stairs & staircase House [8]; Thermal insollation Outside Walls [8]; Concrete structure joints [8]; Precast Walls FF [8]; Hollow Core Slap FF [8] | 1,513,460.1 | Civil |
|  | 1 | **Works Inside The Villa** |  | 2025-07-12 | 2025-10-21 |  |  |  |  |  |  |
| B17-V09~V16-1130 |  | Block Work For GF & Estabishment 1F | 6d | 2025-07-12 | 2025-07-17 | B17-V09~V16-1120, B17-V01~V08-1130 | 0d |  | Block GF [8] | 13,647.1 | Arc |
| B17-V09~V16-1140 |  | L.L & H.L Drainage | 6d | 2025-07-19 | 2025-07-24 | B17-V09~V16-1130, B17-V01~V08-1140 | 0d |  | HL Drainage [8]; L.L Drainage [8] | 89,489.28 | Mech |
| B17-V09~V16-1150 |  | Elec Establishment For GF & 1F | 3d | 2025-07-19 | 2025-07-21 | B17-V09~V16-1130, B17-V01~V08-1150 | 3d |  | Elec Establishment GF [8] | 26,840.73 | Elec |
| B17-V09~V16-1160 |  | Screed Work For 1F & Roof | 6d | 2025-07-26 | 2025-07-31 | B17-V09~V16-1140, B17-V09~V16-1150, B17-V01~V08-1160 | 0d |  | Screed 1st Floor [8]; Screed Roof Floor [8]; Leveling Screed 1st Floor [8]; Leveling Screed Roof Floor [8] | 268,467.85 | Civil |
| B17-V09~V16-1170 |  | Water Tank & Heater Foundations | 4d | 2025-08-02 | 2025-08-05 | B17-V09~V16-1160, B17-V01~V08-1170 | 4d | 0d |  |  | Civil |
| B17-V09~V16-1180 |  | Block Works For 1F | 3d | 2025-08-02 | 2025-08-04 | B17-V09~V16-1160, B17-V01~V08-1180 | 0d |  | Block FF [8] | 20,537.81 | Arc |
| B17-V09~V16-1190 |  | Water Line Network | 6d | 2025-08-05 | 2025-08-11 | B17-V09~V16-1180, B17-V01~V08-1190 | 0d |  | Water Line Network [8] | 40,261.13 | Mech |
| B17-V09~V16-1200 |  | Continue Elec Establishment For GF & 1F | 3d | 2025-08-05 | 2025-08-07 | B17-V09~V16-1180, B17-V01~V08-1200 | 3d |  | Elec Establishment FF [8] | 26,840.73 | Elec |
| B17-V09~V16-1210 |  | Thermal Insulation For Roof | 5d | 2025-08-06 | 2025-08-11 | B17-V09~V16-1170, B17-V01~V08-1210 | 4d | 0d | Roof Insulation [8] | 32,530.16 | Arc |
| B17-V09~V16-1220 |  | Roof Floor Tiles | 6d | 2025-08-12 | 2025-08-18 | B17-V09~V16-1210, B17-V01~V08-1220 | 4d | 0d | Roof Tiles [8]; Roof Tiles Joints [8]; Re_Test Roof Insulation [8] | 63,179.38 | Arc |
| B17-V09~V16-1230 |  | Plaster Work For Villa | 6d | 2025-08-12 | 2025-08-18 | B17-V09~V16-1190, B17-V09~V16-1200, B17-V01~V08-1230 | 0d |  | Establishing a plastering GF [8]; Establishing a plastering FF [8]; Plastering GF [8]; Plastering FF [8] | 49,263.81 |  |
| B17-V09~V16-1240 |  | Marbale Stairs & Handrails | 6d | 2025-08-19 | 2025-08-25 | B17-V09~V16-1230, B17-V01~V08-1240 | 22d | 0d | Marbale Stairs [8]; Stairs Handrails SS [8] | 91,494.69 |  |
| B17-V09~V16-1250 |  | Water Proofing Of Bathrooms | 4d | 2025-08-19 | 2025-08-23 | B17-V09~V16-1230, B17-V01~V08-1250 | 0d |  | Bathrooms InsulationGF & FF [8] | 134.24 |  |
| B17-V09~V16-1260 |  | Pulling The Elec Wires | 4d | 2025-08-19 | 2025-08-23 | B17-V09~V16-1230, B17-V01~V08-1260 | 10d | 2d | Elec Wires GF [8]; Elec Wires FF [8] | 80,542.4 |  |
| B17-V09~V16-1270 |  | Bathroom Tiles | 4d | 2025-08-24 | 2025-08-27 | B17-V09~V16-1250, B17-V09~V16-1220, B17-V01~V08-1270 | 0d |  | Ceramic Walls Kitchen [8]; Ceramic Walls Bathrooms GF [8]; Ceramic Walls Bathrooms FF [8]; Ceramic Tiles Bathrooms GF [8]; Ceramic Tiles Kitchen GF [8]; Ceramic Tiles Store GF [8] | 73,204.08 |  |
| B17-V09~V16-1280 |  | Structure For Gypsum | 6d | 2025-08-28 | 2025-09-03 | B17-V09~V16-1270, B17-V01~V08-1280 | 0d |  | Structure For Gypsum GF Rooms [8]; Structure For Gypsum FF Rooms [8]; Structure For Gypsum Bathrooms & Kitchen [8] | 33,550.81 |  |
| B17-V09~V16-1290 |  | Gypsum Board For Room | 4d | 2025-09-04 | 2025-09-08 | B17-V09~V16-1280, B17-V09~V16-1260, B17-V01~V08-1290 | 0d |  | Gypsum Board For GF Room [8]; Gypsum Board For FF Room [8] | 35,796.64 |  |
| B17-V09~V16-1300 |  | Installation Of Gypsum Board For Bathroom & Kitchen | 4d | 2025-09-09 | 2025-09-13 | B17-V09~V16-1290, B17-V01~V08-1300 | 0d |  | Gypsum Board For Bathrooms & Kitchen [8] | 11,052.24 |  |
| B17-V09~V16-1310 |  | Putty Filler For Gypsm Board Ceiling | 6d | 2025-09-14 | 2025-09-20 | B17-V09~V16-1300, B17-V01~V08-1310 | 0d |  | Putty Filler 1st Layer Roof all Rooms [8]; Putty Filler 1st Layer Roof all Bathrooms & Kitchen [8]; Putty Filler1st Layer walls [8] | 62,182.52 |  |
| B17-V09~V16-1320 |  | Fixing Shower Glass | 4d | 2025-09-21 | 2025-09-24 | B17-V09~V16-1310, B17-V01~V08-1320 | 7d | 0d | Shower Glass [8] | 22,372.88 |  |
| B17-V09~V16-1330 |  | Interior Wall Putty Filler | 6d | 2025-09-21 | 2025-09-27 | B17-V09~V16-1310, B17-V09~V16-1240, B17-V01~V08-1330 | 0d |  | Putty Filler 2ed Layer Roof & WAlls GF [8]; Putty Filler 2ed Layer Roof & WAlls FF [8] | 62,150.21 |  |
| B17-V09~V16-1340 |  | Installation Of Sanitry Fixture | 6d | 2025-09-25 | 2025-10-01 | B17-V09~V16-1320, B17-V01~V08-1340 | 7d | 0d | Mech Fixtures & Accessories [8] | 98,438.1 |  |
| B17-V09~V16-1350 |  | 1st Face Paint | 5d | 2025-09-28 | 2025-10-02 | B17-V09~V16-1330, B17-V01~V08-1350 | 0d |  |  |  |  |
| B17-V09~V16-1360 |  | Installation Of Aluminum Windows | 6d | 2025-09-28 | 2025-10-04 | B17-V09~V16-1330, B17-V01~V08-1360 | 9d | 0d | Aluminum Windows [8] | 84,797.8 |  |
| B17-V09~V16-1370 |  | Installation Of Elec Fixture & Accessories | 5d | 2025-09-28 | 2025-10-02 | B17-V09~V16-1310, B17-V09~V16-1330, B17-V09~V16-1260, B17-V01~V08-1370 | 21d | 1d | Elec Fixtures & Accessories Villa & Yard [8]; Elec Cables GF & FF & Earthing [8] | 53,694.88 |  |
| B17-V09~V16-1380 |  | Installation Of Water Tank-Heater & Pumps | 6d | 2025-10-02 | 2025-10-08 | B17-V09~V16-1340, B17-V09~V16-1220, B17-V01~V08-1380 | 7d | 0d | Water Tank & booster Pump [8]; Lower Pump [8]; Heater [8] | 129,730.28 |  |
| B17-V09~V16-1390 |  | Installation Of Parquet | 4d | 2025-10-04 | 2025-10-07 | B17-V09~V16-1350, B17-V01~V08-1390 | 0d |  | Installation Of Parquet [8] | 52,978.96 |  |
| B17-V09~V16-1400 |  | Installation Of Wooden Doors | 6d | 2025-10-08 | 2025-10-14 | B17-V09~V16-1390, B17-V01~V08-1400 | 0d |  | Wooden Doors Accessories all Villa [8]; Wooden Doors Kitchen & Bathroom without Accessories [8]; Exterior Wooden Doors [8] | 142,109.01 |  |
| B17-V09~V16-1410 |  | Final Face Paint | 6d | 2025-10-15 | 2025-10-21 | B17-V09~V16-1360, B17-V09~V16-1400, B17-V01~V08-1410 | 0d |  | Final Face Paint Villa [8] | 31,090.55 |  |

| ID | WBS | Activity | Duration | Start | Finish | Predecessors | Total float | Free float | Resources | Cost |
| --- | --- | --- | --- | --- | --- | --- | --- | --- | --- | --- |
|  | 3 | **Fence & Courtyard Works** |  | 2025-07-12 | 2025-10-12 |  |  |  |  |  |
| B17-V09~V16-1420 |  | Pouring Bedding Concrete For Fence Fondations | 2d | 2025-07-12 | 2025-07-13 | B17-V09~V16-1120, B17-V01~V08-1420 | 17d | 0d | Excavation Fence Foundations [8] | 4,519.28 |
| B17-V09~V16-1430 |  | RC Concrete For Fence Fondations | 5d | 2025-07-14 | 2025-07-19 | B17-V09~V16-1420, B17-V01~V08-1430 | 17d | 0d | Fence Fondations-Eastern side [8]; Fence Fondations-Westren side [8]; Fence Fondations-Back side [8] | 13,423.68 |
| B17-V09~V16-1440 |  | Steel Fixing & Carpentry For Fence Columns | 5d | 2025-07-20 | 2025-07-24 | B17-V09~V16-1430, B17-V01~V08-1440 | 17d | 0d |  |  |
| B17-V09~V16-1450 |  | Establishing Elec For Fence Columns | 4d | 2025-07-26 | 2025-07-29 | B17-V09~V16-1440, B17-V01~V08-1450 | 17d | 0d |  |  |
| B17-V09~V16-1460 |  | Pouring Concrete For Fence Columns | 1d | 2025-07-30 | 2025-07-30 | B17-V09~V16-1450, B17-V01~V08-1460 | 17d | 0d | Fence Columns-Eastern side [8]; Fence Columns-Westren side [8]; Fence Columns-Back side [8] | 9,665.04 |
| B17-V09~V16-1470 |  | Installation Precast Panel For Fence | 4d | 2025-07-31 | 2025-08-04 | B17-V09~V16-1460, B17-V01~V08-1470 | 17d | 0d | Hollow Core Walls [8] | 71,593.2 |
| B17-V09~V16-1480 |  | Bitumen Coating For Fence Fondations | 4d | 2025-08-05 | 2025-08-09 | B17-V09~V16-1470, B17-V01~V08-1480 | 17d | 0d |  |  |
| B17-V09~V16-1490 |  | Pouring Bedding Concrete For "Front" Fence Fondations | 1d | 2025-08-05 | 2025-08-05 | B17-V09~V16-1470, B17-V01~V08-1490 | 24d | 0d |  |  |
| B17-V09~V16-1500 |  | RC Concrete For "Front" Fence Fondations | 4d | 2025-08-06 | 2025-08-10 | B17-V09~V16-1490, B17-V01~V08-1500 | 24d | 0d | Front Fence Fondations [8] | 8,904.4 |
| B17-V09~V16-1510 |  | Outdoor Drainage & Water Line | 4d | 2025-08-10 | 2025-08-13 | B17-V09~V16-1480, B17-V09~V16-1140, B17-V01~V08-1520 | 17d | 0d | Outdoor Drainage [8]; Outdoor Water Line [8] | 13,423.68 |
| B17-V09~V16-1520 |  | Steel Fixing & Carpentry For "Front" Fence Columns | 4d | 2025-08-11 | 2025-08-14 | B17-V09~V16-1500, B17-V01~V08-1510 | 24d | 0d |  |  |
| B17-V09~V16-1530 |  | Establishing Elec For Fence & Yard | 2d | 2025-08-14 | 2025-08-16 | B17-V09~V16-1510, B17-V01~V08-1540 | 17d | 0d | Elec Establishment Fence & Yard [8] | 17,898.32 |
| B17-V09~V16-1540 |  | Establishing Elec For "Front" Fence Columns | 4d | 2025-08-16 | 2025-08-19 | B17-V09~V16-1520, B17-V01~V08-1530 | 24d | 0d |  |  |
| B17-V09~V16-1550 |  | Backfilling the Yard | 4d | 2025-08-17 | 2025-08-20 | B17-V09~V16-1530, B17-V01~V08-1550 | 17d | 1d | Backfilling the Yard [8] | 10,560 |
| B17-V09~V16-1560 |  | Pouring Concrete Wall Of "Front" Fence Columns | 2d | 2025-08-20 | 2025-08-21 | B17-V09~V16-1540, B17-V01~V08-1560 | 24d | 0d | Front Fence Walls [8] | 17,898.32 |
| B17-V09~V16-1570 |  | Pouring Concrete Crown Of "Front" Fence Columns | 3d | 2025-08-23 | 2025-08-25 | B17-V09~V16-1560, B17-V01~V08-1570 | 24d | 0d | Fence Columns - C Chanel [8] | 3,310.37 |
| B17-V09~V16-1580 |  | Bardoura Works For Yard | 4d | 2025-08-23 | 2025-08-26 | B17-V09~V16-1550, B17-V01~V08-1580 | 16d | 0d | Bardoura Works For Yard [8] | 14,408.16 |
| B17-V09~V16-1590 |  | Pouring Concrete Flower Basin Of "Front" Fence Columns | 4d | 2025-08-26 | 2025-08-30 | B17-V09~V16-1570, B17-V01~V08-1590 | 24d | 0d |  |  |
| B17-V09~V16-1600 |  | Antitermite Treatment For Yard | 1d | 2025-08-27 | 2025-08-27 | B17-V09~V16-1580, B17-V01~V08-1600 | 16d | 0d | Antitermite Treatment For Yard [8] |  |
| B17-V09~V16-1610 |  | Pouring Concrete For Yard | 1d | 2025-08-28 | 2025-08-28 | B17-V09~V16-1600, B17-V01~V08-1610 | 16d | 1d |  |  |
| B17-V09~V16-1620 |  | Block Work For Flower Basin | 4d | 2025-08-31 | 2025-09-03 | B17-V09~V16-1610, B17-V01~V08-1620 | 15d | 0d |  |  |
| B17-V09~V16-1630 |  | Plastering Work For Flower Basin | 4d | 2025-09-04 | 2025-09-08 | B17-V09~V16-1620, B17-V01~V08-1630 | 15d | 0d |  |  |
| B17-V09~V16-1640 |  | Interlock Works For The Yard | 4d | 2025-09-11 | 2025-09-15 | B17-V09~V16-1630, B17-V01~V08-1640 | 13d | 0d | Interlock Works For The Yard [8] | 36,785.52 |
| B17-V09~V16-1650 |  | External Grading Works For The Villa | 4d | 2025-09-16 | 2025-09-20 | B17-V09~V16-1640, B17-V01~V08-1650 | 15d | 0d | External Grading Works For The Villa [8] | 3,221.68 |
| B17-V09~V16-1660 |  | Fixing Floor Drain For The Yard | 2d | 2025-09-16 | 2025-09-17 | B17-V09~V16-1640, B17-V01~V08-1660 | 21d | 2d | Floor Drain & Clean Out [8] | 13,423.76 |
| B17-V09~V16-1670 |  | Installation The Exterior Door & Garage Door | 5d | 2025-09-18 | 2025-09-23 | B17-V09~V16-1640, B17-V01~V08-1670 | 16d | 0d | Installation The Exterior Door [8]; Installation The Exterior Garage Door [8] | 40,002.72 |
| B17-V09~V16-1680 |  | Granite Surronds Around The Villa | 4d | 2025-09-21 | 2025-09-24 | B17-V09~V16-1650, B17-V01~V08-1680 | 15d | 0d | Granite Surronds Around The Villa [8] | 25,818.32 |
| B17-V09~V16-1690 |  | Painting The Base Surface Of The Fence | 2d | 2025-09-21 | 2025-09-22 | B17-V09~V16-1750, B17-V01~V08-1690 | 13d | 0d |  |  |
| B17-V09~V16-1700 |  | Painting The Final Face Of The Fence | 4d | 2025-09-23 | 2025-09-27 | B17-V09~V16-1690, B17-V01~V08-1700 | 13d | 0d | Painting Final Face Of The Fence [8] | 37,586.48 |
| B17-V09~V16-1710 |  | Exterior Painting Of The Villa | 5d | 2025-10-02 | 2025-10-07 | B17-V09~V16-1680, B17-V09~V16-1700, B17-V09~V16-1670, B17-V09~V16-1660, B17-V01~V08-1710 | 9d | 0d | Exterior Painting Of The Villa [8]; Exterior Painting Staircase House [8] | 105,689.44 |
| B17-V09~V16-1720 |  | Installation Elec Fixtures & Accessories For The Yard | 4d | 2025-10-08 | 2025-10-12 | B17-V09~V16-1700, B17-V09~V16-1710, B17-V01~V08-1720 | 9d | 0d | Elec feeding panels GF & FF [8] | 22,372.88 |

| ID | WBS | Activity | Duration | Start | Finish | Predecessors | Total float | Free float | Resources | Cost | Department-1 |
| --- | --- | --- | --- | --- | --- | --- | --- | --- | --- | --- | --- |
|  | 5 | **External Sidewalk Works** |  | 2025-08-31 | 2025-10-16 |  |  |  |  |  |  |
| B17-V09~V16-1730 |  | Connection The Drain To The Piblic Network | 3d | 2025-08-31 | 2025-09-02 | B17-V09~V16-1510, B17-V09~V16-1590, B17-V01~V08-1730 | 24d | 3d | Connection Drain To The Piblic Network [8]; Connection Water To The Piblic Network [8] | 13,420.32 |  |
| B17-V09~V16-1740 |  | Pardora Works For The External Sidewalk | 2d | 2025-09-16 | 2025-09-17 | B17-V09~V16-1640, B17-V09~V16-1730, B17-V01~V08-1740 | 13d | 0d |  |  |  |
| B17-V09~V16-1750 |  | Interlock Works For The Exerrnal Sidewalk | 2d | 2025-09-18 | 2025-09-20 | B17-V09~V16-1740, B17-V01~V08-1750 | 13d | 0d |  |  |  |
| B17-V09~V16-1760 |  | Pulling The Villa's Main Elec Cable | 4d | 2025-10-13 | 2025-10-16 | B17-V09~V16-1750, B17-V09~V16-1720, B17-V01~V08-1760 | 9d | 0d | Elec Work Testing [8] | 22,819.84 |  |
|  | 6 | **Final Testing & Handover** |  | 2025-10-09 | 2025-11-01 |  |  |  |  |  |  |
| B17-V09~V16-1770 |  | Mech Work Testing & Handover | 5d | 2025-10-09 | 2025-10-14 | B17-V09~V16-1730, B17-V09~V16-1340, B17-V09~V16-1380, B17-V01~V08-1770 | 14d | 1d | Mech Work Testing & Handover [8] | 14,318.64 |  |
| B17-V09~V16-1780 |  | Arch Snaglist & Handover | 4d | 2025-10-15 | 2025-10-19 | B17-V09~V16-1750, B17-V09~V16-1710, B17-V09~V16-1400, B17-V01~V08-1780 | 10d | 2d | Arch Snaglist & Handover [8] | 77,320.64 |  |
| B17-V09~V16-1790 |  | ElecWork Testing & Handover | 3d | 2025-10-18 | 2025-10-20 | B17-V09~V16-1760, B17-V09~V16-1370, B17-V01~V08-1790 | 9d | 1d | Elec Work Handover [8] | 23,804.12 |  |
| B17-V09~V16-1800 |  | Final Handover Of The Villa To The Consltant | 4d | 2025-10-22 | 2025-10-26 | B17-V09~V16-1780, B17-V09~V16-1790, B17-V09~V16-1770, B17-V09~V16-1410, B17-V01~V08-1800 | 8d | 0d |  |  |  |
| B17-V09~V16-1810 |  | Customer Delivery | 5d | 2025-10-27 | 2025-11-01 | B17-V09~V16-1800, B17-V01~V08-1810 | 8d | 1d |  |  |  |
|  | 2 | **B17-V17~V24** |  | 2025-03-24 | 2025-11-08 |  |  |  |  |  |  |
|  | 2 | **Under Grond Slap Works** |  | 2025-03-24 | 2025-05-03 |  |  |  |  |  |  |
| B17-V17~V24-1000 |  | Excavation&Compaction of Fondation | 6d | 2025-03-24 | 2025-03-30 | B17-V09~V16-1000 | 59d | 0d | Clearing & Groubbing [8]; Excavation & Leveling [8]; Stone Layer [8]; A3 Layer [8]; A1-a 1st Layer [8]; A1-a 2ed Layer [8] | 163,545.76 | Civil |
| B17-V17~V24-1010 |  | Pouring Concrete For Bedding | 2d | 2025-03-31 | 2025-04-01 | B17-V17~V24-1000, B17-V09~V16-1010 | 59d | 0d | PC Carpentry [8]; PC Concrete [8]; RC 18 MPA [9 M3] | 37,899.68 | Civil |
| B17-V17~V24-1020 |  | Reinforcement Concrete For Foundation | 5d | 2025-04-02 | 2025-04-07 | B17-V17~V24-1010, B17-V09~V16-1020 | 59d | 0d | RC Foundation Carpentry [8]; RC Foundation Steel [8]; RC Foundation Concrete [8] | 201,355.92 | Civil |
| B17-V17~V24-1030 |  | Steel Fixing& Carpenter work for Beams | 4d | 2025-04-08 | 2025-04-12 | B17-V17~V24-1020, B17-V09~V16-1030 | 59d | 0d | RC Grade Beam Carpentry & Steel [8] | 44,745.76 | Civil |
| B17-V17~V24-1040 |  | Mech&Elec Establishment for Beams | 3d | 2025-04-13 | 2025-04-15 | B17-V17~V24-1030, B17-V09~V16-1040 | 59d | 0d |  |  | Mech |
| B17-V17~V24-1050 |  | Pouring Concrete For Beams | 1d | 2025-04-16 | 2025-04-16 | B17-V17~V24-1040, B17-V09~V16-1050 | 59d | 0d | RC Grade Beam Concrete [8] | 77,141.68 | Civil |
| B17-V17~V24-1060 |  | Bitmen Coating For Fondation&Beams | 3d | 2025-04-17 | 2025-04-20 | B17-V17~V24-1050, B17-V09~V16-1060 | 59d | 0d | Bitumen Coating Foundations & Grade Beams [8] | 22,372.32 | Civil |
| B17-V17~V24-1070 |  | Backfilling Inside Fondations | 4d | 2025-04-21 | 2025-04-24 | B17-V17~V24-1060, B17-V09~V16-1070 | 59d | 0d | Backfilling 1st Layer [8]; Backfilling 2ed Layer [8] | 11,186.4 | Civil |
| B17-V17~V24-1080 |  | Mech Works Under Grond Slap | 3d | 2025-04-26 | 2025-04-28 | B17-V17~V24-1070, B17-V09~V16-1080 | 59d | 0d | Mech Establishment Under Ground Slap [8] | 13,423.42 | Mech |
| B17-V17~V24-1090 |  | Steel Fixing& Carpenter work for Ground Slap | 3d | 2025-04-29 | 2025-05-01 | B17-V17~V24-1080, B17-V09~V16-1090 | 59d | 0d | Steel & Carpentry For Ground Slap [8] | 10,246.54 | Civil |
| B17-V17~V24-1100 |  | Anti Termite Treatment For Ground Slap | 1d | 2025-05-03 | 2025-05-03 | B17-V17~V24-1090, B17-V09~V16-1100 | 59d | 0d | Anti Termite Treatment nder Ground Slap [8] | 2,237.28 | Civil |
| B17-V17~V24-1110 |  | Pouring Concrete For Ground Slap | 1d | 2025-05-03 | 2025-05-03 | B17-V17~V24-1100 FF, B17-V17~V24-1090, B17-V09~V16-1110 | 59d | 5d | Concrete For Ground Slap [8] | 58,169.52 | Civil |

| ID | WBS | Activity | Duration | Start | Finish | Predecessors | Total float | Free float | Resources | Cost | Department-1 |
| --- | --- | --- | --- | --- | --- | --- | --- | --- | --- | --- | --- |
|  | 4 | **Precast Works** |  | 2025-07-12 | 2025-07-17 |  |  |  |  |  |  |
| B17-V17~V24-1120 |  | Precast Constrction | 6d | 2025-07-12 | 2025-07-17 | B17-V17~V24-1110, B17-V09~V16-1120 | 0d |  | Precast Walls GF [8]; Hollow Core Slap GF [8]; Precast Stairs & staircase House [8]; Thermal insollation Outside Walls [8]; Concrete structure joints [8]; Precast Walls FF [8]; Hollow Core Slap FF [8] | 1,513,460.1 | Civil |
|  | 1 | **Works Inside The Villa** |  | 2025-07-19 | 2025-10-28 |  |  |  |  |  |  |
| B17-V17~V24-1130 |  | Block Work For GF & Estabishment 1F | 6d | 2025-07-19 | 2025-07-24 | B17-V17~V24-1120, B17-V09~V16-1130 | 0d |  | Block GF [8] | 13,647.1 | Arc |
| B17-V17~V24-1140 |  | L.L & H.L Drainage | 6d | 2025-07-26 | 2025-07-31 | B17-V17~V24-1130, B17-V09~V16-1140 | 0d |  | HL Drainage [8]; L.L Drainage [8] | 89,489.28 | Mech |
| B17-V17~V24-1150 |  | Elec Establishment For GF & 1F | 3d | 2025-07-26 | 2025-07-28 | B17-V17~V24-1130, B17-V09~V16-1150 | 3d |  | Elec Establishment GF [8] | 26,840.73 | Elec |
| B17-V17~V24-1160 |  | Screed Work For 1F & Roof | 6d | 2025-08-02 | 2025-08-07 | B17-V17~V24-1140, B17-V17~V24-1150, B17-V09~V16-1160 | 0d |  | Screed 1st Floor [8]; Screed Roof Floor [8]; Leveling Screed 1st Floor [8]; Leveling Screed Roof Floor [8] | 268,467.85 | Civil |
| B17-V17~V24-1170 |  | Water Tank & Heater Foundations | 4d | 2025-08-09 | 2025-08-12 | B17-V17~V24-1160, B17-V09~V16-1170 | 4d | 0d |  |  | Civil |
| B17-V17~V24-1180 |  | Block Works For 1F | 3d | 2025-08-09 | 2025-08-11 | B17-V17~V24-1160, B17-V09~V16-1180 | 0d |  | Block FF [8] | 20,537.81 | Arc |
| B17-V17~V24-1190 |  | Water Line Network | 6d | 2025-08-12 | 2025-08-18 | B17-V17~V24-1180, B17-V09~V16-1190 | 0d |  | Water Line Network [8] | 40,261.13 | Mech |
| B17-V17~V24-1200 |  | Continue Elec Establishment For GF & 1F | 3d | 2025-08-12 | 2025-08-14 | B17-V17~V24-1180, B17-V09~V16-1200 | 3d |  | Elec Establishment FF [8] | 26,840.73 | Elec |
| B17-V17~V24-1210 |  | Thermal Insulation For Roof | 5d | 2025-08-13 | 2025-08-18 | B17-V17~V24-1170, B17-V09~V16-1210 | 4d | 0d | Roof Insulation [8] | 32,530.16 | Arc |
| B17-V17~V24-1220 |  | Roof Floor Tiles | 6d | 2025-08-19 | 2025-08-25 | B17-V17~V24-1210, B17-V09~V16-1220 | 4d | 0d | Roof Tiles [8]; Roof Tiles Joints [8]; Re_Test Roof Insulation [8] | 63,179.38 | Arc |
| B17-V17~V24-1230 |  | Plaster Work For Villa | 6d | 2025-08-19 | 2025-08-25 | B17-V17~V24-1190, B17-V17~V24-1200, B17-V09~V16-1230 | 0d |  | Establishing a plastering GF [8]; Establishing a plastering FF [8]; Plastering GF [8]; Plastering FF [8] | 49,263.81 |  |
| B17-V17~V24-1240 |  | Marbale Stairs & Handrails | 6d | 2025-08-26 | 2025-09-01 | B17-V17~V24-1230, B17-V09~V16-1240 | 22d | 0d | Marbale Stairs [8]; Stairs Handrails SS [8] | 91,494.69 |  |
| B17-V17~V24-1250 |  | Water Proofing Of Bathrooms | 4d | 2025-08-26 | 2025-08-30 | B17-V17~V24-1230, B17-V09~V16-1250 | 0d |  | Bathrooms InsulationGF & FF [8] | 134.24 |  |
| B17-V17~V24-1260 |  | Pulling The Elec Wires | 4d | 2025-08-26 | 2025-08-30 | B17-V17~V24-1230, B17-V09~V16-1260 | 10d | 2d | Elec Wires GF [8]; Elec Wires FF [8] | 80,542.4 |  |
| B17-V17~V24-1270 |  | Bathroom Tiles | 4d | 2025-08-31 | 2025-09-03 | B17-V17~V24-1250, B17-V17~V24-1220, B17-V09~V16-1270 | 0d |  | Ceramic Walls Kitchen [8]; Ceramic Walls Bathrooms GF [8]; Ceramic Walls Bathrooms FF [8]; Ceramic Tiles Bathrooms GF [8]; Ceramic Tiles Kitchen GF [8]; Ceramic Tiles Store GF [8] | 73,204.08 |  |
| B17-V17~V24-1280 |  | Structure For Gypsum | 6d | 2025-09-04 | 2025-09-10 | B17-V17~V24-1270, B17-V09~V16-1280 | 0d |  | Structure For Gypsum GF Rooms [8]; Structure For Gypsum FF Rooms [8]; Structure For Gypsum Bathrooms & Kitchen [8] | 33,550.81 |  |
| B17-V17~V24-1290 |  | Gypsum Board For Room | 4d | 2025-09-11 | 2025-09-15 | B17-V17~V24-1280, B17-V17~V24-1260, B17-V09~V16-1290 | 0d |  | Gypsum Board For GF Room [8]; Gypsum Board For FF Room [8] | 35,796.64 |  |
| B17-V17~V24-1300 |  | Installation Of Gypsum Board For Bathroom & Kitchen | 4d | 2025-09-16 | 2025-09-20 | B17-V17~V24-1290, B17-V09~V16-1300 | 0d |  | Gypsum Board For Bathrooms & Kitchen [8] | 11,052.24 |  |
| B17-V17~V24-1310 |  | Putty Filler For Gypsm Board Ceiling | 6d | 2025-09-21 | 2025-09-27 | B17-V17~V24-1300, B17-V09~V16-1310 | 0d |  | Putty Filler 1st Layer Roof all Rooms [8]; Putty Filler 1st Layer Roof all Bathrooms & Kitchen [8]; Putty Filler1st Layer walls [8] | 62,182.52 |  |
| B17-V17~V24-1320 |  | Fixing Shower Glass | 4d | 2025-09-28 | 2025-10-01 | B17-V17~V24-1310, B17-V09~V16-1320 | 7d | 0d | Shower Glass [8] | 22,372.88 |  |
| B17-V17~V24-1330 |  | Interior Wall Putty Filler | 6d | 2025-09-28 | 2025-10-04 | B17-V17~V24-1310, B17-V17~V24-1240, B17-V09~V16-1330 | 0d |  | Putty Filler 2ed Layer Roof & WAlls GF [8]; Putty Filler 2ed Layer Roof & WAlls FF [8] | 62,150.21 |  |
| B17-V17~V24-1340 |  | Installation Of Sanitry Fixture | 6d | 2025-10-02 | 2025-10-08 | B17-V17~V24-1320, B17-V09~V16-1340 | 7d | 0d | Mech Fixtures & Accessories [8] | 98,438.1 |  |
| B17-V17~V24-1350 |  | 1st Face Paint | 5d | 2025-10-05 | 2025-10-09 | B17-V17~V24-1330, B17-V09~V16-1350 | 0d |  |  |  |  |
| B17-V17~V24-1360 |  | Installation Of Aluminum Windows | 6d | 2025-10-05 | 2025-10-11 | B17-V17~V24-1330, B17-V09~V16-1360 | 9d | 0d | Aluminum Windows [8] | 84,797.8 |  |
| B17-V17~V24-1370 |  | Installation Of Elec Fixture & Accessories | 5d | 2025-10-05 | 2025-10-09 | B17-V17~V24-1310, B17-V17~V24-1330, B17-V17~V24-1260, B17-V09~V16-1370 | 20d | 1d | Elec Fixtures & Accessories Villa & Yard [8]; Elec Cables GF & FF & Earthing [8] | 53,694.88 |  |
| B17-V17~V24-1380 |  | Installation Of Water Tank-Heater & Pumps | 6d | 2025-10-09 | 2025-10-15 | B17-V17~V24-1340, B17-V17~V24-1220, B17-V09~V16-1380 | 7d | 0d | Water Tank & booster Pump [8]; Lower Pump [8]; Heater [8] | 129,730.28 |  |
| B17-V17~V24-1390 |  | Installation Of Parquet | 4d | 2025-10-11 | 2025-10-14 | B17-V17~V24-1350, B17-V09~V16-1390 | 0d |  | Installation Of Parquet [8] | 52,978.96 |  |
| B17-V17~V24-1400 |  | Installation Of Wooden Doors | 6d | 2025-10-15 | 2025-10-21 | B17-V17~V24-1390, B17-V09~V16-1400 | 0d |  | Wooden Doors Accessories all Villa [8]; Wooden Doors Kitchen & Bathroom without Accessories [8]; Exterior Wooden Doors [8] | 142,109.01 |  |
| B17-V17~V24-1410 |  | Final Face Paint | 6d | 2025-10-22 | 2025-10-28 | B17-V17~V24-1360, B17-V17~V24-1400, B17-V09~V16-1410 | 0d |  | Final Face Paint Villa [8] | 31,090.55 |  |

| ID | WBS | Activity | Duration | Start | Finish | Predecessors | Total float | Free float | Resources | Cost |
| --- | --- | --- | --- | --- | --- | --- | --- | --- | --- | --- |
|  | 3 | **Fence & Courtyard Works** |  | 2025-07-19 | 2025-10-18 |  |  |  |  |  |
| B17-V17~V24-1420 |  | Pouring Bedding Concrete For Fence Fondations | 2d | 2025-07-19 | 2025-07-20 | B17-V17~V24-1120, B17-V09~V16-1420 | 16d | 0d | Excavation Fence Foundations [8] | 4,519.28 |
| B17-V17~V24-1430 |  | RC Concrete For Fence Fondations | 5d | 2025-07-21 | 2025-07-26 | B17-V17~V24-1420, B17-V09~V16-1430 | 16d | 0d | Fence Fondations-Eastern side [8]; Fence Fondations-Westren side [8]; Fence Fondations-Back side [8] | 13,423.68 |
| B17-V17~V24-1440 |  | Steel Fixing & Carpentry For Fence Columns | 5d | 2025-07-27 | 2025-07-31 | B17-V17~V24-1430, B17-V09~V16-1440 | 16d | 0d |  |  |
| B17-V17~V24-1450 |  | Establishing Elec For Fence Columns | 4d | 2025-08-02 | 2025-08-05 | B17-V17~V24-1440, B17-V09~V16-1450 | 16d | 0d |  |  |
| B17-V17~V24-1460 |  | Pouring Concrete For Fence Columns | 1d | 2025-08-06 | 2025-08-06 | B17-V17~V24-1450, B17-V09~V16-1460 | 16d | 0d | Fence Columns-Eastern side [8]; Fence Columns-Westren side [8]; Fence Columns-Back side [8] | 9,665.04 |
| B17-V17~V24-1470 |  | Installation Precast Panel For Fence | 4d | 2025-08-07 | 2025-08-11 | B17-V17~V24-1460, B17-V09~V16-1470 | 16d | 0d | Hollow Core Walls [8] | 71,593.2 |
| B17-V17~V24-1480 |  | Bitumen Coating For Fence Fondations | 4d | 2025-08-12 | 2025-08-16 | B17-V17~V24-1470, B17-V09~V16-1480 | 16d | 0d |  |  |
| B17-V17~V24-1490 |  | Pouring Bedding Concrete For "Front" Fence Fondations | 1d | 2025-08-12 | 2025-08-12 | B17-V17~V24-1470, B17-V09~V16-1490 | 23d | 0d |  |  |
| B17-V17~V24-1500 |  | RC Concrete For "Front" Fence Fondations | 4d | 2025-08-13 | 2025-08-17 | B17-V17~V24-1490, B17-V09~V16-1500 | 23d | 0d | Front Fence Fondations [8] | 8,904.4 |
| B17-V17~V24-1510 |  | Outdoor Drainage & Water Line | 4d | 2025-08-17 | 2025-08-20 | B17-V17~V24-1480, B17-V17~V24-1140, B17-V09~V16-1510 | 16d | 0d | Outdoor Drainage [8]; Outdoor Water Line [8] | 13,423.68 |
| B17-V17~V24-1520 |  | Steel Fixing & Carpentry For "Front" Fence Columns | 4d | 2025-08-18 | 2025-08-21 | B17-V17~V24-1500, B17-V09~V16-1520 | 23d | 0d |  |  |
| B17-V17~V24-1530 |  | Establishing Elec For Fence & Yard | 2d | 2025-08-21 | 2025-08-23 | B17-V17~V24-1510, B17-V09~V16-1530 | 16d | 0d | Elec Establishment Fence & Yard [8] | 17,898.32 |
| B17-V17~V24-1540 |  | Establishing Elec For "Front" Fence Columns | 4d | 2025-08-23 | 2025-08-26 | B17-V17~V24-1520, B17-V09~V16-1540 | 23d | 0d |  |  |
| B17-V17~V24-1550 |  | Backfilling the Yard | 4d | 2025-08-24 | 2025-08-27 | B17-V17~V24-1530, B17-V09~V16-1550 | 16d | 0d | Backfilling the Yard [8] | 10,560 |
| B17-V17~V24-1560 |  | Pouring Concrete Wall Of "Front" Fence Columns | 2d | 2025-08-27 | 2025-08-28 | B17-V17~V24-1540, B17-V09~V16-1560 | 23d | 0d | Front Fence Walls [8] | 17,898.32 |
| B17-V17~V24-1570 |  | Bardoura Works For Yard | 4d | 2025-08-28 | 2025-09-01 | B17-V17~V24-1550, B17-V09~V16-1580 | 16d | 0d | Bardoura Works For Yard [8] | 14,408.16 |
| B17-V17~V24-1580 |  | Pouring Concrete Crown Of "Front" Fence Columns | 3d | 2025-08-30 | 2025-09-01 | B17-V17~V24-1560, B17-V09~V16-1570 | 23d | 0d | Fence Columns - C Chanel [8] | 3,310.37 |
| B17-V17~V24-1590 |  | Pouring Concrete Flower Basin Of "Front" Fence Columns | 4d | 2025-09-02 | 2025-09-06 | B17-V17~V24-1580, B17-V09~V16-1590 | 23d | 0d |  |  |
| B17-V17~V24-1600 |  | Antitermite Treatment For Yard | 1d | 2025-09-02 | 2025-09-02 | B17-V17~V24-1570, B17-V09~V16-1600 | 16d | 0d | Antitermite Treatment For Yard [8] |  |
| B17-V17~V24-1610 |  | Pouring Concrete For Yard | 1d | 2025-09-03 | 2025-09-03 | B17-V17~V24-1600, B17-V09~V16-1610 | 16d | 0d |  |  |
| B17-V17~V24-1620 |  | Block Work For Flower Basin | 4d | 2025-09-04 | 2025-09-08 | B17-V17~V24-1610, B17-V09~V16-1620 | 16d | 0d |  |  |
| B17-V17~V24-1630 |  | Plastering Work For Flower Basin | 4d | 2025-09-09 | 2025-09-13 | B17-V17~V24-1620, B17-V09~V16-1630 | 16d | 2d |  |  |
| B17-V17~V24-1640 |  | Interlock Works For The Yard | 4d | 2025-09-16 | 2025-09-20 | B17-V17~V24-1630, B17-V09~V16-1640 | 14d | 0d | Interlock Works For The Yard [8] | 36,785.52 |
| B17-V17~V24-1650 |  | External Grading Works For The Villa | 4d | 2025-09-21 | 2025-09-24 | B17-V17~V24-1640, B17-V09~V16-1650 | 16d | 0d | External Grading Works For The Villa [8] | 3,221.68 |
| B17-V17~V24-1660 |  | Fixing Floor Drain For The Yard | 2d | 2025-09-21 | 2025-09-22 | B17-V17~V24-1640, B17-V09~V16-1660 | 22d | 2d | Floor Drain & Clean Out [8] | 13,423.76 |
| B17-V17~V24-1670 |  | Installation The Exterior Door & Garage Door | 5d | 2025-09-24 | 2025-09-29 | B17-V17~V24-1640, B17-V09~V16-1670 | 16d | 0d | Installation The Exterior Door [8]; Installation The Exterior Garage Door [8] | 40,002.72 |
| B17-V17~V24-1680 |  | Granite Surronds Around The Villa | 4d | 2025-09-25 | 2025-09-29 | B17-V17~V24-1650, B17-V09~V16-1680 | 16d | 0d | Granite Surronds Around The Villa [8] | 25,818.32 |
| B17-V17~V24-1690 |  | Painting The Base Surface Of The Fence | 2d | 2025-09-25 | 2025-09-27 | B17-V17~V24-1750, B17-V09~V16-1690 | 14d | 0d |  |  |
| B17-V17~V24-1700 |  | Painting The Final Face Of The Fence | 4d | 2025-09-28 | 2025-10-01 | B17-V17~V24-1690, B17-V09~V16-1700 | 14d | 0d | Painting Final Face Of The Fence [8] | 37,586.48 |
| B17-V17~V24-1710 |  | Exterior Painting Of The Villa | 5d | 2025-10-08 | 2025-10-13 | B17-V17~V24-1680, B17-V17~V24-1700, B17-V17~V24-1670, B17-V17~V24-1660, B17-V09~V16-1710 | 9d | 0d | Exterior Painting Of The Villa [8]; Exterior Painting Staircase House [8] | 105,689.44 |
| B17-V17~V24-1720 |  | Installation Elec Fixtures & Accessories For The Yard | 4d | 2025-10-14 | 2025-10-18 | B17-V17~V24-1700, B17-V17~V24-1710, B17-V09~V16-1720 | 9d | 0d | Elec feeding panels GF & FF [8] | 22,372.88 |

| ID | WBS | Activity | Duration | Start | Finish | Predecessors | Total float | Free float | Resources | Cost | Department-1 |
| --- | --- | --- | --- | --- | --- | --- | --- | --- | --- | --- | --- |
|  | 5 | **External Sidewalk Works** |  | 2025-09-07 | 2025-10-22 |  |  |  |  |  |  |
| B17-V17~V24-1730 |  | Connection The Drain To The Piblic Network | 3d | 2025-09-07 | 2025-09-09 | B17-V17~V24-1510, B17-V17~V24-1590, B17-V09~V16-1730 | 23d | 3d | Connection Drain To The Piblic Network [8]; Connection Water To The Piblic Network [8] | 13,420.32 |  |
| B17-V17~V24-1740 |  | Pardora Works For The External Sidewalk | 2d | 2025-09-21 | 2025-09-22 | B17-V17~V24-1640, B17-V17~V24-1730, B17-V09~V16-1740 | 14d | 0d |  |  |  |
| B17-V17~V24-1750 |  | Interlock Works For The Exerrnal Sidewalk | 2d | 2025-09-23 | 2025-09-24 | B17-V17~V24-1740, B17-V09~V16-1750 | 14d | 0d |  |  |  |
| B17-V17~V24-1760 |  | Pulling The Villa's Main Elec Cable | 4d | 2025-10-19 | 2025-10-22 | B17-V17~V24-1750, B17-V17~V24-1720, B17-V09~V16-1760 | 9d | 0d | Elec Work Testing [8] | 22,819.84 |  |
|  | 6 | **Final Testing & Handover** |  | 2025-10-16 | 2025-11-08 |  |  |  |  |  |  |
| B17-V17~V24-1770 |  | Mech Work Testing & Handover | 5d | 2025-10-16 | 2025-10-21 | B17-V17~V24-1730, B17-V17~V24-1340, B17-V17~V24-1380, B17-V09~V16-1770 | 13d | 1d | Mech Work Testing & Handover [8] | 14,318.64 |  |
| B17-V17~V24-1780 |  | Arch Snaglist & Handover | 4d | 2025-10-22 | 2025-10-26 | B17-V17~V24-1750, B17-V17~V24-1710, B17-V17~V24-1400, B17-V09~V16-1780 | 9d | 2d | Arch Snaglist & Handover [8] | 77,320.64 |  |
| B17-V17~V24-1790 |  | ElecWork Testing & Handover | 3d | 2025-10-23 | 2025-10-26 | B17-V17~V24-1760, B17-V17~V24-1370, B17-V09~V16-1790 | 9d | 2d | Elec Work Handover [8] | 23,804.12 |  |
| B17-V17~V24-1800 |  | Final Handover Of The Villa To The Consltant | 4d | 2025-10-29 | 2025-11-02 | B17-V17~V24-1780, B17-V17~V24-1790, B17-V17~V24-1770, B17-V17~V24-1410, B17-V09~V16-1800 | 7d | 0d |  |  |  |
| B17-V17~V24-1810 |  | Customer Delivery | 5d | 2025-11-03 | 2025-11-08 | B17-V17~V24-1800, B17-V09~V16-1810 | 7d | 1d |  |  |  |
|  | 3 | **B17-V25~V32** |  | 2025-03-31 | 2025-11-15 |  |  |  |  |  |  |
|  | 2 | **Under Grond Slap Works** |  | 2025-03-31 | 2025-05-10 |  |  |  |  |  |  |
| B17-V25~V32-1000 |  | Excavation&Compaction of Fondation | 6d | 2025-03-31 | 2025-04-06 | B17-V17~V24-1000 | 59d | 0d | Clearing & Groubbing [8]; Excavation & Leveling [8]; Stone Layer [8]; A3 Layer [8]; A1-a 1st Layer [8]; A1-a 2ed Layer [8] | 163,545.76 | Civil |
| B17-V25~V32-1010 |  | Pouring Concrete For Bedding | 2d | 2025-04-07 | 2025-04-08 | B17-V25~V32-1000, B17-V17~V24-1010 | 59d | 0d | PC Carpentry [8]; PC Concrete [8]; RC 18 MPA [9 M3] | 37,899.68 | Civil |
| B17-V25~V32-1020 |  | Reinforcement Concrete For Foundation | 5d | 2025-04-09 | 2025-04-14 | B17-V25~V32-1010, B17-V17~V24-1020 | 59d | 0d | RC Foundation Carpentry [8]; RC Foundation Steel [8]; RC Foundation Concrete [8] | 201,355.92 | Civil |
| B17-V25~V32-1030 |  | Steel Fixing& Carpenter work for Beams | 4d | 2025-04-15 | 2025-04-19 | B17-V25~V32-1020, B17-V17~V24-1030 | 59d | 0d | RC Grade Beam Carpentry & Steel [8] | 44,745.76 | Civil |
| B17-V25~V32-1040 |  | Mech&Elec Establishment for Beams | 3d | 2025-04-20 | 2025-04-22 | B17-V25~V32-1030, B17-V17~V24-1040 | 59d | 0d |  |  | Mech |
| B17-V25~V32-1050 |  | Pouring Concrete For Beams | 1d | 2025-04-23 | 2025-04-23 | B17-V25~V32-1040, B17-V17~V24-1050 | 59d | 0d | RC Grade Beam Concrete [8] | 77,141.68 | Civil |
| B17-V25~V32-1060 |  | Bitmen Coating For Fondation&Beams | 3d | 2025-04-24 | 2025-04-27 | B17-V25~V32-1050, B17-V17~V24-1060 | 59d | 0d | Bitumen Coating Foundations & Grade Beams [8] | 22,372.32 | Civil |
| B17-V25~V32-1070 |  | Backfilling Inside Fondations | 4d | 2025-04-28 | 2025-05-01 | B17-V25~V32-1060, B17-V17~V24-1070 | 59d | 0d | Backfilling 1st Layer [8]; Backfilling 2ed Layer [8] | 11,186.4 | Civil |
| B17-V25~V32-1080 |  | Mech Works Under Grond Slap | 3d | 2025-05-03 | 2025-05-05 | B17-V25~V32-1070, B17-V17~V24-1080 | 59d | 0d | Mech Establishment Under Ground Slap [8] | 13,423.42 | Mech |
| B17-V25~V32-1090 |  | Steel Fixing& Carpenter work for Ground Slap | 3d | 2025-05-06 | 2025-05-08 | B17-V25~V32-1080, B17-V17~V24-1090 | 59d | 0d | Steel & Carpentry For Ground Slap [8] | 10,246.54 | Civil |
| B17-V25~V32-1100 |  | Anti Termite Treatment For Ground Slap | 1d | 2025-05-10 | 2025-05-10 | B17-V25~V32-1090, B17-V17~V24-1100 | 59d | 0d | Anti Termite Treatment nder Ground Slap [8] | 2,237.28 | Civil |
| B17-V25~V32-1110 |  | Pouring Concrete For Ground Slap | 1d | 2025-05-10 | 2025-05-10 | B17-V25~V32-1100 FF, B17-V25~V32-1090, B17-V17~V24-1110 | 59d | 5d | Concrete For Ground Slap [8] | 58,169.52 | Civil |

| ID | WBS | Activity | Duration | Start | Finish | Predecessors | Total float | Free float | Resources | Cost | Department-1 |
| --- | --- | --- | --- | --- | --- | --- | --- | --- | --- | --- | --- |
|  | 4 | **Precast Works** |  | 2025-07-19 | 2025-07-24 |  |  |  |  |  |  |
| B17-V25~V32-1120 |  | Precast Constrction | 6d | 2025-07-19 | 2025-07-24 | B17-V25~V32-1110, B17-V17~V24-1120 | 0d |  | Precast Walls GF [8]; Hollow Core Slap GF [8]; Precast Stairs & staircase House [8]; Thermal insollation Outside Walls [8]; Concrete structure joints [8]; Precast Walls FF [8]; Hollow Core Slap FF [8] | 1,513,460.1 | Civil |
|  | 1 | **Works Inside The Villa** |  | 2025-07-26 | 2025-11-04 |  |  |  |  |  |  |
| B17-V25~V32-1130 |  | Block Work For GF & Estabishment 1F | 6d | 2025-07-26 | 2025-07-31 | B17-V25~V32-1120, B17-V17~V24-1130 | 0d |  | Block GF [8] | 13,647.1 | Arc |
| B17-V25~V32-1140 |  | L.L & H.L Drainage | 6d | 2025-08-02 | 2025-08-07 | B17-V25~V32-1130, B17-V17~V24-1140 | 0d |  | HL Drainage [8]; L.L Drainage [8] | 89,489.28 | Mech |
| B17-V25~V32-1150 |  | Elec Establishment For GF & 1F | 3d | 2025-08-02 | 2025-08-04 | B17-V25~V32-1130, B17-V17~V24-1150 | 3d |  | Elec Establishment GF [8] | 26,840.73 | Elec |
| B17-V25~V32-1160 |  | Screed Work For 1F & Roof | 6d | 2025-08-09 | 2025-08-14 | B17-V25~V32-1140, B17-V25~V32-1150, B17-V17~V24-1160 | 0d |  | Screed 1st Floor [8]; Screed Roof Floor [8]; Leveling Screed 1st Floor [8]; Leveling Screed Roof Floor [8] | 268,467.85 | Civil |
| B17-V25~V32-1170 |  | Water Tank & Heater Foundations | 4d | 2025-08-16 | 2025-08-19 | B17-V25~V32-1160, B17-V17~V24-1170 | 4d | 0d |  |  | Civil |
| B17-V25~V32-1180 |  | Block Works For 1F | 3d | 2025-08-16 | 2025-08-18 | B17-V25~V32-1160, B17-V17~V24-1180 | 0d |  | Block FF [8] | 20,537.81 | Arc |
| B17-V25~V32-1190 |  | Water Line Network | 6d | 2025-08-19 | 2025-08-25 | B17-V25~V32-1180, B17-V17~V24-1190 | 0d |  | Water Line Network [8] | 40,261.13 | Mech |
| B17-V25~V32-1200 |  | Continue Elec Establishment For GF & 1F | 3d | 2025-08-19 | 2025-08-21 | B17-V25~V32-1180, B17-V17~V24-1200 | 3d |  | Elec Establishment FF [8] | 26,840.73 | Elec |
| B17-V25~V32-1210 |  | Thermal Insulation For Roof | 5d | 2025-08-20 | 2025-08-25 | B17-V25~V32-1170, B17-V17~V24-1210 | 4d | 0d | Roof Insulation [8] | 32,530.16 | Arc |
| B17-V25~V32-1220 |  | Roof Floor Tiles | 6d | 2025-08-26 | 2025-09-01 | B17-V25~V32-1210, B17-V17~V24-1220 | 4d | 0d | Roof Tiles [8]; Roof Tiles Joints [8]; Re_Test Roof Insulation [8] | 63,179.38 | Arc |
| B17-V25~V32-1230 |  | Plaster Work For Villa | 6d | 2025-08-26 | 2025-09-01 | B17-V25~V32-1190, B17-V25~V32-1200, B17-V17~V24-1230 | 0d |  | Establishing a plastering GF [8]; Establishing a plastering FF [8]; Plastering GF [8]; Plastering FF [8] | 49,263.81 |  |
| B17-V25~V32-1240 |  | Marbale Stairs & Handrails | 6d | 2025-09-02 | 2025-09-08 | B17-V25~V32-1230, B17-V17~V24-1240 | 22d | 0d | Marbale Stairs [8]; Stairs Handrails SS [8] | 91,494.69 |  |
| B17-V25~V32-1250 |  | Water Proofing Of Bathrooms | 4d | 2025-09-02 | 2025-09-06 | B17-V25~V32-1230, B17-V17~V24-1250 | 0d |  | Bathrooms InsulationGF & FF [8] | 134.24 |  |
| B17-V25~V32-1260 |  | Pulling The Elec Wires | 4d | 2025-09-02 | 2025-09-06 | B17-V25~V32-1230, B17-V17~V24-1260 | 10d | 2d | Elec Wires GF [8]; Elec Wires FF [8] | 80,542.4 |  |
| B17-V25~V32-1270 |  | Bathroom Tiles | 4d | 2025-09-07 | 2025-09-10 | B17-V25~V32-1250, B17-V25~V32-1220, B17-V17~V24-1270 | 0d |  | Ceramic Walls Kitchen [8]; Ceramic Walls Bathrooms GF [8]; Ceramic Walls Bathrooms FF [8]; Ceramic Tiles Bathrooms GF [8]; Ceramic Tiles Kitchen GF [8]; Ceramic Tiles Store GF [8] | 73,204.08 |  |
| B17-V25~V32-1280 |  | Structure For Gypsum | 6d | 2025-09-11 | 2025-09-17 | B17-V25~V32-1270, B17-V17~V24-1280 | 0d |  | Structure For Gypsum GF Rooms [8]; Structure For Gypsum FF Rooms [8]; Structure For Gypsum Bathrooms & Kitchen [8] | 33,550.81 |  |
| B17-V25~V32-1290 |  | Gypsum Board For Room | 4d | 2025-09-18 | 2025-09-22 | B17-V25~V32-1280, B17-V25~V32-1260, B17-V17~V24-1290 | 0d |  | Gypsum Board For GF Room [8]; Gypsum Board For FF Room [8] | 35,796.64 |  |
| B17-V25~V32-1300 |  | Installation Of Gypsum Board For Bathroom & Kitchen | 4d | 2025-09-23 | 2025-09-27 | B17-V25~V32-1290, B17-V17~V24-1300 | 0d |  | Gypsum Board For Bathrooms & Kitchen [8] | 11,052.24 |  |
| B17-V25~V32-1310 |  | Putty Filler For Gypsm Board Ceiling | 6d | 2025-09-28 | 2025-10-04 | B17-V25~V32-1300, B17-V17~V24-1310 | 0d |  | Putty Filler 1st Layer Roof all Rooms [8]; Putty Filler 1st Layer Roof all Bathrooms & Kitchen [8]; Putty Filler1st Layer walls [8] | 62,182.52 |  |
| B17-V25~V32-1320 |  | Fixing Shower Glass | 4d | 2025-10-05 | 2025-10-08 | B17-V25~V32-1310, B17-V17~V24-1320 | 7d | 0d | Shower Glass [8] | 22,372.88 |  |
| B17-V25~V32-1330 |  | Interior Wall Putty Filler | 6d | 2025-10-05 | 2025-10-11 | B17-V25~V32-1310, B17-V25~V32-1240, B17-V17~V24-1330 | 0d |  | Putty Filler 2ed Layer Roof & WAlls GF [8]; Putty Filler 2ed Layer Roof & WAlls FF [8] | 62,150.21 |  |
| B17-V25~V32-1340 |  | Installation Of Sanitry Fixture | 6d | 2025-10-09 | 2025-10-15 | B17-V25~V32-1320, B17-V17~V24-1340 | 7d | 0d | Mech Fixtures & Accessories [8] | 98,438.1 |  |
| B17-V25~V32-1350 |  | 1st Face Paint | 5d | 2025-10-12 | 2025-10-16 | B17-V25~V32-1330, B17-V17~V24-1350 | 0d |  |  |  |  |
| B17-V25~V32-1360 |  | Installation Of Aluminum Windows | 6d | 2025-10-12 | 2025-10-18 | B17-V25~V32-1330, B17-V17~V24-1360 | 9d | 0d | Aluminum Windows [8] | 84,797.8 |  |
| B17-V25~V32-1370 |  | Installation Of Elec Fixture & Accessories | 5d | 2025-10-12 | 2025-10-16 | B17-V25~V32-1310, B17-V25~V32-1330, B17-V25~V32-1260, B17-V17~V24-1370 | 19d | 1d | Elec Fixtures & Accessories Villa & Yard [8]; Elec Cables GF & FF & Earthing [8] | 53,694.88 |  |
| B17-V25~V32-1380 |  | Installation Of Water Tank-Heater & Pumps | 6d | 2025-10-16 | 2025-10-22 | B17-V25~V32-1340, B17-V25~V32-1220, B17-V17~V24-1380 | 7d | 0d | Water Tank & booster Pump [8]; Lower Pump [8]; Heater [8] | 129,730.28 |  |
| B17-V25~V32-1390 |  | Installation Of Parquet | 4d | 2025-10-18 | 2025-10-21 | B17-V25~V32-1350, B17-V17~V24-1390 | 0d |  | Installation Of Parquet [8] | 52,978.96 |  |
| B17-V25~V32-1400 |  | Installation Of Wooden Doors | 6d | 2025-10-22 | 2025-10-28 | B17-V25~V32-1390, B17-V17~V24-1400 | 0d |  | Wooden Doors Accessories all Villa [8]; Wooden Doors Kitchen & Bathroom without Accessories [8]; Exterior Wooden Doors [8] | 142,109.01 |  |
| B17-V25~V32-1410 |  | Final Face Paint | 6d | 2025-10-29 | 2025-11-04 | B17-V25~V32-1360, B17-V25~V32-1400, B17-V17~V24-1410 | 0d |  | Final Face Paint Villa [8] | 31,090.55 |  |

| ID | WBS | Activity | Duration | Start | Finish | Predecessors | Total float | Free float | Resources | Cost |
| --- | --- | --- | --- | --- | --- | --- | --- | --- | --- | --- |
|  | 3 | **Fence & Courtyard Works** |  | 2025-07-26 | 2025-10-23 |  |  |  |  |  |
| B17-V25~V32-1420 |  | Pouring Bedding Concrete For Fence Fondations | 2d | 2025-07-26 | 2025-07-27 | B17-V25~V32-1120, B17-V17~V24-1420 | 15d | 0d | Excavation Fence Foundations [8] | 4,519.28 |
| B17-V25~V32-1430 |  | RC Concrete For Fence Fondations | 5d | 2025-07-28 | 2025-08-02 | B17-V25~V32-1420, B17-V17~V24-1430 | 15d | 0d | Fence Fondations-Eastern side [8]; Fence Fondations-Westren side [8]; Fence Fondations-Back side [8] | 13,423.68 |
| B17-V25~V32-1440 |  | Steel Fixing & Carpentry For Fence Columns | 5d | 2025-08-03 | 2025-08-07 | B17-V25~V32-1430, B17-V17~V24-1440 | 15d | 0d |  |  |
| B17-V25~V32-1450 |  | Establishing Elec For Fence Columns | 4d | 2025-08-09 | 2025-08-12 | B17-V25~V32-1440, B17-V17~V24-1450 | 15d | 0d |  |  |
| B17-V25~V32-1460 |  | Pouring Concrete For Fence Columns | 1d | 2025-08-13 | 2025-08-13 | B17-V25~V32-1450, B17-V17~V24-1460 | 15d | 0d | Fence Columns-Eastern side [8]; Fence Columns-Westren side [8]; Fence Columns-Back side [8] | 9,665.04 |
| B17-V25~V32-1470 |  | Installation Precast Panel For Fence | 4d | 2025-08-14 | 2025-08-18 | B17-V25~V32-1460, B17-V17~V24-1470 | 15d | 0d | Hollow Core Walls [8] | 71,593.2 |
| B17-V25~V32-1480 |  | Bitumen Coating For Fence Fondations | 4d | 2025-08-19 | 2025-08-23 | B17-V25~V32-1470, B17-V17~V24-1480 | 15d | 0d |  |  |
| B17-V25~V32-1490 |  | Pouring Bedding Concrete For "Front" Fence Fondations | 1d | 2025-08-19 | 2025-08-19 | B17-V25~V32-1470, B17-V17~V24-1490 | 22d | 0d |  |  |
| B17-V25~V32-1500 |  | RC Concrete For "Front" Fence Fondations | 4d | 2025-08-20 | 2025-08-24 | B17-V25~V32-1490, B17-V17~V24-1500 | 22d | 0d | Front Fence Fondations [8] | 8,904.4 |
| B17-V25~V32-1510 |  | Outdoor Drainage & Water Line | 4d | 2025-08-24 | 2025-08-27 | B17-V25~V32-1480, B17-V25~V32-1140, B17-V17~V24-1510 | 15d | 0d | Outdoor Drainage [8]; Outdoor Water Line [8] | 13,423.68 |
| B17-V25~V32-1520 |  | Steel Fixing & Carpentry For "Front" Fence Columns | 4d | 2025-08-25 | 2025-08-28 | B17-V25~V32-1500, B17-V17~V24-1520 | 22d | 0d |  |  |
| B17-V25~V32-1530 |  | Establishing Elec For Fence & Yard | 2d | 2025-08-28 | 2025-08-30 | B17-V25~V32-1510, B17-V17~V24-1530 | 15d | 0d | Elec Establishment Fence & Yard [8] | 17,898.32 |
| B17-V25~V32-1540 |  | Establishing Elec For "Front" Fence Columns | 4d | 2025-08-30 | 2025-09-02 | B17-V25~V32-1520, B17-V17~V24-1540 | 22d | 0d |  |  |
| B17-V25~V32-1550 |  | Backfilling the Yard | 4d | 2025-08-31 | 2025-09-03 | B17-V25~V32-1530, B17-V17~V24-1550 | 15d | 0d | Backfilling the Yard [8] | 10,560 |
| B17-V25~V32-1560 |  | Pouring Concrete Wall Of "Front" Fence Columns | 2d | 2025-09-03 | 2025-09-04 | B17-V25~V32-1540, B17-V17~V24-1560 | 22d | 0d | Front Fence Walls [8] | 17,898.32 |
| B17-V25~V32-1570 |  | Bardoura Works For Yard | 4d | 2025-09-04 | 2025-09-08 | B17-V25~V32-1550, B17-V17~V24-1570 | 15d | 0d | Bardoura Works For Yard [8] | 14,408.16 |
| B17-V25~V32-1580 |  | Pouring Concrete Crown Of "Front" Fence Columns | 3d | 2025-09-06 | 2025-09-08 | B17-V25~V32-1560, B17-V17~V24-1580 | 22d | 0d | Fence Columns - C Chanel [8] | 3,310.37 |
| B17-V25~V32-1590 |  | Pouring Concrete Flower Basin Of "Front" Fence Columns | 4d | 2025-09-09 | 2025-09-13 | B17-V25~V32-1580, B17-V17~V24-1590 | 22d | 0d |  |  |
| B17-V25~V32-1600 |  | Antitermite Treatment For Yard | 1d | 2025-09-09 | 2025-09-09 | B17-V25~V32-1570, B17-V17~V24-1600 | 15d | 0d | Antitermite Treatment For Yard [8] |  |
| B17-V25~V32-1610 |  | Pouring Concrete For Yard | 1d | 2025-09-10 | 2025-09-10 | B17-V25~V32-1600, B17-V17~V24-1610 | 15d | 0d |  |  |
| B17-V25~V32-1620 |  | Block Work For Flower Basin | 4d | 2025-09-11 | 2025-09-15 | B17-V25~V32-1610, B17-V17~V24-1620 | 15d | 0d |  |  |
| B17-V25~V32-1630 |  | Plastering Work For Flower Basin | 4d | 2025-09-16 | 2025-09-20 | B17-V25~V32-1620, B17-V17~V24-1630 | 15d | 0d |  |  |
| B17-V25~V32-1640 |  | Interlock Works For The Yard | 4d | 2025-09-21 | 2025-09-24 | B17-V25~V32-1630, B17-V17~V24-1640 | 15d | 0d | Interlock Works For The Yard [8] | 36,785.52 |
| B17-V25~V32-1650 |  | External Grading Works For The Villa | 4d | 2025-09-25 | 2025-09-29 | B17-V25~V32-1640, B17-V17~V24-1650 | 17d | 0d | External Grading Works For The Villa [8] | 3,221.68 |
| B17-V25~V32-1660 |  | Fixing Floor Drain For The Yard | 2d | 2025-09-25 | 2025-09-27 | B17-V25~V32-1640, B17-V17~V24-1660 | 23d | 4d | Floor Drain & Clean Out [8] | 13,423.76 |
| B17-V25~V32-1670 |  | Granite Surronds Around The Villa | 4d | 2025-09-30 | 2025-10-04 | B17-V25~V32-1650, B17-V17~V24-1680 | 17d | 2d | Granite Surronds Around The Villa [8] | 25,818.32 |
| B17-V25~V32-1680 |  | Painting The Base Surface Of The Fence | 2d | 2025-09-30 | 2025-10-01 | B17-V25~V32-1750, B17-V17~V24-1690 | 15d | 0d |  |  |
| B17-V25~V32-1690 |  | Installation The Exterior Door & Garage Door | 5d | 2025-09-30 | 2025-10-05 | B17-V25~V32-1640, B17-V17~V24-1670 | 16d | 0d | Installation The Exterior Door [8]; Installation The Exterior Garage Door [8] | 40,002.72 |
| B17-V25~V32-1700 |  | Painting The Final Face Of The Fence | 4d | 2025-10-02 | 2025-10-06 | B17-V25~V32-1680, B17-V17~V24-1700 | 15d | 2d | Painting Final Face Of The Fence [8] | 37,586.48 |
| B17-V25~V32-1710 |  | Exterior Painting Of The Villa | 5d | 2025-10-14 | 2025-10-19 | B17-V25~V32-1670, B17-V25~V32-1700, B17-V25~V32-1690, B17-V25~V32-1660, B17-V17~V24-1710 | 9d | 0d | Exterior Painting Of The Villa [8]; Exterior Painting Staircase House [8] | 105,689.44 |
| B17-V25~V32-1720 |  | Installation Elec Fixtures & Accessories For The Yard | 4d | 2025-10-20 | 2025-10-23 | B17-V25~V32-1700, B17-V25~V32-1710, B17-V17~V24-1720 | 9d | 0d | Elec feeding panels GF & FF [8] | 22,372.88 |

| ID | WBS | Activity | Duration | Start | Finish | Predecessors | Total float | Free float | Resources | Cost | Department-1 |
| --- | --- | --- | --- | --- | --- | --- | --- | --- | --- | --- | --- |
|  | 5 | **External Sidewalk Works** |  | 2025-09-14 | 2025-10-28 |  |  |  |  |  |  |
| B17-V25~V32-1730 |  | Connection The Drain To The Piblic Network | 3d | 2025-09-14 | 2025-09-16 | B17-V25~V32-1510, B17-V25~V32-1590, B17-V17~V24-1730 | 22d | 3d | Connection Drain To The Piblic Network [8]; Connection Water To The Piblic Network [8] | 13,420.32 |  |
| B17-V25~V32-1740 |  | Pardora Works For The External Sidewalk | 2d | 2025-09-25 | 2025-09-27 | B17-V25~V32-1640, B17-V25~V32-1730, B17-V17~V24-1740 | 15d | 0d |  |  |  |
| B17-V25~V32-1750 |  | Interlock Works For The Exerrnal Sidewalk | 2d | 2025-09-28 | 2025-09-29 | B17-V25~V32-1740, B17-V17~V24-1750 | 15d | 0d |  |  |  |
| B17-V25~V32-1760 |  | Pulling The Villa's Main Elec Cable | 4d | 2025-10-25 | 2025-10-28 | B17-V25~V32-1750, B17-V25~V32-1720, B17-V17~V24-1760 | 9d | 0d | Elec Work Testing [8] | 22,819.84 |  |
|  | 6 | **Final Testing & Handover** |  | 2025-10-23 | 2025-11-15 |  |  |  |  |  |  |
| B17-V25~V32-1770 |  | Mech Work Testing & Handover | 5d | 2025-10-23 | 2025-10-28 | B17-V25~V32-1730, B17-V25~V32-1340, B17-V25~V32-1380, B17-V17~V24-1770 | 12d | 1d | Mech Work Testing & Handover [8] | 14,318.64 |  |
| B17-V25~V32-1780 |  | ElecWork Testing & Handover | 3d | 2025-10-29 | 2025-11-01 | B17-V25~V32-1760, B17-V25~V32-1370, B17-V17~V24-1790 | 9d | 2d | Elec Work Handover [8] | 23,804.12 |  |
| B17-V25~V32-1790 |  | Arch Snaglist & Handover | 4d | 2025-10-29 | 2025-11-02 | B17-V25~V32-1750, B17-V25~V32-1710, B17-V25~V32-1400, B17-V17~V24-1780 | 8d | 2d | Arch Snaglist & Handover [8] | 77,320.64 |  |
| B17-V25~V32-1800 |  | Final Handover Of The Villa To The Consltant | 4d | 2025-11-05 | 2025-11-09 | B17-V25~V32-1790, B17-V25~V32-1780, B17-V25~V32-1770, B17-V25~V32-1410, B17-V17~V24-1800 | 6d | 0d |  |  |  |
| B17-V25~V32-1810 |  | Customer Delivery | 5d | 2025-11-10 | 2025-11-15 | B17-V25~V32-1800, B17-V17~V24-1810 | 6d | 1d |  |  |  |
|  | 4 | **B18-V01~V08** |  | 2025-04-07 | 2025-11-22 |  |  |  |  |  |  |
|  | 2 | **Under Grond Slap Works** |  | 2025-04-07 | 2025-05-17 |  |  |  |  |  |  |
| B18-V01~V08-1000 |  | Excavation&Compaction of Fondation | 6d | 2025-04-07 | 2025-04-13 | B17-V25~V32-1000 | 59d | 0d | Clearing & Groubbing [8]; Excavation & Leveling [8]; Stone Layer [8]; A3 Layer [8]; A1-a 1st Layer [8]; A1-a 2ed Layer [8] | 163,545.76 | Civil |
| B18-V01~V08-1010 |  | Pouring Concrete For Bedding | 2d | 2025-04-14 | 2025-04-15 | B18-V01~V08-1000, B17-V25~V32-1010 | 59d | 0d | PC Carpentry [8]; PC Concrete [8]; RC 18 MPA [9 M3] | 37,899.68 | Civil |
| B18-V01~V08-1020 |  | Reinforcement Concrete For Foundation | 5d | 2025-04-16 | 2025-04-21 | B18-V01~V08-1010, B17-V25~V32-1020 | 59d | 0d | RC Foundation Carpentry [8]; RC Foundation Steel [8]; RC Foundation Concrete [8] | 201,355.92 | Civil |
| B18-V01~V08-1030 |  | Steel Fixing& Carpenter work for Beams | 4d | 2025-04-22 | 2025-04-26 | B18-V01~V08-1020, B17-V25~V32-1030 | 59d | 0d | RC Grade Beam Carpentry & Steel [8] | 44,745.76 | Civil |
| B18-V01~V08-1040 |  | Mech&Elec Establishment for Beams | 3d | 2025-04-27 | 2025-04-29 | B18-V01~V08-1030, B17-V25~V32-1040 | 59d | 0d |  |  | Mech |
| B18-V01~V08-1050 |  | Pouring Concrete For Beams | 1d | 2025-04-30 | 2025-04-30 | B18-V01~V08-1040, B17-V25~V32-1050 | 59d | 0d | RC Grade Beam Concrete [8] | 77,141.68 | Civil |
| B18-V01~V08-1060 |  | Bitmen Coating For Fondation&Beams | 3d | 2025-05-01 | 2025-05-04 | B18-V01~V08-1050, B17-V25~V32-1060 | 59d | 0d | Bitumen Coating Foundations & Grade Beams [8] | 22,372.32 | Civil |
| B18-V01~V08-1070 |  | Backfilling Inside Fondations | 4d | 2025-05-05 | 2025-05-08 | B18-V01~V08-1060, B17-V25~V32-1070 | 59d | 0d | Backfilling 1st Layer [8]; Backfilling 2ed Layer [8] | 11,186.4 | Civil |
| B18-V01~V08-1080 |  | Mech Works Under Grond Slap | 3d | 2025-05-10 | 2025-05-12 | B18-V01~V08-1070, B17-V25~V32-1080 | 59d | 0d | Mech Establishment Under Ground Slap [8] | 13,423.42 | Mech |
| B18-V01~V08-1090 |  | Steel Fixing& Carpenter work for Ground Slap | 3d | 2025-05-13 | 2025-05-15 | B18-V01~V08-1080, B17-V25~V32-1090 | 59d | 0d | Steel & Carpentry For Ground Slap [8] | 10,246.54 | Civil |
| B18-V01~V08-1100 |  | Anti Termite Treatment For Ground Slap | 1d | 2025-05-17 | 2025-05-17 | B18-V01~V08-1090, B17-V25~V32-1100 | 59d | 0d | Anti Termite Treatment nder Ground Slap [8] | 2,237.28 | Civil |
| B18-V01~V08-1110 |  | Pouring Concrete For Ground Slap | 1d | 2025-05-17 | 2025-05-17 | B18-V01~V08-1100 FF, B18-V01~V08-1090, B17-V25~V32-1110 | 59d | 5d | Concrete For Ground Slap [8] | 58,169.52 | Civil |

| ID | WBS | Activity | Duration | Start | Finish | Predecessors | Total float | Free float | Resources | Cost | Department-1 |
| --- | --- | --- | --- | --- | --- | --- | --- | --- | --- | --- | --- |
|  | 4 | **Precast Works** |  | 2025-07-26 | 2025-07-31 |  |  |  |  |  |  |
| B18-V01~V08-1120 |  | Precast Constrction | 6d | 2025-07-26 | 2025-07-31 | B18-V01~V08-1110, B17-V25~V32-1120 | 0d |  | Precast Walls GF [8]; Hollow Core Slap GF [8]; Precast Stairs & staircase House [8]; Thermal insollation Outside Walls [8]; Concrete structure joints [8]; Precast Walls FF [8]; Hollow Core Slap FF [8] | 1,513,460.1 | Civil |
|  | 1 | **Works Inside The Villa** |  | 2025-08-02 | 2025-11-11 |  |  |  |  |  |  |
| B18-V01~V08-1130 |  | Block Work For GF & Estabishment 1F | 6d | 2025-08-02 | 2025-08-07 | B18-V01~V08-1120, B17-V25~V32-1130 | 0d |  | Block GF [8] | 13,647.1 | Arc |
| B18-V01~V08-1140 |  | L.L & H.L Drainage | 6d | 2025-08-09 | 2025-08-14 | B18-V01~V08-1130, B17-V25~V32-1140 | 0d |  | HL Drainage [8]; L.L Drainage [8] | 89,489.28 | Mech |
| B18-V01~V08-1150 |  | Elec Establishment For GF & 1F | 3d | 2025-08-09 | 2025-08-11 | B18-V01~V08-1130, B17-V25~V32-1150 | 3d |  | Elec Establishment GF [8] | 26,840.73 | Elec |
| B18-V01~V08-1160 |  | Screed Work For 1F & Roof | 6d | 2025-08-16 | 2025-08-21 | B18-V01~V08-1140, B18-V01~V08-1150, B17-V25~V32-1160 | 0d |  | Screed 1st Floor [8]; Screed Roof Floor [8]; Leveling Screed 1st Floor [8]; Leveling Screed Roof Floor [8] | 268,467.85 | Civil |
| B18-V01~V08-1170 |  | Water Tank & Heater Foundations | 4d | 2025-08-23 | 2025-08-26 | B18-V01~V08-1160, B17-V25~V32-1170 | 4d | 0d |  |  | Civil |
| B18-V01~V08-1180 |  | Block Works For 1F | 3d | 2025-08-23 | 2025-08-25 | B18-V01~V08-1160, B17-V25~V32-1180 | 0d |  | Block FF [8] | 20,537.81 | Arc |
| B18-V01~V08-1190 |  | Water Line Network | 6d | 2025-08-26 | 2025-09-01 | B18-V01~V08-1180, B17-V25~V32-1190 | 0d |  | Water Line Network [8] | 40,261.13 | Mech |
| B18-V01~V08-1200 |  | Continue Elec Establishment For GF & 1F | 3d | 2025-08-26 | 2025-08-28 | B18-V01~V08-1180, B17-V25~V32-1200 | 3d |  | Elec Establishment FF [8] | 26,840.73 | Elec |
| B18-V01~V08-1210 |  | Thermal Insulation For Roof | 5d | 2025-08-27 | 2025-09-01 | B18-V01~V08-1170, B17-V25~V32-1210 | 4d | 0d | Roof Insulation [8] | 32,530.16 | Arc |
| B18-V01~V08-1220 |  | Roof Floor Tiles | 6d | 2025-09-02 | 2025-09-08 | B18-V01~V08-1210, B17-V25~V32-1220 | 4d | 0d | Roof Tiles [8]; Roof Tiles Joints [8]; Re_Test Roof Insulation [8] | 63,179.38 | Arc |
| B18-V01~V08-1230 |  | Plaster Work For Villa | 6d | 2025-09-02 | 2025-09-08 | B18-V01~V08-1190, B18-V01~V08-1200, B17-V25~V32-1230 | 0d |  | Establishing a plastering GF [8]; Establishing a plastering FF [8]; Plastering GF [8]; Plastering FF [8] | 49,263.81 |  |
| B18-V01~V08-1240 |  | Marbale Stairs & Handrails | 6d | 2025-09-09 | 2025-09-15 | B18-V01~V08-1230, B17-V25~V32-1240 | 22d | 0d | Marbale Stairs [8]; Stairs Handrails SS [8] | 91,494.69 |  |
| B18-V01~V08-1250 |  | Water Proofing Of Bathrooms | 4d | 2025-09-09 | 2025-09-13 | B18-V01~V08-1230, B17-V25~V32-1250 | 0d |  | Bathrooms InsulationGF & FF [8] | 134.24 |  |
| B18-V01~V08-1260 |  | Pulling The Elec Wires | 4d | 2025-09-09 | 2025-09-13 | B18-V01~V08-1230, B17-V25~V32-1260 | 10d | 2d | Elec Wires GF [8]; Elec Wires FF [8] | 80,542.4 |  |
| B18-V01~V08-1270 |  | Bathroom Tiles | 4d | 2025-09-14 | 2025-09-17 | B18-V01~V08-1250, B18-V01~V08-1220, B17-V25~V32-1270 | 0d |  | Ceramic Walls Kitchen [8]; Ceramic Walls Bathrooms GF [8]; Ceramic Walls Bathrooms FF [8]; Ceramic Tiles Bathrooms GF [8]; Ceramic Tiles Kitchen GF [8]; Ceramic Tiles Store GF [8] | 73,204.08 |  |
| B18-V01~V08-1280 |  | Structure For Gypsum | 6d | 2025-09-18 | 2025-09-24 | B18-V01~V08-1270, B17-V25~V32-1280 | 0d |  | Structure For Gypsum GF Rooms [8]; Structure For Gypsum FF Rooms [8]; Structure For Gypsum Bathrooms & Kitchen [8] | 33,550.81 |  |
| B18-V01~V08-1290 |  | Gypsum Board For Room | 4d | 2025-09-25 | 2025-09-29 | B18-V01~V08-1280, B18-V01~V08-1260, B17-V25~V32-1290 | 0d |  | Gypsum Board For GF Room [8]; Gypsum Board For FF Room [8] | 35,796.64 |  |
| B18-V01~V08-1300 |  | Installation Of Gypsum Board For Bathroom & Kitchen | 4d | 2025-09-30 | 2025-10-04 | B18-V01~V08-1290, B17-V25~V32-1300 | 0d |  | Gypsum Board For Bathrooms & Kitchen [8] | 11,052.24 |  |
| B18-V01~V08-1310 |  | Putty Filler For Gypsm Board Ceiling | 6d | 2025-10-05 | 2025-10-11 | B18-V01~V08-1300, B17-V25~V32-1310 | 0d |  | Putty Filler 1st Layer Roof all Rooms [8]; Putty Filler 1st Layer Roof all Bathrooms & Kitchen [8]; Putty Filler1st Layer walls [8] | 62,182.52 |  |
| B18-V01~V08-1320 |  | Fixing Shower Glass | 4d | 2025-10-12 | 2025-10-15 | B18-V01~V08-1310, B17-V25~V32-1320 | 7d | 0d | Shower Glass [8] | 22,372.88 |  |
| B18-V01~V08-1330 |  | Interior Wall Putty Filler | 6d | 2025-10-12 | 2025-10-18 | B18-V01~V08-1310, B18-V01~V08-1240, B17-V25~V32-1330 | 0d |  | Putty Filler 2ed Layer Roof & WAlls GF [8]; Putty Filler 2ed Layer Roof & WAlls FF [8] | 62,150.21 |  |
| B18-V01~V08-1340 |  | Installation Of Sanitry Fixture | 6d | 2025-10-16 | 2025-10-22 | B18-V01~V08-1320, B17-V25~V32-1340 | 7d | 0d | Mech Fixtures & Accessories [8] | 98,438.1 |  |
| B18-V01~V08-1350 |  | 1st Face Paint | 5d | 2025-10-19 | 2025-10-23 | B18-V01~V08-1330, B17-V25~V32-1350 | 0d |  |  |  |  |
| B18-V01~V08-1360 |  | Installation Of Aluminum Windows | 6d | 2025-10-19 | 2025-10-25 | B18-V01~V08-1330, B17-V25~V32-1360 | 9d | 0d | Aluminum Windows [8] | 84,797.8 |  |
| B18-V01~V08-1370 |  | Installation Of Elec Fixture & Accessories | 5d | 2025-10-19 | 2025-10-23 | B18-V01~V08-1310, B18-V01~V08-1330, B18-V01~V08-1260, B17-V25~V32-1370 | 18d | 1d | Elec Fixtures & Accessories Villa & Yard [8]; Elec Cables GF & FF & Earthing [8] | 53,694.88 |  |
| B18-V01~V08-1380 |  | Installation Of Water Tank-Heater & Pumps | 6d | 2025-10-23 | 2025-10-29 | B18-V01~V08-1340, B18-V01~V08-1220, B17-V25~V32-1380 | 7d | 0d | Water Tank & booster Pump [8]; Lower Pump [8]; Heater [8] | 129,730.28 |  |
| B18-V01~V08-1390 |  | Installation Of Parquet | 4d | 2025-10-25 | 2025-10-28 | B18-V01~V08-1350, B17-V25~V32-1390 | 0d |  | Installation Of Parquet [8] | 52,978.96 |  |
| B18-V01~V08-1400 |  | Installation Of Wooden Doors | 6d | 2025-10-29 | 2025-11-04 | B18-V01~V08-1390, B17-V25~V32-1400 | 0d |  | Wooden Doors Accessories all Villa [8]; Wooden Doors Kitchen & Bathroom without Accessories [8]; Exterior Wooden Doors [8] | 142,109.01 |  |
| B18-V01~V08-1410 |  | Final Face Paint | 6d | 2025-11-05 | 2025-11-11 | B18-V01~V08-1360, B18-V01~V08-1400, B17-V25~V32-1410 | 0d |  | Final Face Paint Villa [8] | 31,090.55 |  |

| ID | WBS | Activity | Duration | Start | Finish | Predecessors | Total float | Free float | Resources | Cost |
| --- | --- | --- | --- | --- | --- | --- | --- | --- | --- | --- |
|  | 3 | **Fence & Courtyard Works** |  | 2025-08-02 | 2025-10-29 |  |  |  |  |  |
| B18-V01~V08-1420 |  | Pouring Bedding Concrete For Fence Fondations | 2d | 2025-08-02 | 2025-08-03 | B18-V01~V08-1120, B17-V25~V32-1420 | 14d | 0d | Excavation Fence Foundations [8] | 4,519.28 |
| B18-V01~V08-1430 |  | RC Concrete For Fence Fondations | 5d | 2025-08-04 | 2025-08-09 | B18-V01~V08-1420, B17-V25~V32-1430 | 14d | 0d | Fence Fondations-Eastern side [8]; Fence Fondations-Westren side [8]; Fence Fondations-Back side [8] | 13,423.68 |
| B18-V01~V08-1440 |  | Steel Fixing & Carpentry For Fence Columns | 5d | 2025-08-10 | 2025-08-14 | B18-V01~V08-1430, B17-V25~V32-1440 | 14d | 0d |  |  |
| B18-V01~V08-1450 |  | Establishing Elec For Fence Columns | 4d | 2025-08-16 | 2025-08-19 | B18-V01~V08-1440, B17-V25~V32-1450 | 14d | 0d |  |  |
| B18-V01~V08-1460 |  | Pouring Concrete For Fence Columns | 1d | 2025-08-20 | 2025-08-20 | B18-V01~V08-1450, B17-V25~V32-1460 | 14d | 0d | Fence Columns-Eastern side [8]; Fence Columns-Westren side [8]; Fence Columns-Back side [8] | 9,665.04 |
| B18-V01~V08-1470 |  | Installation Precast Panel For Fence | 4d | 2025-08-21 | 2025-08-25 | B18-V01~V08-1460, B17-V25~V32-1470 | 14d | 0d | Hollow Core Walls [8] | 71,593.2 |
| B18-V01~V08-1480 |  | Bitumen Coating For Fence Fondations | 4d | 2025-08-26 | 2025-08-30 | B18-V01~V08-1470, B17-V25~V32-1480 | 14d | 0d |  |  |
| B18-V01~V08-1490 |  | Pouring Bedding Concrete For "Front" Fence Fondations | 1d | 2025-08-26 | 2025-08-26 | B18-V01~V08-1470, B17-V25~V32-1490 | 21d | 0d |  |  |
| B18-V01~V08-1500 |  | RC Concrete For "Front" Fence Fondations | 4d | 2025-08-27 | 2025-08-31 | B18-V01~V08-1490, B17-V25~V32-1500 | 21d | 0d | Front Fence Fondations [8] | 8,904.4 |
| B18-V01~V08-1510 |  | Outdoor Drainage & Water Line | 4d | 2025-08-31 | 2025-09-03 | B18-V01~V08-1480, B18-V01~V08-1140, B17-V25~V32-1510 | 14d | 0d | Outdoor Drainage [8]; Outdoor Water Line [8] | 13,423.68 |
| B18-V01~V08-1520 |  | Steel Fixing & Carpentry For "Front" Fence Columns | 4d | 2025-09-01 | 2025-09-04 | B18-V01~V08-1500, B17-V25~V32-1520 | 21d | 0d |  |  |
| B18-V01~V08-1530 |  | Establishing Elec For Fence & Yard | 2d | 2025-09-04 | 2025-09-06 | B18-V01~V08-1510, B17-V25~V32-1530 | 14d | 0d | Elec Establishment Fence & Yard [8] | 17,898.32 |
| B18-V01~V08-1540 |  | Establishing Elec For "Front" Fence Columns | 4d | 2025-09-06 | 2025-09-09 | B18-V01~V08-1520, B17-V25~V32-1540 | 21d | 0d |  |  |
| B18-V01~V08-1550 |  | Backfilling the Yard | 4d | 2025-09-07 | 2025-09-10 | B18-V01~V08-1530, B17-V25~V32-1550 | 14d | 0d | Backfilling the Yard [8] | 10,560 |
| B18-V01~V08-1560 |  | Pouring Concrete Wall Of "Front" Fence Columns | 2d | 2025-09-10 | 2025-09-11 | B18-V01~V08-1540, B17-V25~V32-1560 | 21d | 0d | Front Fence Walls [8] | 17,898.32 |
| B18-V01~V08-1570 |  | Bardoura Works For Yard | 4d | 2025-09-11 | 2025-09-15 | B18-V01~V08-1550, B17-V25~V32-1570 | 14d | 0d | Bardoura Works For Yard [8] | 14,408.16 |
| B18-V01~V08-1580 |  | Pouring Concrete Crown Of "Front" Fence Columns | 3d | 2025-09-13 | 2025-09-15 | B18-V01~V08-1560, B17-V25~V32-1580 | 21d | 0d | Fence Columns - C Chanel [8] | 3,310.37 |
| B18-V01~V08-1590 |  | Pouring Concrete Flower Basin Of "Front" Fence Columns | 4d | 2025-09-16 | 2025-09-20 | B18-V01~V08-1580, B17-V25~V32-1590 | 21d | 0d |  |  |
| B18-V01~V08-1600 |  | Antitermite Treatment For Yard | 1d | 2025-09-16 | 2025-09-16 | B18-V01~V08-1570, B17-V25~V32-1600 | 14d | 0d | Antitermite Treatment For Yard [8] |  |
| B18-V01~V08-1610 |  | Pouring Concrete For Yard | 1d | 2025-09-17 | 2025-09-17 | B18-V01~V08-1600, B17-V25~V32-1610 | 14d | 0d |  |  |
| B18-V01~V08-1620 |  | Block Work For Flower Basin | 4d | 2025-09-18 | 2025-09-22 | B18-V01~V08-1610, B17-V25~V32-1620 | 14d | 0d |  |  |
| B18-V01~V08-1630 |  | Plastering Work For Flower Basin | 4d | 2025-09-23 | 2025-09-27 | B18-V01~V08-1620, B17-V25~V32-1630 | 14d | 0d |  |  |
| B18-V01~V08-1640 |  | Interlock Works For The Yard | 4d | 2025-09-28 | 2025-10-01 | B18-V01~V08-1630, B17-V25~V32-1640 | 14d | 0d | Interlock Works For The Yard [8] | 36,785.52 |
| B18-V01~V08-1650 |  | External Grading Works For The Villa | 4d | 2025-10-02 | 2025-10-06 | B18-V01~V08-1640, B17-V25~V32-1650 | 16d | 0d | External Grading Works For The Villa [8] | 3,221.68 |
| B18-V01~V08-1660 |  | Fixing Floor Drain For The Yard | 2d | 2025-10-02 | 2025-10-04 | B18-V01~V08-1640, B17-V25~V32-1660 | 22d | 4d | Floor Drain & Clean Out [8] | 13,423.76 |
| B18-V01~V08-1670 |  | Installation The Exterior Door & Garage Door | 5d | 2025-10-06 | 2025-10-11 | B18-V01~V08-1640, B17-V25~V32-1690 | 16d | 0d | Installation The Exterior Door [8]; Installation The Exterior Garage Door [8] | 40,002.72 |
| B18-V01~V08-1680 |  | Granite Surronds Around The Villa | 4d | 2025-10-07 | 2025-10-11 | B18-V01~V08-1650, B17-V25~V32-1670 | 16d | 2d | Granite Surronds Around The Villa [8] | 25,818.32 |
| B18-V01~V08-1690 |  | Painting The Base Surface Of The Fence | 2d | 2025-10-07 | 2025-10-08 | B18-V01~V08-1750, B17-V25~V32-1680 | 14d | 0d |  |  |
| B18-V01~V08-1700 |  | Painting The Final Face Of The Fence | 4d | 2025-10-09 | 2025-10-13 | B18-V01~V08-1690, B17-V25~V32-1700 | 14d | 2d | Painting Final Face Of The Fence [8] | 37,586.48 |
| B18-V01~V08-1710 |  | Exterior Painting Of The Villa | 5d | 2025-10-20 | 2025-10-25 | B18-V01~V08-1680, B18-V01~V08-1700, B18-V01~V08-1670, B18-V01~V08-1660, B17-V25~V32-1710 | 9d | 0d | Exterior Painting Of The Villa [8]; Exterior Painting Staircase House [8] | 105,689.44 |
| B18-V01~V08-1720 |  | Installation Elec Fixtures & Accessories For The Yard | 4d | 2025-10-26 | 2025-10-29 | B18-V01~V08-1700, B18-V01~V08-1710, B17-V25~V32-1720 | 9d | 0d | Elec feeding panels GF & FF [8] | 22,372.88 |

| ID | WBS | Activity | Duration | Start | Finish | Predecessors | Total float | Free float | Resources | Cost | Department-1 |
| --- | --- | --- | --- | --- | --- | --- | --- | --- | --- | --- | --- |
|  | 5 | **External Sidewalk Works** |  | 2025-09-21 | 2025-11-03 |  |  |  |  |  |  |
| B18-V01~V08-1730 |  | Connection The Drain To The Piblic Network | 3d | 2025-09-21 | 2025-09-23 | B18-V01~V08-1510, B18-V01~V08-1590, B17-V25~V32-1730 | 21d | 3d | Connection Drain To The Piblic Network [8]; Connection Water To The Piblic Network [8] | 13,420.32 |  |
| B18-V01~V08-1740 |  | Pardora Works For The External Sidewalk | 2d | 2025-10-02 | 2025-10-04 | B18-V01~V08-1640, B18-V01~V08-1730, B17-V25~V32-1740 | 14d | 0d |  |  |  |
| B18-V01~V08-1750 |  | Interlock Works For The Exerrnal Sidewalk | 2d | 2025-10-05 | 2025-10-06 | B18-V01~V08-1740, B17-V25~V32-1750 | 14d | 0d |  |  |  |
| B18-V01~V08-1760 |  | Pulling The Villa's Main Elec Cable | 4d | 2025-10-30 | 2025-11-03 | B18-V01~V08-1750, B18-V01~V08-1720, B17-V25~V32-1760 | 9d | 0d | Elec Work Testing [8] | 22,819.84 |  |
|  | 6 | **Final Testing & Handover** |  | 2025-10-30 | 2025-11-22 |  |  |  |  |  |  |
| B18-V01~V08-1770 |  | Mech Work Testing & Handover | 5d | 2025-10-30 | 2025-11-04 | B18-V01~V08-1730, B18-V01~V08-1340, B18-V01~V08-1380, B17-V25~V32-1770 | 11d | 1d | Mech Work Testing & Handover [8] | 14,318.64 |  |
| B18-V01~V08-1780 |  | ElecWork Testing & Handover | 3d | 2025-11-04 | 2025-11-06 | B18-V01~V08-1760, B18-V01~V08-1370, B17-V25~V32-1780 | 9d | 2d | Elec Work Handover [8] | 23,804.12 |  |
| B18-V01~V08-1790 |  | Arch Snaglist & Handover | 4d | 2025-11-05 | 2025-11-09 | B18-V01~V08-1750, B18-V01~V08-1710, B18-V01~V08-1400, B17-V25~V32-1790 | 7d | 2d | Arch Snaglist & Handover [8] | 77,320.64 |  |
| B18-V01~V08-1800 |  | Final Handover Of The Villa To The Consltant | 4d | 2025-11-12 | 2025-11-16 | B18-V01~V08-1790, B18-V01~V08-1780, B18-V01~V08-1770, B18-V01~V08-1410, B17-V25~V32-1800 | 5d | 0d |  |  |  |
| B18-V01~V08-1810 |  | Customer Delivery | 5d | 2025-11-17 | 2025-11-22 | B18-V01~V08-1800, B17-V25~V32-1810 | 5d | 1d |  |  |  |
|  | 5 | **B18-V09~V16** |  | 2025-04-14 | 2025-11-29 |  |  |  |  |  |  |
|  | 2 | **Under Grond Slap Works** |  | 2025-04-14 | 2025-05-24 |  |  |  |  |  |  |
| B18-V09~V16-1000 |  | Excavation&Compaction of Fondation | 6d | 2025-04-14 | 2025-04-20 | B18-V01~V08-1000 | 59d | 0d | Clearing & Groubbing [8]; Excavation & Leveling [8]; Stone Layer [8]; A3 Layer [8]; A1-a 1st Layer [8]; A1-a 2ed Layer [8] | 163,545.76 | Civil |
| B18-V09~V16-1010 |  | Pouring Concrete For Bedding | 2d | 2025-04-21 | 2025-04-22 | B18-V09~V16-1000, B18-V01~V08-1010 | 59d | 0d | PC Carpentry [8]; PC Concrete [8]; RC 18 MPA [9 M3] | 37,899.68 | Civil |
| B18-V09~V16-1020 |  | Reinforcement Concrete For Foundation | 5d | 2025-04-23 | 2025-04-28 | B18-V09~V16-1010, B18-V01~V08-1020 | 59d | 0d | RC Foundation Carpentry [8]; RC Foundation Steel [8]; RC Foundation Concrete [8] | 201,355.92 | Civil |
| B18-V09~V16-1030 |  | Steel Fixing& Carpenter work for Beams | 4d | 2025-04-29 | 2025-05-03 | B18-V09~V16-1020, B18-V01~V08-1030 | 59d | 0d | RC Grade Beam Carpentry & Steel [8] | 44,745.76 | Civil |
| B18-V09~V16-1040 |  | Mech&Elec Establishment for Beams | 3d | 2025-05-04 | 2025-05-06 | B18-V09~V16-1030, B18-V01~V08-1040 | 59d | 0d |  |  | Mech |
| B18-V09~V16-1050 |  | Pouring Concrete For Beams | 1d | 2025-05-07 | 2025-05-07 | B18-V09~V16-1040, B18-V01~V08-1050 | 59d | 0d | RC Grade Beam Concrete [8] | 77,141.68 | Civil |
| B18-V09~V16-1060 |  | Bitmen Coating For Fondation&Beams | 3d | 2025-05-08 | 2025-05-11 | B18-V09~V16-1050, B18-V01~V08-1060 | 59d | 0d | Bitumen Coating Foundations & Grade Beams [8] | 22,372.32 | Civil |
| B18-V09~V16-1070 |  | Backfilling Inside Fondations | 4d | 2025-05-12 | 2025-05-15 | B18-V09~V16-1060, B18-V01~V08-1070 | 59d | 0d | Backfilling 1st Layer [8]; Backfilling 2ed Layer [8] | 11,186.4 | Civil |
| B18-V09~V16-1080 |  | Mech Works Under Grond Slap | 3d | 2025-05-17 | 2025-05-19 | B18-V09~V16-1070, B18-V01~V08-1080 | 59d | 0d | Mech Establishment Under Ground Slap [8] | 13,423.42 | Mech |
| B18-V09~V16-1090 |  | Steel Fixing& Carpenter work for Ground Slap | 3d | 2025-05-20 | 2025-05-22 | B18-V09~V16-1080, B18-V01~V08-1090 | 59d | 0d | Steel & Carpentry For Ground Slap [8] | 10,246.54 | Civil |
| B18-V09~V16-1100 |  | Anti Termite Treatment For Ground Slap | 1d | 2025-05-24 | 2025-05-24 | B18-V09~V16-1090, B18-V01~V08-1100 | 59d | 0d | Anti Termite Treatment nder Ground Slap [8] | 2,237.28 | Civil |
| B18-V09~V16-1110 |  | Pouring Concrete For Ground Slap | 1d | 2025-05-24 | 2025-05-24 | B18-V09~V16-1100 FF, B18-V09~V16-1090, B18-V01~V08-1110 | 59d | 5d | Concrete For Ground Slap [8] | 58,169.52 | Civil |

| ID | WBS | Activity | Duration | Start | Finish | Predecessors | Total float | Free float | Resources | Cost | Department-1 |
| --- | --- | --- | --- | --- | --- | --- | --- | --- | --- | --- | --- |
|  | 4 | **Precast Works** |  | 2025-08-02 | 2025-08-07 |  |  |  |  |  |  |
| B18-V09~V16-1120 |  | Precast Constrction | 6d | 2025-08-02 | 2025-08-07 | B18-V09~V16-1110, B18-V01~V08-1120 | 0d |  | Precast Walls GF [8]; Hollow Core Slap GF [8]; Precast Stairs & staircase House [8]; Thermal insollation Outside Walls [8]; Concrete structure joints [8]; Precast Walls FF [8]; Hollow Core Slap FF [8] | 1,513,460.1 | Civil |
|  | 1 | **Works Inside The Villa** |  | 2025-08-09 | 2025-11-18 |  |  |  |  |  |  |
| B18-V09~V16-1130 |  | Block Work For GF & Estabishment 1F | 6d | 2025-08-09 | 2025-08-14 | B18-V09~V16-1120, B18-V01~V08-1130 | 0d |  | Block GF [8] | 13,647.1 | Arc |
| B18-V09~V16-1140 |  | L.L & H.L Drainage | 6d | 2025-08-16 | 2025-08-21 | B18-V09~V16-1130, B18-V01~V08-1140 | 0d |  | HL Drainage [8]; L.L Drainage [8] | 89,489.28 | Mech |
| B18-V09~V16-1150 |  | Elec Establishment For GF & 1F | 3d | 2025-08-16 | 2025-08-18 | B18-V09~V16-1130, B18-V01~V08-1150 | 3d |  | Elec Establishment GF [8] | 26,840.73 | Elec |
| B18-V09~V16-1160 |  | Screed Work For 1F & Roof | 6d | 2025-08-23 | 2025-08-28 | B18-V09~V16-1140, B18-V09~V16-1150, B18-V01~V08-1160 | 0d |  | Screed 1st Floor [8]; Screed Roof Floor [8]; Leveling Screed 1st Floor [8]; Leveling Screed Roof Floor [8] | 268,467.85 | Civil |
| B18-V09~V16-1170 |  | Water Tank & Heater Foundations | 4d | 2025-08-30 | 2025-09-02 | B18-V09~V16-1160, B18-V01~V08-1170 | 4d | 0d |  |  | Civil |
| B18-V09~V16-1180 |  | Block Works For 1F | 3d | 2025-08-30 | 2025-09-01 | B18-V09~V16-1160, B18-V01~V08-1180 | 0d |  | Block FF [8] | 20,537.81 | Arc |
| B18-V09~V16-1190 |  | Water Line Network | 6d | 2025-09-02 | 2025-09-08 | B18-V09~V16-1180, B18-V01~V08-1190 | 0d |  | Water Line Network [8] | 40,261.13 | Mech |
| B18-V09~V16-1200 |  | Continue Elec Establishment For GF & 1F | 3d | 2025-09-02 | 2025-09-04 | B18-V09~V16-1180, B18-V01~V08-1200 | 3d |  | Elec Establishment FF [8] | 26,840.73 | Elec |
| B18-V09~V16-1210 |  | Thermal Insulation For Roof | 5d | 2025-09-03 | 2025-09-08 | B18-V09~V16-1170, B18-V01~V08-1210 | 4d | 0d | Roof Insulation [8] | 32,530.16 | Arc |
| B18-V09~V16-1220 |  | Roof Floor Tiles | 6d | 2025-09-09 | 2025-09-15 | B18-V09~V16-1210, B18-V01~V08-1220 | 4d | 0d | Roof Tiles [8]; Roof Tiles Joints [8]; Re_Test Roof Insulation [8] | 63,179.38 | Arc |
| B18-V09~V16-1230 |  | Plaster Work For Villa | 6d | 2025-09-09 | 2025-09-15 | B18-V09~V16-1190, B18-V09~V16-1200, B18-V01~V08-1230 | 0d |  | Establishing a plastering GF [8]; Establishing a plastering FF [8]; Plastering GF [8]; Plastering FF [8] | 49,263.81 |  |
| B18-V09~V16-1240 |  | Marbale Stairs & Handrails | 6d | 2025-09-16 | 2025-09-22 | B18-V09~V16-1230, B18-V01~V08-1240 | 22d | 0d | Marbale Stairs [8]; Stairs Handrails SS [8] | 91,494.69 |  |
| B18-V09~V16-1250 |  | Water Proofing Of Bathrooms | 4d | 2025-09-16 | 2025-09-20 | B18-V09~V16-1230, B18-V01~V08-1250 | 0d |  | Bathrooms InsulationGF & FF [8] | 134.24 |  |
| B18-V09~V16-1260 |  | Pulling The Elec Wires | 4d | 2025-09-16 | 2025-09-20 | B18-V09~V16-1230, B18-V01~V08-1260 | 10d | 2d | Elec Wires GF [8]; Elec Wires FF [8] | 80,542.4 |  |
| B18-V09~V16-1270 |  | Bathroom Tiles | 4d | 2025-09-21 | 2025-09-24 | B18-V09~V16-1250, B18-V09~V16-1220, B18-V01~V08-1270 | 0d |  | Ceramic Walls Kitchen [8]; Ceramic Walls Bathrooms GF [8]; Ceramic Walls Bathrooms FF [8]; Ceramic Tiles Bathrooms GF [8]; Ceramic Tiles Kitchen GF [8]; Ceramic Tiles Store GF [8] | 73,204.08 |  |
| B18-V09~V16-1280 |  | Structure For Gypsum | 6d | 2025-09-25 | 2025-10-01 | B18-V09~V16-1270, B18-V01~V08-1280 | 0d |  | Structure For Gypsum GF Rooms [8]; Structure For Gypsum FF Rooms [8]; Structure For Gypsum Bathrooms & Kitchen [8] | 33,550.81 |  |
| B18-V09~V16-1290 |  | Gypsum Board For Room | 4d | 2025-10-02 | 2025-10-06 | B18-V09~V16-1280, B18-V09~V16-1260, B18-V01~V08-1290 | 0d |  | Gypsum Board For GF Room [8]; Gypsum Board For FF Room [8] | 35,796.64 |  |
| B18-V09~V16-1300 |  | Installation Of Gypsum Board For Bathroom & Kitchen | 4d | 2025-10-07 | 2025-10-11 | B18-V09~V16-1290, B18-V01~V08-1300 | 0d |  | Gypsum Board For Bathrooms & Kitchen [8] | 11,052.24 |  |
| B18-V09~V16-1310 |  | Putty Filler For Gypsm Board Ceiling | 6d | 2025-10-12 | 2025-10-18 | B18-V09~V16-1300, B18-V01~V08-1310 | 0d |  | Putty Filler 1st Layer Roof all Rooms [8]; Putty Filler 1st Layer Roof all Bathrooms & Kitchen [8]; Putty Filler1st Layer walls [8] | 62,182.52 |  |
| B18-V09~V16-1320 |  | Fixing Shower Glass | 4d | 2025-10-19 | 2025-10-22 | B18-V09~V16-1310, B18-V01~V08-1320 | 7d | 0d | Shower Glass [8] | 22,372.88 |  |
| B18-V09~V16-1330 |  | Interior Wall Putty Filler | 6d | 2025-10-19 | 2025-10-25 | B18-V09~V16-1310, B18-V09~V16-1240, B18-V01~V08-1330 | 0d |  | Putty Filler 2ed Layer Roof & WAlls GF [8]; Putty Filler 2ed Layer Roof & WAlls FF [8] | 62,150.21 |  |
| B18-V09~V16-1340 |  | Installation Of Sanitry Fixture | 6d | 2025-10-23 | 2025-10-29 | B18-V09~V16-1320, B18-V01~V08-1340 | 7d | 0d | Mech Fixtures & Accessories [8] | 98,438.1 |  |
| B18-V09~V16-1350 |  | 1st Face Paint | 5d | 2025-10-26 | 2025-10-30 | B18-V09~V16-1330, B18-V01~V08-1350 | 0d |  |  |  |  |
| B18-V09~V16-1360 |  | Installation Of Aluminum Windows | 6d | 2025-10-26 | 2025-11-01 | B18-V09~V16-1330, B18-V01~V08-1360 | 9d | 0d | Aluminum Windows [8] | 84,797.8 |  |
| B18-V09~V16-1370 |  | Installation Of Elec Fixture & Accessories | 5d | 2025-10-26 | 2025-10-30 | B18-V09~V16-1310, B18-V09~V16-1330, B18-V09~V16-1260, B18-V01~V08-1370 | 17d | 1d | Elec Fixtures & Accessories Villa & Yard [8]; Elec Cables GF & FF & Earthing [8] | 53,694.88 |  |
| B18-V09~V16-1380 |  | Installation Of Water Tank-Heater & Pumps | 6d | 2025-10-30 | 2025-11-05 | B18-V09~V16-1340, B18-V09~V16-1220, B18-V01~V08-1380 | 7d | 0d | Water Tank & booster Pump [8]; Lower Pump [8]; Heater [8] | 129,730.28 |  |
| B18-V09~V16-1390 |  | Installation Of Parquet | 4d | 2025-11-01 | 2025-11-04 | B18-V09~V16-1350, B18-V01~V08-1390 | 0d |  | Installation Of Parquet [8] | 52,978.96 |  |
| B18-V09~V16-1400 |  | Installation Of Wooden Doors | 6d | 2025-11-05 | 2025-11-11 | B18-V09~V16-1390, B18-V01~V08-1400 | 0d |  | Wooden Doors Accessories all Villa [8]; Wooden Doors Kitchen & Bathroom without Accessories [8]; Exterior Wooden Doors [8] | 142,109.01 |  |
| B18-V09~V16-1410 |  | Final Face Paint | 6d | 2025-11-12 | 2025-11-18 | B18-V09~V16-1360, B18-V09~V16-1400, B18-V01~V08-1410 | 0d |  | Final Face Paint Villa [8] | 31,090.55 |  |

| ID | WBS | Activity | Duration | Start | Finish | Predecessors | Total float | Free float | Resources | Cost |
| --- | --- | --- | --- | --- | --- | --- | --- | --- | --- | --- |
|  | 3 | **Fence & Courtyard Works** |  | 2025-08-09 | 2025-11-04 |  |  |  |  |  |
| B18-V09~V16-1420 |  | Pouring Bedding Concrete For Fence Fondations | 2d | 2025-08-09 | 2025-08-10 | B18-V09~V16-1120, B18-V01~V08-1420 | 13d | 0d | Excavation Fence Foundations [8] | 4,519.28 |
| B18-V09~V16-1430 |  | RC Concrete For Fence Fondations | 5d | 2025-08-11 | 2025-08-16 | B18-V09~V16-1420, B18-V01~V08-1430 | 13d | 0d | Fence Fondations-Eastern side [8]; Fence Fondations-Westren side [8]; Fence Fondations-Back side [8] | 13,423.68 |
| B18-V09~V16-1440 |  | Steel Fixing & Carpentry For Fence Columns | 5d | 2025-08-17 | 2025-08-21 | B18-V09~V16-1430, B18-V01~V08-1440 | 13d | 0d |  |  |
| B18-V09~V16-1450 |  | Establishing Elec For Fence Columns | 4d | 2025-08-23 | 2025-08-26 | B18-V09~V16-1440, B18-V01~V08-1450 | 13d | 0d |  |  |
| B18-V09~V16-1460 |  | Pouring Concrete For Fence Columns | 1d | 2025-08-27 | 2025-08-27 | B18-V09~V16-1450, B18-V01~V08-1460 | 13d | 0d | Fence Columns-Eastern side [8]; Fence Columns-Westren side [8]; Fence Columns-Back side [8] | 9,665.04 |
| B18-V09~V16-1470 |  | Installation Precast Panel For Fence | 4d | 2025-08-28 | 2025-09-01 | B18-V09~V16-1460, B18-V01~V08-1470 | 13d | 0d | Hollow Core Walls [8] | 71,593.2 |
| B18-V09~V16-1480 |  | Bitumen Coating For Fence Fondations | 4d | 2025-09-02 | 2025-09-06 | B18-V09~V16-1470, B18-V01~V08-1480 | 13d | 0d |  |  |
| B18-V09~V16-1490 |  | Pouring Bedding Concrete For "Front" Fence Fondations | 1d | 2025-09-02 | 2025-09-02 | B18-V09~V16-1470, B18-V01~V08-1490 | 20d | 0d |  |  |
| B18-V09~V16-1500 |  | RC Concrete For "Front" Fence Fondations | 4d | 2025-09-03 | 2025-09-07 | B18-V09~V16-1490, B18-V01~V08-1500 | 20d | 0d | Front Fence Fondations [8] | 8,904.4 |
| B18-V09~V16-1510 |  | Outdoor Drainage & Water Line | 4d | 2025-09-07 | 2025-09-10 | B18-V09~V16-1480, B18-V09~V16-1140, B18-V01~V08-1510 | 13d | 0d | Outdoor Drainage [8]; Outdoor Water Line [8] | 13,423.68 |
| B18-V09~V16-1520 |  | Steel Fixing & Carpentry For "Front" Fence Columns | 4d | 2025-09-08 | 2025-09-11 | B18-V09~V16-1500, B18-V01~V08-1520 | 20d | 0d |  |  |
| B18-V09~V16-1530 |  | Establishing Elec For Fence & Yard | 2d | 2025-09-11 | 2025-09-13 | B18-V09~V16-1510, B18-V01~V08-1530 | 13d | 0d | Elec Establishment Fence & Yard [8] | 17,898.32 |
| B18-V09~V16-1540 |  | Establishing Elec For "Front" Fence Columns | 4d | 2025-09-13 | 2025-09-16 | B18-V09~V16-1520, B18-V01~V08-1540 | 20d | 0d |  |  |
| B18-V09~V16-1550 |  | Backfilling the Yard | 4d | 2025-09-14 | 2025-09-17 | B18-V09~V16-1530, B18-V01~V08-1550 | 13d | 0d | Backfilling the Yard [8] | 10,560 |
| B18-V09~V16-1560 |  | Pouring Concrete Wall Of "Front" Fence Columns | 2d | 2025-09-17 | 2025-09-18 | B18-V09~V16-1540, B18-V01~V08-1560 | 20d | 0d | Front Fence Walls [8] | 17,898.32 |
| B18-V09~V16-1570 |  | Bardoura Works For Yard | 4d | 2025-09-18 | 2025-09-22 | B18-V09~V16-1550, B18-V01~V08-1570 | 13d | 0d | Bardoura Works For Yard [8] | 14,408.16 |
| B18-V09~V16-1580 |  | Pouring Concrete Crown Of "Front" Fence Columns | 3d | 2025-09-20 | 2025-09-22 | B18-V09~V16-1560, B18-V01~V08-1580 | 20d | 0d | Fence Columns - C Chanel [8] | 3,310.37 |
| B18-V09~V16-1590 |  | Pouring Concrete Flower Basin Of "Front" Fence Columns | 4d | 2025-09-23 | 2025-09-27 | B18-V09~V16-1580, B18-V01~V08-1590 | 20d | 0d |  |  |
| B18-V09~V16-1600 |  | Antitermite Treatment For Yard | 1d | 2025-09-23 | 2025-09-23 | B18-V09~V16-1570, B18-V01~V08-1600 | 13d | 0d | Antitermite Treatment For Yard [8] |  |
| B18-V09~V16-1610 |  | Pouring Concrete For Yard | 1d | 2025-09-24 | 2025-09-24 | B18-V09~V16-1600, B18-V01~V08-1610 | 13d | 0d |  |  |
| B18-V09~V16-1620 |  | Block Work For Flower Basin | 4d | 2025-09-25 | 2025-09-29 | B18-V09~V16-1610, B18-V01~V08-1620 | 13d | 0d |  |  |
| B18-V09~V16-1630 |  | Plastering Work For Flower Basin | 4d | 2025-09-30 | 2025-10-04 | B18-V09~V16-1620, B18-V01~V08-1630 | 13d | 0d |  |  |
| B18-V09~V16-1640 |  | Interlock Works For The Yard | 4d | 2025-10-05 | 2025-10-08 | B18-V09~V16-1630, B18-V01~V08-1640 | 13d | 0d | Interlock Works For The Yard [8] | 36,785.52 |
| B18-V09~V16-1650 |  | External Grading Works For The Villa | 4d | 2025-10-09 | 2025-10-13 | B18-V09~V16-1640, B18-V01~V08-1650 | 15d | 0d | External Grading Works For The Villa [8] | 3,221.68 |
| B18-V09~V16-1660 |  | Fixing Floor Drain For The Yard | 2d | 2025-10-09 | 2025-10-11 | B18-V09~V16-1640, B18-V01~V08-1660 | 21d | 4d | Floor Drain & Clean Out [8] | 13,423.76 |
| B18-V09~V16-1670 |  | Installation The Exterior Door & Garage Door | 5d | 2025-10-12 | 2025-10-16 | B18-V09~V16-1640, B18-V01~V08-1670 | 16d | 0d | Installation The Exterior Door [8]; Installation The Exterior Garage Door [8] | 40,002.72 |
| B18-V09~V16-1680 |  | Granite Surronds Around The Villa | 4d | 2025-10-14 | 2025-10-18 | B18-V09~V16-1650, B18-V01~V08-1680 | 15d | 2d | Granite Surronds Around The Villa [8] | 25,818.32 |
| B18-V09~V16-1690 |  | Painting The Base Surface Of The Fence | 2d | 2025-10-14 | 2025-10-15 | B18-V09~V16-1750, B18-V01~V08-1690 | 13d | 0d |  |  |
| B18-V09~V16-1700 |  | Painting The Final Face Of The Fence | 4d | 2025-10-16 | 2025-10-20 | B18-V09~V16-1690, B18-V01~V08-1700 | 13d | 2d | Painting Final Face Of The Fence [8] | 37,586.48 |
| B18-V09~V16-1710 |  | Exterior Painting Of The Villa | 5d | 2025-10-26 | 2025-10-30 | B18-V09~V16-1680, B18-V09~V16-1700, B18-V09~V16-1670, B18-V09~V16-1660, B18-V01~V08-1710 | 9d | 0d | Exterior Painting Of The Villa [8]; Exterior Painting Staircase House [8] | 105,689.44 |
| B18-V09~V16-1720 |  | Installation Elec Fixtures & Accessories For The Yard | 4d | 2025-11-01 | 2025-11-04 | B18-V09~V16-1700, B18-V09~V16-1710, B18-V01~V08-1720 | 9d | 0d | Elec feeding panels GF & FF [8] | 22,372.88 |

| ID | WBS | Activity | Duration | Start | Finish | Predecessors | Total float | Free float | Resources | Cost | Department-1 |
| --- | --- | --- | --- | --- | --- | --- | --- | --- | --- | --- | --- |
|  | 5 | **External Sidewalk Works** |  | 2025-09-28 | 2025-11-09 |  |  |  |  |  |  |
| B18-V09~V16-1730 |  | Connection The Drain To The Piblic Network | 3d | 2025-09-28 | 2025-09-30 | B18-V09~V16-1510, B18-V09~V16-1590, B18-V01~V08-1730 | 20d | 3d | Connection Drain To The Piblic Network [8]; Connection Water To The Piblic Network [8] | 13,420.32 |  |
| B18-V09~V16-1740 |  | Pardora Works For The External Sidewalk | 2d | 2025-10-09 | 2025-10-11 | B18-V09~V16-1640, B18-V09~V16-1730, B18-V01~V08-1740 | 13d | 0d |  |  |  |
| B18-V09~V16-1750 |  | Interlock Works For The Exerrnal Sidewalk | 2d | 2025-10-12 | 2025-10-13 | B18-V09~V16-1740, B18-V01~V08-1750 | 13d | 0d |  |  |  |
| B18-V09~V16-1760 |  | Pulling The Villa's Main Elec Cable | 4d | 2025-11-05 | 2025-11-09 | B18-V09~V16-1750, B18-V09~V16-1720, B18-V01~V08-1760 | 9d | 0d | Elec Work Testing [8] | 22,819.84 |  |
|  | 6 | **Final Testing & Handover** |  | 2025-11-06 | 2025-11-29 |  |  |  |  |  |  |
| B18-V09~V16-1770 |  | Mech Work Testing & Handover | 5d | 2025-11-06 | 2025-11-11 | B18-V09~V16-1730, B18-V09~V16-1340, B18-V09~V16-1380, B18-V01~V08-1770 | 10d | 1d | Mech Work Testing & Handover [8] | 14,318.64 |  |
| B18-V09~V16-1780 |  | ElecWork Testing & Handover | 3d | 2025-11-10 | 2025-11-12 | B18-V09~V16-1760, B18-V09~V16-1370, B18-V01~V08-1780 | 9d | 2d | Elec Work Handover [8] | 23,804.12 |  |
| B18-V09~V16-1790 |  | Arch Snaglist & Handover | 4d | 2025-11-12 | 2025-11-16 | B18-V09~V16-1750, B18-V09~V16-1710, B18-V09~V16-1400, B18-V01~V08-1790 | 6d | 2d | Arch Snaglist & Handover [8] | 77,320.64 |  |
| B18-V09~V16-1800 |  | Final Handover Of The Villa To The Consltant | 4d | 2025-11-19 | 2025-11-23 | B18-V09~V16-1790, B18-V09~V16-1780, B18-V09~V16-1770, B18-V09~V16-1410, B18-V01~V08-1800 | 4d | 0d |  |  |  |
| B18-V09~V16-1810 |  | Customer Delivery | 5d | 2025-11-24 | 2025-11-29 | B18-V09~V16-1800, B18-V01~V08-1810 | 4d | 1d |  |  |  |
|  | 6 | **B18-V17~V24** |  | 2025-04-21 | 2025-12-06 |  |  |  |  |  |  |
|  | 2 | **Under Grond Slap Works** |  | 2025-04-21 | 2025-05-31 |  |  |  |  |  |  |
| B18-V17~V24-1000 |  | Excavation&Compaction of Fondation | 6d | 2025-04-21 | 2025-04-27 | B18-V09~V16-1000 | 59d | 0d | Clearing & Groubbing [8]; Excavation & Leveling [8]; Stone Layer [8]; A3 Layer [8]; A1-a 1st Layer [8]; A1-a 2ed Layer [8] | 163,545.76 | Civil |
| B18-V17~V24-1010 |  | Pouring Concrete For Bedding | 2d | 2025-04-28 | 2025-04-29 | B18-V17~V24-1000, B18-V09~V16-1010 | 59d | 0d | PC Carpentry [8]; PC Concrete [8]; RC 18 MPA [9 M3] | 37,899.68 | Civil |
| B18-V17~V24-1020 |  | Reinforcement Concrete For Foundation | 5d | 2025-04-30 | 2025-05-05 | B18-V17~V24-1010, B18-V09~V16-1020 | 59d | 0d | RC Foundation Carpentry [8]; RC Foundation Steel [8]; RC Foundation Concrete [8] | 201,355.92 | Civil |
| B18-V17~V24-1030 |  | Steel Fixing& Carpenter work for Beams | 4d | 2025-05-06 | 2025-05-10 | B18-V17~V24-1020, B18-V09~V16-1030 | 59d | 0d | RC Grade Beam Carpentry & Steel [8] | 44,745.76 | Civil |
| B18-V17~V24-1040 |  | Mech&Elec Establishment for Beams | 3d | 2025-05-11 | 2025-05-13 | B18-V17~V24-1030, B18-V09~V16-1040 | 59d | 0d |  |  | Mech |
| B18-V17~V24-1050 |  | Pouring Concrete For Beams | 1d | 2025-05-14 | 2025-05-14 | B18-V17~V24-1040, B18-V09~V16-1050 | 59d | 0d | RC Grade Beam Concrete [8] | 77,141.68 | Civil |
| B18-V17~V24-1060 |  | Bitmen Coating For Fondation&Beams | 3d | 2025-05-15 | 2025-05-18 | B18-V17~V24-1050, B18-V09~V16-1060 | 59d | 0d | Bitumen Coating Foundations & Grade Beams [8] | 22,372.32 | Civil |
| B18-V17~V24-1070 |  | Backfilling Inside Fondations | 4d | 2025-05-19 | 2025-05-22 | B18-V17~V24-1060, B18-V09~V16-1070 | 59d | 0d | Backfilling 1st Layer [8]; Backfilling 2ed Layer [8] | 11,186.4 | Civil |
| B18-V17~V24-1080 |  | Mech Works Under Grond Slap | 3d | 2025-05-24 | 2025-05-26 | B18-V17~V24-1070, B18-V09~V16-1080 | 59d | 0d | Mech Establishment Under Ground Slap [8] | 13,423.42 | Mech |
| B18-V17~V24-1090 |  | Steel Fixing& Carpenter work for Ground Slap | 3d | 2025-05-27 | 2025-05-29 | B18-V17~V24-1080, B18-V09~V16-1090 | 59d | 0d | Steel & Carpentry For Ground Slap [8] | 10,246.54 | Civil |
| B18-V17~V24-1100 |  | Anti Termite Treatment For Ground Slap | 1d | 2025-05-31 | 2025-05-31 | B18-V17~V24-1090, B18-V09~V16-1100 | 59d | 0d | Anti Termite Treatment nder Ground Slap [8] | 2,237.28 | Civil |
| B18-V17~V24-1110 |  | Pouring Concrete For Ground Slap | 1d | 2025-05-31 | 2025-05-31 | B18-V17~V24-1100 FF, B18-V17~V24-1090, B18-V09~V16-1110 | 59d | 5d | Concrete For Ground Slap [8] | 58,169.52 | Civil |

| ID | WBS | Activity | Duration | Start | Finish | Predecessors | Total float | Free float | Resources | Cost | Department-1 |
| --- | --- | --- | --- | --- | --- | --- | --- | --- | --- | --- | --- |
|  | 4 | **Precast Works** |  | 2025-08-09 | 2025-08-14 |  |  |  |  |  |  |
| B18-V17~V24-1120 |  | Precast Constrction | 6d | 2025-08-09 | 2025-08-14 | B18-V17~V24-1110, B18-V09~V16-1120 | 0d |  | Precast Walls GF [8]; Hollow Core Slap GF [8]; Precast Stairs & staircase House [8]; Thermal insollation Outside Walls [8]; Concrete structure joints [8]; Precast Walls FF [8]; Hollow Core Slap FF [8] | 1,513,460.1 | Civil |
|  | 1 | **Works Inside The Villa** |  | 2025-08-16 | 2025-11-25 |  |  |  |  |  |  |
| B18-V17~V24-1130 |  | Block Work For GF & Estabishment 1F | 6d | 2025-08-16 | 2025-08-21 | B18-V17~V24-1120, B18-V09~V16-1130 | 0d |  | Block GF [8] | 13,647.1 | Arc |
| B18-V17~V24-1140 |  | L.L & H.L Drainage | 6d | 2025-08-23 | 2025-08-28 | B18-V17~V24-1130, B18-V09~V16-1140 | 0d |  | HL Drainage [8]; L.L Drainage [8] | 89,489.28 | Mech |
| B18-V17~V24-1150 |  | Elec Establishment For GF & 1F | 3d | 2025-08-23 | 2025-08-25 | B18-V17~V24-1130, B18-V09~V16-1150 | 3d |  | Elec Establishment GF [8] | 26,840.73 | Elec |
| B18-V17~V24-1160 |  | Screed Work For 1F & Roof | 6d | 2025-08-30 | 2025-09-04 | B18-V17~V24-1140, B18-V17~V24-1150, B18-V09~V16-1160 | 0d |  | Screed 1st Floor [8]; Screed Roof Floor [8]; Leveling Screed 1st Floor [8]; Leveling Screed Roof Floor [8] | 268,467.85 | Civil |
| B18-V17~V24-1170 |  | Water Tank & Heater Foundations | 4d | 2025-09-06 | 2025-09-09 | B18-V17~V24-1160, B18-V09~V16-1170 | 4d | 0d |  |  | Civil |
| B18-V17~V24-1180 |  | Block Works For 1F | 3d | 2025-09-06 | 2025-09-08 | B18-V17~V24-1160, B18-V09~V16-1180 | 0d |  | Block FF [8] | 20,537.81 | Arc |
| B18-V17~V24-1190 |  | Water Line Network | 6d | 2025-09-09 | 2025-09-15 | B18-V17~V24-1180, B18-V09~V16-1190 | 0d |  | Water Line Network [8] | 40,261.13 | Mech |
| B18-V17~V24-1200 |  | Continue Elec Establishment For GF & 1F | 3d | 2025-09-09 | 2025-09-11 | B18-V17~V24-1180, B18-V09~V16-1200 | 3d |  | Elec Establishment FF [8] | 26,840.73 | Elec |
| B18-V17~V24-1210 |  | Thermal Insulation For Roof | 5d | 2025-09-10 | 2025-09-15 | B18-V17~V24-1170, B18-V09~V16-1210 | 4d | 0d | Roof Insulation [8] | 32,530.16 | Arc |
| B18-V17~V24-1220 |  | Roof Floor Tiles | 6d | 2025-09-16 | 2025-09-22 | B18-V17~V24-1210, B18-V09~V16-1220 | 4d | 0d | Roof Tiles [8]; Roof Tiles Joints [8]; Re_Test Roof Insulation [8] | 63,179.38 | Arc |
| B18-V17~V24-1230 |  | Plaster Work For Villa | 6d | 2025-09-16 | 2025-09-22 | B18-V17~V24-1190, B18-V17~V24-1200, B18-V09~V16-1230 | 0d |  | Establishing a plastering GF [8]; Establishing a plastering FF [8]; Plastering GF [8]; Plastering FF [8] | 49,263.81 |  |
| B18-V17~V24-1240 |  | Marbale Stairs & Handrails | 6d | 2025-09-23 | 2025-09-29 | B18-V17~V24-1230, B18-V09~V16-1240 | 22d | 0d | Stairs Handrails SS [8]; Marbale Stairs [8] | 91,494.69 |  |
| B18-V17~V24-1250 |  | Water Proofing Of Bathrooms | 4d | 2025-09-23 | 2025-09-27 | B18-V17~V24-1230, B18-V09~V16-1250 | 0d |  | Bathrooms InsulationGF & FF [8] | 134.24 |  |
| B18-V17~V24-1260 |  | Pulling The Elec Wires | 4d | 2025-09-23 | 2025-09-27 | B18-V17~V24-1230, B18-V09~V16-1260 | 10d | 2d | Elec Wires GF [8]; Elec Wires FF [8] | 80,542.4 |  |
| B18-V17~V24-1270 |  | Bathroom Tiles | 4d | 2025-09-28 | 2025-10-01 | B18-V17~V24-1250, B18-V17~V24-1220, B18-V09~V16-1270 | 0d |  | Ceramic Walls Kitchen [8]; Ceramic Walls Bathrooms GF [8]; Ceramic Walls Bathrooms FF [8]; Ceramic Tiles Bathrooms GF [8]; Ceramic Tiles Kitchen GF [8]; Ceramic Tiles Store GF [8] | 73,204.08 |  |
| B18-V17~V24-1280 |  | Structure For Gypsum | 6d | 2025-10-02 | 2025-10-08 | B18-V17~V24-1270, B18-V09~V16-1280 | 0d |  | Structure For Gypsum GF Rooms [8]; Structure For Gypsum FF Rooms [8]; Structure For Gypsum Bathrooms & Kitchen [8] | 33,550.81 |  |
| B18-V17~V24-1290 |  | Gypsum Board For Room | 4d | 2025-10-09 | 2025-10-13 | B18-V17~V24-1280, B18-V17~V24-1260, B18-V09~V16-1290 | 0d |  | Gypsum Board For GF Room [8]; Gypsum Board For FF Room [8] | 35,796.64 |  |
| B18-V17~V24-1300 |  | Installation Of Gypsum Board For Bathroom & Kitchen | 4d | 2025-10-14 | 2025-10-18 | B18-V17~V24-1290, B18-V09~V16-1300 | 0d |  | Gypsum Board For Bathrooms & Kitchen [8] | 11,052.24 |  |
| B18-V17~V24-1310 |  | Putty Filler For Gypsm Board Ceiling | 6d | 2025-10-19 | 2025-10-25 | B18-V17~V24-1300, B18-V09~V16-1310 | 0d |  | Putty Filler 1st Layer Roof all Rooms [8]; Putty Filler 1st Layer Roof all Bathrooms & Kitchen [8]; Putty Filler1st Layer walls [8] | 62,182.52 |  |
| B18-V17~V24-1320 |  | Fixing Shower Glass | 4d | 2025-10-26 | 2025-10-29 | B18-V17~V24-1310, B18-V09~V16-1320 | 7d | 0d | Shower Glass [8] | 22,372.88 |  |
| B18-V17~V24-1330 |  | Interior Wall Putty Filler | 6d | 2025-10-26 | 2025-11-01 | B18-V17~V24-1310, B18-V17~V24-1240, B18-V09~V16-1330 | 0d |  | Putty Filler 2ed Layer Roof & WAlls GF [8]; Putty Filler 2ed Layer Roof & WAlls FF [8] | 62,150.21 |  |
| B18-V17~V24-1340 |  | Installation Of Sanitry Fixture | 6d | 2025-10-30 | 2025-11-05 | B18-V17~V24-1320, B18-V09~V16-1340 | 7d | 0d | Mech Fixtures & Accessories [8] | 98,438.1 |  |
| B18-V17~V24-1350 |  | 1st Face Paint | 5d | 2025-11-02 | 2025-11-06 | B18-V17~V24-1330, B18-V09~V16-1350 | 0d |  |  |  |  |
| B18-V17~V24-1360 |  | Installation Of Aluminum Windows | 6d | 2025-11-02 | 2025-11-08 | B18-V17~V24-1330, B18-V09~V16-1360 | 9d | 0d | Aluminum Windows [8] | 84,797.8 |  |
| B18-V17~V24-1370 |  | Installation Of Elec Fixture & Accessories | 5d | 2025-11-02 | 2025-11-06 | B18-V17~V24-1310, B18-V17~V24-1330, B18-V17~V24-1260, B18-V09~V16-1370 | 16d | 1d | Elec Fixtures & Accessories Villa & Yard [8]; Elec Cables GF & FF & Earthing [8] | 53,694.88 |  |
| B18-V17~V24-1380 |  | Installation Of Water Tank-Heater & Pumps | 6d | 2025-11-06 | 2025-11-12 | B18-V17~V24-1340, B18-V17~V24-1220, B18-V09~V16-1380 | 7d | 0d | Water Tank & booster Pump [8]; Lower Pump [8]; Heater [8] | 129,730.28 |  |
| B18-V17~V24-1390 |  | Installation Of Parquet | 4d | 2025-11-08 | 2025-11-11 | B18-V17~V24-1350, B18-V09~V16-1390 | 0d |  | Installation Of Parquet [8] | 52,978.96 |  |
| B18-V17~V24-1400 |  | Installation Of Wooden Doors | 6d | 2025-11-12 | 2025-11-18 | B18-V17~V24-1390, B18-V09~V16-1400 | 0d |  | Wooden Doors Accessories all Villa [8]; Wooden Doors Kitchen & Bathroom without Accessories [8]; Exterior Wooden Doors [8] | 142,109.01 |  |
| B18-V17~V24-1410 |  | Final Face Paint | 6d | 2025-11-19 | 2025-11-25 | B18-V17~V24-1360, B18-V17~V24-1400, B18-V09~V16-1410 | 0d |  | Final Face Paint Villa [8] | 31,090.55 |  |

| ID | WBS | Activity | Duration | Start | Finish | Predecessors | Total float | Free float | Resources | Cost |
| --- | --- | --- | --- | --- | --- | --- | --- | --- | --- | --- |
|  | 3 | **Fence & Courtyard Works** |  | 2025-08-16 | 2025-11-10 |  |  |  |  |  |
| B18-V17~V24-1420 |  | Pouring Bedding Concrete For Fence Fondations | 2d | 2025-08-16 | 2025-08-17 | B18-V17~V24-1120, B18-V09~V16-1420 | 12d | 0d | Excavation Fence Foundations [8] | 4,519.28 |
| B18-V17~V24-1430 |  | RC Concrete For Fence Fondations | 5d | 2025-08-18 | 2025-08-23 | B18-V17~V24-1420, B18-V09~V16-1430 | 12d | 0d | Fence Fondations-Eastern side [8]; Fence Fondations-Westren side [8]; Fence Fondations-Back side [8] | 13,423.68 |
| B18-V17~V24-1440 |  | Steel Fixing & Carpentry For Fence Columns | 5d | 2025-08-24 | 2025-08-28 | B18-V17~V24-1430, B18-V09~V16-1440 | 12d | 0d |  |  |
| B18-V17~V24-1450 |  | Establishing Elec For Fence Columns | 4d | 2025-08-30 | 2025-09-02 | B18-V17~V24-1440, B18-V09~V16-1450 | 12d | 0d |  |  |
| B18-V17~V24-1460 |  | Pouring Concrete For Fence Columns | 1d | 2025-09-03 | 2025-09-03 | B18-V17~V24-1450, B18-V09~V16-1460 | 12d | 0d | Fence Columns-Eastern side [8]; Fence Columns-Westren side [8]; Fence Columns-Back side [8] | 9,665.04 |
| B18-V17~V24-1470 |  | Installation Precast Panel For Fence | 4d | 2025-09-04 | 2025-09-08 | B18-V17~V24-1460, B18-V09~V16-1470 | 12d | 0d | Hollow Core Walls [8] | 71,593.2 |
| B18-V17~V24-1480 |  | Bitumen Coating For Fence Fondations | 4d | 2025-09-09 | 2025-09-13 | B18-V17~V24-1470, B18-V09~V16-1480 | 12d | 0d |  |  |
| B18-V17~V24-1490 |  | Pouring Bedding Concrete For "Front" Fence Fondations | 1d | 2025-09-09 | 2025-09-09 | B18-V17~V24-1470, B18-V09~V16-1490 | 19d | 0d |  |  |
| B18-V17~V24-1500 |  | RC Concrete For "Front" Fence Fondations | 4d | 2025-09-10 | 2025-09-14 | B18-V17~V24-1490, B18-V09~V16-1500 | 19d | 0d | Front Fence Fondations [8] | 8,904.4 |
| B18-V17~V24-1510 |  | Outdoor Drainage & Water Line | 4d | 2025-09-14 | 2025-09-17 | B18-V17~V24-1480, B18-V17~V24-1140, B18-V09~V16-1510 | 12d | 0d | Outdoor Drainage [8]; Outdoor Water Line [8] | 13,423.68 |
| B18-V17~V24-1520 |  | Steel Fixing & Carpentry For "Front" Fence Columns | 4d | 2025-09-15 | 2025-09-18 | B18-V17~V24-1500, B18-V09~V16-1520 | 19d | 0d |  |  |
| B18-V17~V24-1530 |  | Establishing Elec For Fence & Yard | 2d | 2025-09-18 | 2025-09-20 | B18-V17~V24-1510, B18-V09~V16-1530 | 12d | 0d | Elec Establishment Fence & Yard [8] | 17,898.32 |
| B18-V17~V24-1540 |  | Establishing Elec For "Front" Fence Columns | 4d | 2025-09-20 | 2025-09-23 | B18-V17~V24-1520, B18-V09~V16-1540 | 19d | 0d |  |  |
| B18-V17~V24-1550 |  | Backfilling the Yard | 4d | 2025-09-21 | 2025-09-24 | B18-V17~V24-1530, B18-V09~V16-1550 | 12d | 0d | Backfilling the Yard [8] | 10,560 |
| B18-V17~V24-1560 |  | Pouring Concrete Wall Of "Front" Fence Columns | 2d | 2025-09-24 | 2025-09-25 | B18-V17~V24-1540, B18-V09~V16-1560 | 19d | 0d | Front Fence Walls [8] | 17,898.32 |
| B18-V17~V24-1570 |  | Bardoura Works For Yard | 4d | 2025-09-25 | 2025-09-29 | B18-V17~V24-1550, B18-V09~V16-1570 | 12d | 0d | Bardoura Works For Yard [8] | 14,408.16 |
| B18-V17~V24-1580 |  | Pouring Concrete Crown Of "Front" Fence Columns | 3d | 2025-09-27 | 2025-09-29 | B18-V17~V24-1560, B18-V09~V16-1580 | 19d | 0d | Fence Columns - C Chanel [8] | 3,310.37 |
| B18-V17~V24-1590 |  | Pouring Concrete Flower Basin Of "Front" Fence Columns | 4d | 2025-09-30 | 2025-10-04 | B18-V17~V24-1580, B18-V09~V16-1590 | 19d | 0d |  |  |
| B18-V17~V24-1600 |  | Antitermite Treatment For Yard | 1d | 2025-09-30 | 2025-09-30 | B18-V17~V24-1570, B18-V09~V16-1600 | 12d | 0d | Antitermite Treatment For Yard [8] |  |
| B18-V17~V24-1610 |  | Pouring Concrete For Yard | 1d | 2025-10-01 | 2025-10-01 | B18-V17~V24-1600, B18-V09~V16-1610 | 12d | 0d |  |  |
| B18-V17~V24-1620 |  | Block Work For Flower Basin | 4d | 2025-10-02 | 2025-10-06 | B18-V17~V24-1610, B18-V09~V16-1620 | 12d | 0d |  |  |
| B18-V17~V24-1630 |  | Plastering Work For Flower Basin | 4d | 2025-10-07 | 2025-10-11 | B18-V17~V24-1620, B18-V09~V16-1630 | 12d | 0d |  |  |
| B18-V17~V24-1640 |  | Interlock Works For The Yard | 4d | 2025-10-12 | 2025-10-15 | B18-V17~V24-1630, B18-V09~V16-1640 | 12d | 0d | Interlock Works For The Yard [8] | 36,785.52 |
| B18-V17~V24-1650 |  | External Grading Works For The Villa | 4d | 2025-10-16 | 2025-10-20 | B18-V17~V24-1640, B18-V09~V16-1650 | 14d | 0d | External Grading Works For The Villa [8] | 3,221.68 |
| B18-V17~V24-1660 |  | Fixing Floor Drain For The Yard | 2d | 2025-10-16 | 2025-10-18 | B18-V17~V24-1640, B18-V09~V16-1660 | 20d | 4d | Floor Drain & Clean Out [8] | 13,423.76 |
| B18-V17~V24-1670 |  | Installation The Exterior Door & Garage Door | 5d | 2025-10-18 | 2025-10-22 | B18-V17~V24-1640, B18-V09~V16-1670 | 16d | 0d | Installation The Exterior Door [8]; Installation The Exterior Garage Door [8] | 40,002.72 |
| B18-V17~V24-1680 |  | Granite Surronds Around The Villa | 4d | 2025-10-21 | 2025-10-25 | B18-V17~V24-1650, B18-V09~V16-1680 | 14d | 2d | Granite Surronds Around The Villa [8] | 25,818.32 |
| B18-V17~V24-1690 |  | Painting The Base Surface Of The Fence | 2d | 2025-10-21 | 2025-10-22 | B18-V17~V24-1750, B18-V09~V16-1690 | 12d | 0d |  |  |
| B18-V17~V24-1700 |  | Painting The Final Face Of The Fence | 4d | 2025-10-23 | 2025-10-27 | B18-V17~V24-1690, B18-V09~V16-1700 | 12d | 2d | Painting Final Face Of The Fence [8] | 37,586.48 |
| B18-V17~V24-1710 |  | Exterior Painting Of The Villa | 5d | 2025-11-01 | 2025-11-05 | B18-V17~V24-1680, B18-V17~V24-1700, B18-V17~V24-1670, B18-V17~V24-1660, B18-V09~V16-1710 | 9d | 0d | Exterior Painting Of The Villa [8]; Exterior Painting Staircase House [8] | 105,689.44 |
| B18-V17~V24-1720 |  | Installation Elec Fixtures & Accessories For The Yard | 4d | 2025-11-06 | 2025-11-10 | B18-V17~V24-1700, B18-V17~V24-1710, B18-V09~V16-1720 | 9d | 0d | Elec feeding panels GF & FF [8] | 22,372.88 |

| ID | WBS | Activity | Duration | Start | Finish | Predecessors | Total float | Free float | Resources | Cost | Department-1 |
| --- | --- | --- | --- | --- | --- | --- | --- | --- | --- | --- | --- |
|  | 5 | **External Sidewalk Works** |  | 2025-10-05 | 2025-11-15 |  |  |  |  |  |  |
| B18-V17~V24-1730 |  | Connection The Drain To The Piblic Network | 3d | 2025-10-05 | 2025-10-07 | B18-V17~V24-1510, B18-V17~V24-1590, B18-V09~V16-1730 | 19d | 3d | Connection Drain To The Piblic Network [8]; Connection Water To The Piblic Network [8] | 13,420.32 |  |
| B18-V17~V24-1740 |  | Pardora Works For The External Sidewalk | 2d | 2025-10-16 | 2025-10-18 | B18-V17~V24-1640, B18-V17~V24-1730, B18-V09~V16-1740 | 12d | 0d |  |  |  |
| B18-V17~V24-1750 |  | Interlock Works For The Exerrnal Sidewalk | 2d | 2025-10-19 | 2025-10-20 | B18-V17~V24-1740, B18-V09~V16-1750 | 12d | 0d |  |  |  |
| B18-V17~V24-1760 |  | Pulling The Villa's Main Elec Cable | 4d | 2025-11-11 | 2025-11-15 | B18-V17~V24-1750, B18-V17~V24-1720, B18-V09~V16-1760 | 9d | 0d | Elec Work Testing [8] | 22,819.84 |  |
|  | 6 | **Final Testing & Handover** |  | 2025-11-13 | 2025-12-06 |  |  |  |  |  |  |
| B18-V17~V24-1770 |  | Mech Work Testing & Handover | 5d | 2025-11-13 | 2025-11-18 | B18-V17~V24-1730, B18-V17~V24-1340, B18-V17~V24-1380, B18-V09~V16-1770 | 9d | 1d | Mech Work Testing & Handover [8] | 14,318.64 |  |
| B18-V17~V24-1780 |  | ElecWork Testing & Handover | 3d | 2025-11-16 | 2025-11-18 | B18-V17~V24-1760, B18-V17~V24-1370, B18-V09~V16-1780 | 9d | 2d | Elec Work Handover [8] | 23,804.12 |  |
| B18-V17~V24-1790 |  | Arch Snaglist & Handover | 4d | 2025-11-19 | 2025-11-23 | B18-V17~V24-1750, B18-V17~V24-1710, B18-V17~V24-1400, B18-V09~V16-1790 | 5d | 2d | Arch Snaglist & Handover [8] | 77,320.64 |  |
| B18-V17~V24-1800 |  | Final Handover Of The Villa To The Consltant | 4d | 2025-11-26 | 2025-11-30 | B18-V17~V24-1790, B18-V17~V24-1780, B18-V17~V24-1770, B18-V17~V24-1410, B18-V09~V16-1800 | 3d | 0d |  |  |  |
| B18-V17~V24-1810 |  | Customer Delivery | 5d | 2025-12-01 | 2025-12-06 | B18-V17~V24-1800, B18-V09~V16-1810 | 3d | 1d |  |  |  |
|  | 7 | **B18-V25~V32** |  | 2025-04-28 | 2025-12-13 |  |  |  |  |  |  |
|  | 2 | **Under Grond Slap Works** |  | 2025-04-28 | 2025-06-07 |  |  |  |  |  |  |
| B18-V25~V32-1000 |  | Excavation&Compaction of Fondation | 6d | 2025-04-28 | 2025-05-04 | B18-V17~V24-1000 | 59d | 0d | Clearing & Groubbing [8]; Excavation & Leveling [8]; Stone Layer [8]; A3 Layer [8]; A1-a 1st Layer [8]; A1-a 2ed Layer [8] | 163,545.76 | Civil |
| B18-V25~V32-1010 |  | Pouring Concrete For Bedding | 2d | 2025-05-05 | 2025-05-06 | B18-V25~V32-1000, B18-V17~V24-1010 | 59d | 0d | PC Carpentry [8]; PC Concrete [8]; RC 18 MPA [9 M3] | 37,899.68 | Civil |
| B18-V25~V32-1020 |  | Reinforcement Concrete For Foundation | 5d | 2025-05-07 | 2025-05-12 | B18-V25~V32-1010, B18-V17~V24-1020 | 59d | 0d | RC Foundation Carpentry [8]; RC Foundation Steel [8]; RC Foundation Concrete [8] | 201,355.92 | Civil |
| B18-V25~V32-1030 |  | Steel Fixing& Carpenter work for Beams | 4d | 2025-05-13 | 2025-05-17 | B18-V25~V32-1020, B18-V17~V24-1030 | 59d | 0d | RC Grade Beam Carpentry & Steel [8] | 44,745.76 | Civil |
| B18-V25~V32-1040 |  | Mech&Elec Establishment for Beams | 3d | 2025-05-18 | 2025-05-20 | B18-V25~V32-1030, B18-V17~V24-1040 | 59d | 0d |  |  | Mech |
| B18-V25~V32-1050 |  | Pouring Concrete For Beams | 1d | 2025-05-21 | 2025-05-21 | B18-V25~V32-1040, B18-V17~V24-1050 | 59d | 0d | RC Grade Beam Concrete [8] | 77,141.68 | Civil |
| B18-V25~V32-1060 |  | Bitmen Coating For Fondation&Beams | 3d | 2025-05-22 | 2025-05-25 | B18-V25~V32-1050, B18-V17~V24-1060 | 59d | 0d | Bitumen Coating Foundations & Grade Beams [8] | 22,372.32 | Civil |
| B18-V25~V32-1070 |  | Backfilling Inside Fondations | 4d | 2025-05-26 | 2025-05-29 | B18-V25~V32-1060, B18-V17~V24-1070 | 59d | 0d | Backfilling 1st Layer [8]; Backfilling 2ed Layer [8] | 11,186.4 | Civil |
| B18-V25~V32-1080 |  | Mech Works Under Grond Slap | 3d | 2025-05-31 | 2025-06-02 | B18-V25~V32-1070, B18-V17~V24-1080 | 59d | 0d | Mech Establishment Under Ground Slap [8] | 13,423.42 | Mech |
| B18-V25~V32-1090 |  | Steel Fixing& Carpenter work for Ground Slap | 3d | 2025-06-03 | 2025-06-05 | B18-V25~V32-1080, B18-V17~V24-1090 | 59d | 0d | Steel & Carpentry For Ground Slap [8] | 10,246.54 | Civil |
| B18-V25~V32-1100 |  | Anti Termite Treatment For Ground Slap | 1d | 2025-06-07 | 2025-06-07 | B18-V25~V32-1090, B18-V17~V24-1100 | 59d | 0d | Anti Termite Treatment nder Ground Slap [8] | 2,237.28 | Civil |
| B18-V25~V32-1110 |  | Pouring Concrete For Ground Slap | 1d | 2025-06-07 | 2025-06-07 | B18-V25~V32-1100 FF, B18-V25~V32-1090, B18-V17~V24-1110 | 59d | 5d | Concrete For Ground Slap [8] | 58,169.52 | Civil |

| ID | WBS | Activity | Duration | Start | Finish | Predecessors | Total float | Free float | Resources | Cost | Department-1 |
| --- | --- | --- | --- | --- | --- | --- | --- | --- | --- | --- | --- |
|  | 4 | **Precast Works** |  | 2025-08-16 | 2025-08-21 |  |  |  |  |  |  |
| B18-V25~V32-1120 |  | Precast Constrction | 6d | 2025-08-16 | 2025-08-21 | B18-V25~V32-1110, B18-V17~V24-1120 | 0d |  | Precast Walls GF [8]; Hollow Core Slap GF [8]; Precast Stairs & staircase House [8]; Thermal insollation Outside Walls [8]; Concrete structure joints [8]; Precast Walls FF [8]; Hollow Core Slap FF [8] | 1,513,460.1 | Civil |
|  | 1 | **Works Inside The Villa** |  | 2025-08-23 | 2025-12-02 |  |  |  |  |  |  |
| B18-V25~V32-1130 |  | Block Work For GF & Estabishment 1F | 6d | 2025-08-23 | 2025-08-28 | B18-V25~V32-1120, B18-V17~V24-1130 | 0d |  | Block GF [8] | 13,647.1 | Arc |
| B18-V25~V32-1140 |  | L.L & H.L Drainage | 6d | 2025-08-30 | 2025-09-04 | B18-V25~V32-1130, B18-V17~V24-1140 | 0d |  | HL Drainage [8]; L.L Drainage [8] | 89,489.28 | Mech |
| B18-V25~V32-1150 |  | Elec Establishment For GF & 1F | 3d | 2025-08-30 | 2025-09-01 | B18-V25~V32-1130, B18-V17~V24-1150 | 3d |  | Elec Establishment GF [8] | 26,840.73 | Elec |
| B18-V25~V32-1160 |  | Screed Work For 1F & Roof | 6d | 2025-09-06 | 2025-09-11 | B18-V25~V32-1140, B18-V25~V32-1150, B18-V17~V24-1160 | 0d |  | Screed 1st Floor [8]; Screed Roof Floor [8]; Leveling Screed 1st Floor [8]; Leveling Screed Roof Floor [8] | 268,467.85 | Civil |
| B18-V25~V32-1170 |  | Water Tank & Heater Foundations | 4d | 2025-09-13 | 2025-09-16 | B18-V25~V32-1160, B18-V17~V24-1170 | 4d | 0d |  |  | Civil |
| B18-V25~V32-1180 |  | Block Works For 1F | 3d | 2025-09-13 | 2025-09-15 | B18-V25~V32-1160, B18-V17~V24-1180 | 0d |  | Block FF [8] | 20,537.81 | Arc |
| B18-V25~V32-1190 |  | Water Line Network | 6d | 2025-09-16 | 2025-09-22 | B18-V25~V32-1180, B18-V17~V24-1190 | 0d |  | Water Line Network [8] | 40,261.13 | Mech |
| B18-V25~V32-1200 |  | Continue Elec Establishment For GF & 1F | 3d | 2025-09-16 | 2025-09-18 | B18-V25~V32-1180, B18-V17~V24-1200 | 3d |  | Elec Establishment FF [8] | 26,840.73 | Elec |
| B18-V25~V32-1210 |  | Thermal Insulation For Roof | 5d | 2025-09-17 | 2025-09-22 | B18-V25~V32-1170, B18-V17~V24-1210 | 4d | 0d | Roof Insulation [8] | 32,530.16 | Arc |
| B18-V25~V32-1220 |  | Roof Floor Tiles | 6d | 2025-09-23 | 2025-09-29 | B18-V25~V32-1210, B18-V17~V24-1220 | 4d | 0d | Roof Tiles [8]; Roof Tiles Joints [8]; Re_Test Roof Insulation [8] | 63,179.38 | Arc |
| B18-V25~V32-1230 |  | Plaster Work For Villa | 6d | 2025-09-23 | 2025-09-29 | B18-V25~V32-1190, B18-V25~V32-1200, B18-V17~V24-1230 | 0d |  | Establishing a plastering GF [8]; Establishing a plastering FF [8]; Plastering GF [8]; Plastering FF [8] | 49,263.81 |  |
| B18-V25~V32-1240 |  | Marbale Stairs & Handrails | 6d | 2025-09-30 | 2025-10-06 | B18-V25~V32-1230, B18-V17~V24-1240 | 22d | 0d | Marbale Stairs [8]; Stairs Handrails SS [8] | 91,504.96 |  |
| B18-V25~V32-1250 |  | Water Proofing Of Bathrooms | 4d | 2025-09-30 | 2025-10-04 | B18-V25~V32-1230, B18-V17~V24-1250 | 0d |  | Bathrooms InsulationGF & FF [8] | 134.24 |  |
| B18-V25~V32-1260 |  | Pulling The Elec Wires | 4d | 2025-09-30 | 2025-10-04 | B18-V25~V32-1230, B18-V17~V24-1260 | 10d | 2d | Elec Wires GF [8]; Elec Wires FF [8] | 80,542.4 |  |
| B18-V25~V32-1270 |  | Bathroom Tiles | 4d | 2025-10-05 | 2025-10-08 | B18-V25~V32-1250, B18-V25~V32-1220, B18-V17~V24-1270 | 0d |  | Ceramic Walls Kitchen [8]; Ceramic Walls Bathrooms GF [8]; Ceramic Walls Bathrooms FF [8]; Ceramic Tiles Bathrooms GF [8]; Ceramic Tiles Kitchen GF [8]; Ceramic Tiles Store GF [8] | 73,204.08 |  |
| B18-V25~V32-1280 |  | Structure For Gypsum | 6d | 2025-10-09 | 2025-10-15 | B18-V25~V32-1270, B18-V17~V24-1280 | 0d |  | Structure For Gypsum GF Rooms [8]; Structure For Gypsum FF Rooms [8]; Structure For Gypsum Bathrooms & Kitchen [8] | 33,550.81 |  |
| B18-V25~V32-1290 |  | Gypsum Board For Room | 4d | 2025-10-16 | 2025-10-20 | B18-V25~V32-1280, B18-V25~V32-1260, B18-V17~V24-1290 | 0d |  | Gypsum Board For GF Room [8]; Gypsum Board For FF Room [8] | 35,796.64 |  |
| B18-V25~V32-1300 |  | Installation Of Gypsum Board For Bathroom & Kitchen | 4d | 2025-10-21 | 2025-10-25 | B18-V25~V32-1290, B18-V17~V24-1300 | 0d |  | Gypsum Board For Bathrooms & Kitchen [8] | 11,052.24 |  |
| B18-V25~V32-1310 |  | Putty Filler For Gypsm Board Ceiling | 6d | 2025-10-26 | 2025-11-01 | B18-V25~V32-1300, B18-V17~V24-1310 | 0d |  | Putty Filler 1st Layer Roof all Rooms [8]; Putty Filler 1st Layer Roof all Bathrooms & Kitchen [8]; Putty Filler1st Layer walls [8] | 62,182.52 |  |
| B18-V25~V32-1320 |  | Fixing Shower Glass | 4d | 2025-11-02 | 2025-11-05 | B18-V25~V32-1310, B18-V17~V24-1320 | 7d | 0d | Shower Glass [8] | 22,372.88 |  |
| B18-V25~V32-1330 |  | Interior Wall Putty Filler | 6d | 2025-11-02 | 2025-11-08 | B18-V25~V32-1310, B18-V25~V32-1240, B18-V17~V24-1330 | 0d |  | Putty Filler 2ed Layer Roof & WAlls GF [8]; Putty Filler 2ed Layer Roof & WAlls FF [8] | 62,150.21 |  |
| B18-V25~V32-1340 |  | Installation Of Sanitry Fixture | 6d | 2025-11-06 | 2025-11-12 | B18-V25~V32-1320, B18-V17~V24-1340 | 7d | 0d | Mech Fixtures & Accessories [8] | 98,438.1 |  |
| B18-V25~V32-1350 |  | 1st Face Paint | 5d | 2025-11-09 | 2025-11-13 | B18-V25~V32-1330, B18-V17~V24-1350 | 0d |  |  |  |  |
| B18-V25~V32-1360 |  | Installation Of Aluminum Windows | 6d | 2025-11-09 | 2025-11-15 | B18-V25~V32-1330, B18-V17~V24-1360 | 9d | 0d | Aluminum Windows [8] | 84,797.8 |  |
| B18-V25~V32-1370 |  | Installation Of Elec Fixture & Accessories | 5d | 2025-11-09 | 2025-11-13 | B18-V25~V32-1310, B18-V25~V32-1330, B18-V25~V32-1260, B18-V17~V24-1370 | 15d | 1d | Elec Fixtures & Accessories Villa & Yard [8]; Elec Cables GF & FF & Earthing [8] | 53,694.88 |  |
| B18-V25~V32-1380 |  | Installation Of Water Tank-Heater & Pumps | 6d | 2025-11-13 | 2025-11-19 | B18-V25~V32-1340, B18-V25~V32-1220, B18-V17~V24-1380 | 7d | 0d | Water Tank & booster Pump [8]; Lower Pump [8]; Heater [8] | 129,730.28 |  |
| B18-V25~V32-1390 |  | Installation Of Parquet | 4d | 2025-11-15 | 2025-11-18 | B18-V25~V32-1350, B18-V17~V24-1390 | 0d |  | Installation Of Parquet [8] | 52,978.96 |  |
| B18-V25~V32-1400 |  | Installation Of Wooden Doors | 6d | 2025-11-19 | 2025-11-25 | B18-V25~V32-1390, B18-V17~V24-1400 | 0d |  | Wooden Doors Accessories all Villa [8]; Wooden Doors Kitchen & Bathroom without Accessories [8]; Exterior Wooden Doors [8] | 142,109.01 |  |
| B18-V25~V32-1410 |  | Final Face Paint | 6d | 2025-11-26 | 2025-12-02 | B18-V25~V32-1360, B18-V25~V32-1400, B18-V17~V24-1410 | 0d |  | Final Face Paint Villa [8] | 31,090.55 |  |

| ID | WBS | Activity | Duration | Start | Finish | Predecessors | Total float | Free float | Resources | Cost |
| --- | --- | --- | --- | --- | --- | --- | --- | --- | --- | --- |
|  | 3 | **Fence & Courtyard Works** |  | 2025-08-23 | 2025-11-16 |  |  |  |  |  |
| B18-V25~V32-1420 |  | Pouring Bedding Concrete For Fence Fondations | 2d | 2025-08-23 | 2025-08-24 | B18-V25~V32-1120, B18-V17~V24-1420 | 11d | 0d | Excavation Fence Foundations [8] | 4,519.28 |
| B18-V25~V32-1430 |  | RC Concrete For Fence Fondations | 5d | 2025-08-25 | 2025-08-30 | B18-V25~V32-1420, B18-V17~V24-1430 | 11d | 0d | Fence Fondations-Eastern side [8]; Fence Fondations-Westren side [8]; Fence Fondations-Back side [8] | 13,423.68 |
| B18-V25~V32-1440 |  | Steel Fixing & Carpentry For Fence Columns | 5d | 2025-08-31 | 2025-09-04 | B18-V25~V32-1430, B18-V17~V24-1440 | 11d | 0d |  |  |
| B18-V25~V32-1450 |  | Establishing Elec For Fence Columns | 4d | 2025-09-06 | 2025-09-09 | B18-V25~V32-1440, B18-V17~V24-1450 | 11d | 0d |  |  |
| B18-V25~V32-1460 |  | Pouring Concrete For Fence Columns | 1d | 2025-09-10 | 2025-09-10 | B18-V25~V32-1450, B18-V17~V24-1460 | 11d | 0d | Fence Columns-Eastern side [8]; Fence Columns-Westren side [8]; Fence Columns-Back side [8] | 9,665.04 |
| B18-V25~V32-1470 |  | Installation Precast Panel For Fence | 4d | 2025-09-11 | 2025-09-15 | B18-V25~V32-1460, B18-V17~V24-1470 | 11d | 0d | Hollow Core Walls [8] | 71,593.2 |
| B18-V25~V32-1480 |  | Bitumen Coating For Fence Fondations | 4d | 2025-09-16 | 2025-09-20 | B18-V25~V32-1470, B18-V17~V24-1480 | 11d | 0d |  |  |
| B18-V25~V32-1490 |  | Pouring Bedding Concrete For "Front" Fence Fondations | 1d | 2025-09-16 | 2025-09-16 | B18-V25~V32-1470, B18-V17~V24-1490 | 18d | 0d |  |  |
| B18-V25~V32-1500 |  | RC Concrete For "Front" Fence Fondations | 4d | 2025-09-17 | 2025-09-21 | B18-V25~V32-1490, B18-V17~V24-1500 | 18d | 0d | Front Fence Fondations [8] | 8,904.4 |
| B18-V25~V32-1510 |  | Outdoor Drainage & Water Line | 4d | 2025-09-21 | 2025-09-24 | B18-V25~V32-1480, B18-V25~V32-1140, B18-V17~V24-1510 | 11d | 0d | Outdoor Drainage [8]; Outdoor Water Line [8] | 13,423.68 |
| B18-V25~V32-1520 |  | Steel Fixing & Carpentry For "Front" Fence Columns | 4d | 2025-09-22 | 2025-09-25 | B18-V25~V32-1500, B18-V17~V24-1520 | 18d | 0d |  |  |
| B18-V25~V32-1530 |  | Establishing Elec For Fence & Yard | 2d | 2025-09-25 | 2025-09-27 | B18-V25~V32-1510, B18-V17~V24-1530 | 11d | 0d | Elec Establishment Fence & Yard [8] | 17,898.32 |
| B18-V25~V32-1540 |  | Establishing Elec For "Front" Fence Columns | 4d | 2025-09-27 | 2025-09-30 | B18-V25~V32-1520, B18-V17~V24-1540 | 18d | 0d |  |  |
| B18-V25~V32-1550 |  | Backfilling the Yard | 4d | 2025-09-28 | 2025-10-01 | B18-V25~V32-1530, B18-V17~V24-1550 | 11d | 0d | Backfilling the Yard [8] | 10,560 |
| B18-V25~V32-1560 |  | Pouring Concrete Wall Of "Front" Fence Columns | 2d | 2025-10-01 | 2025-10-02 | B18-V25~V32-1540, B18-V17~V24-1560 | 18d | 0d | Front Fence Walls [8] | 17,898.32 |
| B18-V25~V32-1570 |  | Bardoura Works For Yard | 4d | 2025-10-02 | 2025-10-06 | B18-V25~V32-1550, B18-V17~V24-1570 | 11d | 0d | Bardoura Works For Yard [8] | 14,408.16 |
| B18-V25~V32-1580 |  | Pouring Concrete Crown Of "Front" Fence Columns | 3d | 2025-10-04 | 2025-10-06 | B18-V25~V32-1560, B18-V17~V24-1580 | 18d | 0d | Fence Columns - C Chanel [8] | 3,310.37 |
| B18-V25~V32-1590 |  | Pouring Concrete Flower Basin Of "Front" Fence Columns | 4d | 2025-10-07 | 2025-10-11 | B18-V25~V32-1580, B18-V17~V24-1590 | 18d | 0d |  |  |
| B18-V25~V32-1600 |  | Antitermite Treatment For Yard | 1d | 2025-10-07 | 2025-10-07 | B18-V25~V32-1570, B18-V17~V24-1600 | 11d | 0d | Antitermite Treatment For Yard [8] |  |
| B18-V25~V32-1610 |  | Pouring Concrete For Yard | 1d | 2025-10-08 | 2025-10-08 | B18-V25~V32-1600, B18-V17~V24-1610 | 11d | 0d |  |  |
| B18-V25~V32-1620 |  | Block Work For Flower Basin | 4d | 2025-10-09 | 2025-10-13 | B18-V25~V32-1610, B18-V17~V24-1620 | 11d | 0d |  |  |
| B18-V25~V32-1630 |  | Plastering Work For Flower Basin | 4d | 2025-10-14 | 2025-10-18 | B18-V25~V32-1620, B18-V17~V24-1630 | 11d | 0d |  |  |
| B18-V25~V32-1640 |  | Interlock Works For The Yard | 4d | 2025-10-19 | 2025-10-22 | B18-V25~V32-1630, B18-V17~V24-1640 | 11d | 0d | Interlock Works For The Yard [8] | 36,785.52 |
| B18-V25~V32-1650 |  | External Grading Works For The Villa | 4d | 2025-10-23 | 2025-10-27 | B18-V25~V32-1640, B18-V17~V24-1650 | 13d | 0d | External Grading Works For The Villa [8] | 3,221.68 |
| B18-V25~V32-1660 |  | Installation The Exterior Door & Garage Door | 5d | 2025-10-23 | 2025-10-28 | B18-V25~V32-1640, B18-V17~V24-1670 | 16d | 1d | Installation The Exterior Door [8]; Installation The Exterior Garage Door [8] | 40,002.72 |
| B18-V25~V32-1670 |  | Fixing Floor Drain For The Yard | 2d | 2025-10-23 | 2025-10-25 | B18-V25~V32-1640, B18-V17~V24-1660 | 19d | 4d | Floor Drain & Clean Out [8] | 13,423.76 |
| B18-V25~V32-1680 |  | Granite Surronds Around The Villa | 4d | 2025-10-28 | 2025-11-01 | B18-V25~V32-1650, B18-V17~V24-1680 | 13d | 2d | Granite Surronds Around The Villa [8] | 25,818.32 |
| B18-V25~V32-1690 |  | Painting The Base Surface Of The Fence | 2d | 2025-10-28 | 2025-10-29 | B18-V25~V32-1750, B18-V17~V24-1690 | 11d | 0d |  |  |
| B18-V25~V32-1700 |  | Painting The Final Face Of The Fence | 4d | 2025-10-30 | 2025-11-03 | B18-V25~V32-1690, B18-V17~V24-1700 | 11d | 2d | Painting Final Face Of The Fence [8] | 37,586.48 |
| B18-V25~V32-1710 |  | Exterior Painting Of The Villa | 5d | 2025-11-06 | 2025-11-11 | B18-V25~V32-1680, B18-V25~V32-1700, B18-V25~V32-1660, B18-V25~V32-1670, B18-V17~V24-1710 | 9d | 0d | Exterior Painting Of The Villa [8]; Exterior Painting Staircase House [8] | 105,689.44 |
| B18-V25~V32-1720 |  | Installation Elec Fixtures & Accessories For The Yard | 4d | 2025-11-12 | 2025-11-16 | B18-V25~V32-1700, B18-V25~V32-1710, B18-V17~V24-1720 | 9d | 0d | Elec feeding panels GF & FF [8] | 22,372.88 |

| ID | WBS | Activity | Duration | Start | Finish | Predecessors | Total float | Free float | Resources | Cost | Department-1 |
| --- | --- | --- | --- | --- | --- | --- | --- | --- | --- | --- | --- |
|  | 5 | **External Sidewalk Works** |  | 2025-10-12 | 2025-11-20 |  |  |  |  |  |  |
| B18-V25~V32-1730 |  | Connection The Drain To The Piblic Network | 3d | 2025-10-12 | 2025-10-14 | B18-V25~V32-1510, B18-V25~V32-1590, B18-V17~V24-1730 | 18d | 3d | Connection Drain To The Piblic Network [8]; Connection Water To The Piblic Network [8] | 13,420.32 |  |
| B18-V25~V32-1740 |  | Pardora Works For The External Sidewalk | 2d | 2025-10-23 | 2025-10-25 | B18-V25~V32-1640, B18-V25~V32-1730, B18-V17~V24-1740 | 11d | 0d |  |  |  |
| B18-V25~V32-1750 |  | Interlock Works For The Exerrnal Sidewalk | 2d | 2025-10-26 | 2025-10-27 | B18-V25~V32-1740, B18-V17~V24-1750 | 11d | 0d |  |  |  |
| B18-V25~V32-1760 |  | Pulling The Villa's Main Elec Cable | 4d | 2025-11-17 | 2025-11-20 | B18-V25~V32-1750, B18-V25~V32-1720, B18-V17~V24-1760 | 9d | 0d | Elec Work Testing [8] | 22,819.84 |  |
|  | 6 | **Final Testing & Handover** |  | 2025-11-20 | 2025-12-13 |  |  |  |  |  |  |
| B18-V25~V32-1770 |  | Mech Work Testing & Handover | 5d | 2025-11-20 | 2025-11-25 | B18-V25~V32-1730, B18-V25~V32-1340, B18-V25~V32-1380, B18-V17~V24-1770 | 8d | 1d | Mech Work Testing & Handover [8] | 14,318.64 |  |
| B18-V25~V32-1780 |  | ElecWork Testing & Handover | 3d | 2025-11-22 | 2025-11-24 | B18-V25~V32-1760, B18-V25~V32-1370, B18-V17~V24-1780 | 9d | 2d | Elec Work Handover [8] | 23,804.12 |  |
| B18-V25~V32-1790 |  | Arch Snaglist & Handover | 4d | 2025-11-26 | 2025-11-30 | B18-V25~V32-1750, B18-V25~V32-1710, B18-V25~V32-1400, B18-V17~V24-1790 | 4d | 2d | Arch Snaglist & Handover [8] | 77,320.64 |  |
| B18-V25~V32-1800 |  | Final Handover Of The Villa To The Consltant | 4d | 2025-12-03 | 2025-12-07 | B18-V25~V32-1790, B18-V25~V32-1780, B18-V25~V32-1770, B18-V25~V32-1410, B18-V17~V24-1800 | 2d | 0d |  |  |  |
| B18-V25~V32-1810 |  | Customer Delivery | 5d | 2025-12-08 | 2025-12-13 | B18-V25~V32-1800, B18-V17~V24-1810 | 2d | 1d |  |  |  |
|  | 8 | **B19-V01~V06** |  | 2025-05-05 | 2025-12-20 |  |  |  |  |  |  |
|  | 2 | **Under Grond Slap Works** |  | 2025-05-05 | 2025-06-14 |  |  |  |  |  |  |
| B19-V01~V08-1000 |  | Excavation&Compaction of Fondation | 6d | 2025-05-05 | 2025-05-11 | B18-V25~V32-1000 | 59d | 0d | Clearing & Groubbing [8]; Excavation & Leveling [8]; Stone Layer [8]; A3 Layer [8]; A1-a 1st Layer [8]; A1-a 2ed Layer [8] | 163,545.76 | Civil |
| B19-V01~V08-1010 |  | Pouring Concrete For Bedding | 2d | 2025-05-12 | 2025-05-13 | B19-V01~V08-1000, B18-V25~V32-1010 | 59d | 0d | PC Carpentry [8]; PC Concrete [8]; RC 18 MPA [9 M3] | 37,899.68 | Civil |
| B19-V01~V08-1020 |  | Reinforcement Concrete For Foundation | 5d | 2025-05-14 | 2025-05-19 | B19-V01~V08-1010, B18-V25~V32-1020 | 59d | 0d | RC Foundation Carpentry [8]; RC Foundation Steel [8]; RC Foundation Concrete [8] | 201,355.92 | Civil |
| B19-V01~V08-1030 |  | Steel Fixing& Carpenter work for Beams | 4d | 2025-05-20 | 2025-05-24 | B19-V01~V08-1020, B18-V25~V32-1030 | 59d | 0d | RC Grade Beam Carpentry & Steel [8] | 44,745.76 | Civil |
| B19-V01~V08-1040 |  | Mech&Elec Establishment for Beams | 3d | 2025-05-25 | 2025-05-27 | B19-V01~V08-1030, B18-V25~V32-1040 | 59d | 0d |  |  | Mech |
| B19-V01~V08-1050 |  | Pouring Concrete For Beams | 1d | 2025-05-28 | 2025-05-28 | B19-V01~V08-1040, B18-V25~V32-1050 | 59d | 0d | RC Grade Beam Concrete [8] | 77,141.68 | Civil |
| B19-V01~V08-1060 |  | Bitmen Coating For Fondation&Beams | 3d | 2025-05-29 | 2025-06-01 | B19-V01~V08-1050, B18-V25~V32-1060 | 59d | 0d | Bitumen Coating Foundations & Grade Beams [8] | 22,372.32 | Civil |
| B19-V01~V08-1070 |  | Backfilling Inside Fondations | 4d | 2025-06-02 | 2025-06-05 | B19-V01~V08-1060, B18-V25~V32-1070 | 59d | 0d | Backfilling 1st Layer [8]; Backfilling 2ed Layer [8] | 11,186.4 | Civil |
| B19-V01~V08-1080 |  | Mech Works Under Grond Slap | 3d | 2025-06-07 | 2025-06-09 | B19-V01~V08-1070, B18-V25~V32-1080 | 59d | 0d | Mech Establishment Under Ground Slap [8] | 13,423.42 | Mech |
| B19-V01~V08-1090 |  | Steel Fixing& Carpenter work for Ground Slap | 3d | 2025-06-10 | 2025-06-12 | B19-V01~V08-1080, B18-V25~V32-1090 | 59d | 0d | Steel & Carpentry For Ground Slap [8] | 10,246.54 | Civil |
| B19-V01~V08-1100 |  | Anti Termite Treatment For Ground Slap | 1d | 2025-06-14 | 2025-06-14 | B19-V01~V08-1090, B18-V25~V32-1100 | 59d | 0d | Anti Termite Treatment nder Ground Slap [8] | 2,237.28 | Civil |
| B19-V01~V08-1110 |  | Pouring Concrete For Ground Slap | 1d | 2025-06-14 | 2025-06-14 | B19-V01~V08-1100 FF, B19-V01~V08-1090, B18-V25~V32-1110 | 59d | 5d | Concrete For Ground Slap [8] | 58,169.52 | Civil |

| ID | WBS | Activity | Duration | Start | Finish | Predecessors | Total float | Free float | Resources | Cost | Department-1 |
| --- | --- | --- | --- | --- | --- | --- | --- | --- | --- | --- | --- |
|  | 4 | **Precast Works** |  | 2025-08-23 | 2025-08-28 |  |  |  |  |  |  |
| B19-V01~V08-1120 |  | Precast Constrction | 6d | 2025-08-23 | 2025-08-28 | B19-V01~V08-1110, B18-V25~V32-1120 | 0d |  | Precast Walls GF [8]; Hollow Core Slap GF [8]; Precast Stairs & staircase House [8]; Thermal insollation Outside Walls [8]; Concrete structure joints [8]; Precast Walls FF [8]; Hollow Core Slap FF [8] | 1,513,460.1 | Civil |
|  | 1 | **Works Inside The Villa** |  | 2025-08-30 | 2025-12-09 |  |  |  |  |  |  |
| B19-V01~V08-1130 |  | Block Work For GF & Estabishment 1F | 6d | 2025-08-30 | 2025-09-04 | B19-V01~V08-1120, B18-V25~V32-1130 | 0d |  | Block GF [8] | 13,647.1 | Arc |
| B19-V01~V08-1140 |  | L.L & H.L Drainage | 6d | 2025-09-06 | 2025-09-11 | B19-V01~V08-1130, B18-V25~V32-1140 | 0d |  | HL Drainage [8]; L.L Drainage [8] | 89,489.28 | Mech |
| B19-V01~V08-1150 |  | Elec Establishment For GF & 1F | 3d | 2025-09-06 | 2025-09-08 | B19-V01~V08-1130, B18-V25~V32-1150 | 3d |  | Elec Establishment GF [8] | 26,840.73 | Elec |
| B19-V01~V08-1160 |  | Screed Work For 1F & Roof | 6d | 2025-09-13 | 2025-09-18 | B19-V01~V08-1140, B19-V01~V08-1150, B18-V25~V32-1160 | 0d |  | Screed 1st Floor [8]; Screed Roof Floor [8]; Leveling Screed 1st Floor [8]; Leveling Screed Roof Floor [8] | 268,467.85 | Civil |
| B19-V01~V08-1170 |  | Water Tank & Heater Foundations | 4d | 2025-09-20 | 2025-09-23 | B19-V01~V08-1160, B18-V25~V32-1170 | 4d | 0d |  |  | Civil |
| B19-V01~V08-1180 |  | Block Works For 1F | 3d | 2025-09-20 | 2025-09-22 | B19-V01~V08-1160, B18-V25~V32-1180 | 0d |  | Block FF [8] | 20,537.81 | Arc |
| B19-V01~V08-1190 |  | Water Line Network | 6d | 2025-09-23 | 2025-09-29 | B19-V01~V08-1180, B18-V25~V32-1190 | 0d |  | Water Line Network [8] | 40,261.13 | Mech |
| B19-V01~V08-1200 |  | Continue Elec Establishment For GF & 1F | 3d | 2025-09-23 | 2025-09-25 | B19-V01~V08-1180, B18-V25~V32-1200 | 3d |  | Elec Establishment FF [8] | 26,840.73 | Elec |
| B19-V01~V08-1210 |  | Thermal Insulation For Roof | 5d | 2025-09-24 | 2025-09-29 | B19-V01~V08-1170, B18-V25~V32-1210 | 4d | 0d | Roof Insulation [8] | 32,530.16 | Arc |
| B19-V01~V08-1220 |  | Roof Floor Tiles | 6d | 2025-09-30 | 2025-10-06 | B19-V01~V08-1210, B18-V25~V32-1220 | 4d | 0d | Roof Tiles [8]; Roof Tiles Joints [8]; Re_Test Roof Insulation [8] | 63,179.38 | Arc |
| B19-V01~V08-1230 |  | Plaster Work For Villa | 6d | 2025-09-30 | 2025-10-06 | B19-V01~V08-1190, B19-V01~V08-1200, B18-V25~V32-1230 | 0d |  | Establishing a plastering GF [8]; Establishing a plastering FF [8]; Plastering GF [8]; Plastering FF [8] | 49,263.81 |  |
| B19-V01~V08-1240 |  | Marbale Stairs & Handrails | 6d | 2025-10-07 | 2025-10-13 | B19-V01~V08-1230, B18-V25~V32-1240 | 22d | 0d | Marbale Stairs [8]; Stairs Handrails SS [8] | 91,494.69 |  |
| B19-V01~V08-1250 |  | Water Proofing Of Bathrooms | 4d | 2025-10-07 | 2025-10-11 | B19-V01~V08-1230, B18-V25~V32-1250 | 0d |  | Bathrooms InsulationGF & FF [8] | 134.24 |  |
| B19-V01~V08-1260 |  | Pulling The Elec Wires | 4d | 2025-10-07 | 2025-10-11 | B19-V01~V08-1230, B18-V25~V32-1260 | 10d | 2d | Elec Wires GF [8]; Elec Wires FF [8] | 80,542.4 |  |
| B19-V01~V08-1270 |  | Bathroom Tiles | 4d | 2025-10-12 | 2025-10-15 | B19-V01~V08-1250, B19-V01~V08-1220, B18-V25~V32-1270 | 0d |  | Ceramic Walls Kitchen [8]; Ceramic Walls Bathrooms GF [8]; Ceramic Walls Bathrooms FF [8]; Ceramic Tiles Bathrooms GF [8]; Ceramic Tiles Kitchen GF [8]; Ceramic Tiles Store GF [8] | 73,204.08 |  |
| B19-V01~V08-1280 |  | Structure For Gypsum | 6d | 2025-10-16 | 2025-10-22 | B19-V01~V08-1270, B18-V25~V32-1280 | 0d |  | Structure For Gypsum GF Rooms [8]; Structure For Gypsum FF Rooms [8]; Structure For Gypsum Bathrooms & Kitchen [8] | 33,550.81 |  |
| B19-V01~V08-1290 |  | Gypsum Board For Room | 4d | 2025-10-23 | 2025-10-27 | B19-V01~V08-1280, B19-V01~V08-1260, B18-V25~V32-1290 | 0d |  | Gypsum Board For GF Room [8]; Gypsum Board For FF Room [8] | 35,796.64 |  |
| B19-V01~V08-1300 |  | Installation Of Gypsum Board For Bathroom & Kitchen | 4d | 2025-10-28 | 2025-11-01 | B19-V01~V08-1290, B18-V25~V32-1300 | 0d |  | Gypsum Board For Bathrooms & Kitchen [8] | 11,052.24 |  |
| B19-V01~V08-1310 |  | Putty Filler For Gypsm Board Ceiling | 6d | 2025-11-02 | 2025-11-08 | B19-V01~V08-1300, B18-V25~V32-1310 | 0d |  | Putty Filler 1st Layer Roof all Rooms [8]; Putty Filler 1st Layer Roof all Bathrooms & Kitchen [8]; Putty Filler1st Layer walls [8] | 62,182.52 |  |
| B19-V01~V08-1320 |  | Fixing Shower Glass | 4d | 2025-11-09 | 2025-11-12 | B19-V01~V08-1310, B18-V25~V32-1320 | 7d | 0d | Shower Glass [8] | 22,372.88 |  |
| B19-V01~V08-1330 |  | Interior Wall Putty Filler | 6d | 2025-11-09 | 2025-11-15 | B19-V01~V08-1310, B19-V01~V08-1240, B18-V25~V32-1330 | 0d |  | Putty Filler 2ed Layer Roof & WAlls GF [8]; Putty Filler 2ed Layer Roof & WAlls FF [8] | 62,150.21 |  |
| B19-V01~V08-1340 |  | Installation Of Sanitry Fixture | 6d | 2025-11-13 | 2025-11-19 | B19-V01~V08-1320, B18-V25~V32-1340 | 7d | 0d | Mech Fixtures & Accessories [8] | 98,438.1 |  |
| B19-V01~V08-1350 |  | 1st Face Paint | 5d | 2025-11-16 | 2025-11-20 | B19-V01~V08-1330, B18-V25~V32-1350 | 0d |  |  |  |  |
| B19-V01~V08-1360 |  | Installation Of Aluminum Windows | 6d | 2025-11-16 | 2025-11-22 | B19-V01~V08-1330, B18-V25~V32-1360 | 9d | 0d | Aluminum Windows [8] | 84,797.8 |  |
| B19-V01~V08-1370 |  | Installation Of Elec Fixture & Accessories | 5d | 2025-11-16 | 2025-11-20 | B19-V01~V08-1310, B19-V01~V08-1330, B19-V01~V08-1260, B18-V25~V32-1370 | 14d | 1d | Elec Fixtures & Accessories Villa & Yard [8]; Elec Cables GF & FF & Earthing [8] | 53,694.88 |  |
| B19-V01~V08-1380 |  | Installation Of Water Tank-Heater & Pumps | 6d | 2025-11-20 | 2025-11-26 | B19-V01~V08-1340, B19-V01~V08-1220, B18-V25~V32-1380 | 7d | 0d | Water Tank & booster Pump [8]; Lower Pump [8]; Heater [8] | 129,730.28 |  |
| B19-V01~V08-1390 |  | Installation Of Parquet | 4d | 2025-11-22 | 2025-11-25 | B19-V01~V08-1350, B18-V25~V32-1390 | 0d |  | Installation Of Parquet [8] | 52,978.96 |  |
| B19-V01~V08-1400 |  | Installation Of Wooden Doors | 6d | 2025-11-26 | 2025-12-02 | B19-V01~V08-1390, B18-V25~V32-1400 | 0d |  | Wooden Doors Accessories all Villa [8]; Wooden Doors Kitchen & Bathroom without Accessories [8]; Exterior Wooden Doors [8] | 142,109.01 |  |
| B19-V01~V08-1410 |  | Final Face Paint | 6d | 2025-12-03 | 2025-12-09 | B19-V01~V08-1360, B19-V01~V08-1400, B18-V25~V32-1410 | 0d |  | Final Face Paint Villa [8] | 31,090.55 |  |

| ID | WBS | Activity | Duration | Start | Finish | Predecessors | Total float | Free float | Resources | Cost |
| --- | --- | --- | --- | --- | --- | --- | --- | --- | --- | --- |
|  | 3 | **Fence & Courtyard Works** |  | 2025-08-30 | 2025-11-22 |  |  |  |  |  |
| B19-V01~V08-1420 |  | Pouring Bedding Concrete For Fence Fondations | 2d | 2025-08-30 | 2025-08-31 | B19-V01~V08-1120, B18-V25~V32-1420 | 10d | 0d | Excavation Fence Foundations [8] | 4,519.28 |
| B19-V01~V08-1430 |  | RC Concrete For Fence Fondations | 5d | 2025-09-01 | 2025-09-06 | B19-V01~V08-1420, B18-V25~V32-1430 | 10d | 0d | Fence Fondations-Eastern side [8]; Fence Fondations-Westren side [8]; Fence Fondations-Back side [8] | 13,423.68 |
| B19-V01~V08-1440 |  | Steel Fixing & Carpentry For Fence Columns | 5d | 2025-09-07 | 2025-09-11 | B19-V01~V08-1430, B18-V25~V32-1440 | 10d | 0d |  |  |
| B19-V01~V08-1450 |  | Establishing Elec For Fence Columns | 4d | 2025-09-13 | 2025-09-16 | B19-V01~V08-1440, B18-V25~V32-1450 | 10d | 0d |  |  |
| B19-V01~V08-1460 |  | Pouring Concrete For Fence Columns | 1d | 2025-09-17 | 2025-09-17 | B19-V01~V08-1450, B18-V25~V32-1460 | 10d | 0d | Fence Columns-Eastern side [8]; Fence Columns-Westren side [8]; Fence Columns-Back side [8] | 9,665.04 |
| B19-V01~V08-1470 |  | Installation Precast Panel For Fence | 4d | 2025-09-18 | 2025-09-22 | B19-V01~V08-1460, B18-V25~V32-1470 | 10d | 0d | Hollow Core Walls [8] | 71,593.2 |
| B19-V01~V08-1480 |  | Bitumen Coating For Fence Fondations | 4d | 2025-09-23 | 2025-09-27 | B19-V01~V08-1470, B18-V25~V32-1480 | 10d | 0d |  |  |
| B19-V01~V08-1490 |  | Pouring Bedding Concrete For "Front" Fence Fondations | 1d | 2025-09-23 | 2025-09-23 | B19-V01~V08-1470, B18-V25~V32-1490 | 17d | 0d |  |  |
| B19-V01~V08-1500 |  | RC Concrete For "Front" Fence Fondations | 4d | 2025-09-24 | 2025-09-28 | B19-V01~V08-1490, B18-V25~V32-1500 | 17d | 0d | Front Fence Fondations [8] | 8,904.4 |
| B19-V01~V08-1510 |  | Outdoor Drainage & Water Line | 4d | 2025-09-28 | 2025-10-01 | B19-V01~V08-1480, B19-V01~V08-1140, B18-V25~V32-1510 | 10d | 0d | Outdoor Drainage [8]; Outdoor Water Line [8] | 13,423.68 |
| B19-V01~V08-1520 |  | Steel Fixing & Carpentry For "Front" Fence Columns | 4d | 2025-09-29 | 2025-10-02 | B19-V01~V08-1500, B18-V25~V32-1520 | 17d | 0d |  |  |
| B19-V01~V08-1530 |  | Establishing Elec For Fence & Yard | 2d | 2025-10-02 | 2025-10-04 | B19-V01~V08-1510, B18-V25~V32-1530 | 10d | 0d | Elec Establishment Fence & Yard [8] | 17,898.32 |
| B19-V01~V08-1540 |  | Establishing Elec For "Front" Fence Columns | 4d | 2025-10-04 | 2025-10-07 | B19-V01~V08-1520, B18-V25~V32-1540 | 17d | 0d |  |  |
| B19-V01~V08-1550 |  | Backfilling the Yard | 4d | 2025-10-05 | 2025-10-08 | B19-V01~V08-1530, B18-V25~V32-1550 | 10d | 0d | Backfilling the Yard [8] | 10,560 |
| B19-V01~V08-1560 |  | Pouring Concrete Wall Of "Front" Fence Columns | 2d | 2025-10-08 | 2025-10-09 | B19-V01~V08-1540, B18-V25~V32-1560 | 17d | 0d | Front Fence Walls [8] | 17,898.32 |
| B19-V01~V08-1570 |  | Bardoura Works For Yard | 4d | 2025-10-09 | 2025-10-13 | B19-V01~V08-1550, B18-V25~V32-1570 | 10d | 0d | Bardoura Works For Yard [8] | 14,408.16 |
| B19-V01~V08-1580 |  | Pouring Concrete Crown Of "Front" Fence Columns | 3d | 2025-10-11 | 2025-10-13 | B19-V01~V08-1560, B18-V25~V32-1580 | 17d | 0d | Fence Columns - C Chanel [8] | 3,310.37 |
| B19-V01~V08-1590 |  | Pouring Concrete Flower Basin Of "Front" Fence Columns | 4d | 2025-10-14 | 2025-10-18 | B19-V01~V08-1580, B18-V25~V32-1590 | 17d | 0d |  |  |
| B19-V01~V08-1600 |  | Antitermite Treatment For Yard | 1d | 2025-10-14 | 2025-10-14 | B19-V01~V08-1570, B18-V25~V32-1600 | 10d | 0d | Antitermite Treatment For Yard [8] |  |
| B19-V01~V08-1610 |  | Pouring Concrete For Yard | 1d | 2025-10-15 | 2025-10-15 | B19-V01~V08-1600, B18-V25~V32-1610 | 10d | 0d |  |  |
| B19-V01~V08-1620 |  | Block Work For Flower Basin | 4d | 2025-10-16 | 2025-10-20 | B19-V01~V08-1610, B18-V25~V32-1620 | 10d | 0d |  |  |
| B19-V01~V08-1630 |  | Plastering Work For Flower Basin | 4d | 2025-10-21 | 2025-10-25 | B19-V01~V08-1620, B18-V25~V32-1630 | 10d | 0d |  |  |
| B19-V01~V08-1640 |  | Interlock Works For The Yard | 4d | 2025-10-26 | 2025-10-29 | B19-V01~V08-1630, B18-V25~V32-1640 | 10d | 0d | Interlock Works For The Yard [8] | 36,785.52 |
| B19-V01~V08-1650 |  | External Grading Works For The Villa | 4d | 2025-10-30 | 2025-11-03 | B19-V01~V08-1640, B18-V25~V32-1650 | 12d | 0d | External Grading Works For The Villa [8] | 3,221.68 |
| B19-V01~V08-1660 |  | Installation The Exterior Door & Garage Door | 5d | 2025-10-30 | 2025-11-04 | B19-V01~V08-1640, B18-V25~V32-1660 | 15d | 1d | Installation The Exterior Door [8]; Installation The Exterior Garage Door [8] | 40,002.72 |
| B19-V01~V08-1670 |  | Fixing Floor Drain For The Yard | 2d | 2025-10-30 | 2025-11-01 | B19-V01~V08-1640, B18-V25~V32-1670 | 18d | 4d | Floor Drain & Clean Out [8] | 13,423.76 |
| B19-V01~V08-1680 |  | Granite Surronds Around The Villa | 4d | 2025-11-04 | 2025-11-08 | B19-V01~V08-1650, B18-V25~V32-1680 | 12d | 2d | Granite Surronds Around The Villa [8] | 25,818.32 |
| B19-V01~V08-1690 |  | Painting The Base Surface Of The Fence | 2d | 2025-11-04 | 2025-11-05 | B19-V01~V08-1750, B18-V25~V32-1690 | 10d | 0d |  |  |
| B19-V01~V08-1700 |  | Painting The Final Face Of The Fence | 4d | 2025-11-06 | 2025-11-10 | B19-V01~V08-1690, B18-V25~V32-1700 | 10d | 1d | Painting Final Face Of The Fence [8] | 37,586.48 |
| B19-V01~V08-1710 |  | Exterior Painting Of The Villa | 5d | 2025-11-12 | 2025-11-17 | B19-V01~V08-1680, B19-V01~V08-1700, B19-V01~V08-1660, B19-V01~V08-1670, B18-V25~V32-1710 | 9d | 0d | Exterior Painting Of The Villa [8]; Exterior Painting Staircase House [8] | 105,689.44 |
| B19-V01~V08-1720 |  | Installation Elec Fixtures & Accessories For The Yard | 4d | 2025-11-18 | 2025-11-22 | B19-V01~V08-1700, B19-V01~V08-1710, B18-V25~V32-1720 | 9d | 0d | Elec feeding panels GF & FF [8] | 22,372.88 |

| ID | WBS | Activity | Duration | Start | Finish | Predecessors | Total float | Free float | Resources | Cost | Department-1 |
| --- | --- | --- | --- | --- | --- | --- | --- | --- | --- | --- | --- |
|  | 5 | **External Sidewalk Works** |  | 2025-10-19 | 2025-11-26 |  |  |  |  |  |  |
| B19-V01~V08-1730 |  | Connection The Drain To The Piblic Network | 3d | 2025-10-19 | 2025-10-21 | B19-V01~V08-1510, B19-V01~V08-1590, B18-V25~V32-1730 | 17d | 3d | Connection Drain To The Piblic Network [8]; Connection Water To The Piblic Network [8] | 13,420.32 |  |
| B19-V01~V08-1740 |  | Pardora Works For The External Sidewalk | 2d | 2025-10-30 | 2025-11-01 | B19-V01~V08-1640, B19-V01~V08-1730, B18-V25~V32-1740 | 10d | 0d |  |  |  |
| B19-V01~V08-1750 |  | Interlock Works For The Exerrnal Sidewalk | 2d | 2025-11-02 | 2025-11-03 | B19-V01~V08-1740, B18-V25~V32-1750 | 10d | 0d |  |  |  |
| B19-V01~V08-1760 |  | Pulling The Villa's Main Elec Cable | 4d | 2025-11-23 | 2025-11-26 | B19-V01~V08-1750, B19-V01~V08-1720, B18-V25~V32-1760 | 9d | 0d | Elec Work Testing [8] | 22,819.84 |  |
|  | 6 | **Final Testing & Handover** |  | 2025-11-27 | 2025-12-20 |  |  |  |  |  |  |
| B19-V01~V08-1770 |  | Mech Work Testing & Handover | 4d | 2025-11-27 | 2025-12-01 | B19-V01~V08-1730, B19-V01~V08-1340, B19-V01~V08-1380, B18-V25~V32-1770 | 8d | 2d | Mech Work Testing & Handover [8] | 14,318.64 |  |
| B19-V01~V08-1780 |  | ElecWork Testing & Handover | 3d | 2025-11-27 | 2025-11-30 | B19-V01~V08-1760, B19-V01~V08-1370, B18-V25~V32-1780 | 9d | 2d | Elec Work Handover [8] | 23,804.12 |  |
| B19-V01~V08-1790 |  | Arch Snaglist & Handover | 4d | 2025-12-03 | 2025-12-07 | B19-V01~V08-1750, B19-V01~V08-1710, B19-V01~V08-1400, B18-V25~V32-1790 | 3d | 2d | Arch Snaglist & Handover [8] | 77,320.64 |  |
| B19-V01~V08-1800 |  | Final Handover Of The Villa To The Consltant | 4d | 2025-12-10 | 2025-12-14 | B19-V01~V08-1790, B19-V01~V08-1780, B19-V01~V08-1770, B19-V01~V08-1410, B18-V25~V32-1800 | 1d | 0d |  |  |  |
| B19-V01~V08-1810 |  | Customer Delivery | 5d | 2025-12-15 | 2025-12-20 | B19-V01~V08-1800, B18-V25~V32-1810 | 1d |  |  |  |  |
|  | 9 | **B19-V07~V12** |  | 2025-05-12 | 2025-12-27 |  |  |  |  |  |  |
|  | 2 | **Under Grond Slap Works** |  | 2025-05-12 | 2025-06-21 |  |  |  |  |  |  |
| B19-V09~V14-1000 |  | Excavation&Compaction of Fondation | 6d | 2025-05-12 | 2025-05-18 | B19-V01~V08-1000 | 59d | 0d | Clearing & Groubbing [6]; Excavation & Leveling [6]; Stone Layer [6]; A3 Layer [6]; A1-a 1st Layer [6]; A1-a 2ed Layer [6] | 122,659.32 | Civil |
| B19-V09~V14-1010 |  | Pouring Concrete For Bedding | 2d | 2025-05-19 | 2025-05-20 | B19-V09~V14-1000, B19-V01~V08-1010 | 59d | 0d | PC Carpentry [6]; PC Concrete [6]; RC 18 MPA [9 M3] | 28,424.76 | Civil |
| B19-V09~V14-1020 |  | Reinforcement Concrete For Foundation | 5d | 2025-05-21 | 2025-05-26 | B19-V09~V14-1010, B19-V01~V08-1020 | 59d | 0d | RC Foundation Carpentry [6]; RC Foundation Steel [6]; RC Foundation Concrete [6] | 151,016.94 | Civil |
| B19-V09~V14-1030 |  | Steel Fixing& Carpenter work for Beams | 4d | 2025-05-27 | 2025-05-31 | B19-V09~V14-1020, B19-V01~V08-1030 | 59d | 0d | RC Grade Beam Carpentry & Steel [6] | 33,559.32 | Civil |
| B19-V09~V14-1040 |  | Mech&Elec Establishment for Beams | 3d | 2025-06-01 | 2025-06-03 | B19-V09~V14-1030, B19-V01~V08-1040 | 59d | 0d |  |  | Mech |
| B19-V09~V14-1050 |  | Pouring Concrete For Beams | 1d | 2025-06-04 | 2025-06-04 | B19-V09~V14-1040, B19-V01~V08-1050 | 59d | 0d | RC Grade Beam Concrete [6] | 57,856.26 | Civil |
| B19-V09~V14-1060 |  | Bitmen Coating For Fondation&Beams | 3d | 2025-06-05 | 2025-06-08 | B19-V09~V14-1050, B19-V01~V08-1060 | 59d | 0d | Bitumen Coating Foundations & Grade Beams [6] | 16,779.66 | Civil |
| B19-V09~V14-1070 |  | Backfilling Inside Fondations | 4d | 2025-06-09 | 2025-06-12 | B19-V09~V14-1060, B19-V01~V08-1070 | 59d | 0d | Backfilling 1st Layer [6]; Backfilling 2ed Layer [6] | 8,389.8 | Civil |
| B19-V09~V14-1080 |  | Mech Works Under Grond Slap | 3d | 2025-06-14 | 2025-06-16 | B19-V09~V14-1070, B19-V01~V08-1080 | 59d | 0d | Mech Establishment Under Ground Slap [6] | 10,067.82 | Mech |
| B19-V09~V14-1090 |  | Steel Fixing& Carpenter work for Ground Slap | 3d | 2025-06-17 | 2025-06-19 | B19-V09~V14-1080, B19-V01~V08-1090 | 59d | 0d | Steel & Carpentry For Ground Slap [6] | 7,685.1 | Civil |
| B19-V09~V14-1100 |  | Anti Termite Treatment For Ground Slap | 1d | 2025-06-21 | 2025-06-21 | B19-V09~V14-1090, B19-V01~V08-1100 | 59d | 0d | Anti Termite Treatment nder Ground Slap [6] | 1,677.96 | Civil |
| B19-V09~V14-1110 |  | Pouring Concrete For Ground Slap | 1d | 2025-06-21 | 2025-06-21 | B19-V09~V14-1100 FF, B19-V09~V14-1090, B19-V01~V08-1110 | 59d |  | Concrete For Ground Slap [6] | 43,627.14 | Civil |

| ID | WBS | Activity | Duration | Start | Finish | Predecessors | Total float | Free float | Resources | Cost | Department-1 |
| --- | --- | --- | --- | --- | --- | --- | --- | --- | --- | --- | --- |
|  | 4 | **Precast Works** |  | 2025-08-30 | 2025-09-04 |  |  |  |  |  |  |
| B19-V09~V14-1120 |  | Precast Constrction | 6d | 2025-08-30 | 2025-09-04 | B19-V09~V14-1110, B19-V01~V08-1120 | 0d |  | Precast Walls GF [6]; Hollow Core Slap GF [6]; Precast Stairs & staircase House [6]; Thermal insollation Outside Walls [6]; Concrete structure joints [6]; Precast Walls FF [6]; Hollow Core Slap FF [6] | 1,135,378.92 | Civil |
|  | 1 | **Works Inside The Villa** |  | 2025-09-06 | 2025-12-16 |  |  |  |  |  |  |
| B19-V09~V14-1130 |  | Block Work For GF & Estabishment 1F | 6d | 2025-09-06 | 2025-09-11 | B19-V09~V14-1120, B19-V01~V08-1130 | 0d |  | Block GF [6] | 10,235.58 | Arc |
| B19-V09~V14-1140 |  | L.L & H.L Drainage | 6d | 2025-09-13 | 2025-09-18 | B19-V09~V14-1130, B19-V01~V08-1140 | 0d |  | HL Drainage [6]; L.L Drainage [6] | 67,118.64 | Mech |
| B19-V09~V14-1150 |  | Elec Establishment For GF & 1F | 3d | 2025-09-13 | 2025-09-15 | B19-V09~V14-1130, B19-V01~V08-1150 | 3d |  | Elec Establishment GF [6] | 20,135.58 | Elec |
| B19-V09~V14-1160 |  | Screed Work For 1F & Roof | 6d | 2025-09-20 | 2025-09-25 | B19-V09~V14-1140, B19-V09~V14-1150, B19-V01~V08-1160 | 0d |  | Screed 1st Floor [6]; Screed Roof Floor [6]; Leveling Screed 1st Floor [6]; Leveling Screed Roof Floor [6] | 201,355.92 | Civil |
| B19-V09~V14-1170 |  | Water Tank & Heater Foundations | 4d | 2025-09-27 | 2025-09-30 | B19-V09~V14-1160, B19-V01~V08-1170 | 4d | 0d |  |  | Civil |
| B19-V09~V14-1180 |  | Block Works For 1F | 3d | 2025-09-27 | 2025-09-29 | B19-V09~V14-1160, B19-V01~V08-1180 | 0d |  | Block FF [6] | 15,403.74 | Arc |
| B19-V09~V14-1190 |  | Water Line Network | 6d | 2025-09-30 | 2025-10-06 | B19-V09~V14-1180, B19-V01~V08-1190 | 0d |  | Water Line Network [6] | 30,203.4 | Mech |
| B19-V09~V14-1200 |  | Continue Elec Establishment For GF & 1F | 3d | 2025-09-30 | 2025-10-02 | B19-V09~V14-1180, B19-V01~V08-1200 | 3d |  | Elec Establishment FF [6] | 20,135.58 | Elec |
| B19-V09~V14-1210 |  | Thermal Insulation For Roof | 5d | 2025-10-01 | 2025-10-06 | B19-V09~V14-1170, B19-V01~V08-1210 | 4d | 0d | Roof Insulation [6] | 24,397.62 | Arc |
| B19-V09~V14-1220 |  | Roof Floor Tiles | 6d | 2025-10-07 | 2025-10-13 | B19-V09~V14-1210, B19-V01~V08-1220 | 4d |  | Roof Tiles [6]; Roof Tiles Joints [6]; Re_Test Roof Insulation [6] | 47,385.72 | Arc |
| B19-V09~V14-1230 |  | Plaster Work For Villa | 6d | 2025-10-07 | 2025-10-13 | B19-V09~V14-1190, B19-V09~V14-1200, B19-V01~V08-1230 | 0d |  | Establishing a plastering GF [6]; Establishing a plastering FF [6]; Plastering GF [6]; Plastering FF [6] | 36,948.78 |  |
| B19-V09~V14-1240 |  | Marbale Stairs & Handrails | 6d | 2025-10-14 | 2025-10-20 | B19-V09~V14-1230, B19-V01~V08-1240 | 22d |  | Marbale Stairs [6]; Stairs Handrails SS [6] | 68,628.72 |  |
| B19-V09~V14-1250 |  | Water Proofing Of Bathrooms | 4d | 2025-10-14 | 2025-10-18 | B19-V09~V14-1230, B19-V01~V08-1250 | 0d |  | Bathrooms InsulationGF & FF [6] | 100.68 |  |
| B19-V09~V14-1260 |  | Pulling The Elec Wires | 4d | 2025-10-14 | 2025-10-18 | B19-V09~V14-1230, B19-V01~V08-1260 | 10d |  | Elec Wires GF [6]; Elec Wires FF [6] | 60,406.8 |  |
| B19-V09~V14-1270 |  | Bathroom Tiles | 4d | 2025-10-19 | 2025-10-22 | B19-V09~V14-1250, B19-V09~V14-1220, B19-V01~V08-1270 | 0d |  | Ceramic Walls Kitchen [6]; Ceramic Walls Bathrooms GF [6]; Ceramic Walls Bathrooms FF [6]; Ceramic Tiles Bathrooms GF [6]; Ceramic Tiles Kitchen GF [6]; Ceramic Tiles Store GF [6] | 54,903.06 |  |
| B19-V09~V14-1280 |  | Structure For Gypsum | 6d | 2025-10-23 | 2025-10-29 | B19-V09~V14-1270, B19-V01~V08-1280 | 0d |  | Structure For Gypsum GF Rooms [6]; Structure For Gypsum FF Rooms [6]; Structure For Gypsum Bathrooms & Kitchen [6] | 25,169.4 |  |
| B19-V09~V14-1290 |  | Gypsum Board For Room | 4d | 2025-10-30 | 2025-11-03 | B19-V09~V14-1280, B19-V09~V14-1260, B19-V01~V08-1290 | 0d |  | Gypsum Board For GF Room [6]; Gypsum Board For FF Room [6] | 26,847.48 |  |
| B19-V09~V14-1300 |  | Installation Of Gypsum Board For Bathroom & Kitchen | 4d | 2025-11-04 | 2025-11-08 | B19-V09~V14-1290, B19-V01~V08-1300 | 0d |  | Gypsum Board For Bathrooms & Kitchen [6] | 8,289.18 |  |
| B19-V09~V14-1310 |  | Putty Filler For Gypsm Board Ceiling | 6d | 2025-11-09 | 2025-11-15 | B19-V09~V14-1300, B19-V01~V08-1310 | 0d |  | Putty Filler 1st Layer Roof all Rooms [6]; Putty Filler 1st Layer Roof all Bathrooms & Kitchen [6]; Putty Filler1st Layer walls [6] | 46,647.42 |  |
| B19-V09~V14-1320 |  | Fixing Shower Glass | 4d | 2025-11-16 | 2025-11-19 | B19-V09~V14-1310, B19-V01~V08-1320 | 7d | 0d | Shower Glass [6] | 16,779.66 |  |
| B19-V09~V14-1330 |  | Interior Wall Putty Filler | 6d | 2025-11-16 | 2025-11-22 | B19-V09~V14-1310, B19-V09~V14-1240, B19-V01~V08-1330 | 0d |  | Putty Filler 2ed Layer Roof & WAlls GF [6]; Putty Filler 2ed Layer Roof & WAlls FF [6] | 46,613.82 |  |
| B19-V09~V14-1340 |  | Installation Of Sanitry Fixture | 6d | 2025-11-20 | 2025-11-26 | B19-V09~V14-1320, B19-V01~V08-1340 | 7d | 0d | Mech Fixtures & Accessories [6] | 73,830.42 |  |
| B19-V09~V14-1350 |  | 1st Face Paint | 5d | 2025-11-23 | 2025-11-27 | B19-V09~V14-1330, B19-V01~V08-1350 | 0d |  |  |  |  |
| B19-V09~V14-1360 |  | Installation Of Aluminum Windows | 6d | 2025-11-23 | 2025-11-29 | B19-V09~V14-1330, B19-V01~V08-1360 | 9d |  | Aluminum Windows [6] | 63,599.94 |  |
| B19-V09~V14-1370 |  | Installation Of Elec Fixture & Accessories | 5d | 2025-11-23 | 2025-11-27 | B19-V09~V14-1310, B19-V09~V14-1330, B19-V09~V14-1260, B19-V01~V08-1370 | 13d | 4d | Elec Fixtures & Accessories Villa & Yard [6]; Elec Cables GF & FF & Earthing [6] | 40,271.16 |  |
| B19-V09~V14-1380 |  | Installation Of Water Tank-Heater & Pumps | 6d | 2025-11-27 | 2025-12-03 | B19-V09~V14-1340, B19-V09~V14-1220, B19-V01~V08-1380 | 7d | 0d | Water Tank & booster Pump [6]; Lower Pump [6]; Heater [6] | 97,322.04 |  |
| B19-V09~V14-1390 |  | Installation Of Parquet | 4d | 2025-11-29 | 2025-12-02 | B19-V09~V14-1350, B19-V01~V08-1390 | 0d |  | Installation Of Parquet [6] | 39,734.22 |  |
| B19-V09~V14-1400 |  | Installation Of Wooden Doors | 6d | 2025-12-03 | 2025-12-09 | B19-V09~V14-1390, B19-V01~V08-1400 | 0d |  | Wooden Doors Accessories all Villa [6]; Wooden Doors Kitchen & Bathroom without Accessories [6]; Exterior Wooden Doors [6] | 106,584.42 |  |
| B19-V09~V14-1410 |  | Final Face Paint | 6d | 2025-12-10 | 2025-12-16 | B19-V09~V14-1360, B19-V09~V14-1400, B19-V01~V08-1410 | 0d |  | Final Face Paint Villa [6] | 23,323.74 |  |

| ID | WBS | Activity | Duration | Start | Finish | Predecessors | Total float | Free float | Resources | Cost |
| --- | --- | --- | --- | --- | --- | --- | --- | --- | --- | --- |
|  | 3 | **Fence & Courtyard Works** |  | 2025-09-06 | 2025-11-27 |  |  |  |  |  |
| B19-V09~V14-1420 |  | Pouring Bedding Concrete For Fence Fondations | 2d | 2025-09-06 | 2025-09-07 | B19-V09~V14-1120, B19-V01~V08-1420 | 9d | 0d | Excavation Fence Foundations [6] | 3,389.46 |
| B19-V09~V14-1430 |  | RC Concrete For Fence Fondations | 5d | 2025-09-08 | 2025-09-13 | B19-V09~V14-1420, B19-V01~V08-1430 | 9d | 0d | Fence Fondations-Eastern side [6]; Fence Fondations-Westren side [6]; Fence Fondations-Back side [6] | 10,067.76 |
| B19-V09~V14-1440 |  | Steel Fixing & Carpentry For Fence Columns | 5d | 2025-09-14 | 2025-09-18 | B19-V09~V14-1430, B19-V01~V08-1440 | 9d | 0d |  |  |
| B19-V09~V14-1450 |  | Establishing Elec For Fence Columns | 4d | 2025-09-20 | 2025-09-23 | B19-V09~V14-1440, B19-V01~V08-1450 | 9d | 0d |  |  |
| B19-V09~V14-1460 |  | Pouring Concrete For Fence Columns | 1d | 2025-09-24 | 2025-09-24 | B19-V09~V14-1450, B19-V01~V08-1460 | 9d | 0d | Fence Columns-Eastern side [6]; Fence Columns-Westren side [6]; Fence Columns-Back side [6] | 7,248.78 |
| B19-V09~V14-1470 |  | Installation Precast Panel For Fence | 4d | 2025-09-25 | 2025-09-29 | B19-V09~V14-1460, B19-V01~V08-1470 | 9d | 0d | Hollow Core Walls [6] | 53,694.9 |
| B19-V09~V14-1480 |  | Bitumen Coating For Fence Fondations | 4d | 2025-09-30 | 2025-10-04 | B19-V09~V14-1470, B19-V01~V08-1480 | 9d | 0d |  |  |
| B19-V09~V14-1490 |  | Pouring Bedding Concrete For "Front" Fence Fondations | 1d | 2025-09-30 | 2025-09-30 | B19-V09~V14-1470, B19-V01~V08-1490 | 16d | 0d |  |  |
| B19-V09~V14-1500 |  | RC Concrete For "Front" Fence Fondations | 4d | 2025-10-01 | 2025-10-05 | B19-V09~V14-1490, B19-V01~V08-1500 | 16d | 0d | Front Fence Fondations [6] | 6,678.3 |
| B19-V09~V14-1510 |  | Outdoor Drainage & Water Line | 4d | 2025-10-05 | 2025-10-08 | B19-V09~V14-1480, B19-V09~V14-1140, B19-V01~V08-1510 | 9d | 0d | Outdoor Drainage [6]; Outdoor Water Line [6] | 10,067.76 |
| B19-V09~V14-1520 |  | Steel Fixing & Carpentry For "Front" Fence Columns | 4d | 2025-10-06 | 2025-10-09 | B19-V09~V14-1500, B19-V01~V08-1520 | 16d | 0d |  |  |
| B19-V09~V14-1530 |  | Establishing Elec For Fence & Yard | 2d | 2025-10-09 | 2025-10-11 | B19-V09~V14-1510, B19-V01~V08-1530 | 9d | 0d | Elec Establishment Fence & Yard [6] | 13,423.74 |
| B19-V09~V14-1540 |  | Establishing Elec For "Front" Fence Columns | 4d | 2025-10-11 | 2025-10-14 | B19-V09~V14-1520, B19-V01~V08-1540 | 16d | 0d |  |  |
| B19-V09~V14-1550 |  | Backfilling the Yard | 4d | 2025-10-12 | 2025-10-15 | B19-V09~V14-1530, B19-V01~V08-1550 | 9d | 0d | Backfilling the Yard [6] | 7,920 |
| B19-V09~V14-1560 |  | Pouring Concrete Wall Of "Front" Fence Columns | 2d | 2025-10-15 | 2025-10-16 | B19-V09~V14-1540, B19-V01~V08-1560 | 16d | 0d | Front Fence Walls [6] | 13,423.74 |
| B19-V09~V14-1570 |  | Bardoura Works For Yard | 4d | 2025-10-16 | 2025-10-20 | B19-V09~V14-1550, B19-V01~V08-1570 | 9d | 0d | Bardoura Works For Yard [6] | 10,806.12 |
| B19-V09~V14-1580 |  | Pouring Concrete Crown Of "Front" Fence Columns | 3d | 2025-10-18 | 2025-10-20 | B19-V09~V14-1560, B19-V01~V08-1580 | 16d | 0d | Fence Columns - C Chanel [6] | 2,483.4 |
| B19-V09~V14-1590 |  | Pouring Concrete Flower Basin Of "Front" Fence Columns | 4d | 2025-10-21 | 2025-10-25 | B19-V09~V14-1580, B19-V01~V08-1590 | 16d | 0d |  |  |
| B19-V09~V14-1600 |  | Antitermite Treatment For Yard | 1d | 2025-10-21 | 2025-10-21 | B19-V09~V14-1570, B19-V01~V08-1600 | 9d | 0d | Antitermite Treatment For Yard [6] |  |
| B19-V09~V14-1610 |  | Pouring Concrete For Yard | 1d | 2025-10-22 | 2025-10-22 | B19-V09~V14-1600, B19-V01~V08-1610 | 9d | 0d |  |  |
| B19-V09~V14-1620 |  | Block Work For Flower Basin | 4d | 2025-10-23 | 2025-10-27 | B19-V09~V14-1610, B19-V01~V08-1620 | 9d | 0d |  |  |
| B19-V09~V14-1630 |  | Plastering Work For Flower Basin | 4d | 2025-10-28 | 2025-11-01 | B19-V09~V14-1620, B19-V01~V08-1630 | 9d | 0d |  |  |
| B19-V09~V14-1640 |  | Interlock Works For The Yard | 4d | 2025-11-02 | 2025-11-05 | B19-V09~V14-1630, B19-V01~V08-1640 | 9d | 0d | Interlock Works For The Yard [6] | 27,589.14 |
| B19-V09~V14-1650 |  | External Grading Works For The Villa | 4d | 2025-11-06 | 2025-11-10 | B19-V09~V14-1640, B19-V01~V08-1650 | 11d | 0d | External Grading Works For The Villa [6] | 2,416.26 |
| B19-V09~V14-1660 |  | Installation The Exterior Door & Garage Door | 5d | 2025-11-06 | 2025-11-11 | B19-V09~V14-1640, B19-V01~V08-1660 | 14d | 5d | Installation The Exterior Door [6]; Installation The Exterior Garage Door [6] | 30,002.04 |
| B19-V09~V14-1670 |  | Fixing Floor Drain For The Yard | 2d | 2025-11-06 | 2025-11-08 | B19-V09~V14-1640, B19-V01~V08-1670 | 17d | 8d | Floor Drain & Clean Out [6] | 10,067.82 |
| B19-V09~V14-1680 |  | Granite Surronds Around The Villa | 4d | 2025-11-11 | 2025-11-15 | B19-V09~V14-1650, B19-V01~V08-1680 | 11d | 2d | Granite Surronds Around The Villa [6] | 19,363.74 |
| B19-V09~V14-1690 |  | Painting The Base Surface Of The Fence | 2d | 2025-11-11 | 2025-11-12 | B19-V09~V14-1750, B19-V01~V08-1690 | 9d | 0d |  |  |
| B19-V09~V14-1700 |  | Painting The Final Face Of The Fence | 4d | 2025-11-13 | 2025-11-17 | B19-V09~V14-1690, B19-V01~V08-1700 | 9d | 0d | Painting Final Face Of The Fence [6] | 28,189.86 |
| B19-V09~V14-1710 |  | Exterior Painting Of The Villa | 5d | 2025-11-18 | 2025-11-23 | B19-V09~V14-1680, B19-V09~V14-1700, B19-V09~V14-1660, B19-V09~V14-1670, B19-V01~V08-1710 | 9d | 0d | Exterior Painting Of The Villa [6]; Exterior Painting Staircase House [6] | 79,267.08 |
| B19-V09~V14-1720 |  | Installation Elec Fixtures & Accessories For The Yard | 4d | 2025-11-24 | 2025-11-27 | B19-V09~V14-1700, B19-V09~V14-1710, B19-V01~V08-1720 | 9d | 0d | Elec feeding panels GF & FF [6] | 16,779.66 |

| ID | WBS | Activity | Duration | Start | Finish | Predecessors | Total float | Free float | Resources | Cost |
| --- | --- | --- | --- | --- | --- | --- | --- | --- | --- | --- |
|  | 5 | **External Sidewalk Works** |  | 2025-10-26 | 2025-12-02 |  |  |  |  |  |
| B19-V09~V14-1730 |  | Connection The Drain To The Piblic Network | 3d | 2025-10-26 | 2025-10-28 | B19-V09~V14-1510, B19-V09~V14-1590, B19-V01~V08-1730 | 16d | 7d | Connection Drain To The Piblic Network [6]; Connection Water To The Piblic Network [6] | 10,067.76 |
| B19-V09~V14-1740 |  | Pardora Works For The External Sidewalk | 2d | 2025-11-06 | 2025-11-08 | B19-V09~V14-1640, B19-V09~V14-1730, B19-V01~V08-1740 | 9d | 0d |  |  |
| B19-V09~V14-1750 |  | Interlock Works For The Exerrnal Sidewalk | 2d | 2025-11-09 | 2025-11-10 | B19-V09~V14-1740, B19-V01~V08-1750 | 9d | 0d |  |  |
| B19-V09~V14-1760 |  | Pulling The Villa's Main Elec Cable | 4d | 2025-11-29 | 2025-12-02 | B19-V09~V14-1750, B19-V09~V14-1720, B19-V01~V08-1760 | 9d | 0d | Elec Work Testing [6] | 17,114.88 |
|  | 6 | **Final Testing & Handover** |  | 2025-12-03 | 2025-12-27 |  |  |  |  |  |
| B19-V09~V14-1770 |  | ElecWork Testing & Handover | 3d | 2025-12-03 | 2025-12-06 | B19-V09~V14-1760, B19-V09~V14-1370, B19-V01~V08-1780 | 9d |  | Elec Work Handover [6] | 17,853.54 |
| B19-V09~V14-1780 |  | Mech Work Testing & Handover | 4d | 2025-12-04 | 2025-12-08 | B19-V09~V14-1730, B19-V09~V14-1340, B19-V09~V14-1380, B19-V01~V08-1770 | 7d |  | Mech Work Testing & Handover [6] | 10,738.98 |
| B19-V09~V14-1790 |  | Arch Snaglist & Handover | 4d | 2025-12-10 | 2025-12-14 | B19-V09~V14-1750, B19-V09~V14-1710, B19-V09~V14-1400, B19-V01~V08-1790 | 2d |  | Arch Snaglist & Handover [6] | 57,990.48 |
| B19-V09~V14-1800 |  | Final Handover Of The Villa To The Consltant | 4d | 2025-12-17 | 2025-12-21 | B19-V09~V14-1790, B19-V09~V14-1770, B19-V09~V14-1780, B19-V09~V14-1410, B19-V01~V08-1800 | 0d |  |  |  |
| B19-V09~V14-1810 |  | Customer Delivery | 5d | 2025-12-22 | 2025-12-27 | B19-V09~V14-1800, B19-V01~V08-1810 | 0d |  |  |  |

## Activity codes

| Code | Value | Meaning |
| --- | --- | --- |
| Department-1 | Arc | Archticture |
| Department-1 | Civil | Civil Work |
| Department-1 | Elec | Electrical Work |
| Department-1 | Mech | Mechanical Work |
